# ROYA-BIG PROJECT PHASE01 (B1-4)

Schedule from Primavera P6, 2025-09-11 to 2027-05-27, data date 2026-01-12, costs in USD, A marks actual dates.

## Calendars

- Roya-The Big Project Phase 01 (B1-4)6 days: Mon-Sun 08:00-16:00. Exceptions (off unless hours are given): 2025-09-12, 2025-09-13 to 2025-09-14 08:00-16:00, 2025-09-19, 2025-09-20 to 2025-09-21 08:00-16:00, 2025-09-26, 2025-09-27 to 2025-09-28 08:00-16:00, 2025-10-03, 2025-10-04 to 2025-10-05 08:00-16:00, 2025-10-06, 2025-10-10, 2025-10-11 to 2025-10-12 08:00-16:00, 2025-10-17, 2025-10-18 to 2025-10-19 08:00-16:00, 2025-10-24, 2025-10-25 to 2025-10-26 08:00-16:00, 2025-10-31, 2025-11-01 to 2025-11-02 08:00-16:00, 2025-11-07, 2025-11-08 to 2025-11-09 08:00-16:00, 2025-11-14, 2025-11-15 to 2025-11-16 08:00-16:00, 2025-11-21, 2025-11-22 to 2025-11-23 08:00-16:00, 2025-11-28, 2025-11-29 to 2025-11-30 08:00-16:00, 2025-12-05, 2025-12-06 to 2025-12-07 08:00-16:00, 2025-12-12, 2025-12-13 to 2025-12-14 08:00-16:00, 2025-12-19, 2025-12-20 to 2025-12-21 08:00-16:00, 2025-12-26, 2025-12-27 to 2025-12-28 08:00-16:00, 2026-01-02, 2026-01-03 to 2026-01-04 08:00-16:00, 2026-01-07, 2026-01-09, 2026-01-10 to 2026-01-11 08:00-16:00, 2026-01-16, 2026-01-17 to 2026-01-18 08:00-16:00, 2026-01-23, 2026-01-24 08:00-16:00, 2026-01-25, 2026-01-30, 2026-01-31 to 2026-02-01 08:00-16:00, 2026-02-06, 2026-02-07 to 2026-02-08 08:00-16:00, 2026-02-13, 2026-02-14 to 2026-02-15 08:00-16:00, 2026-02-20, 2026-02-21 to 2026-02-22 08:00-16:00, 2026-02-27, 2026-02-28 to 2026-03-01 08:00-16:00, 2026-03-06, 2026-03-07 to 2026-03-08 08:00-16:00, 2026-03-13, 2026-03-14 to 2026-03-15 08:00-16:00, 2026-03-16 to 2026-03-20, 2026-03-21 to 2026-03-23 08:00-16:00, 2026-03-27, 2026-03-28 to 2026-03-29 08:00-16:00, 2026-04-03, 2026-04-04 to 2026-04-05 08:00-16:00, 2026-04-10, 2026-04-11 to 2026-04-12 08:00-16:00, 2026-04-13, 2026-04-17, 2026-04-18 to 2026-04-19 08:00-16:00, 2026-04-24, 2026-04-25 to 2026-04-26 08:00-16:00, 2026-05-01, 2026-05-02 to 2026-05-03 08:00-16:00, 2026-05-08, 2026-05-09 to 2026-05-10 08:00-16:00, 2026-05-15, 2026-05-16 to 2026-05-17 08:00-16:00, 2026-05-22, 2026-05-23 to 2026-05-24 08:00-16:00, 2026-05-26 08:00-16:00, 2026-05-27 to 2026-05-31, 2026-06-05, 2026-06-06 to 2026-06-07 08:00-16:00, 2026-06-12, 2026-06-13 to 2026-06-14 08:00-16:00, 2026-06-19, 2026-06-20 to 2026-06-21 08:00-16:00, 2026-06-26, 2026-06-27 to 2026-06-28 08:00-16:00, 2026-06-30, 2026-07-03, 2026-07-04 to 2026-07-05 08:00-16:00, 2026-07-10, 2026-07-11 to 2026-07-12 08:00-16:00, 2026-07-17, 2026-07-18 to 2026-07-19 08:00-16:00, 2026-07-23 to 2026-07-24, 2026-07-25 to 2026-07-26 08:00-16:00, 2026-07-31, 2026-08-07, 2026-08-14, 2026-08-21, 2026-08-27 to 2026-08-28, 2026-09-04, 2026-09-11, 2026-09-18, 2026-09-25, 2026-10-02, 2026-10-06, 2026-10-09, 2026-10-16, 2026-10-23, 2026-10-30, 2026-11-06, 2026-11-13, 2026-11-20, 2026-11-27, 2026-12-04, 2026-12-11, 2026-12-18, 2026-12-25, 2027-01-01, 2027-01-07 to 2027-01-08, 2027-01-15, 2027-01-22, 2027-01-25, 2027-01-29, 2027-02-05, 2027-02-12, 2027-02-19, 2027-02-26, 2027-03-05, 2027-03-09 to 2027-03-12, 2027-03-19, 2027-03-26, 2027-04-02, 2027-04-09, 2027-04-16, 2027-04-23, 2027-04-30, 2027-05-07, 2027-05-14, 2027-05-15 to 2027-05-18 08:00-16:00, 2027-05-21.
- Roya-The Big Project Phase 01 (B1-4)7 days: Mon-Sun 08:00-16:00. Exceptions (off unless hours are given): 2025-11-22 00:00-00:30, 08:00-15:30.

## Resources

| Resource | Group | Rate | Notes |
| --- | --- | --- | --- |
| Surveyor | labor |  | ??? |
| Labor | labor |  | ??? |
| loader | equipment |  | ??? |
| TRUCK | equipment |  | ??? |
| the big cash | material | 1 | ?? |
| Big Quantity Replacment | material |  | ?? |
| Compactor | equipment |  | ??? |
| Carpenter for concrete | labor |  | ??? |
| Big Quantity Concrete | material |  | ?? |
| Water Proofing Tech | labor |  | ??? |
| Big Quantity Proofing | material |  | ?? |
| Steel Fixer | labor |  | ??? |
| Big Quantity RFT | material |  | ?? |
| Big Quantity Bitumine | material |  | ?? |
| Big Quantity Backfiling | material |  | ?? |
| Excecavator | equipment |  | ??? |
| Big Quantity Insulation | material |  | ?? |

## Schedule

| ID | WBS | Activity | Type | Duration | Start | Finish | Predecessors | Complete | Planned start | Planned finish | Total float | Free float | Constraint | Calendar | Resources | Work Type | BOQ Division |
| --- | --- | --- | --- | --- | --- | --- | --- | --- | --- | --- | --- | --- | --- | --- | --- | --- | --- |
|  | KD | **Key Dates** |  |  | 2025-09-11 | 2027-05-27 |  |  |  |  |  |  |  |  |  |  |  |
|  | MI | **Milestone** |  |  | 2025-09-11 | 2027-05-27 |  |  |  |  |  |  |  |  |  |  |  |
| KD-MS-1000 |  | Project Start Date | milestone | 0d | 2025-09-11 A | 2025-09-11 A |  | 100% |  |  |  |  | start on 2025-09-11 | Roya-The Big Project Phase 01 (B1-4)7 days |  | MI | MS |
| KD-MS-1010 |  | Contract Agreement | milestone | 0d | 2025-09-11 A | 2025-09-11 A | KD-MS-1000 | 100% |  |  |  |  |  | Roya-The Big Project Phase 01 (B1-4)7 days |  | MI |  |
| KD-MS-1020 |  | IFC Drawing Package | milestone | 0d | 2025-09-11 A | 2025-09-11 A | KD-MS-1000 | 100% |  |  |  |  |  | Roya-The Big Project Phase 01 (B1-4)7 days |  | MI |  |
| KD-MS-1040 |  | Ground Works Finish Date | milestone | 0d | 2026-06-15 | 2026-06-15 | CON-B01-GR-1090, CON-B02-GR-1100, CON-B04-GR-1080, CON-B03-GR-1080 |  |  |  | -35d | 0d | finish on or before 2026-05-11 | Roya-The Big Project Phase 01 (B1-4)7 days |  | MI |  |
| KD-MS-1050 |  | Project Finish Date | milestone | 0d | 2027-05-27 | 2027-05-27 | HO-1000 |  |  |  | -47d | 0d | finish on or before 2027-04-10 | Roya-The Big Project Phase 01 (B1-4)7 days |  | MI |  |
|  | MO | **Mobilization** |  |  | 2025-09-13 | 2025-09-29 |  |  |  |  |  |  |  |  |  |  |  |
| KD-MOB-1000 |  | Surveying Works |  | 15d | 2025-09-13 A | 2025-09-29 A | KD-MS-1000, KD-MS-1010 | 100% |  |  |  |  |  |  | Surveyor [15 h]; Labor [15 h] | MO |  |
| KD-MOB-1010 |  | Equipment Mobilization |  | 15d | 2025-09-13 A | 2025-09-29 A | KD-MS-1000, KD-MS-1010, KD-MOB-1000 FF | 100% |  |  |  |  |  |  | Labor [15 h] | MO |  |
| KD-MOB-1020 |  | Site Preparation |  | 15d | 2025-09-13 A | 2025-09-29 A | KD-MS-1000, KD-MS-1010, KD-MOB-1010 FF | 100% |  |  |  |  |  |  | Labor [15 h]; loader [30 h] | MO |  |
|  | EN | **Engineering** |  |  | 2025-09-11 | 2026-06-07 |  |  |  |  |  |  |  |  |  |  |  |
|  | 1 | **Design Reviewing** |  |  | 2025-09-11 | 2025-11-09 |  |  |  |  |  |  |  |  |  |  |  |
| E-DR-1000 |  | Design Review |  | 60d | 2025-09-11 A | 2025-11-09 A | KD-MS-1020, KD-MS-1010 | 100% |  |  |  |  |  | Roya-The Big Project Phase 01 (B1-4)7 days |  |  |  |
|  | 2 | **Shop Drawing** |  |  | 2025-09-11 | 2026-06-07 |  |  |  |  |  |  |  |  |  |  |  |
|  | S | **Submittal** |  |  | 2025-09-11 | 2026-05-21 |  |  |  |  |  |  |  |  |  |  |  |
|  | P02 | **Part 02** |  |  | 2025-09-11 | 2026-04-12 |  |  |  |  |  |  |  |  |  |  |  |
|  | B01 | **B01** |  |  | 2025-09-11 | 2026-04-12 |  |  |  |  |  |  |  |  |  |  |  |
|  | SUB | **Substructre** |  |  | 2025-09-11 | 2026-04-07 |  |  |  |  |  |  |  |  |  |  |  |
|  | 1 | **Replacement** |  |  | 2025-09-11 | 2025-09-20 |  |  |  |  |  |  |  |  |  |  |  |
| E-SUB-B01-REP-1000 |  | Submittal for General Replacement Plan & Typical Sections for Replacement / Backfilling DWGs (B01) |  | 18d | 2025-09-11 A | 2025-09-20 A | E-DR-1000 SS | 100% | 2025-09-11 | 2025-10-01 |  |  |  |  |  |  | Eng-Sub |
|  | F | **Footing** |  |  | 2025-09-16 | 2025-10-30 |  |  |  |  |  |  |  |  |  |  |  |
| E-SUB-B01-FOOT-1000 |  | Submittal for PC Raft Conc. Dim. DWGs (B01) (footing) |  | 18d | 2025-09-16 A | 2025-10-02 A | E-DR-1000 SS+20d | 100% | 2025-10-01 | 2025-10-22 |  |  |  |  |  | DS | Eng-Sub |
| E-SUB-B01-FOOT-1020 |  | Submittal for RC Raft & Footings RFT DWGs (B01) (footing) |  | 18d | 2025-10-01 A | 2025-10-30 A | E-DR-1000 SS+28d, E-SUB-B01-FOOT-1030 SS+3d | 100% | 2025-10-13 | 2025-11-02 |  |  |  |  |  | DS | Eng-Sub |
| E-SUB-B01-FOOT-1030 |  | Submittal for Waterproofing Layout Plan (B01) |  | 18d | 2025-10-01 A | 2025-10-11 A | E-DR-1000 SS+26d, E-SUB-B01-FOOT-1010 SS+3d | 100% | 2025-10-09 | 2025-10-29 |  |  |  |  |  |  | Eng-Sub |
| E-SUB-B01-FOOT-1010 |  | Submittal for RC Raft & Footings Conc. Dim. DWGs (B01) (footing) |  | 18d | 2025-10-05 A | 2025-10-27 A | E-DR-1000 SS+24d, E-SUB-B01-FOOT-1000 SS+3d | 100% | 2025-10-05 | 2025-10-26 |  |  |  |  |  | DS | Eng-Sub |

| ID | WBS | Activity | Duration | Start | Finish | Predecessors | Complete | Planned start | Planned finish | Total float | Free float | Work Type | BOQ Division |
| --- | --- | --- | --- | --- | --- | --- | --- | --- | --- | --- | --- | --- | --- |
|  | 2ndB | **Basement 2** |  | 2025-11-10 | 2026-04-07 |  |  |  |  |  |  |  |  |
| E-SUB-B01-BAS02-1000 |  | Submittal for Col. & Walls Conc. Dim. & RFT DWGs (B01) (Bas 02) | 18d | 2025-11-10 A | 2025-11-20 A | E-DR-1000 | 100% | 2025-11-10 | 2025-11-30 |  |  | DS | Eng-Sub |
| E-SUB-B01-BAS02-1010 |  | Submittal for Stairs Conc. Dim. & RFT DWGs (B01) (Bas 02) | 18d | 2025-11-13 A | 2025-12-03 A | E-DR-1000 FS+3d, E-SUB-B01-BAS02-1000 SS+3d | 100% |  |  |  |  | DS | Eng-Sub |
| E-SUB-B01-BAS02-1020 |  | Submittal for Ramps Conc. Dim. & RFT DWGs (B01) (Bas 02) | 18d | 2025-11-17 A | 2025-12-07 A | E-DR-1000 FS+7d, E-SUB-B01-BAS02-1010 SS+3d | 100% |  |  |  |  | DS | Eng-Sub |
| E-SUB-B01-BAS02-1030 |  | Submittal for Beams Conc. Dim. & RFT DWGs (B01) (Bas 02) | 18d | 2025-11-20 A | 2025-11-30 A | E-DR-1000 FS+10d, E-SUB-B01-BAS02-1020 SS+3d | 100% | 2025-11-20 | 2025-12-10 |  |  | DS | Eng-Sub |
| E-SUB-B01-BAS02-1040 |  | Submittal for Slabs Conc. Dim. & RFT DWGs (B01) (Bas 02) | 18d | 2025-11-30 A | 2025-12-10 A | E-DR-1000 FS+14d, E-SUB-B01-BAS02-1030 SS+3d | 100% | 2025-11-30 | 2025-12-20 |  |  | DS | Eng-Sub |
|  | SOG | **S.O.G** |  | 2026-03-10 | 2026-04-07 |  |  |  |  |  |  |  |  |
| E-SUB-B01-SOG-1000 |  | Submittal for S.O.G Conc. Dim. DWGs (B01) (Sog) | 18d | 2026-03-10 | 2026-04-04 | E-DR-1000 FS+120d |  |  |  | 229d | 0d | DS | Eng-Sub |
| E-SUB-B01-SOG-1010 |  | Submittal for S.O.G RFT DWGs (B01) (Sog) | 18d | 2026-03-14 | 2026-04-07 | E-DR-1000 FS+123d, E-SUB-B01-SOG-1000 SS+3d |  |  |  | 229d | 0d | DS | Eng-Sub |
|  | 1stB | **Basement 1** |  | 2025-10-22 | 2025-11-25 |  |  |  |  |  |  |  |  |
| E-SUB-B01-BAS01-1000 |  | Submittal for Col. & Walls Conc. Dim. & RFT DWGs (B01) (Bas 01) | 18d | 2025-10-22 A | 2025-11-05 A | E-DR-1000 FS+7d | 100% | 2025-10-22 | 2025-11-11 |  |  | DS | Eng-Sub |
| E-SUB-B01-BAS01-1010 |  | Submittal for Stairs Conc. Dim. & RFT DWGs (B01) (Bas 01) | 18d | 2025-10-26 A | 2025-11-15 A | E-DR-1000 FS+10d, E-SUB-B01-BAS01-1000 SS+3d | 100% |  |  |  |  | DS | Eng-Sub |
| E-SUB-B01-BAS01-1020 |  | Submittal for Ramps Conc. Dim. & RFT DWGs (B01) (Bas 01) | 18d | 2025-10-29 A | 2025-11-18 A | E-DR-1000 FS+14d, E-SUB-B01-BAS01-1010 SS+3d | 100% |  |  |  |  | DS | Eng-Sub |
| E-SUB-B01-BAS01-1030 |  | Submittal for Beams Conc. Dim. & RFT DWGs (B01) (Bas 01) | 18d | 2025-11-02 A | 2025-11-23 A | E-DR-1000 FS+17d, E-SUB-B01-BAS01-1020 SS+3d | 100% | 2025-11-02 | 2025-11-22 |  |  | DS | Eng-Sub |
| E-SUB-B01-BAS01-1040 |  | Submittal for Slabs Conc. Dim. & RFT DWGs (B01) (Bas 01) | 18d | 2025-11-05 A | 2025-11-25 A | E-DR-1000 FS+21d, E-SUB-B01-BAS01-1030 SS+3d | 100% |  |  |  |  | DS | Eng-Sub |
|  | SUP | **Superstructure** |  | 2025-10-26 | 2026-04-12 |  |  |  |  |  |  |  |  |
|  | GF | **Ground Floor** |  | 2025-10-26 | 2026-02-05 |  |  |  |  |  |  |  |  |
| E-SUB-B01-GR-1000 |  | Submittal for Col. & Walls Conc. Dim. & RFT DWGs (B01) | 18d | 2025-10-26 A | 2025-11-15 A | E-DR-1000 FS+10d | 100% | 2026-03-15 | 2026-04-08 |  |  | DS | Eng-Sub |
| E-SUB-B01-GR-1010 |  | Submittal for Stairs Conc. Dim. & RFT DWGs (B01) | 18d | 2025-10-26 A | 2025-11-15 A | E-DR-1000 FS+14d, E-SUB-B01-GR-1000 SS+3d | 100% | 2026-03-23 | 2026-04-12 |  |  | DS | Eng-Sub |
| E-SUB-B01-GR-1020 |  | Submittal for Beams Conc. Dim. & RFT DWGs (B01) | 18d | 2026-01-12 | 2026-02-02 | E-DR-1000 FS+17d, E-SUB-B01-GR-1010 SS+3d |  |  |  | 41d | 0d | DS | Eng-Sub |
| E-SUB-B01-GR-1030 |  | Submittal for Slabs Conc. Dim. & RFT DWGs (B01) | 18d | 2026-01-15 | 2026-02-05 | E-DR-1000 FS+21d, E-SUB-B01-GR-1020 SS+3d |  |  |  | 41d | 0d | DS | Eng-Sub |
|  | 1stF | **1st Floor** |  | 2025-10-26 | 2026-02-04 |  |  |  |  |  |  |  |  |
| E-SUB-B01-1ST-1000 |  | Submittal for Col. & Walls Conc. Dim. & RFT DWGs (B01) (1st) | 18d | 2025-10-26 A | 2025-11-15 A | E-DR-1000 FS+30d | 100% | 2026-03-15 | 2026-04-08 |  |  | DS | Eng-Sub |
| E-SUB-B01-1ST-1010 |  | Submittal for Stairs Conc. Dim. & RFT DWGs (B01) (1st) | 18d | 2025-10-26 A | 2025-11-15 A | E-DR-1000 FS+34d, E-SUB-B01-1ST-1000 SS+3d | 100% | 2026-03-23 | 2026-04-12 |  |  | DS | Eng-Sub |
| E-SUB-B01-1ST-1020 |  | Submittal for Beams Conc. Dim. & RFT DWGs (B01) (1st) | 18d | 2026-01-12 | 2026-02-02 | E-DR-1000 FS+37d, E-SUB-B01-1ST-1010 SS+3d |  |  |  | 71d | 0d | DS | Eng-Sub |
| E-SUB-B01-1ST-1030 |  | Submittal for Slabs Conc. Dim. & RFT DWGs (B01) (1st) | 18d | 2026-01-14 | 2026-02-04 | E-DR-1000 FS+40d, E-SUB-B01-1ST-1020 SS+2d |  |  |  | 71d | 0d | DS | Eng-Sub |

| ID | WBS | Activity | Duration | Start | Finish | Predecessors | Complete | Planned start | Planned finish | Total float | Free float | Work Type | BOQ Division |
| --- | --- | --- | --- | --- | --- | --- | --- | --- | --- | --- | --- | --- | --- |
|  | 2ndF | **2nd Floor** |  | 2025-11-01 | 2026-02-05 |  |  |  |  |  |  |  |  |
| E-SUB-B01-2ND-1000 |  | Submittal for Col. & Walls Conc. Dim. & RFT DWGs (B01) (2nd) | 18d | 2025-11-01 A | 2025-11-15 A | E-DR-1000 FS+40d | 100% | 2026-03-15 | 2026-04-08 |  |  | DS | Eng-Sub |
| E-SUB-B01-2ND-1010 |  | Submittal for Stairs Conc. Dim. & RFT DWGs (B01) (2nd) | 18d | 2025-11-01 A | 2025-11-15 A | E-DR-1000 FS+43d, E-SUB-B01-2ND-1000 SS+3d | 100% | 2026-03-23 | 2026-04-12 |  |  | DS | Eng-Sub |
| E-SUB-B01-2ND-1020 |  | Submittal for Beams Conc. Dim. & RFT DWGs (B01) (2nd) | 18d | 2026-01-12 | 2026-02-02 | E-DR-1000 FS+46d, E-SUB-B01-2ND-1010 SS+3d |  |  |  | 104d | 0d | DS | Eng-Sub |
| E-SUB-B01-2ND-1030 |  | Submittal for Slabs Conc. Dim. & RFT DWGs (B01) (2nd) | 18d | 2026-01-15 | 2026-02-05 | E-DR-1000 FS+50d, E-SUB-B01-2ND-1020 SS+3d |  |  |  | 104d | 0d | DS | Eng-Sub |
|  | 3rdF | **3rd Floor** |  | 2025-11-01 | 2026-02-05 |  |  |  |  |  |  |  |  |
| E-SUB-B01-3RD-1000 |  | Submittal for Col. & Walls Conc. Dim. & RFT DWGs (B01) (3rd) | 18d | 2025-11-01 A | 2025-11-15 A | E-DR-1000 FS+50d | 100% | 2026-03-15 | 2026-04-08 |  |  | DS | Eng-Sub |
| E-SUB-B01-3RD-1010 |  | Submittal for Stairs Conc. Dim. & RFT DWGs (B01) (3rd) | 18d | 2025-11-01 A | 2025-11-15 A | E-DR-1000 FS+53d, E-SUB-B01-3RD-1000 SS+3d | 100% | 2026-03-23 | 2026-04-12 |  |  | DS | Eng-Sub |
| E-SUB-B01-3RD-1020 |  | Submittal for Beams Conc. Dim. & RFT DWGs (B01) (3rd) | 18d | 2026-01-12 | 2026-02-02 | E-DR-1000 FS+57d, E-SUB-B01-3RD-1010 SS+3d |  |  |  | 123d | 0d | DS | Eng-Sub |
| E-SUB-B01-3RD-1030 |  | Submittal for Slabs Conc. Dim. & RFT DWGs (B01) (3rd) | 18d | 2026-01-15 | 2026-02-05 | E-DR-1000 FS+62d, E-SUB-B01-3RD-1020 SS+3d |  |  |  | 123d | 0d | DS | Eng-Sub |
|  | 4thF | **4th Floor** |  | 2025-11-01 | 2026-02-15 |  |  |  |  |  |  |  |  |
| E-SUB-B01-4TH-1000 |  | Submittal for Col. & Walls Conc. Dim. & RFT DWGs (B01) (4th) | 18d | 2025-11-01 A | 2025-11-15 A | E-DR-1000 FS+65d | 100% | 2026-03-15 | 2026-04-08 |  |  | DS | Eng-Sub |
| E-SUB-B01-4TH-1010 |  | Submittal for Stairs Conc. Dim. & RFT DWGs (B01) (4th) | 18d | 2025-11-01 A | 2025-11-15 A | E-DR-1000 FS+69d, E-SUB-B01-4TH-1000 SS+3d | 100% | 2026-03-23 | 2026-04-12 |  |  | DS | Eng-Sub |
| E-SUB-B01-4TH-1020 |  | Submittal for Beams Conc. Dim. & RFT DWGs (B01) (4th) | 18d | 2026-01-21 | 2026-02-11 | E-DR-1000 FS+72d, E-SUB-B01-4TH-1010 SS+3d |  |  |  | 148d | 0d | DS | Eng-Sub |
| E-SUB-B01-4TH-1030 |  | Submittal for Slabs Conc. Dim. & RFT DWGs (B01) (4th) | 18d | 2026-01-26 | 2026-02-15 | E-DR-1000 FS+77d, E-SUB-B01-4TH-1020 SS+3d |  |  |  | 148d | 0d | DS | Eng-Sub |
|  | 5thF | **5th Floor** |  | 2025-11-01 | 2026-02-24 |  |  |  |  |  |  |  |  |
| E-SUB-B01-5TH-1000 |  | Submittal for Col. & Walls Conc. Dim. & RFT DWGs (B01) (5th) | 18d | 2025-11-01 A | 2025-11-15 A | E-DR-1000 FS+75d | 100% | 2026-03-15 | 2026-04-08 |  |  | DS | Eng-Sub |
| E-SUB-B01-5TH-1010 |  | Submittal for Stairs Conc. Dim. & RFT DWGs (B01) (5th) | 18d | 2025-11-01 A | 2025-11-15 A | E-DR-1000 FS+79d, E-SUB-B01-5TH-1000 SS+3d | 100% | 2026-03-23 | 2026-04-12 |  |  | DS | Eng-Sub |
| E-SUB-B01-5TH-1020 |  | Submittal for Beams Conc. Dim. & RFT DWGs (B01) (5th) | 18d | 2026-02-01 | 2026-02-21 | E-DR-1000 FS+83d, E-SUB-B01-5TH-1010 SS+3d |  |  |  | 186d | 0d | DS | Eng-Sub |
| E-SUB-B01-5TH-1030 |  | Submittal for Slabs Conc. Dim. & RFT DWGs (B01) (5th) | 18d | 2026-02-04 | 2026-02-24 | E-DR-1000 FS+86d, E-SUB-B01-5TH-1020 SS+3d |  |  |  | 186d | 0d | DS | Eng-Sub |
|  | 6thF | **6th Floor** |  | 2025-11-01 | 2026-03-05 |  |  |  |  |  |  |  |  |
| E-SUB-B01-6TH-1000 |  | Submittal for Col. & Walls Conc. Dim. & RFT DWGs (B01) (6th) | 18d | 2025-11-01 A | 2025-11-15 A | E-DR-1000 FS+85d | 100% | 2026-03-15 | 2026-04-08 |  |  | DS | Eng-Sub |
| E-SUB-B01-6TH-1010 |  | Submittal for Stairs Conc. Dim. & RFT DWGs (B01) (6th) | 18d | 2025-11-01 A | 2025-11-15 A | E-DR-1000 FS+89d, E-SUB-B01-6TH-1000 SS+3d | 100% | 2026-03-23 | 2026-04-12 |  |  | DS | Eng-Sub |
| E-SUB-B01-6TH-1020 |  | Submittal for Beams Conc. Dim. & RFT DWGs (B01) (6th) | 18d | 2026-02-10 | 2026-03-02 | E-DR-1000 FS+92d, E-SUB-B01-6TH-1010 SS+3d |  |  |  | 208d | 0d | DS | Eng-Sub |
| E-SUB-B01-6TH-1030 |  | Submittal for Slabs Conc. Dim. & RFT DWGs (B01) (6th) | 18d | 2026-02-14 | 2026-03-05 | E-DR-1000 FS+96d, E-SUB-B01-6TH-1020 SS+3d |  |  |  | 208d | 0d | DS | Eng-Sub |

| ID | WBS | Activity | Duration | Start | Finish | Predecessors | Complete | Planned start | Planned finish | Total float | Free float | Work Type | BOQ Division |
| --- | --- | --- | --- | --- | --- | --- | --- | --- | --- | --- | --- | --- | --- |
|  | 7thF | **7th Floor** |  | 2025-11-01 | 2026-03-21 |  |  |  |  |  |  |  |  |
| E-SUB-B01-7TH-1000 |  | Submittal for Col. & Walls Conc. Dim. & RFT DWGs (B01) (7th) | 18d | 2025-11-01 A | 2025-11-15 A | E-DR-1000 FS+95d | 100% | 2026-03-15 | 2026-04-08 |  |  | DS | Eng-Sub |
| E-SUB-B01-7TH-1010 |  | Submittal for Stairs Conc. Dim. & RFT DWGs (B01) (7th) | 18d | 2025-11-01 A | 2025-11-15 A | E-DR-1000 FS+99d, E-SUB-B01-7TH-1000 SS+3d | 100% | 2026-03-23 | 2026-04-12 |  |  | DS | Eng-Sub |
| E-SUB-B01-7TH-1020 |  | Submittal for Beams Conc. Dim. & RFT DWGs (B01) (7th) | 18d | 2026-02-21 | 2026-03-12 | E-DR-1000 FS+102d, E-SUB-B01-7TH-1010 SS+3d |  |  |  | 227d | 0d | DS | Eng-Sub |
| E-SUB-B01-7TH-1030 |  | Submittal for Slabs Conc. Dim. & RFT DWGs (B01) (7th) | 18d | 2026-02-24 | 2026-03-21 | E-DR-1000 FS+106d, E-SUB-B01-7TH-1020 SS+3d |  |  |  | 227d | 0d | DS | Eng-Sub |
|  | 8thF | **8th Floor** |  | 2025-11-01 | 2026-04-04 |  |  |  |  |  |  |  |  |
| E-SUB-B01-8TH-1000 |  | Submittal for Col. & Walls Conc. Dim. & RFT DWGs (B01) (8th) | 18d | 2025-11-01 A | 2025-11-15 A | E-DR-1000 FS+110d | 100% | 2026-03-15 | 2026-04-08 |  |  | DS | Eng-Sub |
| E-SUB-B01-8TH-1010 |  | Submittal for Stairs Conc. Dim. & RFT DWGs (B01) (8th) | 18d | 2025-11-01 A | 2025-11-15 A | E-DR-1000 FS+113d, E-SUB-B01-8TH-1000 SS+3d | 100% | 2026-03-23 | 2026-04-12 |  |  | DS | Eng-Sub |
| E-SUB-B01-8TH-1020 |  | Submittal for Beams Conc. Dim. & RFT DWGs (B01) (8th) | 18d | 2026-03-07 | 2026-03-31 | E-DR-1000 FS+117d, E-SUB-B01-8TH-1010 SS+3d |  |  |  | 241d | 0d | DS | Eng-Sub |
| E-SUB-B01-8TH-1030 |  | Submittal for Slabs Conc. Dim. & RFT DWGs (B01) (8th) | 18d | 2026-03-10 | 2026-04-04 | E-DR-1000 FS+120d, E-SUB-B01-8TH-1020 SS+3d |  |  |  | 241d | 0d | DS | Eng-Sub |
|  | RF | **Roof Floor** |  | 2025-11-01 | 2026-04-12 |  |  |  |  |  |  |  |  |
| E-SUB-B01-RF-1000 |  | Submittal for Col. & Walls Conc. Dim. & RFT DWGs (B01) (RF) | 18d | 2025-11-01 A | 2025-11-15 A | E-DR-1000 FS+125d | 100% | 2026-03-15 | 2026-04-08 |  |  | DS | Eng-Sub |
| E-SUB-B01-RF-1020 |  | Submittal for Beams Conc. Dim. & RFT DWGs (B01) (RF) | 18d | 2025-11-01 A | 2025-11-15 A | E-DR-1000 FS+136d | 100% | 2026-03-26 | 2026-04-16 |  |  | DS | Eng-Sub |
| E-SUB-B01-RF-1010 |  | Submittal for Slabs Conc. Dim. & RFT DWGs (B01) (RF) | 18d | 2026-03-23 | 2026-04-12 | E-DR-1000 FS+133d, E-SUB-B01-RF-1000 SS+3d |  |  |  | 254d | 0d | DS | Eng-Sub |
|  | B02 | **B02** |  | 2025-09-11 | 2026-04-12 |  |  |  |  |  |  |  |  |
|  | SUB | **Substructre** |  | 2025-09-11 | 2026-04-12 |  |  |  |  |  |  |  |  |
|  | 1 | **Replacement** |  | 2025-09-11 | 2025-09-20 |  |  |  |  |  |  |  |  |
| E-SUB-B02-REP-1000 |  | Submittal for General Replacement Plan & Typical Sections for Replacement / Backfilling DWGs (B02) | 8d | 2025-09-11 A | 2025-09-20 A | E-DR-1000 SS | 100% |  |  |  |  |  | Eng-Sub |
|  | F | **Footing** |  | 2025-10-07 | 2025-11-03 |  |  |  |  |  |  |  |  |
| E-SUB-B02-FOOT-1000 |  | Submittal for PC Raft Conc. Dim. DWGs (B02) (footing) | 18d | 2025-10-07 A | 2025-10-27 A | E-DR-1000 SS+25d | 100% |  |  |  |  | DS | Eng-Sub |
| E-SUB-B02-FOOT-1030 |  | Submittal for Waterproofing Layout Plan (B02) | 18d | 2025-10-08 A | 2025-10-28 A | E-DR-1000 SS+25d, E-SUB-B02-FOOT-1000 SS+1d | 100% |  |  |  |  |  | Eng-Sub |
| E-SUB-B02-FOOT-1010 |  | Submittal for RC Raft & Footings Conc. Dim. DWGs (B02) (footing) | 18d | 2025-10-11 A | 2025-10-30 A | E-DR-1000 SS+30d, E-SUB-B02-FOOT-1030 SS+1d | 100% |  |  |  |  | DS | Eng-Sub |
| E-SUB-B02-FOOT-1020 |  | Submittal for RC Raft & Footings RFT DWGs (B02) (footing) | 18d | 2025-10-14 A | 2025-11-03 A | E-DR-1000 SS+33d, E-SUB-B02-FOOT-1010 SS+1d | 100% |  |  |  |  | DS | Eng-Sub |
|  | 2ndB | **Basement 2** |  | 2025-10-15 | 2026-04-12 |  |  |  |  |  |  |  |  |
| E-SUB-B02-BAS02-1000 |  | Submittal for Col. & Walls Conc. Dim.& RFT DWGs (B02) (Bas 02) | 18d | 2025-10-15 A | 2025-11-01 A | E-DR-1000 | 100% | 2025-10-15 | 2025-11-04 |  |  | DS | Eng-Sub |
| E-SUB-B02-BAS02-1010 |  | Submittal for Stairs Conc. Dim.& RFT DWGs (B02) (Bas 02) | 18d | 2025-10-19 A | 2025-11-08 A | E-DR-1000 FS+3d, E-SUB-B02-BAS02-1000 SS+3d | 100% |  |  |  |  | DS | Eng-Sub |
| E-SUB-B02-BAS02-1020 |  | Submittal for Beams Conc. Dim.& RFT DWGs (B02) (Bas 02) | 18d | 2025-10-22 A | 2025-11-11 A | E-DR-1000 FS+7d, E-SUB-B02-BAS02-1010 SS+3d | 100% |  |  |  |  | DS | Eng-Sub |
| E-SUB-B02-BAS02-1030 |  | Submittal for Slabs Conc. Dim.& RFT DWGs (B02) (Bas 02) | 18d | 2025-10-26 A | 2025-11-15 A | E-DR-1000 FS+10d, E-SUB-B02-BAS02-1020 SS+3d | 100% |  |  |  |  | DS | Eng-Sub |

| ID | WBS | Activity | Duration | Start | Finish | Predecessors | Complete | Planned start | Planned finish | Total float | Free float | Work Type | BOQ Division |
| --- | --- | --- | --- | --- | --- | --- | --- | --- | --- | --- | --- | --- | --- |
|  | 2 | **S.O.G** |  | 2026-03-15 | 2026-04-12 |  |  |  |  |  |  |  |  |
| E-SUB-B02-SOG-1000 |  | Submittal for S.O.G Conc. Dim. DWGs (B02) (Sog) | 18d | 2026-03-15 | 2026-04-08 | E-DR-1000 FS+125d |  |  |  | 240d | 0d | DS | Eng-Sub |
| E-SUB-B02-SOG-1010 |  | Submittal for S.O.G RFT DWGs (B02) (Sog) | 18d | 2026-03-23 | 2026-04-12 | E-DR-1000 FS+133d, E-SUB-B02-SOG-1000 SS+3d |  |  |  | 240d | 0d | DS | Eng-Sub |
|  | 1stB | **Basement 1** |  | 2025-10-19 | 2025-11-25 |  |  |  |  |  |  |  |  |
| E-SUB-B02-BAS01-1010 |  | Submittal for Stairs Conc. Dim. & RFT DWGs (B02) (Bas 01) | 18d | 2025-10-19 A | 2025-11-18 A | E-DR-1000 FS+14d, E-SUB-B02-BAS01-1000 SS+3d | 100% | 2025-10-29 | 2025-11-18 |  |  | DS | Eng-Sub |
| E-SUB-B02-BAS01-1000 |  | Submittal for Col. & Walls Conc. Dim. & RFT DWGs (B02) (Bas 01) | 18d | 2025-10-25 A | 2025-11-13 A | E-DR-1000 FS+10d | 100% |  |  |  |  | DS | Eng-Sub |
| E-SUB-B02-BAS01-1020 |  | Submittal for Beams Conc. Dim. & RFT DWGs (B02) (Bas 01) | 18d | 2025-11-02 A | 2025-11-23 A | E-DR-1000 FS+17d, E-SUB-B02-BAS01-1010 SS+3d | 100% | 2025-11-02 | 2025-11-22 |  |  | DS | Eng-Sub |
| E-SUB-B02-BAS01-1030 |  | Submittal for Slabs Conc. Dim. & RFT DWGs (B02) (Bas 01) | 18d | 2025-11-05 A | 2025-11-25 A | E-DR-1000 FS+21d, E-SUB-B02-BAS01-1020 SS+3d | 100% |  |  |  |  | DS | Eng-Sub |
|  | SUP | **Superstructure** |  | 2025-10-19 | 2026-03-22 |  |  |  |  |  |  |  |  |
|  | GF | **Ground Floor** |  | 2025-10-19 | 2026-02-05 |  |  |  |  |  |  |  |  |
| E-SUB-B02-GR-1010 |  | Submittal for Stairs Conc. Dim. & RFT DWGs (B02) (GF) | 18d | 2025-10-19 A | 2025-11-08 A | E-DR-1000 FS+19d, E-SUB-B02-GR-1000 SS+3d | 100% |  |  |  |  | DS | Eng-Sub |
| E-SUB-B02-GR-1000 |  | Submittal for Col. & Walls Conc. Dim. & RFT DWGs (B02) (GF) | 18d | 2025-10-25 A | 2025-11-13 A | E-DR-1000 FS+15d | 100% |  |  |  |  | DS | Eng-Sub |
| E-SUB-B02-GR-1020 |  | Submittal for Beams Conc. Dim. & RFT DWGs (B02) (GF) | 18d | 2026-01-12 | 2026-02-02 | E-DR-1000 FS+22d, E-SUB-B02-GR-1010 SS+3d |  |  |  | 50d | 0d | DS | Eng-Sub |
| E-SUB-B02-GR-1030 |  | Submittal for Slabs Conc. Dim. & RFT DWGs (B02) (GF) | 18d | 2026-01-15 | 2026-02-05 | E-DR-1000 FS+26d, E-SUB-B02-GR-1020 SS+3d |  |  |  | 50d | 0d | DS | Eng-Sub |
|  | 1stF | **1st Floor** |  | 2025-10-19 | 2026-02-05 |  |  |  |  |  |  |  |  |
| E-SUB-B02-1ST-1010 |  | Submittal for Stairs Conc. Dim. & RFT DWGs (B02) (1st) | 18d | 2025-10-19 A | 2025-11-08 A | E-DR-1000 FS+38d, E-SUB-B02-1ST-1000 SS+3d | 100% |  |  |  |  | DS | Eng-Sub |
| E-SUB-B02-1ST-1000 |  | Submittal for Col. & Walls Conc. Dim. & RFT DWGs (B02) (1st) | 18d | 2025-10-25 A | 2025-11-13 A | E-DR-1000 FS+35d | 100% |  |  |  |  | DS | Eng-Sub |
| E-SUB-B02-1ST-1020 |  | Submittal for Beams Conc. Dim. & RFT DWGs (B02) (1st) | 18d | 2026-01-12 | 2026-02-02 | E-DR-1000 FS+42d, E-SUB-B02-1ST-1010 SS+3d |  |  |  | 107d | 0d | DS | Eng-Sub |
| E-SUB-B02-1ST-1030 |  | Submittal for Slabs Conc. Dim. & RFT DWGs (B02) (1st) | 18d | 2026-01-15 | 2026-02-05 | E-DR-1000 FS+45d, E-SUB-B02-1ST-1020 SS+3d |  |  |  | 107d | 0d | DS | Eng-Sub |
|  | 2ndF | **2nd Floor** |  | 2025-10-19 | 2026-02-05 |  |  |  |  |  |  |  |  |
| E-SUB-B02-2ND-1010 |  | Submittal for Stairs Conc. Dim. & RFT DWGs (B02) (2nd) | 18d | 2025-10-19 A | 2025-11-08 A | E-DR-1000 FS+49d, E-SUB-B02-2ND-1000 SS+3d | 100% |  |  |  |  | DS | Eng-Sub |
| E-SUB-B02-2ND-1000 |  | Submittal for Col. & Walls Conc. Dim. & RFT DWGs (B02) (2nd) | 18d | 2025-10-25 A | 2025-11-13 A | E-DR-1000 FS+45d | 100% |  |  |  |  | DS | Eng-Sub |
| E-SUB-B02-2ND-1020 |  | Submittal for Beams Conc. Dim. & RFT DWGs (B02) (2nd) | 18d | 2026-01-12 | 2026-02-02 | E-DR-1000 FS+52d, E-SUB-B02-2ND-1010 SS+3d |  |  |  | 156d | 0d | DS | Eng-Sub |
| E-SUB-B02-2ND-1030 |  | Submittal for Slabs Conc. Dim. & RFT DWGs (B02) (2nd) | 18d | 2026-01-15 | 2026-02-05 | E-DR-1000 FS+56d, E-SUB-B02-2ND-1020 SS+3d |  |  |  | 156d | 0d | DS | Eng-Sub |

| ID | WBS | Activity | Duration | Start | Finish | Predecessors | Complete | Total float | Free float | Work Type | BOQ Division |
| --- | --- | --- | --- | --- | --- | --- | --- | --- | --- | --- | --- |
|  | 3rdF | **3rd Floor** |  | 2025-10-19 | 2026-02-15 |  |  |  |  |  |  |
| E-SUB-B02-3RD-1010 |  | Submittal for Stairs Conc. Dim. & RFT DWGs (B02) (3rd) | 18d | 2025-10-19 A | 2025-11-08 A | E-DR-1000 FS+69d, E-SUB-B02-3RD-1000 SS+3d | 100% |  |  | DS | Eng-Sub |
| E-SUB-B02-3RD-1000 |  | Submittal for Col. & Walls Conc. Dim. & RFT DWGs (B02) (3rd) | 18d | 2025-10-25 A | 2025-11-13 A | E-DR-1000 FS+65d | 100% |  |  | DS | Eng-Sub |
| E-SUB-B02-3RD-1020 |  | Submittal for Beams Conc. Dim. & RFT DWGs (B02) (3rd) | 18d | 2026-01-21 | 2026-02-11 | E-DR-1000 FS+72d, E-SUB-B02-3RD-1010 SS+3d |  | 199d | 0d | DS | Eng-Sub |
| E-SUB-B02-3RD-1030 |  | Submittal for Slabs Conc. Dim. & RFT DWGs (B02) (3rd) | 18d | 2026-01-26 | 2026-02-15 | E-DR-1000 FS+76d, E-SUB-B02-3RD-1020 SS+3d |  | 199d | 0d | DS | Eng-Sub |
|  | 4thF | **4th Floor** |  | 2025-10-19 | 2026-03-01 |  |  |  |  |  |  |
| E-SUB-B02-4TH-1010 |  | Submittal for Stairs Conc. Dim. & RFT DWGs (B02) (4th) | 18d | 2025-10-19 A | 2025-11-08 A | E-DR-1000 FS+84d, E-SUB-B02-4TH-1000 SS+3d | 100% |  |  | DS | Eng-Sub |
| E-SUB-B02-4TH-1000 |  | Submittal for Col. & Walls Conc. Dim. & RFT DWGs (B02) (4th) | 18d | 2025-10-25 A | 2025-11-13 A | E-DR-1000 FS+80d | 100% |  |  | DS | Eng-Sub |
| E-SUB-B02-4TH-1020 |  | Submittal for Beams Conc. Dim. & RFT DWGs (B02) (4th) | 18d | 2026-02-05 | 2026-02-25 | E-DR-1000 FS+87d, E-SUB-B02-4TH-1010 SS+3d |  | 239d | 0d | DS | Eng-Sub |
| E-SUB-B02-4TH-1030 |  | Submittal for Slabs Conc. Dim. & RFT DWGs (B02) (4th) | 18d | 2026-02-09 | 2026-03-01 | E-DR-1000 FS+91d, E-SUB-B02-4TH-1020 SS+3d |  | 239d | 0d | DS | Eng-Sub |
|  | RF | **Roof Floor** |  | 2025-10-25 | 2026-03-22 |  |  |  |  |  |  |
| E-SUB-B02-RF-1000 |  | Submittal for Col. & Walls Conc. Dim. & RFT DWGs (B02) (RF) | 18d | 2025-10-25 A | 2025-11-13 A | E-DR-1000 FS+100d | 100% |  |  | DS | Eng-Sub |
| E-SUB-B02-RF-1010 |  | Submittal for Beams Conc. Dim. & RFT DWGs (B02) (RF) | 18d | 2026-02-22 | 2026-03-14 | E-DR-1000 FS+104d, E-SUB-B02-RF-1000 SS+3d |  | 267d | 0d | DS | Eng-Sub |
| E-SUB-B02-RF-1020 |  | Submittal for Slabs Conc. Dim. & RFT DWGs (B02) (RF) | 18d | 2026-02-25 | 2026-03-22 | E-DR-1000 FS+107d, E-SUB-B02-RF-1010 SS+3d |  | 267d | 0d | DS | Eng-Sub |
|  | P01 | **Part 01** |  | 2025-09-21 | 2026-05-21 |  |  |  |  |  |  |
|  | B03 | **B03** |  | 2025-09-27 | 2026-03-02 |  |  |  |  |  |  |
|  | SUB | **Substructre** |  | 2025-09-27 | 2026-02-22 |  |  |  |  |  |  |
|  | 1 | **Replacement** |  | 2025-09-27 | 2025-10-18 |  |  |  |  |  |  |
| E-SUB-B03-REP-1000 |  | Submittal for General Replacement Plan & Typical Sections for Replacement / Backfilling DWGs (B03) | 18d | 2025-09-27 A | 2025-10-18 A | E-DR-1000 SS+16d | 100% |  |  |  | Eng-Sub |
|  | F | **Footing** |  | 2025-10-11 | 2025-11-06 |  |  |  |  |  |  |
| E-SUB-B03-FOOT-1010 |  | Submittal for PC Raft Conc. Dim. DWGs (B03) (footing) | 18d | 2025-10-11 A | 2025-10-30 A | E-DR-1000 SS+30d | 100% |  |  | DS | Eng-Sub |
| E-SUB-B03-FOOT-1000 |  | Submittal for Waterproofing Layout Plan (B03) | 18d | 2025-10-12 A | 2025-11-01 A | E-DR-1000 SS+30d, E-SUB-B03-FOOT-1010 SS+1d | 100% |  |  |  | Eng-Sub |
| E-SUB-B03-FOOT-1020 |  | Submittal for RC Raft & Footings Conc. Dim. DWGs (B03) (footing) | 18d | 2025-10-14 A | 2025-11-03 A | E-DR-1000 SS+33d, E-SUB-B03-FOOT-1000 SS+1d | 100% |  |  | DS | Eng-Sub |
| E-SUB-B03-FOOT-1030 |  | Submittal for RC Raft & Footings RFT DWGs (B03) (footing) | 18d | 2025-10-18 A | 2025-11-06 A | E-DR-1000 SS+37d, E-SUB-B03-FOOT-1020 SS+1d | 100% |  |  | DS | Eng-Sub |

| ID | WBS | Activity | Duration | Start | Finish | Predecessors | Complete | Remaining | Planned start | Planned finish | Total float | Free float | Work Type | BOQ Division |
| --- | --- | --- | --- | --- | --- | --- | --- | --- | --- | --- | --- | --- | --- | --- |
|  | 2ndB | **Basement 2** |  | 2026-01-01 | 2026-02-22 |  |  |  |  |  |  |  |  |  |
| E-SUB-B03-BAS02-1000 |  | Submittal for Col. & Walls Conc. Dim. & RFT DWGs (B03) (Bas 02) | 18d | 2026-01-01 A | 2026-01-12 | E-DR-1000 | 100% | 0d | 2026-03-15 | 2026-04-08 | -8d | 0d | DS | Eng-Sub |
| E-SUB-B03-BAS02-1010 |  | Submittal for Stairs Conc. Dim. & RFT DWGs (B03) (Bas 02) | 18d | 2026-01-12 | 2026-02-02 | E-DR-1000 FS+3d, E-SUB-B03-BAS02-1000 SS+3d |  |  |  |  | -8d | 0d | DS | Eng-Sub |
| E-SUB-B03-BAS02-1020 |  | Submittal for Beams Conc. Dim. & RFT DWGs (B03) (Bas 02) | 18d | 2026-01-15 | 2026-02-05 | E-DR-1000 FS+7d, E-SUB-B03-BAS02-1010 SS+3d |  |  |  |  | -8d | 0d | DS | Eng-Sub |
| E-SUB-B03-BAS02-1030 |  | Submittal for Slabs Conc. Dim. & RFT DWGs (B03) (Bas 02) | 18d | 2026-01-19 | 2026-02-09 | E-DR-1000 FS+10d, E-SUB-B03-BAS02-1020 SS+3d |  |  |  |  | -8d | 0d | DS | Eng-Sub |
|  | 1 | **S.O.G** |  | 2026-01-29 | 2026-02-22 |  |  |  |  |  |  |  |  |  |
| E-SUB-B03-SOG-1000 |  | Submittal for S.O.G Conc. Dim. DWGs (B03) (Sog) | 18d | 2026-01-29 | 2026-02-18 | E-DR-1000 FS+80d |  |  |  |  | 280d | 0d | DS | Eng-Sub |
| E-SUB-B03-SOG-1010 |  | Submittal for S.O.G RFT DWGs (B03) (Sog) | 18d | 2026-02-02 | 2026-02-22 | E-DR-1000 FS+80d, E-SUB-B03-SOG-1000 SS+3d |  |  |  |  | 280d | 0d | DS | Eng-Sub |
|  | 1stB | **Basement 1** |  | 2026-01-01 | 2026-02-05 |  |  |  |  |  |  |  |  |  |
| E-SUB-B03-BAS01-1000 |  | Submittal for Col. & Walls Conc. Dim. & RFT DWGs (B03) (Bas 01) | 33d | 2026-01-01 A | 2026-01-12 | E-DR-1000 FS+10d | 100% | 0d | 2026-01-01 | 2026-02-10 | 26d | 0d | DS | Eng-Sub |
| E-SUB-B03-BAS01-1010 |  | Submittal for Stairs Conc. Dim. & RFT DWGs (B03) (Bas 01) | 9d | 2026-01-12 | 2026-01-21 | E-DR-1000 FS+14d, E-SUB-B03-BAS01-1000 SS+3d |  |  |  |  | 26d | 0d | DS | Eng-Sub |
| E-SUB-B03-BAS01-1020 |  | Submittal for Beams Conc. Dim. & RFT DWGs (B03) (Bas 01) | 18d | 2026-01-15 | 2026-02-05 | E-DR-1000 FS+17d, E-SUB-B03-BAS01-1010 SS+3d |  |  |  |  | 26d | 0d | DS | Eng-Sub |
| E-SUB-B03-BAS01-1030 |  | Submittal for Slabs Conc. Dim. & RFT DWGs (B03) (Bas 01) | 10d | 2026-01-19 | 2026-01-31 | E-DR-1000 FS+21d, E-SUB-B03-BAS01-1020 SS+3d |  |  |  |  | 29d | 0d | DS | Eng-Sub |
|  | SUP | **Superstructure** |  | 2026-01-01 | 2026-03-02 |  |  |  |  |  |  |  |  |  |
|  | GF | **Ground Floor** |  | 2026-01-01 | 2026-02-09 |  |  |  |  |  |  |  |  |  |
| E-SUB-B03-GR-1000 |  | Submittal for Col. & Walls Conc. Dim. & RFT DWGs (B03) (GF) | 33d | 2026-01-01 A | 2026-01-12 | E-DR-1000 FS+20d | 100% | 0d | 2026-01-01 | 2026-02-10 | 51d | 0d | DS | Eng-Sub |
| E-SUB-B03-GR-1010 |  | Submittal for Stairs Conc. Dim. & RFT DWGs (B03) (GF) | 9d | 2026-01-12 | 2026-01-21 | E-DR-1000 FS+23d, E-SUB-B03-GR-1000 SS+3d |  |  |  |  | 51d | 0d | DS | Eng-Sub |
| E-SUB-B03-GR-1020 |  | Submittal for Beams Conc. Dim. & RFT DWGs (B03) (GF) | 18d | 2026-01-15 | 2026-02-05 | E-DR-1000 FS+27d, E-SUB-B03-GR-1010 SS+3d |  |  |  |  | 51d | 0d | DS | Eng-Sub |
| E-SUB-B03-GR-1030 |  | Submittal for Slabs Conc. Dim. & RFT DWGs (B03) (GF) | 18d | 2026-01-19 | 2026-02-09 | E-DR-1000 FS+30d, E-SUB-B03-GR-1020 SS+3d |  |  |  |  | 51d | 0d | DS | Eng-Sub |
|  | 1stF | **1st Floor** |  | 2026-01-01 | 2026-02-09 |  |  |  |  |  |  |  |  |  |
| E-SUB-B03-1ST-1000 |  | Submittal for Col. & Walls Conc. Dim. & RFT DWGs (B03) (1st) | 33d | 2026-01-01 A | 2026-01-12 | E-DR-1000 FS+30d | 100% | 0d | 2026-01-01 | 2026-02-10 | 98d | 0d | DS | Eng-Sub |
| E-SUB-B03-1ST-1010 |  | Submittal for Stairs Conc. Dim. & RFT DWGs (B03) (1st) | 9d | 2026-01-12 | 2026-01-21 | E-DR-1000 FS+34d, E-SUB-B03-1ST-1000 SS+3d |  |  |  |  | 98d | 0d | DS | Eng-Sub |
| E-SUB-B03-1ST-1020 |  | Submittal for Beams Conc. Dim. & RFT DWGs (B03) (1st) | 18d | 2026-01-15 | 2026-02-05 | E-DR-1000 FS+37d, E-SUB-B03-1ST-1010 SS+3d |  |  |  |  | 98d | 0d | DS | Eng-Sub |
| E-SUB-B03-1ST-1030 |  | Submittal for Slabs Conc. Dim. & RFT DWGs (B03) (1st) | 18d | 2026-01-19 | 2026-02-09 | E-DR-1000 FS+40d, E-SUB-B03-1ST-1020 SS+3d |  |  |  |  | 98d | 0d | DS | Eng-Sub |

| ID | WBS | Activity | Duration | Start | Finish | Predecessors | Complete | Remaining | Planned start | Planned finish | Total float | Free float | Work Type | BOQ Division |
| --- | --- | --- | --- | --- | --- | --- | --- | --- | --- | --- | --- | --- | --- | --- |
|  | 2ndF | **2nd Floor** |  | 2026-01-01 | 2026-02-09 |  |  |  |  |  |  |  |  |  |
| E-SUB-B03-2ND-1000 |  | Submittal for Col. & Walls Conc. Dim. & RFT DWGs (B03) (2nd) | 33d | 2026-01-01 A | 2026-01-12 | E-DR-1000 FS+40d | 100% | 0d | 2026-01-01 | 2026-02-10 | 153d | 0d | DS | Eng-Sub |
| E-SUB-B03-2ND-1010 |  | Submittal for Stairs Conc. Dim. & RFT DWGs (B03) (2nd) | 9d | 2026-01-12 | 2026-01-21 | E-DR-1000 FS+43d, E-SUB-B03-2ND-1000 SS+3d |  |  |  |  | 153d | 0d | DS | Eng-Sub |
| E-SUB-B03-2ND-1020 |  | Submittal for Beams Conc. Dim. & RFT DWGs (B03) (2nd) | 18d | 2026-01-15 | 2026-02-05 | E-DR-1000 FS+46d, E-SUB-B03-2ND-1010 SS+3d |  |  |  |  | 153d | 0d | DS | Eng-Sub |
| E-SUB-B03-2ND-1030 |  | Submittal for Slabs Conc. Dim. & RFT DWGs (B03) (2nd) | 18d | 2026-01-19 | 2026-02-09 | E-DR-1000 FS+50d, E-SUB-B03-2ND-1020 SS+3d |  |  |  |  | 153d | 0d | DS | Eng-Sub |
|  | 3rdF | **3rd Floor** |  | 2026-01-01 | 2026-02-09 |  |  |  |  |  |  |  |  |  |
| E-SUB-B03-3RD-1000 |  | Submittal for Col. & Walls Conc. Dim. & RFT DWGs (B03) (3rd) | 33d | 2026-01-01 A | 2026-01-12 | E-DR-1000 FS+50d | 100% | 0d | 2026-01-01 | 2026-02-10 | 206d | 0d | DS | Eng-Sub |
| E-SUB-B03-3RD-1010 |  | Submittal for Stairs Conc. Dim. & RFT DWGs (B03) (3rd) | 9d | 2026-01-12 | 2026-01-21 | E-DR-1000 FS+53d, E-SUB-B03-3RD-1000 SS+3d |  |  |  |  | 206d | 0d | DS | Eng-Sub |
| E-SUB-B03-3RD-1020 |  | Submittal for Beams Conc. Dim. & RFT DWGs (B03) (3rd) | 18d | 2026-01-15 | 2026-02-05 | E-DR-1000 FS+57d, E-SUB-B03-3RD-1010 SS+3d |  |  |  |  | 206d | 0d | DS | Eng-Sub |
| E-SUB-B03-3RD-1030 |  | Submittal for Slabs Conc. Dim. & RFT DWGs (B03) (3rd) | 18d | 2026-01-19 | 2026-02-09 | E-DR-1000 FS+62d, E-SUB-B03-3RD-1020 SS+3d |  |  |  |  | 206d | 0d | DS | Eng-Sub |
|  | 4thF | **4th Floor** |  | 2026-01-01 | 2026-02-19 |  |  |  |  |  |  |  |  |  |
| E-SUB-B03-4TH-1000 |  | Submittal for Col. & Walls Conc. Dim. & RFT DWGs (B03) (4th) | 33d | 2026-01-01 A | 2026-01-19 | E-DR-1000 FS+70d | 100% | 0d | 2026-01-01 | 2026-02-10 | 254d | 0d | DS | Eng-Sub |
| E-SUB-B03-4TH-1010 |  | Submittal for Stairs Conc. Dim. & RFT DWGs (B03) (4th) | 9d | 2026-01-22 | 2026-02-02 | E-DR-1000 FS+73d, E-SUB-B03-4TH-1000 SS+3d |  |  |  |  | 251d | 0d | DS | Eng-Sub |
| E-SUB-B03-4TH-1020 |  | Submittal for Beams Conc. Dim. & RFT DWGs (B03) (4th) | 18d | 2026-01-27 | 2026-02-16 | E-DR-1000 FS+78d, E-SUB-B03-4TH-1010 SS+3d |  |  |  |  | 251d | 0d | DS | Eng-Sub |
| E-SUB-B03-4TH-1030 |  | Submittal for Slabs Conc. Dim. & RFT DWGs (B03) (4th) | 18d | 2026-01-31 | 2026-02-19 | E-DR-1000 FS+82d, E-SUB-B03-4TH-1020 SS+3d |  |  |  |  | 251d | 0d | DS | Eng-Sub |
|  | RF | **Roof Floor** |  | 2026-01-01 | 2026-03-02 |  |  |  |  |  |  |  |  |  |
| E-SUB-B03-RF-1000 |  | Submittal for Col. & Walls Conc. Dim. & RFT DWGs (B03) (RF) | 33d | 2026-01-01 A | 2026-02-03 | E-DR-1000 FS+85d | 100% | 0d | 2026-01-01 | 2026-02-10 | 283d | 0d | DS | Eng-Sub |
| E-SUB-B03-RF-1010 |  | Submittal for Beams Conc. Dim. & RFT DWGs (B03) (RF) | 18d | 2026-02-07 | 2026-02-26 | E-DR-1000 FS+89d, E-SUB-B03-RF-1000 SS+3d |  |  |  |  | 280d | 0d | DS | Eng-Sub |
| E-SUB-B03-RF-1020 |  | Submittal for Slabs Conc. Dim. & RFT DWGs (B03) (RF) | 18d | 2026-02-10 | 2026-03-02 | E-DR-1000 FS+92d, E-SUB-B03-RF-1010 SS+3d |  |  |  |  | 280d | 0d | DS | Eng-Sub |
|  | B04 | **B04** |  | 2025-09-21 | 2026-05-21 |  |  |  |  |  |  |  |  |  |
|  | SUB | **Substructre** |  | 2025-09-21 | 2026-04-19 |  |  |  |  |  |  |  |  |  |
|  | 1 | **Replacement** |  | 2025-10-21 | 2025-11-10 |  |  |  |  |  |  |  |  |  |
| E-SUB-B04-REP-1000 |  | Submittal for General Replacement Plan & Typical Sections for Replacement / Backfilling DWGs (B04) | 18d | 2025-10-21 A | 2025-11-10 A | E-DR-1000 SS+40d | 100% |  |  |  |  |  |  | Eng-Sub |
|  | F | **Footing** |  | 2025-09-21 | 2025-11-05 |  |  |  |  |  |  |  |  |  |
| E-SUB-B04-FOOT-1000 |  | Submittal for Waterproofing Layout Plan (B04) | 18d | 2025-09-21 A | 2025-10-12 A | E-DR-1000 SS+10d | 100% |  |  |  |  |  |  | Eng-Sub |
| E-SUB-B04-FOOT-1010 |  | Submittal for PC Raft Conc. Dim. DWGs (B04) (footing) | 18d | 2025-10-08 A | 2025-10-28 A | E-DR-1000 SS+27d, E-SUB-B04-FOOT-1000 SS+3d | 100% |  |  |  |  |  | DS | Eng-Sub |
| E-SUB-B04-FOOT-1020 |  | Submittal for RC Raft & Footings Conc. Dim. DWGs (B04) (footing) | 18d | 2025-10-12 A | 2025-11-01 A | E-DR-1000 SS+31d, E-SUB-B04-FOOT-1010 SS+3d | 100% |  |  |  |  |  | DS | Eng-Sub |
| E-SUB-B04-FOOT-1030 |  | Submittal for RC Raft & Footings RFT DWGs (B04) (footing) | 18d | 2025-10-16 A | 2025-11-05 A | E-DR-1000 SS+35d, E-SUB-B04-FOOT-1020 SS+3d | 100% |  |  |  |  |  | DS | Eng-Sub |

| ID | WBS | Activity | Duration | Start | Finish | Predecessors | Complete | Remaining | Planned start | Planned finish | Total float | Free float | Work Type | BOQ Division |
| --- | --- | --- | --- | --- | --- | --- | --- | --- | --- | --- | --- | --- | --- | --- |
|  | 2ndB | **Basement 2** |  | 2025-11-01 | 2026-04-19 |  |  |  |  |  |  |  |  |  |
| E-SUB-B04-BAS02-1000 |  | Submittal for Col. & Walls Conc. Dim. & RFT DWGs (B04) (Bas 02) | 18d | 2026-01-01 A | 2026-01-12 | E-DR-1000 | 100% | 0d | 2026-03-15 | 2026-04-08 | -3d | 0d | DS | Eng-Sub |
| E-SUB-B04-BAS02-1010 |  | Submittal for Stairs Conc. Dim. & RFT DWGs (B04) (Bas 02) | 18d | 2026-01-12 | 2026-02-02 | E-DR-1000 FS+3d, E-SUB-B04-BAS02-1000 SS+3d |  |  |  |  | -3d | 0d | DS | Eng-Sub |
| E-SUB-B04-BAS02-1020 |  | Submittal for Ramps Conc. Dim. & RFT DWGs (B04) (Bas 02) | 18d | 2026-01-15 | 2026-02-05 | E-DR-1000 FS+7d, E-SUB-B04-BAS02-1010 SS+3d |  |  |  |  | -3d | 0d | DS | Eng-Sub |
| E-SUB-B04-BAS02-1030 |  | Submittal for Beams Conc. Dim. & RFT DWGs (B04) (Bas 02) | 18d | 2026-01-19 | 2026-02-09 | E-DR-1000 FS+10d, E-SUB-B04-BAS02-1020 SS+3d |  |  |  |  | -3d | 0d | DS | Eng-Sub |
| E-SUB-B04-BAS02-1040 |  | Submittal for Slabs Conc. Dim. & RFT DWGs (B04) (Bas 02) | 18d | 2026-01-22 | 2026-02-12 | E-DR-1000 FS+14d, E-SUB-B04-BAS02-1030 SS+3d |  |  |  |  | -3d | 0d | DS | Eng-Sub |
|  | 1 | **Water Tank** |  | 2025-11-01 | 2025-11-30 |  |  |  |  |  |  |  |  |  |
| E-SUB-B04-WT-1000 |  | Submittal for PC Raft Conc. Dim. DWGs (B04) (Water Tank) | 18d | 2025-11-01 A | 2025-11-20 A | E-DR-1000 SS+2d | 100% |  |  |  |  |  | DS | Eng-Sub |
| E-SUB-B04-WT-1010 |  | Submittal for RC Raft Conc. Dim. DWGs (B04) (Water Tank) | 18d | 2025-11-04 A | 2025-11-24 A | E-DR-1000 SS+5d, E-SUB-B04-WT-1000 SS+3d | 100% |  |  |  |  |  | DS | Eng-Sub |
| E-SUB-B04-WT-1020 |  | Submittal for RC Raft RFT DWGs (B04) (Water Tank) | 18d | 2025-11-08 A | 2025-11-27 A | E-DR-1000 SS+9d, E-SUB-B04-WT-1010 SS+3d | 100% |  |  |  |  |  | DS | Eng-Sub |
| E-SUB-B04-WT-1030 |  | Submittal for Col. & Walls DWGs (B04) (Water Tank) | 18d | 2025-11-12 A | 2025-11-30 A | E-DR-1000 SS+12d, E-SUB-B04-WT-1020 SS+3d | 100% |  | 2026-04-11 | 2026-05-02 |  |  | DS | Eng-Sub |
| E-SUB-B04-WT-1040 |  | Submittal for Slabs DWGs (B04) (Water Tank) | 18d | 2025-11-14 A | 2025-11-30 A | E-DR-1000 SS+16d, E-SUB-B04-WT-1030 SS+3d | 100% |  | 2026-04-15 | 2026-05-05 |  |  | DS | Eng-Sub |
|  | 2 | **S.O.G** |  | 2026-03-25 | 2026-04-19 |  |  |  |  |  |  |  |  |  |
| E-SUB-B04-SOG-1000 |  | Submittal for S.O.G Conc. Dim. DWGs (B04) (Sog) | 18d | 2026-03-25 | 2026-04-15 | E-DR-1000 FS+135d |  |  |  |  | 249d | 0d | DS | Eng-Sub |
| E-SUB-B04-SOG-1010 |  | Submittal for S.O.G RFT DWGs (B04) (Sog) | 18d | 2026-03-29 | 2026-04-19 | E-DR-1000 FS+135d, E-SUB-B04-SOG-1000 SS+3d |  |  |  |  | 249d | 0d | DS | Eng-Sub |
|  | 1stB | **Basement 1** |  | 2026-01-01 | 2026-02-12 |  |  |  |  |  |  |  |  |  |
| E-SUB-B04-BAS01-1000 |  | Submittal for Col. & Walls Conc. Dim. & RFT DWGs (B04) (Bas 01) | 18d | 2026-01-01 A | 2026-01-12 | E-DR-1000 FS+20d | 100% | 0d | 2026-04-11 | 2026-05-02 | 23d | 0d | DS | Eng-Sub |
| E-SUB-B04-BAS01-1010 |  | Submittal for Stairs Conc. Dim. & RFT DWGs (B04) (Bas 01) | 18d | 2026-01-12 | 2026-02-02 | E-DR-1000 FS+23d, E-SUB-B04-BAS01-1000 SS+3d |  |  |  |  | 23d | 0d | DS | Eng-Sub |
| E-SUB-B04-BAS01-1020 |  | Submittal for Ramps Conc. Dim. & RFT DWGs (B04) (Bas 01) | 18d | 2026-01-15 | 2026-02-05 | E-DR-1000 FS+27d, E-SUB-B04-BAS01-1010 SS+3d |  |  |  |  | 23d | 0d | DS | Eng-Sub |
| E-SUB-B04-BAS01-1030 |  | Submittal for Beams Conc. Dim. & RFT DWGs (B04) (Bas 01) | 18d | 2026-01-19 | 2026-02-09 | E-DR-1000 FS+30d, E-SUB-B04-BAS01-1020 SS+3d |  |  |  |  | 23d | 0d | DS | Eng-Sub |
| E-SUB-B04-BAS01-1040 |  | Submittal for Slabs Conc. Dim. & RFT DWGs (B04) (Bas 01) | 18d | 2026-01-22 | 2026-02-12 | E-DR-1000 FS+34d, E-SUB-B04-BAS01-1030 SS+3d |  |  |  |  | 23d | 0d | DS | Eng-Sub |
|  | SUP | **Superstructure** |  | 2026-01-01 | 2026-05-21 |  |  |  |  |  |  |  |  |  |
|  | GF | **Ground Floor** |  | 2026-01-01 | 2026-02-09 |  |  |  |  |  |  |  |  |  |
| E-SUB-B04-GR-1000 |  | Submittal for Col. & Walls Conc. Dim. & RFT DWGs (B04) (GF) | 18d | 2026-01-01 A | 2026-01-12 | E-DR-1000 FS+35d | 100% | 0d | 2026-04-11 | 2026-05-02 | 53d | 0d | DS | Eng-Sub |
| E-SUB-B04-GR-1010 |  | Submittal for Stairs Conc. Dim. & RFT DWGs (B04) (GF) | 18d | 2026-01-12 | 2026-02-02 | E-DR-1000 FS+38d, E-SUB-B04-GR-1000 SS+3d |  |  |  |  | 53d | 0d | DS | Eng-Sub |
| E-SUB-B04-GR-1020 |  | Submittal for Beams Conc. Dim. & RFT DWGs (B04) (GF) | 18d | 2026-01-15 | 2026-02-05 | E-DR-1000 FS+42d, E-SUB-B04-GR-1010 SS+3d |  |  |  |  | 53d | 0d | DS | Eng-Sub |
| E-SUB-B04-GR-1030 |  | Submittal for Slabs Conc. Dim. & RFT DWGs (B04) (GF) | 18d | 2026-01-19 | 2026-02-09 | E-DR-1000 FS+45d, E-SUB-B04-GR-1020 SS+3d |  |  |  |  | 53d | 0d | DS | Eng-Sub |

| ID | WBS | Activity | Duration | Start | Finish | Predecessors | Complete | Remaining | Planned start | Planned finish | Total float | Free float | Work Type | BOQ Division |
| --- | --- | --- | --- | --- | --- | --- | --- | --- | --- | --- | --- | --- | --- | --- |
|  | 1stF | **1st Floor** |  | 2026-01-01 | 2026-02-09 |  |  |  |  |  |  |  |  |  |
| E-SUB-B04-1ST-1000 |  | Submittal for Col. & Walls Conc. Dim. & RFT DWGs (B04) (1st) | 18d | 2026-01-01 A | 2026-01-12 | E-DR-1000 FS+45d | 100% | 0d | 2026-04-11 | 2026-05-02 | 79d | 0d | DS | Eng-Sub |
| E-SUB-B04-1ST-1010 |  | Submittal for Stairs Conc. Dim. & RFT DWGs (B04) (1st) | 18d | 2026-01-12 | 2026-02-02 | E-DR-1000 FS+49d, E-SUB-B04-1ST-1000 SS+3d |  |  |  |  | 79d | 0d | DS | Eng-Sub |
| E-SUB-B04-1ST-1020 |  | Submittal for Beams Conc. Dim. & RFT DWGs (B04) (1st) | 18d | 2026-01-15 | 2026-02-05 | E-DR-1000 FS+52d, E-SUB-B04-1ST-1010 SS+3d |  |  |  |  | 79d | 0d | DS | Eng-Sub |
| E-SUB-B04-1ST-1030 |  | Submittal for Slabs Conc. Dim. & RFT DWGs (B04) (1st) | 18d | 2026-01-19 | 2026-02-09 | E-DR-1000 FS+56d, E-SUB-B04-1ST-1020 SS+3d |  |  |  |  | 79d | 0d | DS | Eng-Sub |
|  | 2ndF | **2nd Floor** |  | 2026-01-01 | 2026-02-10 |  |  |  |  |  |  |  |  |  |
| E-SUB-B04-2ND-1000 |  | Submittal for Col. & Walls Conc. Dim. & RFT DWGs (B04) (2nd) | 18d | 2026-01-01 A | 2026-01-12 | E-DR-1000 FS+60d | 100% | 0d | 2026-04-11 | 2026-05-02 | 113d | 0d | DS | Eng-Sub |
| E-SUB-B04-2ND-1010 |  | Submittal for Stairs Conc. Dim. & RFT DWGs (B04) (2nd) | 18d | 2026-01-13 | 2026-02-03 | E-DR-1000 FS+64d, E-SUB-B04-2ND-1000 SS+3d |  |  |  |  | 112d | 0d | DS | Eng-Sub |
| E-SUB-B04-2ND-1020 |  | Submittal for Beams Conc. Dim. & RFT DWGs (B04) (2nd) | 18d | 2026-01-17 | 2026-02-07 | E-DR-1000 FS+67d, E-SUB-B04-2ND-1010 SS+3d |  |  |  |  | 112d | 0d | DS | Eng-Sub |
| E-SUB-B04-2ND-1030 |  | Submittal for Slabs Conc. Dim. & RFT DWGs (B04) (2nd) | 18d | 2026-01-20 | 2026-02-10 | E-DR-1000 FS+71d, E-SUB-B04-2ND-1020 SS+3d |  |  |  |  | 112d | 0d | DS | Eng-Sub |
|  | 3rdF | **3rd Floor** |  | 2026-01-01 | 2026-02-24 |  |  |  |  |  |  |  |  |  |
| E-SUB-B04-3RD-1000 |  | Submittal for Col. & Walls Conc. Dim. & RFT DWGs (B04) (3rd) | 18d | 2026-01-01 A | 2026-01-24 | E-DR-1000 FS+75d | 100% | 0d | 2026-04-11 | 2026-05-02 | 137d | 0d | DS | Eng-Sub |
| E-SUB-B04-3RD-1010 |  | Submittal for Stairs Conc. Dim. & RFT DWGs (B04) (3rd) | 18d | 2026-01-28 | 2026-02-17 | E-DR-1000 FS+79d, E-SUB-B04-3RD-1000 SS+3d |  |  |  |  | 134d | 0d | DS | Eng-Sub |
| E-SUB-B04-3RD-1020 |  | Submittal for Beams Conc. Dim. & RFT DWGs (B04) (3rd) | 18d | 2026-02-01 | 2026-02-21 | E-DR-1000 FS+83d, E-SUB-B04-3RD-1010 SS+3d |  |  |  |  | 134d | 0d | DS | Eng-Sub |
| E-SUB-B04-3RD-1030 |  | Submittal for Slabs Conc. Dim. & RFT DWGs (B04) (3rd) | 18d | 2026-02-04 | 2026-02-24 | E-DR-1000 FS+86d, E-SUB-B04-3RD-1020 SS+3d |  |  |  |  | 134d | 0d | DS | Eng-Sub |
|  | 4thF | **4th Floor** |  | 2026-01-01 | 2026-03-10 |  |  |  |  |  |  |  |  |  |
| E-SUB-B04-4TH-1000 |  | Submittal for Col. & Walls Conc. Dim. & RFT DWGs (B04) (4th) | 18d | 2026-01-01 A | 2026-02-08 | E-DR-1000 FS+90d | 100% | 0d | 2026-04-11 | 2026-05-02 | 157d | 0d | DS | Eng-Sub |
| E-SUB-B04-4TH-1010 |  | Submittal for Stairs Conc. Dim. & RFT DWGs (B04) (4th) | 18d | 2026-02-11 | 2026-03-03 | E-DR-1000 FS+93d, E-SUB-B04-4TH-1000 SS+3d |  |  |  |  | 154d | 0d | DS | Eng-Sub |
| E-SUB-B04-4TH-1020 |  | Submittal for Beams Conc. Dim. & RFT DWGs (B04) (4th) | 18d | 2026-02-15 | 2026-03-07 | E-DR-1000 FS+97d, E-SUB-B04-4TH-1010 SS+3d |  |  |  |  | 154d | 0d | DS | Eng-Sub |
| E-SUB-B04-4TH-1030 |  | Submittal for Slabs Conc. Dim. & RFT DWGs (B04) (4th) | 18d | 2026-02-18 | 2026-03-10 | E-DR-1000 FS+100d, E-SUB-B04-4TH-1020 SS+3d |  |  |  |  | 154d | 0d | DS | Eng-Sub |
|  | 5thF | **5th Floor** |  | 2026-01-01 | 2026-04-04 |  |  |  |  |  |  |  |  |  |
| E-SUB-B04-5TH-1000 |  | Submittal for Col. & Walls Conc. Dim. & RFT DWGs (B04) (5th) | 18d | 2026-01-01 A | 2026-02-28 | E-DR-1000 FS+110d | 100% | 0d | 2026-04-11 | 2026-05-02 | 172d | 0d | DS | Eng-Sub |
| E-SUB-B04-5TH-1010 |  | Submittal for Stairs Conc. Dim. & RFT DWGs (B04) (5th) | 18d | 2026-03-03 | 2026-03-28 | E-DR-1000 FS+113d, E-SUB-B04-5TH-1000 SS+3d |  |  |  |  | 169d | 0d | DS | Eng-Sub |
| E-SUB-B04-5TH-1020 |  | Submittal for Beams Conc. Dim. & RFT DWGs (B04) (5th) | 18d | 2026-03-07 | 2026-03-31 | E-DR-1000 FS+117d, E-SUB-B04-5TH-1010 SS+3d |  |  |  |  | 169d | 0d | DS | Eng-Sub |
| E-SUB-B04-5TH-1030 |  | Submittal for Slabs Conc. Dim. & RFT DWGs (B04) (5th) | 18d | 2026-03-10 | 2026-04-04 | E-DR-1000 FS+120d, E-SUB-B04-5TH-1020 SS+3d |  |  |  |  | 169d | 0d | DS | Eng-Sub |

| ID | WBS | Activity | Duration | Start | Finish | Predecessors | Complete | Remaining | Planned start | Planned finish | Total float | Free float | Work Type | BOQ Division |
| --- | --- | --- | --- | --- | --- | --- | --- | --- | --- | --- | --- | --- | --- | --- |
|  | 6thF | **6th Floor** |  | 2026-01-01 | 2026-04-20 |  |  |  |  |  |  |  |  |  |
| E-SUB-B04-6TH-1000 |  | Submittal for Col. & Walls Conc. Dim. & RFT DWGs (B04) (6th) | 18d | 2026-01-01 A | 2026-03-15 | E-DR-1000 FS+125d | 100% | 0d | 2026-04-11 | 2026-05-02 | 186d | 0d | DS | Eng-Sub |
| E-SUB-B04-6TH-1010 |  | Submittal for Stairs Conc. Dim. & RFT DWGs (B04) (6th) | 18d | 2026-03-23 | 2026-04-12 | E-DR-1000 FS+133d, E-SUB-B04-6TH-1000 SS+3d |  |  |  |  | 183d | 0d | DS | Eng-Sub |
| E-SUB-B04-6TH-1020 |  | Submittal for Beams Conc. Dim. & RFT DWGs (B04) (6th) | 18d | 2026-03-26 | 2026-04-16 | E-DR-1000 FS+136d, E-SUB-B04-6TH-1010 SS+3d |  |  |  |  | 183d | 0d | DS | Eng-Sub |
| E-SUB-B04-6TH-1030 |  | Submittal for Slabs Conc. Dim. & RFT DWGs (B04) (6th) | 18d | 2026-03-30 | 2026-04-20 | E-DR-1000 FS+140d, E-SUB-B04-6TH-1020 SS+3d |  |  |  |  | 183d | 0d | DS | Eng-Sub |
|  | 7thF | **7th Floor** |  | 2026-01-01 | 2026-05-05 |  |  |  |  |  |  |  |  |  |
| E-SUB-B04-7TH-1000 |  | Submittal for Col. & Walls Conc. Dim. & RFT DWGs (B04) (7th) | 18d | 2026-01-01 A | 2026-04-04 | E-DR-1000 FS+145d | 100% | 0d | 2026-04-11 | 2026-05-02 | 198d | 0d | DS | Eng-Sub |
| E-SUB-B04-7TH-1010 |  | Submittal for Stairs Conc. Dim. & RFT DWGs (B04) (7th) | 18d | 2026-04-07 | 2026-04-28 | E-DR-1000 FS+148d, E-SUB-B04-7TH-1000 SS+3d |  |  |  |  | 195d | 0d | DS | Eng-Sub |
| E-SUB-B04-7TH-1020 |  | Submittal for Beams Conc. Dim. & RFT DWGs (B04) (7th) | 18d | 2026-04-11 | 2026-05-02 | E-DR-1000 FS+151d, E-SUB-B04-7TH-1010 SS+3d |  |  |  |  | 195d | 0d | DS | Eng-Sub |
| E-SUB-B04-7TH-1030 |  | Submittal for Slabs Conc. Dim. & RFT DWGs (B04) (7th) | 18d | 2026-04-15 | 2026-05-05 | E-DR-1000 FS+156d, E-SUB-B04-7TH-1020 SS+3d |  |  |  |  | 195d | 0d | DS | Eng-Sub |
|  | 8thF | **8th Floor** |  | 2026-01-01 | 2026-05-19 |  |  |  |  |  |  |  |  |  |
| E-SUB-B04-8TH-1000 |  | Submittal for Col. & Walls Conc. Dim. & RFT DWGs (B04) (8th) | 18d | 2026-01-01 A | 2026-04-19 | E-DR-1000 FS+160d | 100% | 0d | 2026-04-19 | 2026-05-09 | 210d | 0d | DS | Eng-Sub |
| E-SUB-B04-8TH-1010 |  | Submittal for Stairs Conc. Dim. & RFT DWGs (B04) (8th) | 18d | 2026-04-22 | 2026-05-12 | E-DR-1000 FS+163d, E-SUB-B04-8TH-1000 SS+3d |  |  |  |  | 207d | 0d | DS | Eng-Sub |
| E-SUB-B04-8TH-1020 |  | Submittal for Beams Conc. Dim. & RFT DWGs (B04) (8th) | 18d | 2026-04-26 | 2026-05-16 | E-DR-1000 FS+167d, E-SUB-B04-8TH-1010 SS+3d |  |  |  |  | 207d | 0d | DS | Eng-Sub |
| E-SUB-B04-8TH-1030 |  | Submittal for Slabs Conc. Dim. & RFT DWGs (B04) (8th) | 18d | 2026-04-29 | 2026-05-19 | E-DR-1000 FS+170d, E-SUB-B04-8TH-1020 SS+3d |  |  |  |  | 207d | 0d | DS | Eng-Sub |
|  | RF | **Roof Floor** |  | 2026-01-01 | 2026-05-21 |  |  |  |  |  |  |  |  |  |
| E-SUB-B04-RF-1000 |  | Submittal for Col. & Walls Conc. Dim. & RFT DWGs (B04) (RF) | 18d | 2026-01-01 A | 2026-04-25 | E-DR-1000 FS+165d | 100% | 0d | 2026-04-25 | 2026-05-14 | 224d | 0d | DS | Eng-Sub |
| E-SUB-B04-RF-1010 |  | Submittal for Beams Conc. Dim. & RFT DWGs (B04) (RF) | 18d | 2026-04-28 | 2026-05-18 | E-DR-1000 FS+169d, E-SUB-B04-RF-1000 SS+3d |  |  |  |  | 221d | 0d | DS | Eng-Sub |
| E-SUB-B04-RF-1020 |  | Submittal for Slabs Conc. Dim. & RFT DWGs (B04) (RF) | 18d | 2026-05-02 | 2026-05-21 | E-DR-1000 FS+173d, E-SUB-B04-RF-1010 SS+3d |  |  |  |  | 221d | 0d | DS | Eng-Sub |
|  | A | **Approval** |  | 2025-09-23 | 2026-06-07 |  |  |  |  |  |  |  |  |  |
|  | P02 | **Part 02** |  | 2025-09-23 | 2026-04-25 |  |  |  |  |  |  |  |  |  |
|  | B01 | **B01** |  | 2025-09-23 | 2026-04-25 |  |  |  |  |  |  |  |  |  |
|  | SUB | **Substructre** |  | 2025-09-23 | 2026-04-20 |  |  |  |  |  |  |  |  |  |
|  | 1 | **Replacement** |  | 2025-10-02 | 2025-10-18 |  |  |  |  |  |  |  |  |  |
| E-APP-B01-REP-1000 |  | Approval for General Replacement Plan & Typical Sections for Replacement / Backfilling DWGs (B01) | 10d | 2025-10-02 A | 2025-10-18 A | E-SUB-B01-REP-1000 SS+12d, E-SUB-B01-REP-1000 FF+10d | 100% |  | 2025-10-02 | 2025-10-14 |  |  |  | Eng-App |

| ID | WBS | Activity | Duration | Start | Finish | Predecessors | Complete | Planned start | Planned finish | Total float | Free float | Work Type | BOQ Division |
| --- | --- | --- | --- | --- | --- | --- | --- | --- | --- | --- | --- | --- | --- |
|  | F | **Footing** |  | 2025-09-23 | 2025-10-27 |  |  |  |  |  |  |  |  |
| E-APP-B01-FOOT-1000 |  | Approval for PC Raft Conc. Dim. DWGs (B01) (footing) | 10d | 2025-09-23 A | 2025-10-16 A | E-SUB-B01-FOOT-1000 SS+12d, E-SUB-B01-FOOT-1000 FF+10d | 100% | 2025-10-23 | 2025-11-03 |  |  | DA | Eng-App |
| E-APP-B01-FOOT-1020 |  | Approval for RC Raft & Footings RFT DWGs (B01) | 10d | 2025-09-23 A | 2025-10-20 A | E-SUB-B01-FOOT-1020 SS+12d, E-SUB-B01-FOOT-1020 FF+10d | 100% | 2025-11-30 | 2025-12-10 |  |  | DA | Eng-App |
| E-APP-B01-FOOT-1030 |  | Approval for Waterproofing Layout Plan (B01) | 10d | 2025-10-06 A | 2025-10-21 A | E-SUB-B01-FOOT-1030 SS+12d, E-SUB-B01-FOOT-1030 FF+10d | 100% | 2025-11-30 | 2025-12-10 |  |  |  | Eng-App |
| E-APP-B01-FOOT-1010 |  | Approval for RC Raft & Footings Conc. Dim. DWGs (B01) | 10d | 2025-10-14 A | 2025-10-27 A | E-SUB-B01-FOOT-1010 SS+12d, E-SUB-B01-FOOT-1010 FF+10d | 100% | 2025-11-30 | 2025-12-10 |  |  | DA | Eng-App |
|  | 2ndB | **Basement 2** |  | 2026-01-12 | 2026-04-20 |  |  |  |  |  |  |  |  |
| E-APP-B01-BAS02-1000 |  | Approval for Col. & Walls Conc. Dim. & RFT DWGs (B01) (Bas 02) | 10d | 2026-01-12 | 2026-01-22 | E-SUB-B01-BAS02-1000 SS+12d, E-SUB-B01-BAS02-1000 FF+10d |  |  |  | -24d | 13d | DA | Eng-App |
| E-APP-B01-BAS02-1010 |  | Approval for Stairs Conc. Dim. & RFT DWGs (B01) (Bas 02) | 10d | 2026-01-12 | 2026-01-22 | E-SUB-B01-BAS02-1010 SS+12d, E-SUB-B01-BAS02-1010 FF+10d |  |  |  | 1d | 35d | DA | Eng-App |
| E-APP-B01-BAS02-1020 |  | Approval for Ramps Conc. Dim. & RFT DWGs (B01) (Bas 02) | 10d | 2026-01-12 | 2026-01-22 | E-SUB-B01-BAS02-1020 SS+12d, E-SUB-B01-BAS02-1020 FF+10d |  |  |  | -1d | 35d | DA | Eng-App |
| E-APP-B01-BAS02-1030 |  | Approval for Beams Conc. Dim. & RFT DWGs (B01) (Bas 02) | 10d | 2026-01-12 | 2026-01-22 | E-SUB-B01-BAS02-1030 SS+12d, E-SUB-B01-BAS02-1030 FF+10d |  |  |  | -4d | 33d | DA | Eng-App |
| E-APP-B01-BAS02-1040 |  | Approval for Slabs Conc. Dim. & RFT DWGs (B01) (Bas 02) | 10d | 2026-01-12 | 2026-01-22 | E-SUB-B01-BAS02-1040 SS+12d, E-SUB-B01-BAS02-1040 FF+10d |  |  |  | -4d | 33d | DA | Eng-App |
|  | 1 | **S.O.G** |  | 2026-04-05 | 2026-04-20 |  |  |  |  |  |  |  |  |
| E-APP-B01-SOG-1000 |  | Approval for S.O.G Conc. Dim.DWGs (B01) (Sog) | 10d | 2026-04-05 | 2026-04-16 | E-SUB-B01-SOG-1000 SS+12d, E-SUB-B01-SOG-1000 FF+10d |  |  |  | 232d | 54d | DA | Eng-App |
| E-APP-B01-SOG-1010 |  | Approval for S.O.G RFT DWGs (B01) (Sog) | 10d | 2026-04-08 | 2026-04-20 | E-SUB-B01-SOG-1010 SS+12d, E-SUB-B01-SOG-1010 FF+10d |  |  |  | 229d | 51d | DA | Eng-App |
|  | 1stB | **Basement 1** |  | 2026-01-12 | 2026-01-22 |  |  |  |  |  |  |  |  |
| E-APP-B01-BAS01-1000 |  | Approval for Col. & Walls Conc. Dim. & RFT DWGs (B01) (Bas 01) | 10d | 2026-01-12 | 2026-01-22 | E-SUB-B01-BAS01-1000 SS+12d, E-SUB-B01-BAS01-1000 FF+10d |  |  |  | 13d | 50d | DA | Eng-App |
| E-APP-B01-BAS01-1010 |  | Approval for Stairs Conc. Dim. & RFT DWGs (B01) (Bas 01) | 10d | 2026-01-12 | 2026-01-22 | E-SUB-B01-BAS01-1010 SS+12d, E-SUB-B01-BAS01-1010 FF+10d |  |  |  | 42d | 69d | DA | Eng-App |
| E-APP-B01-BAS01-1020 |  | Approval for Ramps Conc. Dim. & RFT DWGs (B01) (Bas 01) | 10d | 2026-01-12 | 2026-01-22 | E-SUB-B01-BAS01-1020 SS+12d, E-SUB-B01-BAS01-1020 FF+10d |  |  |  | 43d | 70d | DA | Eng-App |
| E-APP-B01-BAS01-1030 |  | Approval for Beams Conc. Dim. & RFT DWGs (B01) (Bas 01) | 10d | 2026-01-12 | 2026-01-22 | E-SUB-B01-BAS01-1030 SS+12d, E-SUB-B01-BAS01-1030 FF+10d |  |  |  | 30d | 67d | DA | Eng-App |
| E-APP-B01-BAS01-1040 |  | Approval for Slabs Conc. Dim. & RFT DWGs (B01) (Bas 01) | 10d | 2026-01-12 | 2026-01-22 | E-SUB-B01-BAS01-1040 SS+12d, E-SUB-B01-BAS01-1040 FF+10d |  |  |  | 30d | 67d | DA | Eng-App |
|  | SUP | **Superstructure** |  | 2026-01-12 | 2026-04-25 |  |  |  |  |  |  |  |  |
|  | GF | **Ground Floor** |  | 2026-01-12 | 2026-02-17 |  |  |  |  |  |  |  |  |
| E-APP-B01-GR-1000 |  | Approval for Col. & Walls Conc. Dim. & RFT DWGs (B01) (GF) | 10d | 2026-01-12 | 2026-01-22 | E-SUB-B01-GR-1000 SS+12d, E-SUB-B01-GR-1000 FF+10d |  |  |  | 44d | 81d | DA | Eng-App |
| E-APP-B01-GR-1010 |  | Approval for Stairs Conc. Dim. & RFT DWGs (B01) (GF) | 10d | 2026-01-12 | 2026-01-22 | E-SUB-B01-GR-1010 SS+12d, E-SUB-B01-GR-1010 FF+10d |  |  |  | 60d | 97d | DA | Eng-App |
| E-APP-B01-GR-1020 |  | Approval for Beams Conc. Dim. & RFT DWGs (B01) (GF) | 10d | 2026-02-03 | 2026-02-14 | E-SUB-B01-GR-1020 SS+12d, E-SUB-B01-GR-1020 FF+10d |  |  |  | 44d | 81d | DA | Eng-App |
| E-APP-B01-GR-1030 |  | Approval for Slabs Conc. Dim. & RFT DWGs (B01) (GF) | 10d | 2026-02-07 | 2026-02-17 | E-SUB-B01-GR-1030 SS+12d, E-SUB-B01-GR-1030 FF+10d |  |  |  | 41d | 78d | DA | Eng-App |

| ID | WBS | Activity | Duration | Start | Finish | Predecessors | Total float | Free float | Work Type | BOQ Division |
| --- | --- | --- | --- | --- | --- | --- | --- | --- | --- | --- |
|  | 1stF | **1st Floor** |  | 2026-01-12 | 2026-02-16 |  |  |  |  |  |
| E-APP-B01-1ST-1000 |  | Approval for Col. & Walls Conc. Dim. & RFT DWGs (B01) (1st) | 10d | 2026-01-12 | 2026-01-22 | E-SUB-B01-1ST-1000 SS+12d, E-SUB-B01-1ST-1000 FF+10d | 79d | 116d | DA | Eng-App |
| E-APP-B01-1ST-1010 |  | Approval for Stairs Conc. Dim. & RFT DWGs (B01) (1st) | 10d | 2026-01-12 | 2026-01-22 | E-SUB-B01-1ST-1010 SS+12d, E-SUB-B01-1ST-1010 FF+10d | 91d | 128d | DA | Eng-App |
| E-APP-B01-1ST-1020 |  | Approval for Beams Conc. Dim. & RFT DWGs (B01) (1st) | 10d | 2026-02-03 | 2026-02-14 | E-SUB-B01-1ST-1020 SS+12d, E-SUB-B01-1ST-1020 FF+10d | 73d | 110d | DA | Eng-App |
| E-APP-B01-1ST-1030 |  | Approval for Slabs Conc. Dim. & RFT DWGs (B01) (1st) | 10d | 2026-02-05 | 2026-02-16 | E-SUB-B01-1ST-1030 SS+12d, E-SUB-B01-1ST-1030 FF+10d | 71d | 108d | DA | Eng-App |
|  | 2ndF | **2nd Floor** |  | 2026-01-12 | 2026-02-17 |  |  |  |  |  |
| E-APP-B01-2ND-1000 |  | Approval for Col. & Walls Conc. Dim. & RFT DWGs (B01) (2nd) | 10d | 2026-01-12 | 2026-01-22 | E-SUB-B01-2ND-1000 SS+12d, E-SUB-B01-2ND-1000 FF+10d | 113d | 150d | DA | Eng-App |
| E-APP-B01-2ND-1010 |  | Approval for Stairs Conc. Dim. & RFT DWGs (B01) (2nd) | 10d | 2026-01-12 | 2026-01-22 | E-SUB-B01-2ND-1010 SS+12d, E-SUB-B01-2ND-1010 FF+10d | 125d | 162d | DA | Eng-App |
| E-APP-B01-2ND-1020 |  | Approval for Beams Conc. Dim. & RFT DWGs (B01) (2nd) | 10d | 2026-02-03 | 2026-02-14 | E-SUB-B01-2ND-1020 SS+12d, E-SUB-B01-2ND-1020 FF+10d | 107d | 144d | DA | Eng-App |
| E-APP-B01-2ND-1030 |  | Approval for Slabs Conc. Dim. & RFT DWGs (B01) (2nd) | 10d | 2026-02-07 | 2026-02-17 | E-SUB-B01-2ND-1030 SS+12d, E-SUB-B01-2ND-1030 FF+10d | 104d | 141d | DA | Eng-App |
|  | 3rdF | **3rd Floor** |  | 2026-01-12 | 2026-02-17 |  |  |  |  |  |
| E-APP-B01-3ED-1000 |  | Approval for Col. & Walls Conc. Dim. & RFT DWGs (B01) (3rd) | 10d | 2026-01-12 | 2026-01-22 | E-SUB-B01-3RD-1000 SS+12d, E-SUB-B01-3RD-1000 FF+10d | 144d | 181d | DA | Eng-App |
| E-APP-B01-3ED-1010 |  | Approval for Stairs Conc. Dim. & RFT DWGs (B01) (3rd) | 10d | 2026-01-12 | 2026-01-22 | E-SUB-B01-3RD-1010 SS+12d, E-SUB-B01-3RD-1010 FF+10d | 144d | 181d | DA | Eng-App |
| E-APP-B01-3ED-1020 |  | Approval for Beams Conc. Dim. & RFT DWGs (B01) (3rd) | 10d | 2026-02-03 | 2026-02-14 | E-SUB-B01-3RD-1020 SS+12d, E-SUB-B01-3RD-1020 FF+10d | 126d | 163d | DA | Eng-App |
| E-APP-B01-3ED-1030 |  | Approval for Slabs Conc. Dim. & RFT DWGs (B01) (3rd) | 10d | 2026-02-07 | 2026-02-17 | E-SUB-B01-3RD-1030 SS+12d, E-SUB-B01-3RD-1030 FF+10d | 123d | 160d | DA | Eng-App |
|  | 4thF | **4th Floor** |  | 2026-01-12 | 2026-02-26 |  |  |  |  |  |
| E-APP-B01-4TH-1000 |  | Approval for Col. & Walls Conc. Dim. & RFT DWGs (B01) (4th) | 10d | 2026-01-12 | 2026-01-22 | E-SUB-B01-4TH-1000 SS+12d, E-SUB-B01-4TH-1000 FF+10d | 177d | 214d | DA | Eng-App |
| E-APP-B01-4TH-1010 |  | Approval for Stairs Conc. Dim. & RFT DWGs (B01) (4th) | 10d | 2026-01-12 | 2026-01-22 | E-SUB-B01-4TH-1010 SS+12d, E-SUB-B01-4TH-1010 FF+10d | 177d | 214d | DA | Eng-App |
| E-APP-B01-4TH-1020 |  | Approval for Beams Conc. Dim. & RFT DWGs (B01) (4th) | 10d | 2026-02-12 | 2026-02-23 | E-SUB-B01-4TH-1020 SS+12d, E-SUB-B01-4TH-1020 FF+10d | 151d | 188d | DA | Eng-App |
| E-APP-B01-4TH-1030 |  | Approval for Slabs Conc. Dim. & RFT DWGs (B01) (4th) | 10d | 2026-02-16 | 2026-02-26 | E-SUB-B01-4TH-1030 SS+12d, E-SUB-B01-4TH-1030 FF+10d | 148d | 185d | DA | Eng-App |
|  | 5thF | **5th Floor** |  | 2026-01-12 | 2026-03-08 |  |  |  |  |  |
| E-APP-B01-5TH-1000 |  | Approval for Col. & Walls Conc. Dim. & RFT DWGs (B01) (5th) | 10d | 2026-01-12 | 2026-01-22 | E-SUB-B01-5TH-1000 SS+12d, E-SUB-B01-5TH-1000 FF+10d | 212d | 249d | DA | Eng-App |
| E-APP-B01-5TH-1010 |  | Approval for Stairs Conc. Dim. & RFT DWGs (B01) (5th) | 10d | 2026-01-12 | 2026-01-22 | E-SUB-B01-5TH-1010 SS+12d, E-SUB-B01-5TH-1010 FF+10d | 223d | 260d | DA | Eng-App |
| E-APP-B01-5TH-1020 |  | Approval for Beams Conc. Dim. & RFT DWGs (B01) (5th) | 10d | 2026-02-22 | 2026-03-04 | E-SUB-B01-5TH-1020 SS+12d, E-SUB-B01-5TH-1020 FF+10d | 189d | 226d | DA | Eng-App |
| E-APP-B01-5TH-1030 |  | Approval for Slabs Conc. Dim. & RFT DWGs (B01) (5th) | 10d | 2026-02-25 | 2026-03-08 | E-SUB-B01-5TH-1030 SS+12d, E-SUB-B01-5TH-1030 FF+10d | 186d | 223d | DA | Eng-App |

| ID | WBS | Activity | Duration | Start | Finish | Predecessors | Complete | Planned start | Planned finish | Total float | Free float | Work Type | BOQ Division |
| --- | --- | --- | --- | --- | --- | --- | --- | --- | --- | --- | --- | --- | --- |
|  | 6thF | **6th Floor** |  | 2026-01-12 | 2026-03-22 |  |  |  |  |  |  |  |  |
| E-APP-B01-6TH-1000 |  | Approval for Col. & Walls Conc. Dim. & RFT DWGs (B01) (6th) | 10d | 2026-01-12 | 2026-01-22 | E-SUB-B01-6TH-1000 SS+12d, E-SUB-B01-6TH-1000 FF+10d |  |  |  | 241d | 278d | DA | Eng-App |
| E-APP-B01-6TH-1010 |  | Approval for Stairs Conc. Dim. & RFT DWGs (B01) (6th) | 10d | 2026-01-12 | 2026-01-22 | E-SUB-B01-6TH-1010 SS+12d, E-SUB-B01-6TH-1010 FF+10d |  |  |  | 253d | 290d | DA | Eng-App |
| E-APP-B01-6TH-1020 |  | Approval for Beams Conc. Dim. & RFT DWGs (B01) (6th) | 10d | 2026-03-03 | 2026-03-14 | E-SUB-B01-6TH-1020 SS+12d, E-SUB-B01-6TH-1020 FF+10d |  |  |  | 211d | 248d | DA | Eng-App |
| E-APP-B01-6TH-1030 |  | Approval for Slabs Conc. Dim. & RFT DWGs (B01) (6th) | 10d | 2026-03-07 | 2026-03-22 | E-SUB-B01-6TH-1030 SS+12d, E-SUB-B01-6TH-1030 FF+10d |  |  |  | 208d | 245d | DA | Eng-App |
|  | 7thF | **7th Floor** |  | 2026-01-12 | 2026-04-01 |  |  |  |  |  |  |  |  |
| E-APP-B01-7TH-1000 |  | Approval for Col. & Walls Conc. Dim. & RFT DWGs (B01) (7th) | 10d | 2026-01-12 | 2026-01-22 | E-SUB-B01-7TH-1000 SS+12d, E-SUB-B01-7TH-1000 FF+10d |  |  |  | 270d | 307d | DA | Eng-App |
| E-APP-B01-7TH-1010 |  | Approval for Stairs Conc. Dim. & RFT DWGs (B01) (7th) | 10d | 2026-01-12 | 2026-01-22 | E-SUB-B01-7TH-1010 SS+12d, E-SUB-B01-7TH-1010 FF+10d |  |  |  | 281d | 318d | DA | Eng-App |
| E-APP-B01-7TH-1020 |  | Approval for Beams Conc. Dim. & RFT DWGs (B01) (7th) | 10d | 2026-03-14 | 2026-03-29 | E-SUB-B01-7TH-1020 SS+12d, E-SUB-B01-7TH-1020 FF+10d |  |  |  | 230d | 267d | DA | Eng-App |
| E-APP-B01-7TH-1030 |  | Approval for Slabs Conc. Dim. & RFT DWGs (B01) (7th) | 10d | 2026-03-22 | 2026-04-01 | E-SUB-B01-7TH-1030 SS+12d, E-SUB-B01-7TH-1030 FF+10d |  |  |  | 227d | 264d | DA | Eng-App |
|  | 8thF | **8th Floor** |  | 2026-01-12 | 2026-04-16 |  |  |  |  |  |  |  |  |
| E-APP-B01-8TH-1000 |  | Approval for Col. & Walls Conc. Dim. & RFT DWGs (B01) (8th) | 10d | 2026-01-12 | 2026-01-22 | E-SUB-B01-8TH-1000 SS+12d, E-SUB-B01-8TH-1000 FF+10d |  |  |  | 297d | 334d | DA | Eng-App |
| E-APP-B01-8TH-1010 |  | Approval for Stairs Conc. Dim. & RFT DWGs (B01) (8th) | 10d | 2026-01-12 | 2026-01-22 | E-SUB-B01-8TH-1010 SS+12d, E-SUB-B01-8TH-1010 FF+10d |  |  |  | 307d | 344d | DA | Eng-App |
| E-APP-B01-8TH-1020 |  | Approval for Beams Conc. Dim. & RFT DWGs (B01) (8th) | 10d | 2026-04-01 | 2026-04-12 | E-SUB-B01-8TH-1020 SS+12d, E-SUB-B01-8TH-1020 FF+10d |  |  |  | 244d | 281d | DA | Eng-App |
| E-APP-B01-8TH-1030 |  | Approval for Slabs Conc. Dim. & RFT DWGs (B01) (8th) | 10d | 2026-04-05 | 2026-04-16 | E-SUB-B01-8TH-1030 SS+12d, E-SUB-B01-8TH-1030 FF+10d |  |  |  | 241d | 278d | DA | Eng-App |
|  | RF | **Roof Floor** |  | 2026-01-12 | 2026-04-25 |  |  |  |  |  |  |  |  |
| E-APP-B01-RF-1000 |  | Approval for Col. & Walls Conc. Dim. & RFT DWGs (B01) (RF) | 10d | 2026-01-12 | 2026-01-22 | E-SUB-B01-RF-1000 SS+12d, E-SUB-B01-RF-1000 FF+10d |  |  |  | 323d | 360d | DA | Eng-App |
| E-APP-B01-RF-1020 |  | Approval for Beams Conc. Dim. & RFT DWGs (B01) (RF) | 10d | 2026-01-12 | 2026-01-22 | E-SUB-B01-RF-1020 SS+12d, E-SUB-B01-RF-1020 FF+10d |  |  |  | 327d | 364d | DA | Eng-App |
| E-APP-B01-RF-1010 |  | Approval for Slabs Conc. Dim. & RFT DWGs (B01) (RF) | 10d | 2026-04-14 | 2026-04-25 | E-SUB-B01-RF-1010 SS+12d, E-SUB-B01-RF-1010 FF+10d |  |  |  | 254d | 291d | DA | Eng-App |
|  | B02 | **B02** |  | 2025-09-25 | 2026-04-25 |  |  |  |  |  |  |  |  |
|  | SUB | **Substructre** |  | 2025-09-25 | 2026-04-25 |  |  |  |  |  |  |  |  |
|  | 1 | **Replacement** |  | 2025-09-25 | 2025-10-07 |  |  |  |  |  |  |  |  |
| E-APP-B02-REP-1000 |  | Approval for General Replacement Plan & Typical Sections for Replacement / Backfilling DWGs (B02) | 10d | 2025-09-25 A | 2025-10-07 A | E-SUB-B02-REP-1000 SS+12d, E-SUB-B02-REP-1000 FF+10d | 100% |  |  |  |  |  | Eng-App |
|  | F | **Footing** |  | 2025-12-01 | 2025-12-11 |  |  |  |  |  |  |  |  |
| E-APP-B02-FOOT-1000 |  | Approval for PC Raft Conc. Dim. DWGs (B02) (footing) | 10d | 2025-12-01 A | 2025-12-11 A | E-SUB-B02-FOOT-1000 SS+12d, E-SUB-B02-FOOT-1000 FF+10d | 100% |  |  |  |  | DA | Eng-App |
| E-APP-B02-FOOT-1010 |  | Approval for RC Raft & Footings Conc. Dim. DWGs (B02) (footing) | 10d | 2025-12-01 A | 2025-12-04 A | E-SUB-B02-FOOT-1010 SS+12d, E-SUB-B02-FOOT-1010 FF+10d | 100% | 2025-12-01 | 2025-12-11 |  |  | DA | Eng-App |
| E-APP-B02-FOOT-1020 |  | Approval for RC Raft & Footings RFT DWGs (B02) (footing) | 10d | 2025-12-01 A | 2025-12-04 A | E-SUB-B02-FOOT-1020 SS+12d, E-SUB-B02-FOOT-1020 FF+10d | 100% | 2025-12-01 | 2025-12-11 |  |  | DA | Eng-App |
| E-APP-B02-FOOT-1030 |  | Approval for Waterproofing Layout Plan (B02) | 10d | 2025-12-01 A | 2025-12-11 A | E-SUB-B02-FOOT-1030 SS+12d, E-SUB-B02-FOOT-1030 FF+10d | 100% |  |  |  |  |  | Eng-App |

| ID | WBS | Activity | Duration | Start | Finish | Predecessors | Total float | Free float | Work Type | BOQ Division |
| --- | --- | --- | --- | --- | --- | --- | --- | --- | --- | --- |
|  | 2ndB | **Basement 2** |  | 2026-01-12 | 2026-04-25 |  |  |  |  |  |
| E-APP-B02-BAS02-1000 |  | Approval for Col. & Walls Conc. Dim. & RFT DWGs (B02) (Bas 02) | 10d | 2026-01-12 | 2026-01-22 | E-SUB-B02-BAS02-1000 SS+12d, E-SUB-B02-BAS02-1000 FF+10d | -15d | 0d | DA | Eng-App |
| E-APP-B02-BAS02-1010 |  | Approval for Stairs Conc. Dim. & RFT DWGs (B02) (Bas 02) | 10d | 2026-01-12 | 2026-01-22 | E-SUB-B02-BAS02-1010 SS+12d, E-SUB-B02-BAS02-1010 FF+10d | 4d | 19d | DA | Eng-App |
| E-APP-B02-BAS02-1020 |  | Approval for Beams Conc. Dim. & RFT DWGs (B02) (Bas 02) | 10d | 2026-01-12 | 2026-01-22 | E-SUB-B02-BAS02-1020 SS+12d, E-SUB-B02-BAS02-1020 FF+10d | 2d | 17d | DA | Eng-App |
| E-APP-B02-BAS02-1030 |  | Approval for Slabs Conc. Dim. & RFT DWGs (B02) (Bas 02) | 10d | 2026-01-12 | 2026-01-22 | E-SUB-B02-BAS02-1030 SS+12d, E-SUB-B02-BAS02-1030 FF+10d | 2d | 17d | DA | Eng-App |
|  | SOG | **S.O.G** |  | 2026-04-09 | 2026-04-25 |  |  |  |  |  |
| E-APP-B02-SOG-1000 |  | Approval for S.O.G Conc. Dim. DWGs (B02) (Sog) | 10d | 2026-04-09 | 2026-04-21 | E-SUB-B02-SOG-1000 SS+12d, E-SUB-B02-SOG-1000 FF+10d | 243d | 65d | DA | Eng-App |
| E-APP-B02-SOG-1010 |  | Approval for S.O.G RFT DWGs (B02) (Sog) | 10d | 2026-04-14 | 2026-04-25 | E-SUB-B02-SOG-1010 SS+12d, E-SUB-B02-SOG-1010 FF+10d | 240d | 62d | DA | Eng-App |
|  | 1stB | **Basement 1** |  | 2026-01-12 | 2026-01-22 |  |  |  |  |  |
| E-APP-B02-BAS01-1000 |  | Approval for Col. & Walls Conc. Dim. & RFT DWGs (B02) (Bas 01) | 10d | 2026-01-12 | 2026-01-22 | E-SUB-B02-BAS01-1000 SS+12d, E-SUB-B02-BAS01-1000 FF+10d | 18d | 33d | DA | Eng-App |
| E-APP-B02-BAS01-1010 |  | Approval for Stairs Conc. Dim. & RFT DWGs (B02) (Bas 01) | 10d | 2026-01-12 | 2026-01-22 | E-SUB-B02-BAS01-1010 SS+12d, E-SUB-B02-BAS01-1010 FF+10d | 39d | 51d | DA | Eng-App |
| E-APP-B02-BAS01-1020 |  | Approval for Beams Conc. Dim. & RFT DWGs (B02) (Bas 01) | 10d | 2026-01-12 | 2026-01-22 | E-SUB-B02-BAS01-1020 SS+12d, E-SUB-B02-BAS01-1020 FF+10d | 34d | 49d | DA | Eng-App |
| E-APP-B02-BAS01-1030 |  | Approval for Slabs Conc. Dim. & RFT DWGs (B02) (Bas 01) | 10d | 2026-01-12 | 2026-01-22 | E-SUB-B02-BAS01-1030 SS+12d, E-SUB-B02-BAS01-1030 FF+10d | 34d | 49d | DA | Eng-App |
|  | SUP | **Superstructure** |  | 2026-01-12 | 2026-04-02 |  |  |  |  |  |
|  | GF | **Ground Floor** |  | 2026-01-12 | 2026-02-17 |  |  |  |  |  |
| E-APP-B02-GR-1000 |  | Approval for Col. & Walls Conc. Dim. & RFT DWGs (B02) (GF) | 10d | 2026-01-12 | 2026-01-22 | E-SUB-B02-GR-1000 SS+12d, E-SUB-B02-GR-1000 FF+10d | 55d | 66d | DA | Eng-App |
| E-APP-B02-GR-1010 |  | Approval for Stairs Conc. Dim. & RFT DWGs (B02) (GF) | 10d | 2026-01-12 | 2026-01-22 | E-SUB-B02-GR-1010 SS+12d, E-SUB-B02-GR-1010 FF+10d | 81d | 83d | DA | Eng-App |
| E-APP-B02-GR-1020 |  | Approval for Beams Conc. Dim. & RFT DWGs (B02) (GF) | 10d | 2026-02-03 | 2026-02-14 | E-SUB-B02-GR-1020 SS+12d, E-SUB-B02-GR-1020 FF+10d | 53d | 68d | DA | Eng-App |
| E-APP-B02-GR-1030 |  | Approval for Slabs Conc. Dim. & RFT DWGs (B02) (GF) | 10d | 2026-02-07 | 2026-02-17 | E-SUB-B02-GR-1030 SS+12d, E-SUB-B02-GR-1030 FF+10d | 50d | 65d | DA | Eng-App |
|  | 1stF | **1st Floor** |  | 2026-01-12 | 2026-02-17 |  |  |  |  |  |
| E-APP-B02-1ST-1000 |  | Approval for Col. & Walls Conc. Dim. & RFT DWGs (B02) (1st) | 10d | 2026-01-12 | 2026-01-22 | E-SUB-B02-1ST-1000 SS+12d, E-SUB-B02-1ST-1000 FF+10d | 113d | 115d | DA | Eng-App |
| E-APP-B02-1ST-1010 |  | Approval for Stairs Conc. Dim. & RFT DWGs (B02) (1st) | 10d | 2026-01-12 | 2026-01-22 | E-SUB-B02-1ST-1010 SS+12d, E-SUB-B02-1ST-1010 FF+10d | 128d | 130d | DA | Eng-App |
| E-APP-B02-1ST-1020 |  | Approval for Beams Conc. Dim. & RFT DWGs (B02) (1st) | 10d | 2026-02-03 | 2026-02-14 | E-SUB-B02-1ST-1020 SS+12d, E-SUB-B02-1ST-1020 FF+10d | 110d | 112d | DA | Eng-App |
| E-APP-B02-1ST-1030 |  | Approval for Slabs Conc. Dim. & RFT DWGs (B02) (1st) | 10d | 2026-02-07 | 2026-02-17 | E-SUB-B02-1ST-1030 SS+12d, E-SUB-B02-1ST-1030 FF+10d | 107d | 109d | DA | Eng-App |

| ID | WBS | Activity | Duration | Start | Finish | Predecessors | Complete | Total float | Free float | Work Type | BOQ Division |
| --- | --- | --- | --- | --- | --- | --- | --- | --- | --- | --- | --- |
|  | 2ndF | **2nd Floor** |  | 2026-01-12 | 2026-02-17 |  |  |  |  |  |  |
| E-APP-B02-2ND-1000 |  | Approval for Col. & Walls Conc. Dim. & RFT DWGs (B02) (2nd) | 10d | 2026-01-12 | 2026-01-22 | E-SUB-B02-2ND-1000 SS+12d, E-SUB-B02-2ND-1000 FF+10d |  | 160d | 162d | DA | Eng-App |
| E-APP-B02-2ND-1010 |  | Approval for Stairs Conc. Dim. & RFT DWGs (B02) (2nd) | 10d | 2026-01-12 | 2026-01-22 | E-SUB-B02-2ND-1010 SS+12d, E-SUB-B02-2ND-1010 FF+10d |  | 177d | 179d | DA | Eng-App |
| E-APP-B02-2ND-1020 |  | Approval for Beams Conc. Dim. & RFT DWGs (B02) (2nd) | 10d | 2026-02-03 | 2026-02-14 | E-SUB-B02-2ND-1020 SS+12d, E-SUB-B02-2ND-1020 FF+10d |  | 159d | 161d | DA | Eng-App |
| E-APP-B02-2ND-1030 |  | Approval for Slabs Conc. Dim. & RFT DWGs (B02) (2nd) | 10d | 2026-02-07 | 2026-02-17 | E-SUB-B02-2ND-1030 SS+12d, E-SUB-B02-2ND-1030 FF+10d |  | 156d | 158d | DA | Eng-App |
|  | 3rdF | **3rd Floor** |  | 2026-01-12 | 2026-02-26 |  |  |  |  |  |  |
| E-APP-B02-3RD-1000 |  | Approval for Col. & Walls Conc. Dim. & RFT DWGs (B02) (3rd) | 10d | 2026-01-12 | 2026-01-22 | E-SUB-B02-3RD-1000 SS+12d, E-SUB-B02-3RD-1000 FF+10d |  | 211d | 213d | DA | Eng-App |
| E-APP-B02-3RD-1010 |  | Approval for Stairs Conc. Dim. & RFT DWGs (B02) (3rd) | 10d | 2026-01-12 | 2026-01-22 | E-SUB-B02-3RD-1010 SS+12d, E-SUB-B02-3RD-1010 FF+10d |  | 228d | 230d | DA | Eng-App |
| E-APP-B02-3RD-1020 |  | Approval for Beams Conc. Dim. & RFT DWGs (B02) (3rd) | 10d | 2026-02-12 | 2026-02-23 | E-SUB-B02-3RD-1020 SS+12d, E-SUB-B02-3RD-1020 FF+10d |  | 202d | 204d | DA | Eng-App |
| E-APP-B02-3RD-1030 |  | Approval for Slabs Conc. Dim. & RFT DWGs (B02) (3rd) | 10d | 2026-02-16 | 2026-02-26 | E-SUB-B02-3RD-1030 SS+12d, E-SUB-B02-3RD-1030 FF+10d |  | 199d | 201d | DA | Eng-App |
|  | 4thF | **4th Floor** |  | 2026-01-12 | 2026-03-12 |  |  |  |  |  |  |
| E-APP-B02-4TH-1000 |  | Approval for Col. & Walls Conc. Dim. & RFT DWGs (B02) (4th) | 10d | 2026-01-12 | 2026-01-22 | E-SUB-B02-4TH-1000 SS+12d, E-SUB-B02-4TH-1000 FF+10d |  | 263d | 265d | DA | Eng-App |
| E-APP-B02-4TH-1010 |  | Approval for Stairs Conc. Dim. & RFT DWGs (B02) (4th) | 10d | 2026-01-12 | 2026-01-22 | E-SUB-B02-4TH-1010 SS+12d, E-SUB-B02-4TH-1010 FF+10d |  | 280d | 282d | DA | Eng-App |
| E-APP-B02-4TH-1020 |  | Approval for Beams Conc. Dim. & RFT DWGs (B02) (4th) | 10d | 2026-02-26 | 2026-03-09 | E-SUB-B02-4TH-1020 SS+12d, E-SUB-B02-4TH-1020 FF+10d |  | 242d | 244d | DA | Eng-App |
| E-APP-B02-4TH-1030 |  | Approval for Slabs Conc. Dim. & RFT DWGs (B02) (4th) | 10d | 2026-03-02 | 2026-03-12 | E-SUB-B02-4TH-1030 SS+12d, E-SUB-B02-4TH-1030 FF+10d |  | 239d | 241d | DA | Eng-App |
|  | RF | **Roof Floor** |  | 2026-01-12 | 2026-04-02 |  |  |  |  |  |  |
| E-APP-B02-RF-1000 |  | Approval for Col. & Walls Conc. Dim. & RFT DWGs (B02) (RF) | 10d | 2026-01-12 | 2026-01-22 | E-SUB-B02-RF-1000 SS+12d, E-SUB-B02-RF-1000 FF+10d |  | 314d | 316d | DA | Eng-App |
| E-APP-B02-RF-1010 |  | Approval for Beams Conc. Dim. & RFT DWGs (B02) (RF) | 10d | 2026-03-15 | 2026-03-30 | E-SUB-B02-RF-1010 SS+12d, E-SUB-B02-RF-1010 FF+10d |  | 270d | 272d | DA | Eng-App |
| E-APP-B02-RF-1020 |  | Approval for Slabs Conc. Dim. & RFT DWGs (B02) (RF) | 10d | 2026-03-23 | 2026-04-02 | E-SUB-B02-RF-1020 SS+12d, E-SUB-B02-RF-1020 FF+10d |  | 267d | 269d | DA | Eng-App |
|  | P01 | **Part 01** |  | 2025-10-07 | 2026-06-07 |  |  |  |  |  |  |
|  | B03 | **B03** |  | 2025-10-07 | 2026-03-14 |  |  |  |  |  |  |
|  | SUB | **Substructre** |  | 2025-10-07 | 2026-03-05 |  |  |  |  |  |  |
|  | 4 | **Replacement** |  | 2025-10-07 | 2025-10-18 |  |  |  |  |  |  |
| E-APP-B03-REP-1000 |  | Approval for General Replacement Plan & Typical Sections for Replacement / Backfilling DWGs (B03) | 10d | 2025-10-07 A | 2025-10-18 A | E-SUB-B03-REP-1000 SS, E-SUB-B03-REP-1000 FF | 100% |  |  |  | Eng-App |

| ID | WBS | Activity | Duration | Start | Finish | Predecessors | Complete | Remaining | Planned start | Planned finish | Total float | Free float | BOQ Division | Work Type |
| --- | --- | --- | --- | --- | --- | --- | --- | --- | --- | --- | --- | --- | --- | --- |
|  | 1 | **Footing** |  | 2025-11-30 | 2025-12-10 |  |  |  |  |  |  |  |  |  |
| E-APP-B03-FOOT-1000 |  | Approval for Waterproofing Layout Plan (B03) | 10d | 2025-11-30 A | 2025-12-10 A | E-SUB-B03-FOOT-1000 SS+12d, E-SUB-B03-FOOT-1000 FF+10d | 100% |  |  |  |  |  | Eng-App |  |
| E-APP-B03-FOOT-1010 |  | Approval for PC Raft Conc. Dim. DWGs (B03) (footing) | 10d | 2025-11-30 A | 2025-12-10 A | E-SUB-B03-FOOT-1010 SS+12d, E-SUB-B03-FOOT-1010 FF+10d | 100% |  |  |  |  |  | Eng-App | DA |
| E-APP-B03-FOOT-1020 |  | Approval for RC Raft & Footings Conc. Dim. DWGs (B03) (footing) | 10d | 2025-11-30 A | 2025-12-10 A | E-SUB-B03-FOOT-1020 SS+12d, E-SUB-B03-FOOT-1020 FF+10d | 100% |  |  |  |  |  | Eng-App | DA |
| E-APP-B03-FOOT-1030 |  | Approval for RC Raft & Footings RFT DWGs (B03) (footing) | 10d | 2025-11-30 A | 2025-12-10 A | E-SUB-B03-FOOT-1030 SS+12d, E-SUB-B03-FOOT-1030 FF+10d | 100% |  |  |  |  |  | Eng-App | DA |
|  | 3 | **Basement 2** |  | 2026-01-07 | 2026-03-05 |  |  |  |  |  |  |  |  |  |
| E-APP-B03-BAS02-1000 |  | Approval for Col. & Walls Conc. Dim. & RFT DWGs (B03) (Bas 02) | 10d | 2026-01-07 A | 2026-01-24 | E-SUB-B03-BAS02-1000 SS+12d, E-SUB-B03-BAS02-1000 FF+10d | 100% | 0d | 2026-04-09 | 2026-04-21 | -1d | 12d | Eng-App | DA |
| E-APP-B03-BAS02-1010 |  | Approval for Stairs Conc. Dim. & RFT DWGs (B03) (Bas 02) | 10d | 2026-02-03 | 2026-02-14 | E-SUB-B03-BAS02-1010 SS+12d, E-SUB-B03-BAS02-1010 FF+10d |  |  |  |  | 8d | 13d | Eng-App | DA |
| E-APP-B03-BAS02-1020 |  | Approval for Beams Conc. Dim. & RFT DWGs (B03) (Bas 02) | 10d | 2026-02-07 | 2026-02-17 | E-SUB-B03-BAS02-1020 SS+12d, E-SUB-B03-BAS02-1020 FF+10d |  |  |  |  | -5d | 8d | Eng-App | DA |
| E-APP-B03-BAS02-1030 |  | Approval for Slabs Conc. Dim. & RFT DWGs (B03) (Bas 02) | 10d | 2026-02-10 | 2026-02-21 | E-SUB-B03-BAS02-1030 SS+12d, E-SUB-B03-BAS02-1030 FF+10d |  |  |  |  | -8d | 5d | Eng-App | DA |
|  | 2 | **S.O.G** |  | 2026-02-19 | 2026-03-05 |  |  |  |  |  |  |  |  |  |
| E-APP-B03-SOG-1000 |  | Approval for S.O.G Conc. Dim. DWGs (B03) (Sog) | 10d | 2026-02-19 | 2026-03-02 | E-SUB-B03-SOG-1000 SS+12d, E-SUB-B03-SOG-1000 FF+10d |  |  |  |  | 283d | 39d | Eng-App | DA |
| E-APP-B03-SOG-1010 |  | Approval for S.O.G RFT DWGs (B03) (Sog) | 10d | 2026-02-23 | 2026-03-05 | E-SUB-B03-SOG-1010 SS+12d, E-SUB-B03-SOG-1010 FF+10d |  |  |  |  | 280d | 36d | Eng-App | DA |
|  | 2 | **Basement 1** |  | 2026-01-07 | 2026-02-17 |  |  |  |  |  |  |  |  |  |
| E-APP-B03-BAS01-1000 |  | Approval for Col. & Walls Conc. Dim. & RFT DWGs (B03) (Bas 01) | 10d | 2026-01-07 A | 2026-01-24 | E-SUB-B03-BAS01-1000 SS+12d, E-SUB-B03-BAS01-1000 FF+10d | 100% | 0d | 2026-04-21 | 2026-05-02 | 30d | 45d | Eng-App | DA |
| E-APP-B03-BAS01-1010 |  | Approval for Stairs Conc. Dim. & RFT DWGs (B03) (Bas 01) | 10d | 2026-01-27 | 2026-02-07 | E-SUB-B03-BAS01-1010 SS+12d, E-SUB-B03-BAS01-1010 FF+10d |  |  |  |  | 38d | 53d | Eng-App | DA |
| E-APP-B03-BAS01-1030 |  | Approval for Slabs Conc. Dim. & RFT DWGs (B03) (Bas 01) | 10d | 2026-02-03 | 2026-02-14 | E-SUB-B03-BAS01-1030 SS+12d, E-SUB-B03-BAS01-1030 FF+10d |  |  |  |  | 29d | 44d | Eng-App | DA |
| E-APP-B03-BAS01-1020 |  | Approval for Beams Conc. Dim. & RFT DWGs (B03) (Bas 01) | 10d | 2026-02-07 | 2026-02-17 | E-SUB-B03-BAS01-1020 SS+12d, E-SUB-B03-BAS01-1020 FF+10d |  |  |  |  | 26d | 41d | Eng-App | DA |
|  | SUP | **Superstructure** |  | 2026-01-07 | 2026-03-14 |  |  |  |  |  |  |  |  |  |
|  | GF | **Ground Floor** |  | 2026-01-07 | 2026-02-21 |  |  |  |  |  |  |  |  |  |
| E-APP-B03-GR-1000 |  | Approval for Col. & Walls Conc. Dim. & RFT DWGs (B03) (GF) | 10d | 2026-01-07 A | 2026-01-24 | E-SUB-B03-GR-1000 SS+12d, E-SUB-B03-GR-1000 FF+10d | 100% | 0d | 2026-04-21 | 2026-05-02 | 63d | 79d | Eng-App | DA |
| E-APP-B03-GR-1010 |  | Approval for Stairs Conc. Dim. & RFT DWGs (B03) (GF) | 10d | 2026-01-27 | 2026-02-07 | E-SUB-B03-GR-1010 SS+12d, E-SUB-B03-GR-1010 FF+10d |  |  |  |  | 65d | 81d | Eng-App | DA |
| E-APP-B03-GR-1020 |  | Approval for Beams Conc. Dim. & RFT DWGs (B03) (GF) | 10d | 2026-02-07 | 2026-02-17 | E-SUB-B03-GR-1020 SS+12d, E-SUB-B03-GR-1020 FF+10d |  |  |  |  | 54d | 70d | Eng-App | DA |
| E-APP-B03-GR-1030 |  | Approval for Slabs Conc. Dim. & RFT DWGs (B03) (GF) | 10d | 2026-02-10 | 2026-02-21 | E-SUB-B03-GR-1030 SS+12d, E-SUB-B03-GR-1030 FF+10d |  |  |  |  | 51d | 67d | Eng-App | DA |

| ID | WBS | Activity | Duration | Start | Finish | Predecessors | Complete | Remaining | Planned start | Planned finish | Total float | Free float | Work Type | BOQ Division |
| --- | --- | --- | --- | --- | --- | --- | --- | --- | --- | --- | --- | --- | --- | --- |
|  | 1stF | **1st Floor** |  | 2026-01-07 | 2026-02-21 |  |  |  |  |  |  |  |  |  |
| E-APP-B03-1ST-1000 |  | Approval for Col. & Walls Conc. Dim. & RFT DWGs (B03) (1st) | 10d | 2026-01-07 A | 2026-01-24 | E-SUB-B03-1ST-1000 SS+12d, E-SUB-B03-1ST-1000 FF+10d | 100% | 0d | 2026-04-21 | 2026-05-02 | 104d | 124d | DA | Eng-App |
| E-APP-B03-1ST-1010 |  | Approval for Stairs Conc. Dim. & RFT DWGs (B03) (1st) | 10d | 2026-01-27 | 2026-02-07 | E-SUB-B03-1ST-1010 SS+12d, E-SUB-B03-1ST-1010 FF+10d |  |  |  |  | 110d | 130d | DA | Eng-App |
| E-APP-B03-1ST-1020 |  | Approval for Beams Conc. Dim. & RFT DWGs (B03) (1st) | 10d | 2026-02-07 | 2026-02-17 | E-SUB-B03-1ST-1020 SS+12d, E-SUB-B03-1ST-1020 FF+10d |  |  |  |  | 101d | 121d | DA | Eng-App |
| E-APP-B03-1ST-1030 |  | Approval for Slabs Conc. Dim. & RFT DWGs (B03) (1st) | 10d | 2026-02-10 | 2026-02-21 | E-SUB-B03-1ST-1030 SS+12d, E-SUB-B03-1ST-1030 FF+10d |  |  |  |  | 98d | 118d | DA | Eng-App |
|  | 2ndF | **2nd Floor** |  | 2026-01-07 | 2026-02-21 |  |  |  |  |  |  |  |  |  |
| E-APP-B03-2ND-1000 |  | Approval for Col. & Walls Conc. Dim. & RFT DWGs (B03) (2nd) | 10d | 2026-01-07 A | 2026-01-24 | E-SUB-B03-2ND-1000 SS+12d, E-SUB-B03-2ND-1000 FF+10d | 100% | 0d | 2026-04-21 | 2026-05-02 | 159d | 179d | DA | Eng-App |
| E-APP-B03-2ND-1010 |  | Approval for Stairs Conc. Dim. & RFT DWGs (B03) (2nd) | 10d | 2026-01-27 | 2026-02-07 | E-SUB-B03-2ND-1010 SS+12d, E-SUB-B03-2ND-1010 FF+10d |  |  |  |  | 165d | 185d | DA | Eng-App |
| E-APP-B03-2ND-1020 |  | Approval for Beams Conc. Dim. & RFT DWGs (B03) (2nd) | 10d | 2026-02-07 | 2026-02-17 | E-SUB-B03-2ND-1020 SS+12d, E-SUB-B03-2ND-1020 FF+10d |  |  |  |  | 156d | 176d | DA | Eng-App |
| E-APP-B03-2ND-1030 |  | Approval for Slabs Conc. Dim. & RFT DWGs (B03) (2nd) | 10d | 2026-02-10 | 2026-02-21 | E-SUB-B03-2ND-1030 SS+12d, E-SUB-B03-2ND-1030 FF+10d |  |  |  |  | 153d | 173d | DA | Eng-App |
|  | 3rdF | **3rd Floor** |  | 2026-01-07 | 2026-02-21 |  |  |  |  |  |  |  |  |  |
| E-APP-B03-3RD-1000 |  | Approval for Col. & Walls Conc. Dim. & RFT DWGs (B03) (3rd) | 10d | 2026-01-07 A | 2026-01-24 | E-SUB-B03-3RD-1000 SS+12d, E-SUB-B03-3RD-1000 FF+10d | 100% | 0d | 2026-04-21 | 2026-05-02 | 212d | 233d | DA | Eng-App |
| E-APP-B03-3RD-1010 |  | Approval for Stairs Conc. Dim. & RFT DWGs (B03) (3rd) | 10d | 2026-01-27 | 2026-02-07 | E-SUB-B03-3RD-1010 SS+12d, E-SUB-B03-3RD-1010 FF+10d |  |  |  |  | 218d | 239d | DA | Eng-App |
| E-APP-B03-3RD-1020 |  | Approval for Beams Conc. Dim. & RFT DWGs (B03) (3rd) | 10d | 2026-02-07 | 2026-02-17 | E-SUB-B03-3RD-1020 SS+12d, E-SUB-B03-3RD-1020 FF+10d |  |  |  |  | 209d | 230d | DA | Eng-App |
| E-APP-B03-3RD-1030 |  | Approval for Slabs Conc. Dim. & RFT DWGs (B03) (3rd) | 10d | 2026-02-10 | 2026-02-21 | E-SUB-B03-3RD-1030 SS+12d, E-SUB-B03-3RD-1030 FF+10d |  |  |  |  | 206d | 227d | DA | Eng-App |
|  | 4thF | **4th Floor** |  | 2026-01-07 | 2026-03-03 |  |  |  |  |  |  |  |  |  |
| E-APP-B03-4TH-1000 |  | Approval for Col. & Walls Conc. Dim. & RFT DWGs (B03) (4th) | 10d | 2026-01-07 A | 2026-02-01 | E-SUB-B03-4TH-1000 SS+12d, E-SUB-B03-4TH-1000 FF+10d | 100% | 0d | 2026-04-21 | 2026-05-02 | 260d | 281d | DA | Eng-App |
| E-APP-B03-4TH-1010 |  | Approval for Stairs Conc. Dim. & RFT DWGs (B03) (4th) | 10d | 2026-02-07 | 2026-02-17 | E-SUB-B03-4TH-1010 SS+12d, E-SUB-B03-4TH-1010 FF+10d |  |  |  |  | 263d | 284d | DA | Eng-App |
| E-APP-B03-4TH-1020 |  | Approval for Beams Conc. Dim. & RFT DWGs (B03) (4th) | 10d | 2026-02-17 | 2026-02-28 | E-SUB-B03-4TH-1020 SS+12d, E-SUB-B03-4TH-1020 FF+10d |  |  |  |  | 254d | 275d | DA | Eng-App |
| E-APP-B03-4TH-1030 |  | Approval for Slabs Conc. Dim. & RFT DWGs (B03) (4th) | 10d | 2026-02-21 | 2026-03-03 | E-SUB-B03-4TH-1030 SS+12d, E-SUB-B03-4TH-1030 FF+10d |  |  |  |  | 251d | 272d | DA | Eng-App |
|  | RF | **Roof Floor** |  | 2026-01-07 | 2026-03-14 |  |  |  |  |  |  |  |  |  |
| E-APP-B03-RF-1000 |  | Approval for Col. & Walls Conc. Dim. & RFT DWGs (B03) (RF) | 10d | 2026-01-07 A | 2026-02-15 | E-SUB-B03-RF-1000 SS+12d, E-SUB-B03-RF-1000 FF+10d | 100% | 0d | 2026-04-21 | 2026-05-02 | 298d | 319d | DA | Eng-App |
| E-APP-B03-RF-1010 |  | Approval for Beams Conc. Dim. & RFT DWGs (B03) (RF) | 10d | 2026-02-28 | 2026-03-10 | E-SUB-B03-RF-1010 SS+12d, E-SUB-B03-RF-1010 FF+10d |  |  |  |  | 283d | 304d | DA | Eng-App |
| E-APP-B03-RF-1020 |  | Approval for Slabs Conc. Dim. & RFT DWGs (B03) (RF) | 10d | 2026-03-03 | 2026-03-14 | E-SUB-B03-RF-1020 SS+12d, E-SUB-B03-RF-1020 FF+10d |  |  |  |  | 280d | 301d | DA | Eng-App |

| ID | WBS | Activity | Duration | Start | Finish | Predecessors | Complete | Planned start | Planned finish | Total float | Free float | BOQ Division | Work Type |
| --- | --- | --- | --- | --- | --- | --- | --- | --- | --- | --- | --- | --- | --- |
|  | B04 | **B04** |  | 2025-10-07 | 2026-06-07 |  |  |  |  |  |  |  |  |
|  | SUB | **Substructre** |  | 2025-10-07 | 2026-04-19 |  |  |  |  |  |  |  |  |
|  | 1 | **Replacement** |  | 2025-11-11 | 2025-11-22 |  |  |  |  |  |  |  |  |
| E-APP-B04-REP-1000 |  | Approval for General Replacement Plan & Typical Sections for Replacement / Backfilling DWGs (B04) | 10d | 2025-11-11 A | 2025-11-22 A | E-SUB-B04-REP-1000 SS+12d, E-SUB-B04-REP-1000 FF+10d | 100% |  |  |  |  | Eng-App |  |
|  | F | **Footing** |  | 2025-11-30 | 2025-12-10 |  |  |  |  |  |  |  |  |
| E-APP-B04-FOOT-1000 |  | Approval for Waterproofing Layout Plan (B04) | 10d | 2025-11-30 A | 2025-12-10 A | E-SUB-B04-FOOT-1000 SS+12d, E-SUB-B04-FOOT-1000 FF+10d | 100% |  |  |  |  | Eng-App |  |
| E-APP-B04-FOOT-1010 |  | Approval for PC Raft Conc. Dim. DWGs (B04) (footing) | 10d | 2025-11-30 A | 2025-12-10 A | E-SUB-B04-FOOT-1010 SS+12d, E-SUB-B04-FOOT-1010 FF+10d | 100% |  |  |  |  | Eng-App | DA |
| E-APP-B04-FOOT-1020 |  | Approval for RC Raft & Footings Conc. Dim. DWGs (B04) (footing) | 10d | 2025-11-30 A | 2025-12-10 A | E-SUB-B04-FOOT-1020 SS+12d, E-SUB-B04-FOOT-1020 FF+10d | 100% |  |  |  |  | Eng-App | DA |
| E-APP-B04-FOOT-1030 |  | Approval for RC Raft & Footings RFT DWGs (B04) (footing) | 10d | 2025-11-30 A | 2025-12-10 A | E-SUB-B04-FOOT-1030 SS+12d, E-SUB-B04-FOOT-1030 FF+10d | 100% |  |  |  |  | Eng-App | DA |
|  | 2ndF | **Basement 2** |  | 2025-10-07 | 2026-04-19 |  |  |  |  |  |  |  |  |
| E-APP-B04-BAS02-1000 |  | Approval for Col. & Walls Conc. Dim. & RFT DWGs (B04) (Bas 02) | 10d | 2026-01-17 | 2026-01-28 | E-SUB-B04-BAS02-1000 SS+12d, E-SUB-B04-BAS02-1000 FF+10d |  |  |  | 2d | 1d | Eng-App | DA |
| E-APP-B04-BAS02-1010 |  | Approval for Stairs Conc. Dim. & RFT DWGs (B04) (Bas 02) | 10d | 2026-02-03 | 2026-02-14 | E-SUB-B04-BAS02-1010 SS+12d, E-SUB-B04-BAS02-1010 FF+10d |  |  |  | 20d | 6d | Eng-App | DA |
| E-APP-B04-BAS02-1020 |  | Approval for Ramps Conc. Dim. & RFT DWGs (B04) (Bas 02) | 10d | 2026-02-07 | 2026-02-17 | E-SUB-B04-BAS02-1020 SS+12d, E-SUB-B04-BAS02-1020 FF+10d |  |  |  | 17d | 3d | Eng-App | DA |
| E-APP-B04-BAS02-1030 |  | Approval for Beams Conc. Dim. & RFT DWGs (B04) (Bas 02) | 10d | 2026-02-10 | 2026-02-21 | E-SUB-B04-BAS02-1030 SS+12d, E-SUB-B04-BAS02-1030 FF+10d |  |  |  | 0d | 3d | Eng-App | DA |
| E-APP-B04-BAS02-1040 |  | Approval for Slabs Conc. Dim. & RFT DWGs (B04) (Bas 02) | 10d | 2026-02-14 | 2026-02-24 | E-SUB-B04-BAS02-1040 SS+12d, E-SUB-B04-BAS02-1040 FF+10d |  |  |  | -3d | 0d | Eng-App | DA |
|  | WT | **Water Tank** |  | 2025-10-07 | 2025-12-11 |  |  |  |  |  |  |  |  |
| E-APP-B04-WT-1000 |  | Approval for PC Raft Conc. Dim. DWGs (B04) (Water Tank) | 10d | 2025-10-07 A | 2025-10-22 A | E-SUB-B04-WT-1000 SS+12d, E-SUB-B04-WT-1000 FF+10d | 100% | 2025-11-30 | 2025-12-10 |  |  | Eng-App | DA |
| E-APP-B04-WT-1010 |  | Approval for RC Raft Conc. Dim. DWGs (B04) (Water Tank) | 10d | 2025-11-18 A | 2025-11-29 A | E-SUB-B04-WT-1010 SS+12d, E-SUB-B04-WT-1010 FF+10d | 100% |  |  |  |  | Eng-App | DA |
| E-APP-B04-WT-1020 |  | Approval for RC Raft RFT DWGs (B04) (Water Tank) | 10d | 2025-11-22 A | 2025-12-02 A | E-SUB-B04-WT-1020 SS+12d, E-SUB-B04-WT-1020 FF+10d | 100% |  |  |  |  | Eng-App | DA |
| E-APP-B04-WT-1030 |  | Approval for Col. & Walls DWGs (B04) (Water Tank) | 10d | 2025-12-01 A | 2025-12-11 A | E-SUB-B04-WT-1030 SS+12d, E-SUB-B04-WT-1030 FF+10d | 100% | 2026-05-03 | 2026-05-13 |  |  | Eng-App | DA |
| E-APP-B04-WT-1040 |  | Approval for Slabs DWGs (B04) (Water Tank) | 10d | 2025-12-01 A | 2025-12-11 A | E-SUB-B04-WT-1040 SS+12d, E-SUB-B04-WT-1040 FF+10d | 100% | 2026-05-06 | 2026-05-17 |  |  | Eng-App | DA |
|  | SOG | **S.O.G** |  | 2026-04-04 | 2026-04-19 |  |  |  |  |  |  |  |  |
| E-APP-B04-SOG-1000 |  | Approval for S.O.G Conc. Dim. DWGs (B04) (Sog) | 10d | 2026-04-04 | 2026-04-15 | E-SUB-B04-SOG-1000 SS, E-SUB-B04-SOG-1000 FF |  |  |  | 252d | 16d | Eng-App | DA |
| E-APP-B04-SOG-1010 |  | Approval for S.O.G RFT DWGs (B04) (Sog) | 10d | 2026-04-07 | 2026-04-19 | E-SUB-B04-SOG-1010 SS+4d, E-SUB-B04-SOG-1010 FF |  |  |  | 249d | 13d | Eng-App | DA |

| ID | WBS | Activity | Duration | Start | Finish | Predecessors | Total float | Free float | Work Type | BOQ Division |
| --- | --- | --- | --- | --- | --- | --- | --- | --- | --- | --- |
|  | 1stB | **Basement 1** |  | 2026-01-17 | 2026-02-24 |  |  |  |  |  |
| E-APP-B04-BAS01-1000 |  | Approval for Col. & Walls Conc. Dim. & RFT DWGs (B04) (Bas 01) | 10d | 2026-01-17 | 2026-01-28 | E-SUB-B04-BAS01-1000 SS+12d, E-SUB-B04-BAS01-1000 FF+10d | 34d | 37d | DA | Eng-App |
| E-APP-B04-BAS01-1010 |  | Approval for Stairs Conc. Dim. & RFT DWGs (B04) (Bas 01) | 10d | 2026-02-03 | 2026-02-14 | E-SUB-B04-BAS01-1010 SS+12d, E-SUB-B04-BAS01-1010 FF+10d | 34d | 37d | DA | Eng-App |
| E-APP-B04-BAS01-1020 |  | Approval for Ramps Conc. Dim. & RFT DWGs (B04) (Bas 01) | 10d | 2026-02-07 | 2026-02-17 | E-SUB-B04-BAS01-1020 SS+12d, E-SUB-B04-BAS01-1020 FF+10d | 29d | 32d | DA | Eng-App |
| E-APP-B04-BAS01-1030 |  | Approval for Beams Conc. Dim. & RFT DWGs (B04) (Bas 01) | 10d | 2026-02-10 | 2026-02-21 | E-SUB-B04-BAS01-1030 SS+12d, E-SUB-B04-BAS01-1030 FF+10d | 26d | 29d | DA | Eng-App |
| E-APP-B04-BAS01-1040 |  | Approval for Slabs Conc. Dim. & RFT DWGs (B04) (Bas 01) | 10d | 2026-02-14 | 2026-02-24 | E-SUB-B04-BAS01-1040 SS+12d, E-SUB-B04-BAS01-1040 FF+10d | 23d | 26d | DA | Eng-App |
|  | SUP | **Superstructure** |  | 2026-01-17 | 2026-06-07 |  |  |  |  |  |
|  | GF | **Ground Floor** |  | 2026-01-17 | 2026-02-21 |  |  |  |  |  |
| E-APP-B04-GR-1000 |  | Approval for Col. & Walls Conc. Dim. & RFT DWGs (B04) (GF) | 10d | 2026-01-17 | 2026-01-28 | E-SUB-B04-GR-1000 SS+12d, E-SUB-B04-GR-1000 FF+10d | 62d | 65d | DA | Eng-App |
| E-APP-B04-GR-1010 |  | Approval for Stairs Conc. Dim. & RFT DWGs (B04) (GF) | 10d | 2026-02-03 | 2026-02-14 | E-SUB-B04-GR-1010 SS+12d, E-SUB-B04-GR-1010 FF+10d | 62d | 64d | DA | Eng-App |
| E-APP-B04-GR-1020 |  | Approval for Beams Conc. Dim. & RFT DWGs (B04) (GF) | 10d | 2026-02-07 | 2026-02-17 | E-SUB-B04-GR-1020 SS+12d, E-SUB-B04-GR-1020 FF+10d | 56d | 59d | DA | Eng-App |
| E-APP-B04-GR-1030 |  | Approval for Slabs Conc. Dim. & RFT DWGs (B04) (GF) | 10d | 2026-02-10 | 2026-02-21 | E-SUB-B04-GR-1030 SS+12d, E-SUB-B04-GR-1030 FF+10d | 53d | 56d | DA | Eng-App |
|  | 1stF | **1st Floor** |  | 2026-01-17 | 2026-02-21 |  |  |  |  |  |
| E-APP-B04-1ST-1000 |  | Approval for Col. & Walls Conc. Dim. & RFT DWGs (B04) (1st) | 10d | 2026-01-17 | 2026-01-28 | E-SUB-B04-1ST-1000 SS+12d, E-SUB-B04-1ST-1000 FF+10d | 89d | 112d | DA | Eng-App |
| E-APP-B04-1ST-1010 |  | Approval for Stairs Conc. Dim. & RFT DWGs (B04) (1st) | 10d | 2026-02-03 | 2026-02-14 | E-SUB-B04-1ST-1010 SS+12d, E-SUB-B04-1ST-1010 FF+10d | 85d | 108d | DA | Eng-App |
| E-APP-B04-1ST-1020 |  | Approval for Beams Conc. Dim. & RFT DWGs (B04) (1st) | 10d | 2026-02-07 | 2026-02-17 | E-SUB-B04-1ST-1020 SS+12d, E-SUB-B04-1ST-1020 FF+10d | 82d | 105d | DA | Eng-App |
| E-APP-B04-1ST-1030 |  | Approval for Slabs Conc. Dim. & RFT DWGs (B04) (1st) | 10d | 2026-02-10 | 2026-02-21 | E-SUB-B04-1ST-1030 SS+12d, E-SUB-B04-1ST-1030 FF+10d | 79d | 102d | DA | Eng-App |
|  | 2ndF | **2nd Floor** |  | 2026-01-17 | 2026-02-22 |  |  |  |  |  |
| E-APP-B04-2ND-1000 |  | Approval for Col. & Walls Conc. Dim. & RFT DWGs (B04) (2nd) | 10d | 2026-01-17 | 2026-01-28 | E-SUB-B04-2ND-1000 SS+12d, E-SUB-B04-2ND-1000 FF+10d | 121d | 143d | DA | Eng-App |
| E-APP-B04-2ND-1010 |  | Approval for Stairs Conc. Dim. & RFT DWGs (B04) (2nd) | 10d | 2026-02-04 | 2026-02-15 | E-SUB-B04-2ND-1010 SS+12d, E-SUB-B04-2ND-1010 FF+10d | 118d | 140d | DA | Eng-App |
| E-APP-B04-2ND-1020 |  | Approval for Beams Conc. Dim. & RFT DWGs (B04) (2nd) | 10d | 2026-02-08 | 2026-02-18 | E-SUB-B04-2ND-1020 SS+12d, E-SUB-B04-2ND-1020 FF+10d | 115d | 137d | DA | Eng-App |
| E-APP-B04-2ND-1030 |  | Approval for Slabs Conc. Dim. & RFT DWGs (B04) (2nd) | 10d | 2026-02-11 | 2026-02-22 | E-SUB-B04-2ND-1030 SS+12d, E-SUB-B04-2ND-1030 FF+10d | 112d | 134d | DA | Eng-App |
|  | 3rdF | **3rd Floor** |  | 2026-01-29 | 2026-03-08 |  |  |  |  |  |
| E-APP-B04-2RD-1000 |  | Approval for Col. & Walls Conc. Dim. & RFT DWGs (B04) (3rd) | 10d | 2026-01-29 | 2026-02-09 | E-SUB-B04-3RD-1000 SS+12d, E-SUB-B04-3RD-1000 FF+10d | 145d | 168d | DA | Eng-App |
| E-APP-B04-2RD-1010 |  | Approval for Stairs Conc. Dim. & RFT DWGs (B04) (3rd) | 10d | 2026-02-18 | 2026-03-01 | E-SUB-B04-3RD-1010 SS+12d, E-SUB-B04-3RD-1010 FF+10d | 140d | 163d | DA | Eng-App |
| E-APP-B04-2RD-1020 |  | Approval for Beams Conc. Dim. & RFT DWGs (B04) (3rd) | 10d | 2026-02-22 | 2026-03-04 | E-SUB-B04-3RD-1020 SS+12d, E-SUB-B04-3RD-1020 FF+10d | 137d | 160d | DA | Eng-App |
| E-APP-B04-2RD-1030 |  | Approval for Slabs Conc. Dim. & RFT DWGs (B04) (3rd) | 10d | 2026-02-25 | 2026-03-08 | E-SUB-B04-3RD-1030 SS+12d, E-SUB-B04-3RD-1030 FF+10d | 134d | 157d | DA | Eng-App |

| ID | WBS | Activity | Duration | Start | Finish | Predecessors | Total float | Free float | Work Type | BOQ Division |
| --- | --- | --- | --- | --- | --- | --- | --- | --- | --- | --- |
|  | 4thF | **4th Floor** |  | 2026-02-12 | 2026-03-26 |  |  |  |  |  |
| E-APP-B04-4TH-1000 |  | Approval for Col. & Walls Conc. Dim. & RFT DWGs (B04) (4th) | 10d | 2026-02-12 | 2026-02-23 | E-SUB-B04-4TH-1000 SS+12d, E-SUB-B04-4TH-1000 FF+10d | 165d | 188d | DA | Eng-App |
| E-APP-B04-4TH-1010 |  | Approval for Stairs Conc. Dim. & RFT DWGs (B04) (4th) | 10d | 2026-03-04 | 2026-03-15 | E-SUB-B04-4TH-1010 SS+12d, E-SUB-B04-4TH-1010 FF+10d | 160d | 183d | DA | Eng-App |
| E-APP-B04-4TH-1020 |  | Approval for Beams Conc. Dim. & RFT DWGs (B04) (4th) | 10d | 2026-03-08 | 2026-03-23 | E-SUB-B04-4TH-1020 SS+12d, E-SUB-B04-4TH-1020 FF+10d | 157d | 180d | DA | Eng-App |
| E-APP-B04-4TH-1030 |  | Approval for Slabs Conc. Dim. & RFT DWGs (B04) (4th) | 10d | 2026-03-11 | 2026-03-26 | E-SUB-B04-4TH-1030 SS+12d, E-SUB-B04-4TH-1030 FF+10d | 154d | 177d | DA | Eng-App |
|  | 5thF | **5th Floor** |  | 2026-03-04 | 2026-04-16 |  |  |  |  |  |
| E-APP-B04-5TH-1000 |  | Approval for Col. & Walls Conc. Dim. & RFT DWGs (B04) (5th) | 10d | 2026-03-04 | 2026-03-15 | E-SUB-B04-5TH-1000 SS+12d, E-SUB-B04-5TH-1000 FF+10d | 181d | 204d | DA | Eng-App |
| E-APP-B04-5TH-1010 |  | Approval for Stairs Conc. Dim. & RFT DWGs (B04) (5th) | 10d | 2026-03-29 | 2026-04-08 | E-SUB-B04-5TH-1010 SS+12d, E-SUB-B04-5TH-1010 FF+10d | 175d | 198d | DA | Eng-App |
| E-APP-B04-5TH-1020 |  | Approval for Beams Conc. Dim. & RFT DWGs (B04) (5th) | 10d | 2026-04-01 | 2026-04-12 | E-SUB-B04-5TH-1020 SS+12d, E-SUB-B04-5TH-1020 FF+10d | 172d | 195d | DA | Eng-App |
| E-APP-B04-5TH-1030 |  | Approval for Slabs Conc. Dim. & RFT DWGs (B04) (5th) | 10d | 2026-04-05 | 2026-04-16 | E-SUB-B04-5TH-1030 SS+12d, E-SUB-B04-5TH-1030 FF+10d | 169d | 192d | DA | Eng-App |
|  | 6thF | **6th Floor** |  | 2026-03-24 | 2026-05-02 |  |  |  |  |  |
| E-APP-B04-6TH-1000 |  | Approval for Col. & Walls Conc. Dim. & RFT DWGs (B04) (6th) | 10d | 2026-03-24 | 2026-04-04 | E-SUB-B04-6TH-1000 SS+12d, E-SUB-B04-6TH-1000 FF+10d | 198d | 221d | DA | Eng-App |
| E-APP-B04-6TH-1010 |  | Approval for Stairs Conc. Dim. & RFT DWGs (B04) (6th) | 10d | 2026-04-14 | 2026-04-25 | E-SUB-B04-6TH-1010 SS+12d, E-SUB-B04-6TH-1010 FF+10d | 189d | 212d | DA | Eng-App |
| E-APP-B04-6TH-1020 |  | Approval for Beams Conc. Dim. & RFT DWGs (B04) (6th) | 10d | 2026-04-18 | 2026-04-28 | E-SUB-B04-6TH-1020 SS+12d, E-SUB-B04-6TH-1020 FF+10d | 186d | 209d | DA | Eng-App |
| E-APP-B04-6TH-1030 |  | Approval for Slabs Conc. Dim. & RFT DWGs (B04) (6th) | 10d | 2026-04-21 | 2026-05-02 | E-SUB-B04-6TH-1030 SS+12d, E-SUB-B04-6TH-1030 FF+10d | 183d | 206d | DA | Eng-App |
|  | 7thF | **7th Floor** |  | 2026-04-08 | 2026-05-17 |  |  |  |  |  |
| E-APP-B04-7TH-1000 |  | Approval for Col. & Walls Conc. Dim. & RFT DWGs (B04) (7th) | 10d | 2026-04-08 | 2026-04-20 | E-SUB-B04-7TH-1000 SS+12d, E-SUB-B04-7TH-1000 FF+10d | 210d | 233d | DA | Eng-App |
| E-APP-B04-7TH-1010 |  | Approval for Stairs Conc. Dim. & RFT DWGs (B04) (7th) | 10d | 2026-04-29 | 2026-05-10 | E-SUB-B04-7TH-1010 SS+12d, E-SUB-B04-7TH-1010 FF+10d | 201d | 224d | DA | Eng-App |
| E-APP-B04-7TH-1020 |  | Approval for Beams Conc. Dim. & RFT DWGs (B04) (7th) | 10d | 2026-05-03 | 2026-05-13 | E-SUB-B04-7TH-1020 SS+12d, E-SUB-B04-7TH-1020 FF+10d | 198d | 221d | DA | Eng-App |
| E-APP-B04-7TH-1030 |  | Approval for Slabs Conc. Dim. & RFT DWGs (B04) (7th) | 10d | 2026-05-06 | 2026-05-17 | E-SUB-B04-7TH-1030 SS+12d, E-SUB-B04-7TH-1030 FF+10d | 195d | 218d | DA | Eng-App |
|  | 8thF | **8th Floor** |  | 2026-04-23 | 2026-06-04 |  |  |  |  |  |
| E-APP-B04-8TH-1000 |  | Approval for Col. & Walls Conc. Dim. & RFT DWGs (B04) (8th) | 10d | 2026-04-23 | 2026-05-04 | E-SUB-B04-8TH-1000 SS+12d, E-SUB-B04-8TH-1000 FF+10d | 221d | 245d | DA | Eng-App |
| E-APP-B04-8TH-1010 |  | Approval for Stairs Conc. Dim. & RFT DWGs (B04) (8th) | 10d | 2026-05-13 | 2026-05-24 | E-SUB-B04-8TH-1010 SS+12d, E-SUB-B04-8TH-1010 FF+10d | 213d | 237d | DA | Eng-App |
| E-APP-B04-8TH-1020 |  | Approval for Beams Conc. Dim. & RFT DWGs (B04) (8th) | 10d | 2026-05-17 | 2026-06-01 | E-SUB-B04-8TH-1020 SS+12d, E-SUB-B04-8TH-1020 FF+10d | 210d | 234d | DA | Eng-App |
| E-APP-B04-8TH-1030 |  | Approval for Slabs Conc. Dim. & RFT DWGs (B04) (8th) | 10d | 2026-05-20 | 2026-06-04 | E-SUB-B04-8TH-1030 SS+12d, E-SUB-B04-8TH-1030 FF+10d | 207d | 231d | DA | Eng-App |

| ID | WBS | Activity | Duration | Start | Finish | Predecessors | Complete | Planned start | Planned finish | Total float | Free float | Work Type | BOQ Division |
| --- | --- | --- | --- | --- | --- | --- | --- | --- | --- | --- | --- | --- | --- |
|  | RF | **Roof Floor** |  | 2026-04-29 | 2026-06-07 |  |  |  |  |  |  |  |  |
| E-APP-B04-RF-1000 |  | Approval for Col. & Walls Conc. Dim. & RFT DWGs (B04) (RF) | 10d | 2026-04-29 | 2026-05-10 | E-SUB-B04-RF-1000 SS+12d, E-SUB-B04-RF-1000 FF+10d |  |  |  | 238d | 262d | DA | Eng-App |
| E-APP-B04-RF-1010 |  | Approval for Beams Conc. Dim. & RFT DWGs (B04) (RF) | 10d | 2026-05-19 | 2026-06-03 | E-SUB-B04-RF-1010 SS+12d, E-SUB-B04-RF-1010 FF+10d |  |  |  | 224d | 248d | DA | Eng-App |
| E-APP-B04-RF-1020 |  | Approval for Slabs Conc. Dim. & RFT DWGs (B04) (RF) | 10d | 2026-05-23 | 2026-06-07 | E-SUB-B04-RF-1020 SS+12d, E-SUB-B04-RF-1020 FF+10d |  |  |  | 221d | 245d | DA | Eng-App |
|  | P | **Procurement** |  | 2025-09-11 | 2027-01-16 |  |  |  |  |  |  |  |  |
|  | MS | **Material Submittal** |  | 2025-09-11 | 2025-10-26 |  |  |  |  |  |  |  |  |
|  | SS | **Sample Submittal** |  | 2025-09-11 | 2025-10-14 |  |  |  |  |  |  |  |  |
| P-MS-1000 |  | Submittal for RFT Rebar | 18d | 2025-09-11 A | 2025-10-01 A | KD-MS-1000 | 100% |  |  |  |  | MS | Mat.Sub |
| P-MS-1010 |  | Submittal for Plain Concrete | 18d | 2025-09-14 A | 2025-10-04 A | KD-MS-1000 FS+3d | 100% |  |  |  |  |  | Mat.Sub |
| P-MS-1020 |  | Submittal for Soil Replacement | 18d | 2025-09-14 A | 2025-10-04 A | KD-MS-1000 FS+3d | 100% |  |  |  |  |  | Mat.Sub |
| P-MS-1030 |  | Submittal for Rc Concrete | 18d | 2025-09-21 A | 2025-10-12 A | KD-MS-1000 FS+10d | 100% |  |  |  |  |  | Mat.Sub |
| P-MS-1060 |  | Submittal for cold Crystalline waterproofing for Water tank | 18d | 2025-09-23 A | 2025-10-14 A | KD-MS-1000 FS+12d | 100% | 2025-11-30 | 2025-12-20 |  |  |  | Mat.Sub |
| P-MS-1040 |  | Submittal for Waterproofing | 18d | 2025-09-23 A | 2025-10-14 A | KD-MS-1000 FS+12d | 100% |  |  |  |  |  | Mat.Sub |
| P-MS-1050 |  | Submittal for cold applied damp-proofing | 18d | 2025-09-23 A | 2025-10-14 A | KD-MS-1000 FS+12d | 100% |  |  |  |  |  | Mat.Sub |
|  | SA | **Sample Approval** |  | 2025-10-02 | 2025-10-26 |  |  |  |  |  |  |  |  |
| P-MA-1000 |  | Approval for RFT Rebar | 10d | 2025-10-02 A | 2025-10-14 A | P-MS-1000 SS+12d, P-MS-1000 FF+10d | 100% |  |  |  |  | MA | Mat.App |
| P-MA-1010 |  | Approval for Soil Replacement | 10d | 2025-10-05 A | 2025-10-16 A | P-MS-1020 SS+12d, P-MS-1020 FF+10d | 100% |  |  |  |  |  | Mat.App |
| P-MA-1020 |  | Approval for Plain Concrete | 10d | 2025-10-05 A | 2025-10-16 A | P-MS-1010 SS+12d, P-MS-1010 FF+10d | 100% |  |  |  |  |  | Mat.App |
| P-MA-1030 |  | Approval for Rc Concrete | 10d | 2025-10-13 A | 2025-10-23 A | P-MS-1030 SS+12d, P-MS-1030 FF+10d | 100% |  |  |  |  |  | Mat.App |
| P-MA-1060 |  | Approval for cold Crystalline waterproofing for Water tank | 10d | 2025-10-15 A | 2025-10-26 A | P-MS-1060 SS+12d, P-MS-1060 FF+10d | 100% | 2025-12-21 | 2025-12-31 |  |  |  | Mat.App |
| P-MA-1040 |  | Approval for Waterproofing | 10d | 2025-10-15 A | 2025-10-26 A | P-MS-1040 SS+12d, P-MS-1040 FF+10d | 100% |  |  |  |  |  | Mat.App |
| P-MA-1050 |  | Approval for cold applied damp-proofing | 10d | 2025-10-15 A | 2025-10-26 A | P-MS-1050 SS+12d, P-MS-1050 FF+10d | 100% |  |  |  |  |  | Mat.App |
|  | PC | **Procurement Cycle** |  | 2025-09-27 | 2027-01-16 |  |  |  |  |  |  |  |  |
|  | PO | **Create POs** |  | 2025-09-27 | 2026-11-29 |  |  |  |  |  |  |  |  |
| P-MPOS-1010 |  | P.O for Soil Replacement | 2d | 2025-10-18 A | 2025-10-19 A | P-MA-1010 | 100% |  |  |  |  |  | Mat.App |
| P-MPOS-1020 |  | P.O for Plain Concrete | 2d | 2025-10-18 A | 2025-10-19 A | P-MA-1020 | 100% |  |  |  |  |  | Mat.App |
| P-MPOS-1030 |  | P.O for Rc Concrete | 2d | 2025-10-25 A | 2025-10-26 A | P-MA-1030 | 100% |  |  |  |  |  | Mat.App |
| P-MPOS-1040 |  | P.O for Waterproofing | 2d | 2025-10-27 A | 2025-10-28 A | P-MA-1040 | 100% |  |  |  |  |  | Mat.App |
| P-MPOS-1050 |  | P.O for cold applied damp-proofing | 2d | 2025-10-27 A | 2025-10-28 A | P-MA-1050 | 100% |  |  |  |  |  | Mat.App |
| P-MPOS-1060 |  | P.O for cold Crystalline waterproofing for Water tank | 2d | 2026-01-12 | 2026-01-13 | P-MA-1060 |  |  |  | 321d | 0d |  | Mat.App |

| ID | WBS | Activity | Duration | Start | Finish | Predecessors | Complete | Planned start | Planned finish | Total float | Free float | Calendar | Work Type | BOQ Division |
| --- | --- | --- | --- | --- | --- | --- | --- | --- | --- | --- | --- | --- | --- | --- |
|  | 1 | **POs for Rebar** |  | 2025-09-27 | 2026-11-29 |  |  |  |  |  |  |  |  |  |
| P-MPOS-1000 |  | P.O for Rebar Patch#1 (Footing & Water tank) | 2d | 2025-09-27 A | 2025-09-29 A | P-MA-1000 FS+3d | 100% | 2025-10-19 | 2025-10-20 |  |  |  | PO | Mat.App |
| P-MPOS-1070 |  | P.O for Rebar Patch#2 (Basement 2) | 2d | 2025-11-26 A | 2025-11-28 A | P-MA-1000 FS+34d | 100% | 2026-01-31 | 2026-02-01 |  |  |  | PO | Mat.App |
| P-MPOS-1080 |  | P.O for Rebar Patch#3 (Basement 1) | 2d | 2025-11-26 A | 2025-11-28 A | P-MA-1000 FS+70d | 100% | 2026-05-17 | 2026-05-18 |  |  |  | PO | Mat.App |
| P-MPOS-1090 |  | P.O for Rebar Patch#4 (SOG) | 2d | 2026-02-23 | 2026-02-24 | P-MA-1000 FS+110d |  |  |  | 270d | 0d |  | PO | Mat.App |
| P-MPOS-1100 |  | P.O for Rebar Patch#5 (Ground floor) | 2d | 2026-03-07 | 2026-03-08 | P-MA-1000 FS+120d |  |  |  | 6d | 0d |  | PO | Mat.App |
| P-MPOS-1110 |  | P.O for Rebar Patch#6 (1st floor) | 2d | 2026-04-04 | 2026-04-05 | P-MA-1000 FS+140d |  |  |  | 21d | 0d |  | PO | Mat.App |
| P-MPOS-1120 |  | P.O for Rebar Patch#7 (2nd floor) | 2d | 2026-05-10 | 2026-05-11 | P-MA-1000 FS+170d |  |  |  | 17d | 0d |  | PO | Mat.App |
| P-MPOS-1130 |  | P.O for Rebar Patch#8 (3rd floor) | 2d | 2026-06-07 | 2026-06-08 | P-MA-1000 FS+190d |  |  |  | 21d | 0d |  | PO | Mat.App |
| P-MPOS-1140 |  | P.O for Rebar Patch#9 (4th floor) | 2d | 2026-07-04 | 2026-07-05 | P-MA-1000 FS+212d |  |  |  | 21d | 0d |  | PO | Mat.App |
| P-MPOS-1150 |  | P.O for Rebar Patch#10 (5th floor) | 2d | 2026-08-06 | 2026-08-08 | P-MA-1000 FS+240d |  |  |  | 21d | 0d |  | PO | Mat.App |
| P-MPOS-1160 |  | P.O for Rebar Patch#11 (6th floor) | 2d | 2026-09-02 | 2026-09-03 | P-MA-1000 FS+262d |  |  |  | 22d | 0d |  | PO | Mat.App |
| P-MPOS-1170 |  | P.O for Rebar Patch#12 (7th floor) | 2d | 2026-10-05 | 2026-10-07 | P-MA-1000 FS+290d |  |  |  | 22d | 0d |  | PO | Mat.App |
| P-MPOS-1180 |  | P.O for Rebar Patch#13 (8th floor) | 2d | 2026-10-29 | 2026-10-31 | P-MA-1000 FS+310d |  |  |  | 21d | 0d |  | PO | Mat.App |
| P-MPOS-1190 |  | P.O for Rebar Patch#14 (Roof floor) | 2d | 2026-11-28 | 2026-11-29 | P-MA-1000 FS+335d |  |  |  | 22d | 0d |  | PO | Mat.App |
|  | DS | **Delivery to Site** |  | 2025-10-16 | 2027-01-16 |  |  |  |  |  |  |  |  |  |
| P-MDEL-1020 |  | Delivery for Plain Concrete | 2d | 2025-10-16 A | 2025-10-16 A | P-MPOS-1020 FS+1d | 100% | 2025-11-30 | 2025-12-01 |  |  | Roya-The Big Project Phase 01 (B1-4)7 days |  | Del |
| P-MDEL-1010 |  | Delivery for Soil Replacement | 2d | 2025-10-17 A | 2025-10-19 A | P-MPOS-1010 FS+6d | 100% | 2025-11-30 | 2025-12-01 |  |  | Roya-The Big Project Phase 01 (B1-4)7 days |  | Del |
| P-MDEL-1030 |  | Delivery for Rc Concrete | 17d | 2025-11-30 A | 2025-11-30 A | P-MPOS-1030 | 100% | 2025-11-30 | 2025-12-16 |  |  | Roya-The Big Project Phase 01 (B1-4)7 days |  | Del |
| P-MDEL-1040 |  | Delivery for Waterproofing | 28d | 2025-11-30 A | 2025-12-10 A | P-MPOS-1040 | 100% | 2025-11-30 | 2025-12-27 |  |  | Roya-The Big Project Phase 01 (B1-4)7 days |  | Del |
| P-MDEL-1050 |  | Delivery for cold applied damp-proofing | 49d | 2026-01-12 | 2026-03-01 | P-MPOS-1050 |  |  |  | 299d | 0d | Roya-The Big Project Phase 01 (B1-4)7 days |  | Del |
| P-MDEL-1060 |  | Delivery for cold Crystalline waterproofing for Water tank | 67d | 2026-02-19 | 2026-04-26 | P-MPOS-1060 FS+30d |  |  |  | 396d |  | Roya-The Big Project Phase 01 (B1-4)7 days |  | Del |
|  | DR | **Delivery for Rebar** |  | 2025-10-28 | 2027-01-16 |  |  |  |  |  |  |  |  |  |
| P-MDEL-1000 |  | Delivery for Rebar Patch#1 (Footing & Water tank) | 2d | 2025-10-28 A | 2025-12-09 A | P-MPOS-1000 FS+10d | 100% | 2025-12-31 | 2026-01-01 |  |  | Roya-The Big Project Phase 01 (B1-4)7 days | MD | Del |
| P-MDEL-1160 |  | Delivery for Rebar Patch#3 (Basement 1) | 2d | 2026-01-12 | 2026-01-13 | P-MPOS-1080 FS+3d |  |  |  | 26d | 49d | Roya-The Big Project Phase 01 (B1-4)7 days |  | Del |
| P-MDEL-1170 |  | Delivery for Rebar Patch#2 (Basement 2) | 2d | 2026-01-12 | 2026-01-13 | P-MPOS-1070 |  |  |  | -20d | 10d | Roya-The Big Project Phase 01 (B1-4)7 days |  | Del |
| P-MDEL-1150 |  | Delivery for Rebar Patch#4 (SOG) | 2d | 2026-02-25 | 2026-02-26 | P-MPOS-1090 |  |  |  | 331d | 55d | Roya-The Big Project Phase 01 (B1-4)7 days |  | Del |
| P-MDEL-1130 |  | Delivery for Rebar Patch#5 (Ground floor) | 2d | 2026-03-09 | 2026-03-10 | P-MPOS-1100 |  |  |  | 11d | 38d | Roya-The Big Project Phase 01 (B1-4)7 days |  | Del |
| P-MDEL-1120 |  | Delivery for Rebar Patch#6 (1st floor) | 2d | 2026-04-06 | 2026-04-07 | P-MPOS-1110 |  |  |  | 25d | 71d | Roya-The Big Project Phase 01 (B1-4)7 days |  | Del |
| P-MDEL-1110 |  | Delivery for Rebar Patch#7 (2nd floor) | 2d | 2026-05-20 | 2026-05-21 | P-MPOS-1120 FS+7d |  |  |  | 25d | 67d | Roya-The Big Project Phase 01 (B1-4)7 days |  | Del |
| P-MDEL-1100 |  | Delivery for Rebar Patch#8 (3rd floor) | 2d | 2026-06-28 | 2026-06-29 | P-MPOS-1130 FS+16d |  |  |  | 25d | 69d | Roya-The Big Project Phase 01 (B1-4)7 days |  | Del |
| P-MDEL-1090 |  | Delivery for Rebar Patch#9 (4th floor) | 2d | 2026-08-05 | 2026-08-06 | P-MPOS-1140 FS+25d |  |  |  | 26d | 71d | Roya-The Big Project Phase 01 (B1-4)7 days |  | Del |
| P-MDEL-1080 |  | Delivery for Rebar Patch#10 (5th floor) | 2d | 2026-09-16 | 2026-09-17 | P-MPOS-1150 FS+32d |  |  |  | 26d | 67d | Roya-The Big Project Phase 01 (B1-4)7 days |  | Del |
| P-MDEL-1070 |  | Delivery for Rebar Patch#11 (6th floor) | 2d | 2026-10-20 | 2026-10-21 | P-MPOS-1160 FS+38d |  |  |  | 26d | 68d | Roya-The Big Project Phase 01 (B1-4)7 days |  | Del |
| P-MDEL-1190 |  | Delivery for Rebar Patch#12 (7th floor) | 2d | 2026-11-23 | 2026-11-24 | P-MPOS-1170 FS+39d |  |  |  | 26d | 66d | Roya-The Big Project Phase 01 (B1-4)7 days |  | Del |
| P-MDEL-1180 |  | Delivery for Rebar Patch#13 (8th floor) | 2d | 2026-12-27 | 2026-12-28 | P-MPOS-1180 FS+48d |  |  |  | 25d | 60d | Roya-The Big Project Phase 01 (B1-4)7 days |  | Del |
| P-MDEL-1200 |  | Delivery for Rebar Patch#14 (Roof floor) | 2d | 2027-01-15 | 2027-01-16 | P-MPOS-1190 FS+39d |  |  |  | 27d | 29d | Roya-The Big Project Phase 01 (B1-4)7 days |  | Del |

| ID | WBS | Activity | Duration | Start | Finish | Predecessors | Complete | Planned start | Planned finish | Total float | Free float | Calendar | Resources | Cost | Actual cost | Work Type | Building Name | Floor Name | Activities | Buildings NO. | Site Cinstruction | BOQ Division |
| --- | --- | --- | --- | --- | --- | --- | --- | --- | --- | --- | --- | --- | --- | --- | --- | --- | --- | --- | --- | --- | --- | --- |
|  | CON | **Construction** |  | 2025-10-05 | 2027-04-29 |  |  |  |  |  |  |  |  |  |  |  |  |  |  |  |  |  |
|  | EW | **Earth Works** |  | 2025-10-10 | 2025-12-03 |  |  |  |  |  |  |  |  |  |  |  |  |  |  |  |  |  |
|  | B01 | **B01** |  | 2025-10-30 | 2025-11-29 |  |  |  |  |  |  |  |  |  |  |  |  |  |  |  |  |  |
| CON-EW-B01-1000 |  | Soil Replacement & Leveling & Compaction (B01) | 15d | 2025-10-30 A | 2025-11-14 A | KD-MOB-1020 SS+9d, E-APP-B01-REP-1000 FS+5d, P-MDEL-1010 FS+5d | 100% | 2025-11-03 | 2025-11-19 |  |  |  | loader [40 h]; Labor [20 h]; TRUCK [80 h]; the big cash [2379405]; Big Quantity Replacment [4176.59]; Compactor [20 h] | 2,379,405.49 | 2,379,405.49 | SW | B01 | SL | RW | B01 | RPC | EW |
| CON-EW-B01-1010 |  | Soil Compaction Test (B01) | 15d | 2025-11-15 A | 2025-11-29 A | CON-EW-B01-1000 SS+3d, CON-EW-B01-1000 FF | 100% | 2025-11-06 | 2025-11-23 |  |  |  | Compactor [20 h]; Labor [20 h]; the big cash [264378] | 264,378.39 | 264,378.39 | SW | B01 | SL | RW | B01 | RPC | EW |
|  | B02 | **B02** |  | 2025-10-30 | 2025-11-29 |  |  |  |  |  |  |  |  |  |  |  |  |  |  |  |  |  |
| CON-EW-B02-1000 |  | Soil Replacement & Leveling & Compaction (B02) | 20d | 2025-10-30 A | 2025-11-10 A | E-APP-B02-REP-1000 FS+6d, P-MDEL-1010 FS+3d, CON-EW-B01-1000 SS+8d | 100% | 2025-11-30 | 2025-12-22 |  |  |  | Labor [20 h]; loader [40 h]; TRUCK [80 h]; the big cash [1268401]; Big Quantity Replacment [2226.44]; Compactor [20 h] | 1,268,401.09 | 1,268,401.09 | SW | B02 | SL | RW | B02 | RPC | EW |
| CON-EW-B02-1010 |  | Soil Compaction Test (B02) | 20d | 2025-11-15 A | 2025-11-29 A | CON-EW-B02-1000 SS+3d, CON-EW-B02-1000 FF | 100% | 2025-12-03 | 2025-12-25 |  |  |  | Labor [20 h]; Compactor [20 h]; the big cash [140933] | 140,933.45 | 140,933.45 | SW | B02 | SL | RW | B02 | RPC | EW |
|  | B03 | **B03** |  | 2025-10-10 | 2025-12-03 |  |  |  |  |  |  |  |  |  |  |  |  |  |  |  |  |  |
| CON-EW-B03-1000 |  | Soil Replacement & Leveling & Compaction (B03) | 20d | 2025-10-10 A | 2025-11-01 A | E-APP-B03-REP-1000 FS+5d, P-MDEL-1010 FS+10d, CON-EW-B02-1000 SS+14d | 100% | 2025-12-31 | 2026-01-24 |  |  |  | Labor [20 h]; loader [40 h]; TRUCK [80 h]; the big cash [1375892]; Big Quantity Replacment [2415.12]; Compactor [20 h] | 1,375,892.03 | 1,375,892.03 | SW | B03 | SL | RW | B03 | RPC | EW |
| CON-EW-B03-1010 |  | Soil Compaction Test (B03) | 20d | 2025-11-20 A | 2025-12-03 A | CON-EW-B03-1000 SS+3d, CON-EW-B03-1000 FF | 100% | 2026-01-04 | 2026-01-28 |  |  |  | Labor [20 h]; Compactor [20 h]; the big cash [152877] | 152,876.89 | 152,876.89 | SW | B03 | SL | RW | B03 | RPC | EW |
|  | B04 | **B04** |  | 2025-10-10 | 2025-12-03 |  |  |  |  |  |  |  |  |  |  |  |  |  |  |  |  |  |
| CON-EW-B04-1000 |  | Soil Replacement & Leveling & Compaction (B04) | 7d | 2025-10-10 A | 2025-11-01 A | E-APP-B04-REP-1000, P-MDEL-1010 | 100% | 2026-02-28 | 2026-03-07 |  |  |  | Labor [12 h]; loader [24 h]; TRUCK [48 h]; the big cash [1812701]; Big Quantity Replacment [3181.85]; Compactor [12 h] | 1,812,701.4 | 1,812,701.4 | SW | B04 | SL | BFW | B04 | RPC | EW |
| CON-EW-B04-1010 |  | Soil Compaction Test (B04) | 7d | 2025-11-20 A | 2025-12-03 A | CON-EW-B04-1000 SS+2d, CON-EW-B04-1000 FF | 100% | 2026-03-02 | 2026-03-09 |  |  |  | Labor [12 h]; Compactor [12 h]; the big cash [201411] | 201,411.27 | 201,411.27 | SW | B04 | SL | BFW | B04 | RPC | EW |
|  | P02 | **Part 02** |  | 2025-11-26 | 2027-04-29 |  |  |  |  |  |  |  |  |  |  |  |  |  |  |  |  |  |
|  | B01 | **B01** |  | 2025-11-26 | 2027-04-29 |  |  |  |  |  |  |  |  |  |  |  |  |  |  |  |  |  |
|  | SUB | **Substructure** |  | 2025-11-26 | 2026-07-18 |  |  |  |  |  |  |  |  |  |  |  |  |  |  |  |  |  |
|  | F | **Footing** |  | 2025-11-26 | 2026-03-07 |  |  |  |  |  |  |  |  |  |  |  |  |  |  |  |  |  |
| CON-B01-FOOT-1000 |  | Shuttering for PC Raft (B01) (footing) | 1d | 2025-11-26 A | 2025-11-30 A | CON-EW-B01-1010 FS+2d, E-APP-B01-FOOT-1000 FS+2d | 100% | 2025-11-26 | 2025-11-26 |  |  |  | Carpenter for concrete [3 h]; the big cash [796713]; Labor [3 h] | 796,713.38 | 796,713.38 | CW | B01 | Foot | SPC | B01 | PC | Con |
| CON-B01-FOOT-1010 |  | Pouring for PC Raft (B01) (footing) | 1d | 2025-11-30 A | 2025-12-01 A | CON-B01-FOOT-1000, P-MDEL-1020 | 100% | 2025-11-27 | 2025-11-27 |  |  |  | Carpenter for concrete [2 h]; the big cash [1858998]; Big Quantity Concrete [732.61] | 1,858,997.88 | 1,858,997.88 | CW | B01 | Foot | PPC | B01 | PC | Con |
| CON-B01-FOOT-1020 |  | Curing for PC Raft (B01) (footing) | 3d | 2025-12-02 A | 2025-12-10 A | CON-B01-FOOT-1010 | 100% | 2025-11-28 | 2025-11-30 |  |  | Roya-The Big Project Phase 01 (B1-4)7 days | Labor [3 h] |  |  | CW | B01 | Foot | PPC | B01 | PC | Con |
| CON-B01-FOOT-1030 |  | Waterproofing & Ins. Protection works (B01) (footing) | 2d | 2025-12-12 A | 2025-12-21 A | CON-B01-FOOT-1020 SS+3d, P-MDEL-1040, E-APP-B01-FOOT-1030, CON-B01-FOOT-1020 FF | 100% | 2025-12-28 | 2025-12-29 |  |  |  | Water Proofing Tech [6 h]; the big cash [1487912]; Big Quantity Proofing [3306.47] | 1,487,911.54 | 1,487,911.54 | CW | B01 | Foot | WP | B01 | WP | T&M |
| CON-B01-FOOT-1040 |  | Shuttering for RC Raft & Footings (B01) (footing) | 12d | 2026-01-12 | 2026-01-26 | E-APP-B01-FOOT-1010, CON-B01-FOOT-1030 |  |  |  | -38d | 0d |  | Carpenter for concrete [168 h]; the big cash [4684301]; Labor [84 h] | 4,684,300.95 |  | CW | B01 | Foot | SF | B01 | RC | Con |
| CON-B01-FOOT-1050 |  | RFT for RC Raft & Footings (B01) (footing) | 14d | 2026-01-14 | 2026-01-31 | CON-B01-FOOT-1040 SS+2d, E-APP-B01-FOOT-1020, P-MDEL-1000 |  |  |  | -35d | 0d |  | Steel Fixer [264 h]; the big cash [13016490]; Big Quantity RFT [320.45]; Labor [132 h]; loader [12 h] | 13,016,490.4 |  | CW | B01 | Foot | SFF | B01 | RC | Con |
| CON-B01-FOOT-1060 |  | Shuttering for Columns & Walls Below SOG (B01) (footing) | 8d | 2026-01-17 | 2026-01-26 | CON-B01-FOOT-1040 SS+4d, E-APP-B01-FOOT-1010 |  |  |  | -38d | 0d |  | Carpenter for concrete [16 h]; the big cash [59896.2]; Labor [8 h] | 59,896.2 |  |  |  | Foot |  | B01 | BSOG | Con |
| CON-B01-FOOT-1070 |  | RFT for Columns & Walls Below SOG (B01) (footing) | 8d | 2026-01-18 | 2026-01-27 | CON-B01-FOOT-1060 SS+1d, CON-B01-FOOT-1060 FF, E-APP-B01-FOOT-1020, P-MDEL-1000 |  |  |  | -38d | 0d |  | Steel Fixer [16 h]; the big cash [80268]; Big Quantity RFT [1.98]; Labor [8 h] | 80,268 |  |  |  | Foot |  | B01 | BSOG | Con |
| CON-B01-FOOT-1090 |  | Pouring for RC Raft & Footings (B01) (footing) | 2d | 2026-02-01 | 2026-02-02 | CON-B01-FOOT-1050, P-MDEL-1030 |  |  |  | -35d | 0d |  | Carpenter for concrete [4 h]; the big cash [10930036]; Big Quantity Concrete [2165.65] | 10,930,035.55 |  | CW | B01 | Foot | PF | B01 | RC | Con |
| CON-B01-FOOT-1080 |  | Pouring Columns & Walls Below SOG (B01) (footing) | 1d | 2026-02-05 | 2026-02-05 | CON-B01-FOOT-1070 SS+15d |  |  |  | -38d | 0d |  | Carpenter for concrete [2 h]; the big cash [139758]; Big Quantity Concrete [21.94] | 139,757.8 |  |  |  | Foot |  | B01 | BSOG | Con |
| CON-B01-FOOT-1100 |  | Curing & Deshuttering for RC Raft & Footings (B01) (footing) | 3d | 2026-02-06 | 2026-02-08 | CON-B01-FOOT-1090, CON-B01-FOOT-1080 |  |  |  | -46d | 0d | Roya-The Big Project Phase 01 (B1-4)7 days | Labor [3 h]; Carpenter for concrete [6 h] |  |  | CW | B01 | Foot | DSF | B01 | RC | Con |
| CON-B01-FOOT-1110 |  | Bitumen Ins. for RC Raft & Footings (B01) (footing) | 3d | 2026-03-02 | 2026-03-04 | P-MDEL-1050, E-APP-B01-FOOT-1030, CON-B01-FOOT-1100 |  |  |  | 243d | 0d |  | Water Proofing Tech [9 h]; the big cash [238066]; Big Quantity Bitumine [2645.18] | 238,065.85 |  | CW | B01 | Foot | WP | B01 | WP | T&M |
| CON-B01-FOOT-1120 |  | Soil Backfilling (B01) (footing) | 2d | 2026-03-05 | 2026-03-07 | CON-B01-FOOT-1110 |  |  |  | 243d | 65d |  | Labor [6 h]; loader [12 h]; the big cash [620533]; Big Quantity Backfiling [1348.98]; TRUCK [24 h]; Compactor [6 h] | 620,532.93 |  | CW | B01 | Foot | BFW | B01 | BF | EW |

| ID | WBS | Activity | Duration | Start | Finish | Predecessors | Total float | Free float | Calendar | Resources | Cost | Work Type | Building Name | Floor Name | Activities | Buildings NO. | Site Cinstruction | BOQ Division |
| --- | --- | --- | --- | --- | --- | --- | --- | --- | --- | --- | --- | --- | --- | --- | --- | --- | --- | --- |
|  | 2ndB | **Basement 2** |  | 2026-02-09 | 2026-07-18 |  |  |  |  |  |  |  |  |  |  |  |  |  |
| CON-B01-BAS02-1000 |  | Scaffolding works for Walls, Col. & Cores (B01) (Bas 02) | 7d | 2026-02-09 | 2026-02-16 | CON-B01-FOOT-1100 | -37d | 0d |  | Carpenter for concrete [21 h] |  | CW | B01 | Bsmt02 | SC | B01 | COL | Con |
| CON-B01-BAS02-1010 |  | RFT for Walls, Col. & Cores (B01) (Bas 02) | 15d | 2026-02-09 | 2026-02-25 | CON-B01-BAS02-1000 SS, CON-B01-BAS02-1000 FF, E-APP-B01-BAS02-1000, P-MDEL-1170 | -37d | 0d |  | Steel Fixer [150 h]; the big cash [1987013]; Big Quantity RFT [48.92]; Labor [75 h] | 1,987,012.6 | CW | B01 | Bsmt02 | SFC | B01 | COL | Con |
| CON-B01-BAS02-1020 |  | Shuttering for Walls, Col. & Cores (B01) (Bas 02) | 15d | 2026-02-12 | 2026-03-01 | CON-B01-BAS02-1010 SS+3d, CON-B01-BAS02-1010 FF, E-APP-B01-BAS02-1000 | -37d | 0d |  | Carpenter for concrete [150 h]; the big cash [1629350]; Labor [75 h] | 1,629,349.68 | CW | B01 | Bsmt02 | SC | B01 | COL | Con |
| CON-B01-BAS02-1030 |  | Pouring for Walls, Col. & Cores (B01) (Bas 02) | 2d | 2026-03-02 | 2026-03-03 | CON-B01-BAS02-1020, P-MDEL-1030 | -37d | 0d |  | Carpenter for concrete [4 h]; the big cash [2444025]; Big Quantity Concrete [426.34] | 2,444,024.52 | CW | B01 | Bsmt02 | PC | B01 | COL | Con |
| CON-B01-BAS02-1040 |  | Shuttering for Slabs & Beams (B01) (Bas 02) | 10d | 2026-03-04 | 2026-03-15 | E-APP-B01-BAS02-1040, E-APP-B01-BAS02-1030, CON-B01-BAS02-1030 | -37d | 0d |  | Carpenter for concrete [180 h]; the big cash [2150350]; Labor [90 h] | 2,150,349.87 | CW | B01 | Bsmt02 | SS | B01 | Slb | Con |
| CON-B01-BAS02-1050 |  | Shuttering for Stairs (B01) (Bas 02) | 8d | 2026-03-07 | 2026-03-15 | E-APP-B01-BAS02-1010, CON-B01-BAS02-1040 SS+2d | -34d | 0d |  | Carpenter for concrete [16 h]; the big cash [16099.2]; Labor [8 h] | 16,099.2 | CW | B01 | Bsmt02 | SS | B01 | STR | Con |
| CON-B01-BAS02-1060 |  | Shuttering for Ramps (B01) (Bas 02) | 10d | 2026-03-07 | 2026-03-22 | E-APP-B01-BAS02-1020, CON-B01-BAS02-1030 FS+2d | -36d | 0d |  | Carpenter for concrete [60 h]; the big cash [527475]; Labor [30 h] | 527,474.8 |  |  | Bsmt02 |  | B01 | RMP | Con |
| CON-B01-BAS02-1070 |  | RFT for Slabs & Beams (B01) (Bas 02) | 10d | 2026-03-08 | 2026-03-23 | CON-B01-BAS02-1040 SS+3d, CON-B01-BAS02-1040 FF, E-APP-B01-BAS02-1030, E-APP-B01-BAS02-1040, P-MDEL-1170 | -37d | 0d |  | Steel Fixer [140 h]; the big cash [3160337]; Big Quantity RFT [77.8]; Labor [70 h] | 3,160,336.76 | CW | B01 | Bsmt02 | SFS | B01 | Slb | Con |
| CON-B01-BAS02-1080 |  | RFT for Stairs (B01) (Bas 02) | 6d | 2026-03-09 | 2026-03-15 | CON-B01-BAS02-1050 SS+2d, CON-B01-BAS02-1050 FF, E-APP-B01-BAS02-1010, P-MDEL-1170 | -34d | 0d |  | Steel Fixer [12 h]; the big cash [32613.8]; Big Quantity RFT [0.8]; Labor [6 h] | 32,613.8 | CW | B01 | Bsmt02 | SFS | B01 | STR | Con |
| CON-B01-BAS02-1090 |  | RFT for Ramps (B01) (Bas 02) | 8d | 2026-03-09 | 2026-03-22 | CON-B01-BAS02-1060 SS+2d, CON-B01-BAS02-1060 FF, E-APP-B01-BAS02-1020, P-MDEL-1170 | -36d | 0d |  | Steel Fixer [48 h]; the big cash [1075623]; Big Quantity RFT [26.48]; Labor [24 h] | 1,075,623.24 |  |  | Bsmt02 |  | B01 | RMP | Con |
| CON-B01-BAS02-1100 |  | Pouring for Stairs (B01) (Bas 02) | 2d | 2026-03-21 | 2026-03-22 | CON-B01-BAS02-1080, P-MDEL-1030 | -34d | 0d |  | Carpenter for concrete [4 h]; the big cash [24148.8]; Big Quantity Concrete [4.3] | 24,148.8 | CW | B01 | Bsmt02 | PS | B01 | Slb | Con |
| CON-B01-BAS02-1110 |  | Pouring for Ramps (B01) (Bas 02) | 2d | 2026-03-23 | 2026-03-24 | CON-B01-BAS02-1090, P-MDEL-1030 | -36d | 0d |  | Carpenter for concrete [4 h]; the big cash [791212]; Big Quantity Concrete [137.65] | 791,212.2 |  |  | Bsmt02 |  | B01 | RMP | Con |
| CON-B01-BAS02-1130 |  | Pouring for Slabs & Beams (B01) (Bas 02) | 2d | 2026-03-24 | 2026-03-25 | CON-B01-BAS02-1070, P-MDEL-1030 | -37d | 0d |  | Carpenter for concrete [4 h]; the big cash [3225525]; Big Quantity Concrete [561.1] | 3,225,524.8 | CW | B01 | Bsmt02 | PS | B01 | Slb | Con |
| 123456 |  | Curing for Ramps & Stairs (B01) (Bas 02) | 3d | 2026-03-25 | 2026-03-27 | CON-B01-BAS02-1100, CON-B01-BAS02-1110 | -47d | 1d | Roya-The Big Project Phase 01 (B1-4)7 days | Labor [3 h] |  |  |  |  |  |  |  |  |
| CON-B01-BAS02-1120 |  | Curing for Slabs, Beams, Ramps & Stairs (B01) (Bas 02) | 3d | 2026-03-26 | 2026-03-28 | CON-B01-BAS02-1130 | -48d | 0d | Roya-The Big Project Phase 01 (B1-4)7 days | Labor [3 h] |  | CW | B01 | Bsmt02 | DS | B01 | Slb | Con |
| CON-B01-BAS02-1140 |  | Dismantling Formwork (B01) (Bas 02) | 1d | 2026-04-12 | 2026-04-12 | CON-B01-BAS02-1130 FS+14d | -41d | 0d | Roya-The Big Project Phase 01 (B1-4)7 days | Carpenter for concrete [3 h] |  | CW | B01 | Bsmt02 | DS | B01 | Slb | Con |
|  | SOG | **S.O.G** |  | 2026-06-02 | 2026-07-18 |  |  |  |  |  |  |  |  |  |  |  |  |  |
| CON-B01-SOG-1000 |  | Soil Backfilling & Compaction (B01) (Sog) | 7d | 2026-06-02 | 2026-06-09 | CON-B01-BAS02-1140 FS+50d, CON-B01-FOOT-1120 | 178d | 0d |  | loader [14 h]; Labor [7 h]; TRUCK [28 h]; the big cash [372320]; Big Quantity Backfiling [899.32]; Compactor [7 h] | 372,319.76 | CW | B01 | SOG | BFW | B01 | SOG | EW |
| CON-B01-SOG-1010 |  | Soil Compaction Test (B01) (Sog) | 7d | 2026-06-04 | 2026-06-11 | CON-B01-SOG-1000 SS+2d, CON-B01-SOG-1000 FF | 178d | 0d |  | Compactor [7 h]; Labor [7 h]; the big cash [41368.9] | 41,368.86 | CW | B01 | SOG | BFW | B01 | SOG | EW |
| CON-B01-SOG-1020 |  | DPM Layer works (B01) (Sog) | 15d | 2026-06-13 | 2026-06-29 | CON-B01-SOG-1010, P-MDEL-1040, E-APP-B01-FOOT-1030, CON-B01-SOG-1010 FF | 178d | 0d |  | Labor [15 h]; the big cash [492186] | 492,186.35 | CW | B01 | SOG |  | B01 | SOG | Con |
| CON-B01-SOG-1030 |  | Blinding Concrete works (B01) (Sog) | 12d | 2026-06-18 | 2026-07-02 | CON-B01-SOG-1020 SS+5d, CON-B01-SOG-1020 FF | 178d | 0d |  | Carpenter for concrete [12 h]; the big cash [984373] | 984,372.71 | CW | B01 | SOG | SCW | B01 | SOG | Con |
| CON-B01-SOG-1040 |  | Shuttering & RFT for S.O.G (B01) (Sog) | 15d | 2026-06-24 | 2026-07-12 | CON-B01-SOG-1030 SS+5d, CON-B01-SOG-1030 FF, E-APP-B01-SOG-1010, E-APP-B01-SOG-1000, P-MDEL-1150 | 178d | 0d |  | Carpenter for concrete [210 h]; Steel Fixer [210 h]; the big cash [1476559]; Big Quantity RFT [11.71]; Labor [210 h] | 1,476,559.06 | CW | B01 | SOG | SFCW | B01 | SOG | Con |
| CON-B01-SOG-1050 |  | Pouring for S.O.G (B01) (Sog) | 12d | 2026-07-04 | 2026-07-16 | CON-B01-SOG-1040 SS+7d, CON-B01-SOG-1040 FF, P-MDEL-1030 | 181d | 0d |  | Carpenter for concrete [24 h]; the big cash [1968745]; Big Quantity Concrete [2868.56] | 1,968,745.42 | CW | B01 | SOG | PCW | B01 | SOG | Con |
| CON-B01-SOG-1060 |  | Curing & Smoothing Surface for S.O.G (B01) (Sog) | 12d | 2026-07-07 | 2026-07-18 | CON-B01-SOG-1050 SS+3d, CON-B01-SOG-1050 FF | 252d | 300d | Roya-The Big Project Phase 01 (B1-4)7 days | Labor [12 h] |  | CW | B01 | SOG | DCW | B01 | SOG | Con |

| ID | WBS | Activity | Duration | Start | Finish | Predecessors | Total float | Free float | Calendar | Resources | Cost | Work Type | Building Name | Floor Name | Activities | Buildings NO. | Site Cinstruction | BOQ Division |
| --- | --- | --- | --- | --- | --- | --- | --- | --- | --- | --- | --- | --- | --- | --- | --- | --- | --- | --- |
|  | 1stB | **Basement 1** |  | 2026-03-29 | 2026-05-21 |  |  |  |  |  |  |  |  |  |  |  |  |  |
| CON-B01-BAS01-1000 |  | Scaffolding works for Walls, Col. & Cores (B01) (Bas 01) | 7d | 2026-03-29 | 2026-04-05 | CON-B01-BAS02-1120, 123456 | -37d | 0d |  | Carpenter for concrete [21 h] |  | CW | B01 | Bsmt01 | SC | B01 | COL | Con |
| CON-B01-BAS01-1010 |  | RFT for Walls, Col. & Cores (B01) (Bas 01) | 12d | 2026-03-29 | 2026-04-11 | CON-B01-BAS01-1000 SS, CON-B01-BAS01-1000 FF, E-APP-B01-BAS01-1000, P-MDEL-1160 | -37d | 0d |  | Steel Fixer [120 h]; the big cash [1859559]; Big Quantity RFT [45.78]; Labor [60 h] | 1,859,559.23 | CW | B01 | Bsmt01 | SFC | B01 | COL | Con |
| CON-B01-BAS01-1020 |  | Shuttering for Walls, Col. & Cores (B01) (Bas 01) | 12d | 2026-04-01 | 2026-04-15 | CON-B01-BAS01-1010 SS+3d, CON-B01-BAS01-1010 FF, E-APP-B01-BAS01-1000 | -37d | 0d |  | Carpenter for concrete [144 h]; the big cash [1525621]; Labor [72 h] | 1,525,620.61 | CW | B01 | Bsmt01 | SC | B01 | COL | Con |
| CON-B01-BAS01-1030 |  | Pouring for Walls, Col. & Cores (B01) (Bas 01) | 2d | 2026-04-16 | 2026-04-18 | CON-B01-BAS01-1020, CON-B01-BAS01-1010, P-MDEL-1030 | -37d | 0d |  | Carpenter for concrete [4 h]; the big cash [2288431]; Big Quantity Concrete [399.2] | 2,288,430.92 | CW | B01 | Bsmt01 | PC | B01 | COL | Con |
| CON-B01-BAS01-1040 |  | Shuttering for Slabs & Beams (B01) (Bas 01) | 8d | 2026-04-19 | 2026-04-27 | E-APP-B01-BAS01-1040, E-APP-B01-BAS01-1030, CON-B01-BAS01-1030 | -37d | 0d |  | Carpenter for concrete [176 h]; the big cash [2342696]; Labor [88 h] | 2,342,696.03 | CW | B01 | Bsmt01 | SS | B01 | Slb | Con |
| CON-B01-BAS01-1050 |  | Shuttering for Stairs (B01) (Bas 01) | 8d | 2026-04-21 | 2026-04-29 | CON-B01-BAS01-1040 SS+2d, E-APP-B01-BAS01-1010 | -27d | 0d |  | Carpenter for concrete [16 h]; the big cash [16099.2]; Labor [8 h] | 16,099.2 | CW | B01 | Bsmt01 | SS | B01 | STR | Con |
| CON-B01-BAS01-1060 |  | RFT for Slabs & Beams (B01) (Bas 01) | 10d | 2026-04-21 | 2026-05-02 | CON-B01-BAS01-1040 SS+2d, CON-B01-BAS01-1040 FF, CON-B01-BAS02-1140, E-APP-B01-BAS01-1030, E-APP-B01-BAS01-1040, P-MDEL-1160 | -37d | 0d |  | Steel Fixer [160 h]; the big cash [3436647]; Big Quantity RFT [84.6]; Labor [80 h] | 3,436,647.26 | CW | B01 | Bsmt01 | SFS | B01 | Slb | Con |
| CON-B01-BAS01-1070 |  | Shuttering for Ramps (B01) (Bas 01) | 8d | 2026-04-22 | 2026-04-30 | CON-B01-BAS01-1050 SS+1d, E-APP-B01-BAS01-1020 | -27d | 0d |  | Carpenter for concrete [48 h]; the big cash [527475]; Labor [24 h] | 527,474.8 |  |  | Bsmt01 |  | B01 | RMP | Con |
| CON-B01-BAS01-1080 |  | RFT for Stairs (B01) (Bas 01) | 6d | 2026-04-25 | 2026-04-30 | CON-B01-BAS01-1050 SS+3d, CON-B01-BAS01-1050 FF, E-APP-B01-BAS01-1010, P-MDEL-1160 | -25d | 0d |  | Steel Fixer [12 h]; the big cash [32613.8]; Big Quantity RFT [0.8]; Labor [6 h] | 32,613.8 | CW | B01 | Bsmt01 | SFS | B01 | STR | Con |
| CON-B01-BAS01-1090 |  | RFT for Ramps (B01) (Bas 01) | 8d | 2026-04-25 | 2026-05-03 | CON-B01-BAS01-1070 SS+2d, CON-B01-BAS01-1070 FF, E-APP-B01-BAS01-1020, P-MDEL-1160 | -27d | 0d |  | Steel Fixer [48 h]; the big cash [1075623]; Big Quantity RFT [26.48]; Labor [24 h] | 1,075,623.24 |  |  | Bsmt01 |  | B01 | RMP | Con |
| CON-B01-BAS01-1100 |  | Pouring for Stairs (B01) (Bas 01) | 2d | 2026-05-02 | 2026-05-03 | CON-B01-BAS01-1080, P-MDEL-1030 | -25d | 0d |  | Carpenter for concrete [4 h]; the big cash [24148.8]; Big Quantity Concrete [4.3] | 24,148.8 | CW | B01 | Bsmt01 | PS | B01 | STR | Con |
| CON-B01-BAS01-1110 |  | Pouring for Slabs & Beams (B01) (Bas 01) | 2d | 2026-05-03 | 2026-05-04 | CON-B01-BAS01-1060, P-MDEL-1030 | -37d | 0d |  | Carpenter for concrete [4 h]; the big cash [3514044]; Big Quantity Concrete [611.3] | 3,514,044.05 | CW | B01 | Bsmt01 | PS | B01 | Slb | Con |
| CON-B01-BAS01-1120 |  | Curing for Slabs, Beams (B01) (Bas 01) | 3d | 2026-05-04 | 2026-05-06 | CON-B01-BAS01-1100 | -30d | 14d | Roya-The Big Project Phase 01 (B1-4)7 days | Labor [3 h] |  | CW | B01 | Bsmt01 | DS | B01 | Slb | Con |
| CON-B01-BAS01-1130 |  | Pouring for Ramps (B01) (Bas 01) | 2d | 2026-05-04 | 2026-05-05 | CON-B01-BAS01-1090, P-MDEL-1030 | -27d | 0d |  | Carpenter for concrete [4 h]; the big cash [791212]; Big Quantity Concrete [137.65] | 791,212.2 |  |  | Bsmt01 |  | B01 | RMP | Con |
| CON-B01-BAS01-1150 |  | Curing for Ramps & Stairs (B01) (Bas 01) | 3d | 2026-05-06 | 2026-05-08 | CON-B01-BAS01-1100, CON-B01-BAS01-1130 | -32d | 12d | Roya-The Big Project Phase 01 (B1-4)7 days | Labor [3 h] |  |  |  |  |  |  |  |  |
| CON-B01-BAS01-1140 |  | Dismantling Formwork (B01) (Bas 01) | 1d | 2026-05-21 | 2026-05-21 | CON-B01-BAS01-1110 FS+14d, CON-B01-BAS01-1120, CON-B01-BAS01-1130, CON-B01-BAS01-1150 | -44d | 0d | Roya-The Big Project Phase 01 (B1-4)7 days | Carpenter for concrete [3 h] |  | CW | B01 | Bsmt01 | DS | B01 | Slb | Con |
|  | SUP | **Superstructure** |  | 2026-05-05 | 2027-04-29 |  |  |  |  |  |  |  |  |  |  |  |  |  |
|  | GF | **GR Floor** |  | 2026-05-05 | 2026-07-03 |  |  |  |  |  |  |  |  |  |  |  |  |  |
| CON-B01-GR-1000 |  | Scaffolding works for Walls, Col. & Cores (B01) (GR) | 7d | 2026-05-05 | 2026-05-12 | CON-B01-BAS01-1110 | -37d | 0d |  | Carpenter for concrete [21 h] |  | CW | B01 | GF | SC | B01 | COL | Con |
| CON-B01-GR-1010 |  | RFT for Walls, Col. & Cores (B01) (GR) | 10d | 2026-05-05 | 2026-05-16 | CON-B01-GR-1000 SS, CON-B01-GR-1000 FF, E-APP-B01-GR-1000, P-MDEL-1130 | -37d | 0d |  | Steel Fixer [60 h]; the big cash [856331]; Big Quantity RFT [21.08]; Labor [30 h] | 856,330.53 | CW | B01 | GF | SFC | B01 | COL | Con |
| CON-B01-GR-1020 |  | Shuttering for Walls, Col. & Cores (B01) (GR) | 10d | 2026-05-07 | 2026-05-18 | CON-B01-GR-1010 SS+2d, CON-B01-GR-1010 FF, E-APP-B01-GR-1000 | -37d | 0d |  | Carpenter for concrete [60 h]; the big cash [467957]; Labor [30 h] | 467,957 | CW | B01 | GF | SC | B01 | COL | Con |
| CON-B01-GR-1030 |  | Pouring for Walls, Col. & Cores (B01) (GR) | 2d | 2026-05-19 | 2026-05-20 | CON-B01-GR-1020, P-MDEL-1030 | -37d | 0d |  | Carpenter for concrete [4 h]; the big cash [701936]; Big Quantity Concrete [122.45] | 701,935.51 | CW | B01 | GF | PC | B01 | COL | Con |
| CON-B01-GR-1050 |  | Shuttering for Stairs (B01) (GR) | 8d | 2026-05-24 | 2026-06-06 | E-APP-B01-GR-1010, CON-B01-GR-1030 FS+2d | -37d | 0d |  | Carpenter for concrete [16 h]; the big cash [32198.4]; Labor [8 h] | 32,198.4 | CW | B01 | GF | SS | B01 | STR | Con |
| CON-B01-GR-1040 |  | Shuttering for Slabs & Beams (B01) (GR) | 8d | 2026-05-26 | 2026-06-08 | E-APP-B01-GR-1030, E-APP-B01-GR-1020, CON-B01-GR-1030 FS+1d, CON-B01-BAS01-1140 FS+4d | -37d | 0d |  | Carpenter for concrete [80 h]; the big cash [1017208]; Labor [40 h] | 1,017,207.72 |  |  | GF |  | B01 | Slb | Con |
| CON-B01-GR-1070 |  | RFT for Stairs (B01) (GR) | 8d | 2026-05-26 | 2026-06-08 | CON-B01-GR-1050 SS+2d, CON-B01-GR-1050 FF, E-APP-B01-GR-1010, P-MDEL-1130 | -37d | 0d |  | Steel Fixer [16 h]; the big cash [65227.6]; Big Quantity RFT [1.61]; Labor [8 h] | 65,227.6 | CW | B01 | GF | SFS | B01 | STR | Con |
| CON-B01-GR-1060 |  | RFT for Slabs & Beams (B01) (GR) | 10d | 2026-06-02 | 2026-06-13 | CON-B01-GR-1040 SS+2d, CON-B01-GR-1040 FF, E-APP-B01-GR-1020, E-APP-B01-GR-1030, P-MDEL-1130 | -37d | 0d |  | Steel Fixer [80 h]; the big cash [1485376]; Big Quantity RFT [36.57]; Labor [40 h] | 1,485,376.19 | CW | B01 | GF | SS | B01 | Slb | Con |
| CON-B01-GR-1080 |  | Pouring for Stairs (B01) (GR) | 2d | 2026-06-09 | 2026-06-10 | CON-B01-GR-1070, P-MDEL-1030 | -37d | 0d |  | Carpenter for concrete [4 h]; the big cash [48297.6]; Big Quantity Concrete [8.6] | 48,297.6 | CW | B01 | GF | PS | B01 | STR | Con |
| CON-B01-GR-1100 |  | Curing for Slabs, Beams & Stairs (B01) (GR) | 5d | 2026-06-11 | 2026-06-15 | CON-B01-GR-1080 | -48d | 0d | Roya-The Big Project Phase 01 (B1-4)7 days | Labor [5 h] |  | CW | B01 | GF | DS | B01 | Slb | Con |
| CON-B01-GR-1090 |  | Pouring for Slabs & Beams (B01) (GR) | 2d | 2026-06-14 | 2026-06-15 | CON-B01-GR-1060, P-MDEL-1030 | -37d | 0d |  | Carpenter for concrete [4 h]; the big cash [1525812]; Big Quantity Concrete [265.44] | 1,525,811.58 | CW | B01 | GF | PS | B01 | Slb | Con |
| CON-B01-GR-1110 |  | Dismantling Formwork (B01) (GR) | 1d | 2026-07-03 | 2026-07-03 | CON-B01-GR-1090 FS+14d | -48d | 1d | Roya-The Big Project Phase 01 (B1-4)7 days | Carpenter for concrete [3 h] |  | CW | B01 | GF | DS | B01 | Slb | Con |

| ID | WBS | Activity | Duration | Start | Finish | Predecessors | Total float | Free float | Calendar | Resources | Cost | Work Type | Building Name | Floor Name | Activities | Buildings NO. | Site Cinstruction | BOQ Division |
| --- | --- | --- | --- | --- | --- | --- | --- | --- | --- | --- | --- | --- | --- | --- | --- | --- | --- | --- |
|  | 1stF | **1st Floor** |  | 2026-06-16 | 2026-08-10 |  |  |  |  |  |  |  |  |  |  |  |  |  |
| CON-B01-1ST-1000 |  | Scaffolding works for Walls, Col. & Cores (B01) (1st) | 5d | 2026-06-16 | 2026-06-21 | CON-B01-GR-1100 | -37d | 0d |  | Carpenter for concrete [15 h] |  | CW | B01 | 1stF | SC | B01 | COL | Con |
| CON-B01-1ST-1010 |  | RFT for Walls, Col. & Cores (B01) (1st) | 7d | 2026-06-20 | 2026-06-27 | CON-B01-1ST-1000 SS+3d, CON-B01-1ST-1000 FF, E-APP-B01-1ST-1000, P-MDEL-1120 | -37d | 0d |  | Steel Fixer [42 h]; the big cash [549617]; Big Quantity RFT [13.53]; Labor [21 h] | 549,617.03 | CW | B01 | 1stF | SFC | B01 | COL | Con |
| CON-B01-1ST-1020 |  | Shuttering for Walls, Col. & Cores (B01) (1st) | 7d | 2026-06-23 | 2026-07-01 | CON-B01-1ST-1010 SS+3d, CON-B01-1ST-1010 FF, E-APP-B01-1ST-1000 | -37d | 0d |  | Carpenter for concrete [28 h]; the big cash [300623]; Labor [14 h] | 300,623.43 | CW | B01 | 1stF | SC | B01 | COL | Con |
| CON-B01-1ST-1030 |  | Pouring for Walls, Col. & Cores (B01) (1st) | 2d | 2026-07-02 | 2026-07-04 | CON-B01-1ST-1020, P-MDEL-1030 | -37d | 0d |  | Carpenter for concrete [4 h]; the big cash [450935]; Big Quantity Concrete [78.66] | 450,935.14 | CW | B01 | 1stF | PC | B01 | COL | Con |
| CON-B01-1ST-1040 |  | Shuttering for Slabs, Beams & Stairs (B01) (1st) | 12d | 2026-07-05 | 2026-07-18 | E-APP-B01-1ST-1030, E-APP-B01-1ST-1020, E-APP-B01-1ST-1010, CON-B01-1ST-1030, CON-B01-GR-1110, E-APP-B01-1ST-1010 FF | -37d | 0d |  | Carpenter for concrete [96 h]; the big cash [1049406]; Labor [48 h] | 1,049,406.12 | CW | B01 | 1stF | SS | B01 | Slb | Con |
| CON-B01-1ST-1050 |  | RFT for Slabs, Beams & Stairs(B01) (1st) | 12d | 2026-07-09 | 2026-07-22 | CON-B01-1ST-1040 SS+4d, CON-B01-1ST-1040 FF, E-APP-B01-1ST-1010, E-APP-B01-1ST-1020, E-APP-B01-1ST-1030, P-MDEL-1120 | -37d | 0d |  | Steel Fixer [96 h]; the big cash [1550604]; Big Quantity RFT [38.17]; Labor [48 h] | 1,550,603.78 | CW | B01 | 1stF | SFS | B01 | Slb | Con |
| CON-B01-1ST-1060 |  | Pouring for Slabs, Beams & Stairs (B01) (1st) | 3d | 2026-07-25 | 2026-07-27 | CON-B01-1ST-1050, P-MDEL-1030 | -37d | 0d |  | Carpenter for concrete [6 h]; the big cash [1574109]; Big Quantity Concrete [274.04] | 1,574,109.18 | CW | B01 | 1stF | PS | B01 | Slb | Con |
| CON-B01-1ST-1070 |  | Curing for Slabs, Beams & Stairs (B01) (1st) | 3d | 2026-07-28 | 2026-07-30 | CON-B01-1ST-1060 | -41d | 0d | Roya-The Big Project Phase 01 (B1-4)7 days | Labor [3 h] |  | CW | B01 | 1stF | DS | B01 | Slb | Con |
| CON-B01-1ST-1080 |  | Dismantling Formwork (B01) (1st) | 1d | 2026-08-10 | 2026-08-10 | CON-B01-1ST-1070 FS+10d | -41d | 4d | Roya-The Big Project Phase 01 (B1-4)7 days | Carpenter for concrete [3 h] |  | CW | B01 | 1stF | DS | B01 | Slb | Con |
|  | 2ndF | **2nd Floor** |  | 2026-07-29 | 2026-09-14 |  |  |  |  |  |  |  |  |  |  |  |  |  |
| CON-B01-2ND-1000 |  | Scaffolding works for Walls, Col. & Cores (B01) (2nd) | 5d | 2026-07-29 | 2026-08-03 | CON-B01-1ST-1060 FS+1d | -37d | 0d |  | Carpenter for concrete [15 h] |  | CW | B01 | 2ndF | SC | B01 | COL | Con |
| CON-B01-2ND-1010 |  | RFT for Walls, Col. & Cores (B01) (2nd) | 7d | 2026-08-01 | 2026-08-08 | CON-B01-2ND-1000 SS+2d, CON-B01-2ND-1000 FF, E-APP-B01-2ND-1000, P-MDEL-1110 | -37d | 0d |  | Steel Fixer [42 h]; the big cash [547184]; Big Quantity RFT [13.47]; Labor [21 h] | 547,183.9 | CW | B01 | 2ndF | SFC | B01 | COL | Con |
| CON-B01-2ND-1020 |  | Shuttering for Walls, Col. & Cores (B01) (2nd) | 7d | 2026-08-04 | 2026-08-11 | CON-B01-2ND-1010 SS+3d, CON-B01-2ND-1010 FF, E-APP-B01-2ND-1000 | -37d | 0d |  | Carpenter for concrete [28 h]; the big cash [299336]; Labor [14 h] | 299,336.25 | CW | B01 | 2ndF | SS | B01 | COL | Con |
| CON-B01-2ND-1030 |  | Pouring for Walls, Col. & Cores (B01) (2nd) | 2d | 2026-08-12 | 2026-08-13 | CON-B01-2ND-1020, P-MDEL-1030 | -37d | 0d |  | Carpenter for concrete [4 h]; the big cash [449004]; Big Quantity Concrete [78.33] | 449,004.37 | CW | B01 | 2ndF | PC | B01 | COL | Con |
| CON-B01-2ND-1040 |  | Shuttering for Slabs, Beams & Stairs (B01) (2nd) | 8d | 2026-08-15 | 2026-08-23 | E-APP-B01-2ND-1030, E-APP-B01-2ND-1020, E-APP-B01-2ND-1010, CON-B01-2ND-1030, CON-B01-1ST-1080 | -37d | 0d |  | Carpenter for concrete [80 h]; the big cash [1045605]; Labor [40 h] | 1,045,604.81 | CW | B01 | 2ndF | SS | B01 | Slb | Con |
| CON-B01-2ND-1050 |  | RFT for Slabs, Beams & Stairs (B01) (2nd) | 8d | 2026-08-19 | 2026-08-29 | CON-B01-2ND-1040 SS+4d, CON-B01-2ND-1040 FF, E-APP-B01-2ND-1010, E-APP-B01-2ND-1020, E-APP-B01-2ND-1030, P-MDEL-1110 | -37d | 0d |  | Steel Fixer [96 h]; the big cash [1544246]; Big Quantity RFT [38.02]; Labor [48 h] | 1,544,246.42 | CW | B01 | 2ndF | SFS | B01 | Slb | Con |
| CON-B01-2ND-1060 |  | Pouring for Slabs, Beams & Stairs (B01) (2nd) | 3d | 2026-08-30 | 2026-09-01 | CON-B01-2ND-1050, P-MDEL-1030 | -37d | 0d |  | Carpenter for concrete [6 h]; the big cash [1568407]; Big Quantity Concrete [273.04] | 1,568,407.21 | CW | B01 | 2ndF | PS | B01 | Slb | Con |
| CON-B01-2ND-1070 |  | Curing for Slabs, Beams & Stairs (B01) (2nd) | 3d | 2026-09-02 | 2026-09-04 | CON-B01-2ND-1060 | -29d | 9d | Roya-The Big Project Phase 01 (B1-4)7 days | Labor [3 h] |  | CW | B01 | 2ndF | DS | B01 | Slb | Con |
| CON-B01-2ND-1080 |  | Dismantling Formwork (B01) (2nd) | 1d | 2026-09-14 | 2026-09-14 | CON-B01-2ND-1060 FS+10d, CON-B01-2ND-1070 | -38d | 6d | Roya-The Big Project Phase 01 (B1-4)7 days | Carpenter for concrete [3 h] |  | CW | B01 | 2ndF | DS | B01 | Slb | Con |
|  | 3rdF | **3rd Floor** |  | 2026-09-03 | 2026-10-25 |  |  |  |  |  |  |  |  |  |  |  |  |  |
| CON-B01-3RD-1000 |  | Scaffolding works for Walls, Col. & Cores (B01) (3rd) | 5d | 2026-09-03 | 2026-09-08 | CON-B01-2ND-1060 FS+1d | -37d | 0d |  | Carpenter for concrete [15 h] |  | CW | B01 | 3rdF | SC | B01 | COL | Con |
| CON-B01-3RD-1010 |  | RFT for Walls, Col. & Cores (B01) (3rd) | 7d | 2026-09-07 | 2026-09-14 | CON-B01-3RD-1000 SS+3d, CON-B01-3RD-1000 FF, E-APP-B01-3ED-1000, E-APP-B01-3ED-1010, E-APP-B01-3ED-1020, E-APP-B01-3ED-1030, P-MDEL-1100 | -37d | 0d |  | Steel Fixer [42 h]; the big cash [460777]; Big Quantity RFT [11.34]; Labor [21 h] | 460,777.03 | CW | B01 | 3rdF | SFC | B01 | COL | Con |
| CON-B01-3RD-1020 |  | Shuttering for Walls, Col. & Cores (B01) (3rd) | 7d | 2026-09-10 | 2026-09-17 | CON-B01-3RD-1010 SS+3d, CON-B01-3RD-1010 FF, E-APP-B01-3ED-1000 | -37d | 0d |  | Carpenter for concrete [28 h]; the big cash [252110]; Labor [14 h] | 252,110.01 | CW | B01 | 3rdF | SC | B01 | COL | Con |
| CON-B01-3RD-1030 |  | Pouring for Walls, Col. & Cores (B01) (3rd) | 2d | 2026-09-19 | 2026-09-20 | CON-B01-3RD-1020, P-MDEL-1030 | -37d | 0d |  | Carpenter for concrete [4 h]; the big cash [378165]; Big Quantity Concrete [65.97] | 378,165.01 | CW | B01 | 3rdF | PC | B01 | COL | Con |
| CON-B01-3RD-1040 |  | Shuttering for Slabs, Beams & Stairs (B01) (3rd) | 10d | 2026-09-21 | 2026-10-01 | E-APP-B01-3ED-1030, E-APP-B01-3ED-1020, E-APP-B01-3ED-1010, CON-B01-3RD-1030, CON-B01-2ND-1080 | -37d | 0d |  | Carpenter for concrete [80 h]; the big cash [839871]; Labor [40 h] | 839,870.68 | CW | B01 | 3rdF | SS | B01 | Slb | Con |
| CON-B01-3RD-1050 |  | RFT for Slabs, Beams & Stairs (B01) (3rd) | 10d | 2026-09-26 | 2026-10-07 | CON-B01-3RD-1040 SS+4d, CON-B01-3RD-1040 FF, P-MDEL-1100 | -37d | 0d |  | Steel Fixer [80 h]; the big cash [1251398]; Big Quantity RFT [30.81]; Labor [40 h] | 1,251,398.38 | CW | B01 | 3rdF | SFS | B01 | Slb | Con |
| CON-B01-3RD-1060 |  | Pouring for Slabs, Beams & Stairs (B01) (3rd) | 3d | 2026-10-08 | 2026-10-11 | CON-B01-3RD-1050, P-MDEL-1030 | -37d | 0d |  | Carpenter for concrete [6 h]; the big cash [1259806]; Big Quantity Concrete [219.35] | 1,259,806.02 | CW | B01 | 3rdF | PS | B01 | Slb | Con |
| CON-B01-3RD-1070 |  | Curing for Slabs, Beams & Stairs(B01) (3rd) | 3d | 2026-10-12 | 2026-10-14 | CON-B01-3RD-1060 | -40d | 0d | Roya-The Big Project Phase 01 (B1-4)7 days | Labor [3 h] |  | CW | B01 | 3rdF | DS | B01 | Slb | Con |
| CON-B01-3RD-1080 |  | Dismantling Formwork (B01) (3rd) | 1d | 2026-10-25 | 2026-10-25 | CON-B01-3RD-1070 FS+10d | -40d | 5d | Roya-The Big Project Phase 01 (B1-4)7 days | Carpenter for concrete [3 h] |  | CW | B01 | 3rdF | DS | B01 | Slb | Con |

| ID | WBS | Activity | Duration | Start | Finish | Predecessors | Total float | Free float | Calendar | Resources | Cost | Work Type | Building Name | Floor Name | Activities | Buildings NO. | Site Cinstruction | BOQ Division |
| --- | --- | --- | --- | --- | --- | --- | --- | --- | --- | --- | --- | --- | --- | --- | --- | --- | --- | --- |
|  | 4thF | **4th Floor** |  | 2026-10-13 | 2026-12-05 |  |  |  |  |  |  |  |  |  |  |  |  |  |
| CON-B01-4TH-1000 |  | Scaffolding works for Walls, Col. & Cores (B01) (4th) | 5d | 2026-10-13 | 2026-10-18 | CON-B01-3RD-1060 FS+1d | -37d | 0d |  | Carpenter for concrete [15 h] |  | CW | B01 | 4thF | SC | B01 | COL | Con |
| CON-B01-4TH-1010 |  | RFT for Walls, Col. & Cores (B01) (4th) | 7d | 2026-10-17 | 2026-10-24 | CON-B01-4TH-1000 SS+3d, CON-B01-4TH-1000 FF, E-APP-B01-4TH-1000, E-APP-B01-4TH-1010, E-APP-B01-4TH-1020, E-APP-B01-4TH-1030, P-MDEL-1090 | -37d | 0d |  | Steel Fixer [42 h]; the big cash [460777]; Big Quantity RFT [11.34]; Labor [21 h] | 460,777.03 | CW | B01 | 4thF | SFC | B01 | COL | Con |
| CON-B01-4TH-1020 |  | Shuttering for Walls, Col. & Cores (B01) (4th) | 7d | 2026-10-20 | 2026-10-27 | CON-B01-4TH-1010 SS+3d, CON-B01-4TH-1010 FF, E-APP-B01-4TH-1000 | -37d | 0d |  | Carpenter for concrete [28 h]; the big cash [252110]; Labor [14 h] | 252,110.01 | CW | B01 | 4thF | SC | B01 | COL | Con |
| CON-B01-4TH-1030 |  | Pouring for Walls, Col. & Cores (B01) (4th) | 2d | 2026-10-28 | 2026-10-29 | CON-B01-4TH-1020, P-MDEL-1030 | -37d | 0d |  | Carpenter for concrete [4 h]; the big cash [378165]; Big Quantity Concrete [65.97] | 378,165.01 | CW | B01 | 4thF | PC | B01 | COL | Con |
| CON-B01-4TH-1040 |  | Shuttering for Slabs, Beams & Stairs (B01) (4th) | 12d | 2026-10-31 | 2026-11-12 | E-APP-B01-4TH-1030, E-APP-B01-4TH-1020, E-APP-B01-4TH-1010, CON-B01-4TH-1030, CON-B01-3RD-1080 | -37d | 0d |  | Carpenter for concrete [72 h]; the big cash [840564]; Labor [36 h] | 840,564.27 | CW | B01 | 4thF | SS | B01 | Slb | Con |
| CON-B01-4TH-1050 |  | RFT for Slabs, Beams & Stairs (B01) (4th) | 12d | 2026-11-04 | 2026-11-17 | CON-B01-4TH-1040 SS+4d, CON-B01-4TH-1040 FF, P-MDEL-1090 | -37d | 0d |  | Steel Fixer [72 h]; the big cash [1252402]; Big Quantity RFT [30.83]; Labor [36 h] | 1,252,401.85 | CW | B01 | 4thF | SFS | B01 | Slb | Con |
| CON-B01-4TH-1060 |  | Pouring for Slabs, Beams & Stairs (B01) (4th) | 3d | 2026-11-18 | 2026-11-21 | CON-B01-4TH-1050, P-MDEL-1030 | -37d | 0d |  | Carpenter for concrete [6 h]; the big cash [1260846]; Big Quantity Concrete [219.53] | 1,260,846.41 | CW | B01 | 4thF | PS | B01 | Slb | Con |
| CON-B01-4TH-1070 |  | Curing for Slabs, Beams & Stairs (B01) (4th) | 3d | 2026-11-22 | 2026-11-24 | CON-B01-4TH-1060 | -40d | 0d | Roya-The Big Project Phase 01 (B1-4)7 days | Labor [3 h] |  | CW | B01 | 4thF | DS | B01 | Slb | Con |
| CON-B01-4TH-1080 |  | Dismantling Formwork (B01) (4th) | 1d | 2026-12-05 | 2026-12-05 | CON-B01-4TH-1070 FS+10d | -40d | 3d | Roya-The Big Project Phase 01 (B1-4)7 days | Carpenter for concrete [3 h] |  | CW | B01 | 4thF | DS | B01 | Slb | Con |
|  | 5thF | **5th Floor** |  | 2026-11-23 | 2027-01-09 |  |  |  |  |  |  |  |  |  |  |  |  |  |
| CON-B01-5TH-1000 |  | Scaffolding works for Walls, Col. & Cores (B01) (5th) | 3d | 2026-11-23 | 2026-11-25 | CON-B01-4TH-1060 FS+1d | -37d | 0d |  | Carpenter for concrete [9 h] |  | CW | B01 | 5thF | SC | B01 | COL | Con |
| CON-B01-5TH-1010 |  | RFT for Walls, Col. & Cores (B01) (5th) | 6d | 2026-11-26 | 2026-12-02 | CON-B01-5TH-1000 SS+3d, CON-B01-5TH-1000 FF, E-APP-B01-5TH-1000, P-MDEL-1080 | -37d | 0d |  | Steel Fixer [36 h]; the big cash [460777]; Big Quantity RFT [11.34]; Labor [18 h] | 460,777.03 | CW | B01 | 5thF | SFC | B01 | COL | Con |
| CON-B01-5TH-1020 |  | Shuttering for Walls, Col. & Cores (B01) (5th) | 6d | 2026-11-30 | 2026-12-06 | CON-B01-5TH-1010 SS+3d, CON-B01-5TH-1010 FF, E-APP-B01-5TH-1000 | -37d | 0d |  | Carpenter for concrete [24 h]; the big cash [252110]; Labor [12 h] | 252,110.01 | CW | B01 | 5thF | SC | B01 | COL | Con |
| CON-B01-5TH-1030 |  | Pouring for Walls, Col. & Cores (B01) (5th) | 2d | 2026-12-07 | 2026-12-08 | CON-B01-5TH-1020, P-MDEL-1030 | -37d | 0d |  | Carpenter for concrete [4 h]; the big cash [378165]; Big Quantity Concrete [65.97] | 378,165.01 | CW | B01 | 5thF | PC | B01 | COL | Con |
| CON-B01-5TH-1040 |  | Shuttering for Slabs, Beams & Stairs (B01) (5th) | 9d | 2026-12-09 | 2026-12-19 | E-APP-B01-5TH-1030, CON-B01-5TH-1030, CON-B01-4TH-1080, E-APP-B01-5TH-1010, E-APP-B01-5TH-1020 | -37d | 0d |  | Carpenter for concrete [72 h]; the big cash [839984]; Labor [36 h] | 839,983.77 | CW | B01 | 5thF | SS | B01 | Slb | Con |
| CON-B01-5TH-1050 |  | RFT for Slabs, Beams & Stairs (B01) (5th) | 9d | 2026-12-14 | 2026-12-23 | CON-B01-5TH-1040 SS+4d, CON-B01-5TH-1040 FF, E-APP-B01-5TH-1010, E-APP-B01-5TH-1020, E-APP-B01-5TH-1030, P-MDEL-1080 | -37d | 0d |  | Steel Fixer [72 h]; the big cash [1250273]; Big Quantity RFT [30.78]; Labor [36 h] | 1,250,273.36 | CW | B01 | 5thF | SFS | B01 | Slb | Con |
| CON-B01-5TH-1060 |  | Pouring for Slabs, Beams & Stairs (B01) (5th) | 2d | 2026-12-24 | 2026-12-26 | CON-B01-5TH-1050, P-MDEL-1030 | -37d | 0d |  | Carpenter for concrete [4 h]; the big cash [1259976]; Big Quantity Concrete [219.38] | 1,259,975.66 | CW | B01 | 5thF | PS | B01 | Slb | Con |
| CON-B01-5TH-1070 |  | Curing for Slabs, Beams & Stairs (B01) (5th) | 3d | 2026-12-27 | 2026-12-29 | CON-B01-5TH-1060 | -40d | 0d | Roya-The Big Project Phase 01 (B1-4)7 days | Labor [3 h] |  | CW | B01 | 5thF | DS | B01 | Slb | Con |
| CON-B01-5TH-1080 |  | Dismantling Formwork (B01) (5th) | 1d | 2027-01-09 | 2027-01-09 | CON-B01-5TH-1070 FS+10d | -40d | 4d | Roya-The Big Project Phase 01 (B1-4)7 days | Carpenter for concrete [3 h] |  | CW | B01 | 5thF | DS | B01 | Slb | Con |
|  | 6thF | **6th Floor** |  | 2026-12-27 | 2027-02-15 |  |  |  |  |  |  |  |  |  |  |  |  |  |
| CON-B01-6TH-1000 |  | Scaffolding works for Walls, Col. & Cores (B01) (6th) | 4d | 2026-12-27 | 2026-12-30 | CON-B01-5TH-1060 | -37d | 0d |  | Carpenter for concrete [12 h] |  | CW | B01 | 6thF | SC | B01 | COL | Con |
| CON-B01-6TH-1010 |  | RFT for Walls, Col. & Cores (B01) (6th) | 6d | 2026-12-30 | 2027-01-05 | CON-B01-6TH-1000 SS+3d, CON-B01-6TH-1000 FF, E-APP-B01-6TH-1000, P-MDEL-1070 | -37d | 0d |  | Steel Fixer [36 h]; the big cash [460777]; Big Quantity RFT [11.34]; Labor [18 h] | 460,777.03 | CW | B01 | 6thF | SFC | B01 | COL | Con |
| CON-B01-6TH-1020 |  | Shuttering for Walls, Col. & Cores (B01) (6th) | 6d | 2027-01-03 | 2027-01-10 | CON-B01-6TH-1010 SS+3d, CON-B01-6TH-1010 FF, E-APP-B01-6TH-1000 | -37d | 0d |  | Carpenter for concrete [24 h]; the big cash [252110]; Labor [12 h] | 252,110.01 | CW | B01 | 6thF | SC | B01 | COL | Con |
| CON-B01-6TH-1030 |  | Pouring for Walls, Col. & Cores (B01) (6th) | 2d | 2027-01-12 | 2027-01-13 | CON-B01-6TH-1020 FS+1d, P-MDEL-1030 | -37d | 0d |  | Carpenter for concrete [4 h]; the big cash [378165]; Big Quantity Concrete [65.97] | 378,165.01 | CW | B01 | 6thF | SFS | B01 | COL | Con |
| CON-B01-6TH-1040 |  | Shuttering for Slabs, Beams & Stairs (B01) (6th) | 9d | 2027-01-14 | 2027-01-24 | E-APP-B01-6TH-1030, E-APP-B01-6TH-1020, E-APP-B01-6TH-1010, CON-B01-6TH-1030, CON-B01-5TH-1080 | -37d | 0d |  | Carpenter for concrete [72 h]; the big cash [839834]; Labor [36 h] | 839,833.6 | CW | B01 | 6thF | SS | B01 | Slb | Con |
| CON-B01-6TH-1050 |  | RFT for Slabs, Beams & Stairs (B01) (6th) | 9d | 2027-01-19 | 2027-01-30 | CON-B01-6TH-1040 SS+4d, CON-B01-6TH-1040 FF, E-APP-B01-6TH-1010, E-APP-B01-6TH-1020, E-APP-B01-6TH-1030, P-MDEL-1070 | -37d | 0d |  | Steel Fixer [72 h]; the big cash [1249030]; Big Quantity RFT [30.75]; Labor [36 h] | 1,249,030.06 | CW | B01 | 6thF | PC | B01 | Slb | Con |
| CON-B01-6TH-1060 |  | Pouring for Slabs, Beams & Stairs (B01) (6th) | 2d | 2027-01-31 | 2027-02-01 | CON-B01-6TH-1050, P-MDEL-1030 | -37d | 0d |  | Carpenter for concrete [4 h]; the big cash [1259750]; Big Quantity Concrete [219.34] | 1,259,750.39 | CW | B01 | 6thF | PS | B01 | Slb | Con |
| CON-B01-6TH-1070 |  | Curing for Slabs, Beams & Stairs (B01) (6th) | 3d | 2027-02-02 | 2027-02-04 | CON-B01-6TH-1060 | -44d | 0d | Roya-The Big Project Phase 01 (B1-4)7 days | Labor [3 h] |  | CW | B01 | 6thF | DS | B01 | Slb | Con |
| CON-B01-6TH-1080 |  | Dismantling Formwork (B01) (6th) | 1d | 2027-02-15 | 2027-02-15 | CON-B01-6TH-1070 FS+10d | -44d | 1d | Roya-The Big Project Phase 01 (B1-4)7 days | Carpenter for concrete [3 h] |  | CW | B01 | 6thF | DS | B01 | Slb | Con |

| ID | WBS | Activity | Duration | Start | Finish | Predecessors | Total float | Free float | Calendar | Resources | Cost | Work Type | Building Name | Floor Name | Activities | Buildings NO. | Site Cinstruction | BOQ Division |
| --- | --- | --- | --- | --- | --- | --- | --- | --- | --- | --- | --- | --- | --- | --- | --- | --- | --- | --- |
|  | 7thF | **7th Floor** |  | 2027-02-02 | 2027-03-18 |  |  |  |  |  |  |  |  |  |  |  |  |  |
| CON-B01-7TH-1000 |  | Scaffolding works for Walls, Col. & Cores (B01) (7th) | 3d | 2027-02-02 | 2027-02-04 | CON-B01-6TH-1060 | -37d | 0d |  | Carpenter for concrete [9 h] |  | CW | B01 | 7thF | SC | B01 | COL | Con |
| CON-B01-7TH-1010 |  | RFT for Walls, Col. & Cores (B01) (7th) | 5d | 2027-02-04 | 2027-02-09 | CON-B01-7TH-1000 SS+2d, CON-B01-7TH-1000 FF, E-APP-B01-7TH-1000, P-MDEL-1190 | -37d | 0d |  | Steel Fixer [30 h]; the big cash [460777]; Big Quantity RFT [11.34]; Labor [15 h] | 460,777.03 | CW | B01 | 7thF | SFC | B01 | COL | Con |
| CON-B01-7TH-1020 |  | Shuttering for Walls, Col. & Cores (B01) (7th) | 5d | 2027-02-08 | 2027-02-13 | CON-B01-7TH-1010 SS+3d, CON-B01-7TH-1010 FF, E-APP-B01-7TH-1000 | -37d | 0d |  | Carpenter for concrete [30 h]; the big cash [252110]; Labor [15 h] | 252,110.01 | CW | B01 | 7thF | SC | B01 | COL | Con |
| CON-B01-7TH-1030 |  | Pouring for Walls, Col. & Cores (B01) (7th) | 2d | 2027-02-15 | 2027-02-16 | CON-B01-7TH-1020 FS+1d, P-MDEL-1030 | -37d | 0d |  | Carpenter for concrete [4 h]; the big cash [378165]; Big Quantity Concrete [65.97] | 378,165.01 | CW | B01 | 7thF | SFS | B01 | COL | Con |
| CON-B01-7TH-1040 |  | Shuttering for Slabs, Beams & Stairs (B01) (7th) | 9d | 2027-02-17 | 2027-02-27 | E-APP-B01-7TH-1030, E-APP-B01-7TH-1020, E-APP-B01-7TH-1010, CON-B01-7TH-1030, CON-B01-6TH-1080 | -37d | 0d |  | Carpenter for concrete [72 h]; the big cash [840104]; Labor [36 h] | 840,104.5 | CW | B01 | 7thF | SS | B01 | Slb | Con |
| CON-B01-7TH-1050 |  | RFT for Slabs, Beams & Stairs (B01) (7th) | 9d | 2027-02-21 | 2027-03-02 | CON-B01-7TH-1040 SS+3d, CON-B01-7TH-1040 FF, E-APP-B01-7TH-1010, E-APP-B01-7TH-1020, E-APP-B01-7TH-1030, P-MDEL-1190 | -37d | 0d |  | Steel Fixer [72 h]; the big cash [1250029]; Big Quantity RFT [30.77]; Labor [36 h] | 1,250,029.31 | CW | B01 | 7thF | PC | B01 | Slb | Con |
| CON-B01-7TH-1060 |  | Pouring for Slabs, Beams & Stairs (B01) (7th) | 2d | 2027-03-03 | 2027-03-04 | CON-B01-7TH-1050, P-MDEL-1030 | -37d | 0d |  | Carpenter for concrete [4 h]; the big cash [1260157]; Big Quantity Concrete [219.41] | 1,260,156.74 | CW | B01 | 7thF | PS | B01 | Slb | Con |
| CON-B01-7TH-1070 |  | Curing for Slabs, Beams & Stairs (B01) (7th) | 3d | 2027-03-05 | 2027-03-07 | CON-B01-7TH-1060 | -43d | 0d | Roya-The Big Project Phase 01 (B1-4)7 days | Labor [3 h] |  | CW | B01 | 7thF | DS | B01 | Slb | Con |
| CON-B01-7TH-1080 |  | Dismantling Formwork (B01) (7th) | 1d | 2027-03-18 | 2027-03-18 | CON-B01-7TH-1070 FS+10d | -43d | 4d | Roya-The Big Project Phase 01 (B1-4)7 days | Carpenter for concrete [3 h] |  | CW | B01 | 7thF | DS | B01 | Slb | Con |
|  | 8thF | **8th Floor** |  | 2027-03-06 | 2027-04-19 |  |  |  |  |  |  |  |  |  |  |  |  |  |
| CON-B01-8TH-1000 |  | Scaffolding works for Walls, Col. & Cores (B01) (8th) | 3d | 2027-03-06 | 2027-03-08 | CON-B01-7TH-1060 | -37d | 0d |  | Carpenter for concrete [9 h] |  | CW | B01 | 8thF | SC | B01 | COL | Con |
| CON-B01-8TH-1010 |  | RFT for Walls, Col. & Cores (B01) (8th) | 5d | 2027-03-08 | 2027-03-16 | CON-B01-8TH-1000 SS+2d, CON-B01-8TH-1000 FF, E-APP-B01-8TH-1000, P-MDEL-1180 | -37d | 0d |  | Steel Fixer [30 h]; the big cash [460777]; Big Quantity RFT [11.34]; Labor [15 h] | 460,777.03 | CW | B01 | 8thF | SFC | B01 | COL | Con |
| CON-B01-8TH-1020 |  | Shuttering for Walls, Col. & Cores (B01) (8th) | 5d | 2027-03-14 | 2027-03-18 | CON-B01-8TH-1010 SS+2d, CON-B01-8TH-1010 FF, E-APP-B01-8TH-1000 | -37d | 0d |  | Carpenter for concrete [30 h]; the big cash [252110]; Labor [15 h] | 252,110.01 | CW | B01 | 8thF | SC | B01 | COL | Con |
| CON-B01-8TH-1030 |  | Pouring for Walls, Col. & Cores (B01) (8th) | 2d | 2027-03-21 | 2027-03-22 | CON-B01-8TH-1020 FS+1d, P-MDEL-1030 | -37d | 0d |  | Carpenter for concrete [4 h]; the big cash [378165]; Big Quantity Concrete [65.97] | 378,165.01 | CW | B01 | 8thF | SFS | B01 | COL | Con |
| CON-B01-8TH-1040 |  | Shuttering for Slabs, Beams & Stairs (B01) (8th) | 8d | 2027-03-23 | 2027-03-31 | E-APP-B01-8TH-1030, E-APP-B01-8TH-1020, E-APP-B01-8TH-1010, CON-B01-8TH-1030, CON-B01-7TH-1080 | -37d | 0d |  | Carpenter for concrete [64 h]; the big cash [805975]; Labor [32 h] | 805,974.8 | CW | B01 | 8thF | SS | B01 | Slb | Con |
| CON-B01-8TH-1050 |  | RFT for Slabs, Beams & Stairs (B01) (8th) | 8d | 2027-03-25 | 2027-04-03 | CON-B01-8TH-1040 SS+2d, CON-B01-8TH-1040 FF, E-APP-B01-8TH-1010, E-APP-B01-8TH-1020, E-APP-B01-8TH-1030, P-MDEL-1180 | -37d | 0d |  | Steel Fixer [64 h]; the big cash [1181142]; Big Quantity RFT [29.08]; Labor [32 h] | 1,181,141.71 | CW | B01 | 8thF | PC | B01 | Slb | Con |
| CON-B01-8TH-1060 |  | Pouring for Slabs, Beams & Stairs (B01) (8th) | 2d | 2027-04-04 | 2027-04-05 | CON-B01-8TH-1050, P-MDEL-1030 | -37d | 0d |  | Carpenter for concrete [4 h]; the big cash [1208962]; Big Quantity Concrete [210.31] | 1,208,962.2 | CW | B01 | 8thF | PS | B01 | Slb | Con |
| CON-B01-8TH-1070 |  | Curing for Slabs, Beams & Stairs (B01) (8th) | 3d | 2027-04-06 | 2027-04-08 | CON-B01-8TH-1060 | -47d | 0d | Roya-The Big Project Phase 01 (B1-4)7 days | Labor [3 h] |  | CW | B01 | 8thF | DS | B01 | Slb | Con |
| CON-B01-8TH-1080 |  | Dismantling Formwork (B01) (8th) | 1d | 2027-04-19 | 2027-04-19 | CON-B01-8TH-1070 FS+10d | -47d | 0d | Roya-The Big Project Phase 01 (B1-4)7 days | Carpenter for concrete [3 h] |  | CW | B01 | 8thF | DS | B01 | Slb | Con |
|  | RF | **Roof Floor** |  | 2027-04-10 | 2027-04-29 |  |  |  |  |  |  |  |  |  |  |  |  |  |
| CON-B01-9TH-1000 |  | Scaffolding works for Walls, Col. & Cores (B01) (RF) | 1d | 2027-04-10 | 2027-04-10 | CON-B01-8TH-1070 | -37d | 0d |  | Carpenter for concrete [3 h] |  | CW | B01 | RF | SC | B01 | COL | Con |
| CON-B01-9TH-1010 |  | RFT for Walls, Col. & Cores (B01) (RF) | 2d | 2027-04-11 | 2027-04-12 | CON-B01-9TH-1000, E-APP-B01-RF-1000, P-MDEL-1200 | -37d | 0d |  | Steel Fixer [12 h]; the big cash [159194]; Big Quantity RFT [3.92]; Labor [6 h] | 159,193.84 | CW | B01 | RF | SFC | B01 | COL | Con |
| CON-B01-9TH-1020 |  | Shuttering for Walls, Col. & Cores (B01) (RF) | 1d | 2027-04-13 | 2027-04-13 | CON-B01-9TH-1010, E-APP-B01-RF-1000 | -37d | 0d |  | Carpenter for concrete [8 h]; the big cash [82823.5]; Labor [4 h] | 82,823.46 | CW | B01 | RF | SC | B01 | COL | Con |
| CON-B01-9TH-1030 |  | Pouring for Walls, Col. & Cores (B01) (RF) | 1d | 2027-04-14 | 2027-04-14 | CON-B01-9TH-1020, P-MDEL-1030 | -37d | 0d |  | Carpenter for concrete [2 h]; the big cash [124235]; Big Quantity Concrete [21.67] | 124,235.19 | CW | B01 | RF | SS | B01 | COL | Con |
| CON-B01-9TH-1040 |  | Shuttering for Slabs, Beams (B01) (RF) | 2d | 2027-04-15 | 2027-04-17 | E-APP-B01-RF-1010, E-APP-B01-RF-1020, CON-B01-9TH-1030 | -37d | 0d |  | Carpenter for concrete [8 h]; the big cash [79206.4]; Labor [4 h] | 79,206.41 | CW | B01 | RF | SFS | B01 | Slb | Con |
| CON-B01-9TH-1050 |  | RFT for Slabs, Beams (B01) (RF) | 3d | 2027-04-17 | 2027-04-19 | CON-B01-9TH-1040 SS+1d, CON-B01-9TH-1040 FF, E-APP-B01-RF-1010, E-APP-B01-RF-1020, P-MDEL-1200 | -37d | 0d |  | Steel Fixer [6 h]; the big cash [151645]; Big Quantity RFT [3.73]; Labor [3 h] | 151,645.08 | CW | B01 | RF | PC | B01 | Slb | Con |
| CON-B01-9TH-1060 |  | Pouring for Slabs, Beams (B01) (RF) | 1d | 2027-04-20 | 2027-04-20 | CON-B01-9TH-1050, P-MDEL-1030, CON-B01-8TH-1080 | -37d | 0d |  | Carpenter for concrete [2 h]; the big cash [118810]; Big Quantity Concrete [20.63] | 118,809.61 | CW | B01 | RF | PS | B01 | Slb | Con |
| CON-B01-9TH-1070 |  | Curing for Slabs, Beams (B01) (RF) | 3d | 2027-04-21 | 2027-04-23 | CON-B01-9TH-1060 | -47d | 0d | Roya-The Big Project Phase 01 (B1-4)7 days | Labor [3 h] |  | CW | B01 | RF | DS | B01 | Slb | Con |
| CON-B01-9TH-1080 |  | Dismantling Formwork (B01) (RF) | 1d | 2027-04-29 | 2027-04-29 | CON-B01-9TH-1070 FS+5d | -47d | 1d | Roya-The Big Project Phase 01 (B1-4)7 days | Carpenter for concrete [3 h] |  | CW | B01 | RF | DS | B01 | Slb | Con |

| ID | WBS | Activity | Duration | Start | Finish | Predecessors | Complete | Remaining | Planned start | Planned finish | Total float | Free float | Calendar | Resources | Cost | Actual cost | Work Type | Building Name | Floor Name | Activities | Buildings NO. | Site Cinstruction | BOQ Division |
| --- | --- | --- | --- | --- | --- | --- | --- | --- | --- | --- | --- | --- | --- | --- | --- | --- | --- | --- | --- | --- | --- | --- | --- |
|  | B02 | **B02** |  | 2025-11-27 | 2027-03-23 |  |  |  |  |  |  |  |  |  |  |  |  |  |  |  |  |  |  |
|  | SUB | **Substructure** |  | 2025-11-27 | 2026-08-04 |  |  |  |  |  |  |  |  |  |  |  |  |  |  |  |  |  |  |
|  | F | **Footing** |  | 2025-11-27 | 2026-03-07 |  |  |  |  |  |  |  |  |  |  |  |  |  |  |  |  |  |  |
| CON-B02-FOOT-1000 |  | Shuttering for PC Raft (B02) (footing) | 1d | 2025-11-27 A | 2025-11-30 A | E-APP-B02-FOOT-1000, CON-EW-B02-1010, P-MDEL-1020 | 100% |  | 2025-12-27 | 2025-12-27 |  |  |  | Carpenter for concrete [3 h]; the big cash [424288]; Labor [3 h] | 424,288.12 | 424,288.12 | CW | B02 | Foot | SPC | B02 | PC | Con |
| CON-B02-FOOT-1010 |  | Pouring for PC Raft (B02) (footing) | 1d | 2025-11-30 A | 2025-12-01 A | CON-B02-FOOT-1000, P-MDEL-1030 | 100% |  | 2025-12-28 | 2025-12-28 |  |  |  | Carpenter for concrete [2 h]; the big cash [990006]; Big Quantity Concrete [390.15] | 990,005.62 | 990,005.62 | CW | B02 | Foot | PPC | B02 | PC | Con |
| CON-B02-FOOT-1020 |  | Curing for PC Raft (B02) (footing) | 3d | 2025-12-02 A | 2025-12-06 A | CON-B02-FOOT-1010 | 100% |  | 2025-12-29 | 2025-12-31 |  |  | Roya-The Big Project Phase 01 (B1-4)7 days | Labor [3 h] |  |  | CW | B02 | Foot | DPC | B02 | PC | Con |
| CON-B02-FOOT-1030 |  | Waterproofing & Ins. Protection works (B02) (footing) | 2d | 2025-12-18 A | 2025-12-21 A | CON-B02-FOOT-1020 SS+3d, P-MDEL-1040, E-APP-B02-FOOT-1030, CON-B02-FOOT-1020 FF | 100% |  | 2026-01-01 | 2026-01-03 |  |  |  | Water Proofing Tech [6 h]; the big cash [793168]; Big Quantity Proofing [1762.6] | 793,168.14 | 793,168.14 | CW | B02 | Foot | WP | B02 | WP | T&M |
| CON-B02-FOOT-1040 |  | Shuttering for RC Raft & Footings (B02) (footing) | 10d | 2026-01-01 A | 2026-01-12 | CON-B02-FOOT-1030 SS+3d, E-APP-B02-FOOT-1010, CON-B02-FOOT-1030 FF | 100% | 0d | 2025-12-31 | 2026-01-12 | -13d | 0d |  | Carpenter for concrete [80 h]; the big cash [2271974]; Labor [40 h] | 2,271,974.1 | 2,271,974.1 | CW | B02 | Foot | SF | B02 | RC | Con |
| CON-B02-FOOT-1050 |  | RFT for RC Raft & Footings (B02) (footing) | 10d | 2026-01-03 A | 2026-01-12 | CON-B02-FOOT-1040 SS+2d, E-APP-B02-FOOT-1020, CON-B02-FOOT-1040 FF, P-MDEL-1000 | 100% | 0d | 2026-01-03 | 2026-01-14 | -9d | 0d |  | Steel Fixer [140 h]; loader [1 h]; the big cash [6313255]; Big Quantity RFT [155.42]; Labor [70 h] | 6,313,254.79 | 6,313,254.79 | CW | B02 | Foot | SFF | B02 | RC | Con |
| CON-B02-FOOT-1060 |  | Shuttering for Columns & Walls Below SOG (B01) (footing) | 6d | 2026-01-12 | 2026-01-18 | CON-B02-FOOT-1040 SS+4d, E-APP-B02-FOOT-1010 |  |  |  |  | -13d | 0d |  | Carpenter for concrete [12 h]; the big cash [73546.2]; Labor [6 h] | 73,546.2 |  |  |  | Foot |  | B02 | BSOG | Con |
| CON-B02-FOOT-1090 |  | Pouring for RC Raft & Footings (B02) (footing) | 2d | 2026-01-12 | 2026-01-13 | CON-B02-FOOT-1050, P-MDEL-1030 |  |  |  |  | -9d | 0d |  | Carpenter for concrete [4 h]; the big cash [5301273]; Big Quantity Concrete [1050.38] | 5,301,272.91 |  | CW | B02 | Foot | PF | B02 | RC | Con |
| CON-B02-FOOT-1070 |  | RFT for Columns & Walls Below SOG (B02) (footing) | 6d | 2026-01-13 | 2026-01-19 | CON-B02-FOOT-1060 SS+1d, CON-B02-FOOT-1060 FF, E-APP-B02-FOOT-1020, P-MDEL-1000 |  |  |  |  | -13d | 0d |  | Steel Fixer [12 h]; the big cash [98560.6]; Big Quantity RFT [2.43]; Labor [6 h] | 98,560.62 |  |  |  | Foot |  | B02 | BSOG | Con |
| CON-B02-FOOT-1100 |  | Curing & Deshuttering for RC Raft & Footings (B02) (footing) | 3d | 2026-01-14 | 2026-01-16 | CON-B02-FOOT-1090 |  |  |  |  | -12d | 4d | Roya-The Big Project Phase 01 (B1-4)7 days | Labor [3 h]; Carpenter for concrete [6 h] |  |  | CW | B02 | Foot | DSF | B02 | RC | Con |
| CON-B02-FOOT-1080 |  | Pouring Columns & Walls Below SOG (B01) (footing) | 1d | 2026-01-20 | 2026-01-20 | CON-B02-FOOT-1070 |  |  |  |  | -13d | 0d |  | Carpenter for concrete [2 h]; the big cash [171608]; Big Quantity Concrete [26.94] | 171,607.8 |  |  |  | Foot |  | B02 | BSOG | Con |
| CON-B02-FOOT-1110 |  | Bitumen Ins. for RC Raft & Footings (B02) (footing) | 3d | 2026-03-02 | 2026-03-04 | P-MDEL-1050, E-APP-B02-FOOT-1030, CON-B02-FOOT-1100 |  |  |  |  | 258d | 0d |  | Water Proofing Tech [9 h]; the big cash [126907]; Big Quantity Bitumine [1410.08] | 126,906.9 |  | CW | B02 | Foot | WP | B02 | WP | T&M |
| CON-B02-FOOT-1120 |  | Soil Backfilling (B02) (footing) | 2d | 2026-03-05 | 2026-03-07 | CON-B02-FOOT-1110 |  |  |  |  | 258d | 72d |  | loader [8 h]; the big cash [300971]; Big Quantity Backfiling [654.28]; Compactor [4 h]; TRUCK [16 h]; Labor [4 h] | 300,970.72 |  | CW | B02 | Foot | BFW | B02 | BF | EW |
|  | 2ndB | **Basement 2** |  | 2026-01-21 | 2026-08-04 |  |  |  |  |  |  |  |  |  |  |  |  |  |  |  |  |  |  |
| CON-B02-BAS02-1000 |  | Scaffolding works for Walls, Col. & Cores (B02) (Bas 02) | 7d | 2026-01-21 | 2026-01-29 | CON-B02-FOOT-1100, CON-B02-FOOT-1080 |  |  |  |  | -13d | 2d |  | Carpenter for concrete [21 h] |  |  | CW | B02 | Bsmt02 | SC | B02 | COL | Con |
| CON-B02-BAS02-1010 |  | RFT for Walls, Col. & Cores (B02) (Bas 02) | 12d | 2026-01-24 | 2026-02-07 | CON-B02-BAS02-1000 SS, CON-B02-BAS02-1000 FF, E-APP-B02-BAS02-1000, P-MDEL-1170 |  |  |  |  | -15d | 0d |  | Steel Fixer [72 h]; the big cash [856371]; Big Quantity RFT [21.08]; Labor [36 h] | 856,371.15 |  | CW | B02 | Bsmt02 | SFC | B02 | COL | Con |
| CON-B02-BAS02-1020 |  | Shuttering for Walls, Col. & Cores (B02) (Bas 02) | 12d | 2026-01-28 | 2026-02-10 | CON-B02-BAS02-1010 SS+3d, CON-B02-BAS02-1010 FF, E-APP-B02-BAS02-1000 |  |  |  |  | -15d | 0d |  | Carpenter for concrete [96 h]; the big cash [125116]; Labor [48 h] | 125,115.8 |  | CW | B02 | Bsmt02 | SC | B02 | COL | Con |
| CON-B02-BAS02-1030 |  | Pouring for Walls, Col. & Cores (B02) (Bas 02) | 2d | 2026-02-11 | 2026-02-12 | CON-B02-BAS02-1020, P-MDEL-1030 |  |  |  |  | -15d | 0d |  | Carpenter for concrete [4 h]; the big cash [187674]; Big Quantity Concrete [32.74] | 187,673.71 |  | CW | B02 | Bsmt02 | PC | B02 | COL | Con |
| CON-B02-BAS02-1040 |  | Shuttering for Slabs & Beams (B02) (Bas 02) | 8d | 2026-02-14 | 2026-02-22 | E-APP-B02-BAS02-1030, E-APP-B02-BAS02-1020, CON-B02-BAS02-1030 |  |  |  |  | -15d | 0d |  | Carpenter for concrete [112 h]; the big cash [1971584]; Labor [56 h] | 1,971,584.22 |  | CW | B02 | Bsmt02 | SS | B02 | Slb | Con |
| CON-B02-BAS02-1050 |  | Shuttering for Stairs (B02) (Bas 02) | 6d | 2026-02-16 | 2026-02-22 | CON-B02-BAS02-1040 SS+2d, E-APP-B02-BAS02-1010 |  |  |  |  | -15d | 0d |  | Carpenter for concrete [12 h]; the big cash [16436.2]; Labor [6 h] | 16,436.16 |  | CW | B02 | Bsmt02 | SS | B02 | STR | Con |
| CON-B02-BAS02-1060 |  | RFT for Slabs & Beams (B02) (Bas 02) | 10d | 2026-02-16 | 2026-02-26 | CON-B02-BAS02-1040 SS+2d, CON-B02-BAS02-1040 FF, E-APP-B02-BAS02-1020, E-APP-B02-BAS02-1030, P-MDEL-1170 |  |  |  |  | -12d | 0d |  | Steel Fixer [100 h]; the big cash [1930617]; Big Quantity RFT [47.53]; Labor [50 h] | 1,930,616.77 |  | CW | B02 | Bsmt02 | SFS | B02 | Slb | Con |
| CON-B02-BAS02-1070 |  | RFT for Stairs (B02) (Bas 02) | 6d | 2026-02-18 | 2026-02-24 | CON-B02-BAS02-1050 SS+2d, CON-B02-BAS02-1050 FF, E-APP-B02-BAS02-1010, P-MDEL-1170 |  |  |  |  | -15d | 0d |  | Steel Fixer [12 h]; the big cash [30855]; Big Quantity RFT [0.76]; Labor [6 h] | 30,854.95 |  | CW | B02 | Bsmt02 | SFS | B02 | STR | Con |
| CON-B02-BAS02-1080 |  | Pouring for Stairs (B02) (Bas 02) | 2d | 2026-02-25 | 2026-02-26 | CON-B02-BAS02-1070, P-MDEL-1030 |  |  |  |  | -15d | 0d |  | Carpenter for concrete [4 h]; the big cash [24654.2]; Big Quantity Concrete [4.39] | 24,654.24 |  | CW | B02 | Bsmt02 | PS | B02 | STR | Con |
| CON-B02-BAS02-1090 |  | Curing for Slabs, Beams & Stairs (B02) (Bas 02) | 5d | 2026-02-27 | 2026-03-03 | CON-B02-BAS02-1080 |  |  |  |  | -17d | 0d | Roya-The Big Project Phase 01 (B1-4)7 days | Labor [5 h] |  |  | CW | B02 | Bsmt02 | DS | B02 | Slb | Con |
| CON-B02-BAS02-1100 |  | Pouring for Slabs & Beams (B02) (Bas 02) | 2d | 2026-02-28 | 2026-03-01 | CON-B02-BAS02-1060, P-MDEL-1030 |  |  |  |  | -12d | 0d |  | Carpenter for concrete [4 h]; the big cash [1314389]; Big Quantity Concrete [342.97] | 1,314,389.48 |  | CW | B02 | Bsmt02 | PS | B02 | Slb | Con |
| CON-B02-BAS02-1110 |  | Dismantling Formwork (B02) (Bas 02) | 1d | 2026-03-23 | 2026-03-23 | CON-B02-BAS02-1100 FS+14d, CON-B02-BAS02-1090 |  |  |  |  | -19d | 4d | Roya-The Big Project Phase 01 (B1-4)7 days | Carpenter for concrete [3 h] |  |  | CW | B02 | Bsmt02 | DS | B02 | Slb | Con |

| ID | WBS | Activity | Duration | Start | Finish | Predecessors | Total float | Free float | Calendar | Resources | Cost | Work Type | Building Name | Floor Name | Activities | Buildings NO. | Site Cinstruction | BOQ Division |
| --- | --- | --- | --- | --- | --- | --- | --- | --- | --- | --- | --- | --- | --- | --- | --- | --- | --- | --- |
|  | 1 | **S.O.G** |  | 2026-06-10 | 2026-08-04 |  |  |  |  |  |  |  |  |  |  |  |  |  |
| CON-B02-SOG-1000 |  | Soil Backfilling & Compaction (B02) (Sog) | 7d | 2026-06-10 | 2026-06-17 | CON-B01-SOG-1000, CON-B02-BAS02-1110, CON-B02-FOOT-1120 | 186d | 0d |  | loader [14 h]; TRUCK [28 h]; the big cash [180582]; Compactor [7 h]; Big Quantity Backfiling [436.19]; Labor [7 h] | 180,582.43 | CW | B02 | SOG | BFW | B02 | BF | EW |
| CON-B02-SOG-1010 |  | Soil Compaction Test (B02) (Sog) | 2d | 2026-06-18 | 2026-06-20 | CON-B02-SOG-1000, CON-B01-SOG-1010 | 186d | 0d |  | Compactor [2 h]; the big cash [20064.7]; Labor [2 h] | 20,064.71 | CW | B02 | SOG | BFW | B02 | BF | EW |
| CON-B02-SOG-1020 |  | DPM Layer works (B02) (Sog) | 15d | 2026-06-21 | 2026-07-08 | CON-B02-SOG-1010, P-MDEL-1040, E-APP-B02-FOOT-1030 | 186d | 5d |  | Labor [15 h]; the big cash [259766] | 259,766.35 | CW | B02 | SOG | SSOG | B02 | SOG | Con |
| CON-B02-SOG-1030 |  | Blinding Concrete works (B02) (Sog) | 12d | 2026-07-04 | 2026-07-16 | CON-B02-SOG-1020 SS+5d, CON-B02-SOG-1020 FF, CON-B01-SOG-1030 | 181d | 3d |  | Carpenter for concrete [12 h]; the big cash [519533] | 519,532.71 | CW | B02 | SOG | SSOG | B02 | SOG | Con |
| CON-B02-SOG-1040 |  | Shuttering & RFT for S.O.G (B02) (Sog) | 15d | 2026-07-13 | 2026-07-30 | CON-B02-SOG-1030 SS+5d, CON-B02-SOG-1030 FF, CON-B01-SOG-1040, E-APP-B02-SOG-1010, E-APP-B02-SOG-1000, E-APP-B02-SOG-1010 FF, P-MDEL-1150 | 178d | 0d |  | Carpenter for concrete [120 h]; Steel Fixer [120 h]; the big cash [779299]; Big Quantity RFT [6.18]; Labor [120 h] | 779,299.06 | CW | B02 | SOG | SFSOG | B02 | SOG | Con |
| CON-B02-SOG-1050 |  | Pouring for S.O.G (B02) (Sog) | 12d | 2026-07-21 | 2026-08-04 | CON-B02-SOG-1040 SS+7d, CON-B02-SOG-1040 FF, CON-B01-SOG-1050, P-MDEL-1030 | 178d | 0d |  | Carpenter for concrete [24 h]; the big cash [1039065]; Big Quantity Concrete [1513.97] | 1,039,065.42 | CW | B02 | SOG | PSOG | B02 | SOG | Con |
| CON-B02-SOG-1060 |  | Curing & Smoothing Surface for S.O.G (B02) (Sog) | 10d | 2026-07-26 | 2026-08-04 | CON-B02-SOG-1050 SS+1d, CON-B02-SOG-1050 FF | 235d | 231d | Roya-The Big Project Phase 01 (B1-4)7 days | Labor [10 h] |  | CW | B02 | SOG | DSOG | B02 | SOG | Con |
|  | 1stB | **Basement 1** |  | 2026-03-04 | 2026-04-30 |  |  |  |  |  |  |  |  |  |  |  |  |  |
| CON-B02-BAS01-1000 |  | Scaffolding works for Walls, Col. & Cores (B02) (Bas 01) | 7d | 2026-03-04 | 2026-03-11 | CON-B02-BAS02-1090 | -15d | 0d |  | Carpenter for concrete [21 h] |  | CW | B02 | Bsmt01 | SC | B02 | COL | Con |
| CON-B02-BAS01-1010 |  | RFT for Walls, Col. & Cores (B02) (Bas 01) | 12d | 2026-03-04 | 2026-03-22 | CON-B02-BAS01-1000 SS, CON-B02-BAS01-1000 FF, E-APP-B02-BAS01-1000, P-MDEL-1160 | -15d | 0d |  | Steel Fixer [72 h]; the big cash [660502]; Big Quantity RFT [16.26]; Labor [36 h] | 660,501.51 | CW | B02 | Bsmt01 | SFC | B02 | COL | Con |
| CON-B02-BAS01-1020 |  | Shuttering for Walls, Col. & Cores (B02) (Bas 01) | 12d | 2026-03-07 | 2026-03-24 | CON-B02-BAS01-1010 SS+2d, CON-B02-BAS01-1010 FF, E-APP-B02-BAS01-1000 | -15d | 0d |  | Carpenter for concrete [72 h]; the big cash [96472.9]; Labor [36 h] | 96,472.91 | CW | B02 | Bsmt01 | SC | B02 | COL | Con |
| CON-B02-BAS01-1030 |  | Pouring for Walls, Col. & Cores (B02) (Bas 01) | 2d | 2026-03-25 | 2026-03-26 | CON-B02-BAS01-1020, P-MDEL-1030 | -15d | 0d |  | Carpenter for concrete [4 h]; the big cash [144709]; Big Quantity Concrete [25.24] | 144,709.37 | CW | B02 | Bsmt01 | PC | B02 | COL | Con |
| CON-B02-BAS01-1040 |  | Shuttering for Slabs & Beams (B02) (Bas 01) | 8d | 2026-03-28 | 2026-04-05 | E-APP-B02-BAS01-1030, E-APP-B02-BAS01-1020, CON-B02-BAS01-1030, CON-B02-BAS02-1110 | -15d | 0d |  | Carpenter for concrete [128 h]; the big cash [2270473]; Labor [64 h] | 2,270,472.81 | CW | B02 | Bsmt01 | SS | B02 | Slb | Con |
| CON-B02-BAS01-1050 |  | Shuttering for Stairs (B02) (Bas 01) | 6d | 2026-03-30 | 2026-04-05 | CON-B02-BAS01-1040 SS+2d, E-APP-B02-BAS01-1010 | -12d | 0d |  | Carpenter for concrete [12 h]; the big cash [16436.2]; Labor [6 h] | 16,436.16 | CW | B02 | Bsmt01 | SS | B02 | STR | Con |
| CON-B02-BAS01-1060 |  | RFT for Slabs & Beams (B02) (Bas 01) | 10d | 2026-03-30 | 2026-04-09 | CON-B02-BAS01-1040 SS+2d, CON-B02-BAS01-1040 FF, E-APP-B02-BAS01-1020, E-APP-B02-BAS01-1030, P-MDEL-1160 | -15d | 0d |  | Steel Fixer [100 h]; the big cash [2217754]; Big Quantity RFT [54.6]; Labor [50 h] | 2,217,753.89 | CW | B02 | Bsmt01 | SFS | B02 | Slb | Con |
| CON-B02-BAS01-1070 |  | RFT for Stairs (B02) (Bas 01) | 6d | 2026-04-01 | 2026-04-07 | CON-B02-BAS01-1050 SS+2d, CON-B02-BAS01-1050 FF, E-APP-B02-BAS01-1010, P-MDEL-1160 | -12d | 0d |  | Steel Fixer [12 h]; the big cash [30855]; Big Quantity RFT [0.76]; Labor [6 h] | 30,854.95 | CW | B02 | Bsmt01 | SFS | B02 | STR | Con |
| CON-B02-BAS01-1080 |  | Pouring for Stairs (B02) (Bas 01) | 2d | 2026-04-08 | 2026-04-09 | CON-B02-BAS01-1070, P-MDEL-1030 | -12d | 0d |  | Carpenter for concrete [4 h]; the big cash [24654.2]; Big Quantity Concrete [4.39] | 24,654.24 | CW | B02 | Bsmt01 | PS | B02 | STR | Con |
| CON-B02-BAS01-1100 |  | Curing for Slabs, Beams Stairs (B02) (Bas 01) | 5d | 2026-04-10 | 2026-04-14 | CON-B02-BAS01-1080 | -13d | 5d | Roya-The Big Project Phase 01 (B1-4)7 days | Labor [5 h] |  | CW | B02 | Bsmt01 | DS | B02 | Slb | Con |
| CON-B02-BAS01-1090 |  | Pouring for Slabs & Beams (B02) (Bas 01) | 2d | 2026-04-11 | 2026-04-12 | CON-B02-BAS01-1060, P-MDEL-1030 | -15d | 0d |  | Carpenter for concrete [4 h]; the big cash [1513649]; Big Quantity Concrete [394.97] | 1,513,648.54 | CW | B02 | Bsmt01 | PS | B02 | Slb | Con |
| CON-B02-BAS01-1110 |  | Dismantling Formwork (B02) (Bas 01) | 1d | 2026-04-30 | 2026-04-30 | CON-B02-BAS01-1090 FS+14d, CON-B02-BAS01-1100 FS+10d | -18d | 0d | Roya-The Big Project Phase 01 (B1-4)7 days | Carpenter for concrete [3 h] |  | CW | B02 | Bsmt01 | DS | B02 | Slb | Con |
|  | SUP | **Superstructure** |  | 2026-04-18 | 2027-03-23 |  |  |  |  |  |  |  |  |  |  |  |  |  |
|  | GF | **GR Floor** |  | 2026-04-18 | 2026-06-19 |  |  |  |  |  |  |  |  |  |  |  |  |  |
| CON-B02-GR-1000 |  | Scaffolding works for Walls, Col. & Cores (B02) (GR) | 7d | 2026-04-18 | 2026-04-25 | CON-B02-BAS01-1090 FS+3d | -11d | 0d |  | Carpenter for concrete [21 h] |  | CW | B02 | GF | SC | B02 | COL | Con |
| CON-B02-GR-1010 |  | RFT for Walls, Col. & Cores (B02) (GR) | 12d | 2026-04-18 | 2026-04-30 | CON-B02-GR-1000 SS, CON-B02-GR-1000 FF, E-APP-B02-GR-1000, P-MDEL-1130 | -11d | 0d |  | Steel Fixer [48 h]; the big cash [491157]; Big Quantity RFT [12.09]; Labor [24 h] | 491,156.73 | CW | B02 | GF | SFC | B02 | COL | Con |
| CON-B02-GR-1020 |  | Shuttering for Walls, Col. & Cores (B02) (GR) | 12d | 2026-04-20 | 2026-05-03 | CON-B02-GR-1010 SS+2d, CON-B02-GR-1010 FF, E-APP-B02-GR-1000 | -11d | 0d |  | Carpenter for concrete [48 h]; the big cash [71724.9]; Labor [24 h] | 71,724.85 | CW | B02 | GF | SC | B02 | COL | Con |
| CON-B02-GR-1030 |  | Pouring for Walls, Col. & Cores (B02) (GR) | 2d | 2026-05-04 | 2026-05-05 | CON-B02-GR-1020, P-MDEL-1030 | -11d | 0d |  | Carpenter for concrete [4 h]; the big cash [107587]; Big Quantity Concrete [18.77] | 107,587.28 | CW | B02 | GF | PS | B02 | COL | Con |
| CON-B02-GR-1050 |  | Shuttering for Stairs (B02) (GR) | 8d | 2026-05-07 | 2026-05-16 | CON-B02-GR-1030 FS+1d, E-APP-B02-GR-1010 | -2d | 0d |  | Carpenter for concrete [16 h]; the big cash [32872.3]; Labor [8 h] | 32,872.32 | CW | B02 | GF | SS | B02 | STR | Con |
| CON-B02-GR-1070 |  | RFT for Stairs (B02) (GR) | 8d | 2026-05-10 | 2026-05-18 | CON-B02-GR-1050 SS+2d, CON-B02-GR-1050 FF, E-APP-B02-GR-1010, P-MDEL-1130 | -2d | 0d |  | Steel Fixer [16 h]; the big cash [61714]; Big Quantity RFT [1.52]; Labor [8 h] | 61,713.97 | CW | B02 | GF | SFS | B02 | STR | Con |
| CON-B02-GR-1040 |  | Shuttering for Slabs & Beams (B02) (GR) | 10d | 2026-05-11 | 2026-05-21 | CON-B02-GR-1030, CON-B02-BAS01-1110 FS+10d, E-APP-B02-GR-1020, E-APP-B02-GR-1030 | -15d | 0d |  | Carpenter for concrete [100 h]; the big cash [1785340]; Labor [50 h] | 1,785,340.2 | CW | B02 | GF | SS | B02 | Slb | Con |
| CON-B02-GR-1060 |  | RFT for Slabs & Beams (B02) (GR) | 12d | 2026-05-13 | 2026-05-26 | CON-B02-GR-1040 SS+2d, CON-B02-GR-1040 FF, E-APP-B02-GR-1020, E-APP-B02-GR-1030, P-MDEL-1130 | -15d | 0d |  | Steel Fixer [96 h]; the big cash [1887885]; Big Quantity RFT [46.48]; Labor [48 h] | 1,887,885.37 | CW | B02 | GF | SFS | B02 | Slb | Con |
| CON-B02-GR-1080 |  | Pouring for Stairs (B02) (GR) | 2d | 2026-05-19 | 2026-05-20 | CON-B02-GR-1070, P-MDEL-1030 | -2d | 0d |  | Carpenter for concrete [4 h]; the big cash [49308.5]; Big Quantity Concrete [8.78] | 49,308.48 | CW | B02 | GF | PS | B02 | STR | Con |
| CON-B02-GR-1090 |  | Curing for Slabs, Beams Stairs (B02) (GR) | 5d | 2026-05-21 | 2026-05-25 | CON-B02-GR-1080 | -2d | 0d | Roya-The Big Project Phase 01 (B1-4)7 days | Labor [5 h] |  | CW | B02 | GF | DS | B02 | Slb | Con |
| CON-B02-GR-1100 |  | Pouring for Slabs & Beams (B02) (GR) | 2d | 2026-06-01 | 2026-06-02 | CON-B02-GR-1060, P-MDEL-1030 | -15d | 0d |  | Carpenter for concrete [4 h]; the big cash [1190227]; Big Quantity Concrete [310.41] | 1,190,226.8 | CW | B02 | GF | PS | B02 | Slb | Con |
| CON-B02-GR-1110 |  | Dismantling Formwork (B02) (GR) | 1d | 2026-06-19 | 2026-06-19 | CON-B02-GR-1100 FS+14d | 15d | 17d | Roya-The Big Project Phase 01 (B1-4)7 days | Carpenter for concrete [3 h] |  | CW | B02 | GF | DS | B02 | Slb | Con |

| ID | WBS | Activity | Duration | Start | Finish | Predecessors | Total float | Free float | Calendar | Resources | Cost | Work Type | Building Name | Floor Name | Activities | Buildings NO. | Site Cinstruction | BOQ Division |
| --- | --- | --- | --- | --- | --- | --- | --- | --- | --- | --- | --- | --- | --- | --- | --- | --- | --- | --- |
|  | 1stF | **1st Floor** |  | 2026-06-15 | 2026-08-11 |  |  |  |  |  |  |  |  |  |  |  |  |  |
| CON-B02-1ST-1000 |  | Scaffolding works for Walls, Col. & Cores (B02) (1st) | 6d | 2026-06-15 | 2026-06-21 | CON-B02-GR-1090 FS+20d | -2d | 0d |  | Carpenter for concrete [18 h] |  | CW | B02 | 1stF | SC | B02 | COL | Con |
| CON-B02-1ST-1010 |  | RFT for Walls, Col. & Cores (B02) (1st) | 10d | 2026-06-18 | 2026-06-29 | CON-B02-1ST-1000 SS+3d, CON-B02-1ST-1000 FF, E-APP-B02-1ST-1000, P-MDEL-1120 | -2d | 0d |  | Steel Fixer [40 h]; the big cash [290453]; Big Quantity RFT [7.15]; Labor [20 h] | 290,453.31 | CW | B02 | 1stF | SFC | B02 | COL | Con |
| CON-B02-1ST-1020 |  | Shuttering for Walls, Col. & Cores (B02) (1st) | 10d | 2026-06-22 | 2026-07-04 | CON-B02-1ST-1010 SS+3d, CON-B02-1ST-1010 FF, E-APP-B02-1ST-1000 | -2d | 0d |  | Carpenter for concrete [20 h]; the big cash [42415.3]; Labor [10 h] | 42,415.29 | CW | B02 | 1stF | SC | B02 | COL | Con |
| CON-B02-1ST-1030 |  | Pouring for Walls, Col. & Cores (B02) (1st) | 2d | 2026-07-05 | 2026-07-06 | CON-B02-1ST-1020, P-MDEL-1030 | -2d | 0d |  | Carpenter for concrete [4 h]; the big cash [63622.9]; Big Quantity Concrete [13] | 63,622.93 | CW | B02 | 1stF | PC | B02 | COL | Con |
| CON-B02-1ST-1040 |  | Shuttering for Slabs, Beams & Stairs (B02) (1st) | 12d | 2026-07-07 | 2026-07-20 | E-APP-B02-1ST-1030, E-APP-B02-1ST-1020, E-APP-B02-1ST-1010, CON-B02-1ST-1030, CON-B02-GR-1110 | -2d | 0d |  | Carpenter for concrete [96 h]; the big cash [1552421]; Labor [48 h] | 1,552,420.74 | CW | B02 | 1stF | SS | B02 | Slb | Con |
| CON-B02-1ST-1050 |  | RFT for Slabs, Beams & Stairs (B02) (1st) | 12d | 2026-07-12 | 2026-07-26 | CON-B02-1ST-1040 SS+4d, CON-B02-1ST-1040 FF, E-APP-B02-1ST-1010, E-APP-B02-1ST-1020, E-APP-B02-1ST-1030, P-MDEL-1120 | -2d | 0d |  | Steel Fixer [96 h]; the big cash [1677255]; Big Quantity RFT [41.29]; Labor [48 h] | 1,677,255.18 | CW | B02 | 1stF | SFS | B02 | Slb | Con |
| CON-B02-1ST-1060 |  | Pouring for Slabs, Beams & Stairs (B02) (1st) | 3d | 2026-07-27 | 2026-07-29 | CON-B02-1ST-1050, P-MDEL-1030 | -2d | 0d |  | Carpenter for concrete [6 h]; the big cash [1034947]; Big Quantity Concrete [270.09] | 1,034,947.16 | CW | B02 | 1stF | PS | B02 | Slb | Con |
| CON-B02-1ST-1070 |  | Curing for Slabs, Beams & Stairs (B02) (1st) | 5d | 2026-07-30 | 2026-08-03 | CON-B02-1ST-1060 | -2d | 0d | Roya-The Big Project Phase 01 (B1-4)7 days | Labor [5 h] |  | CW | B02 | 1stF | DS | B02 | Slb | Con |
| CON-B02-1ST-1080 |  | Dismantling Formwork (B02) (1st) | 1d | 2026-08-11 | 2026-08-11 | CON-B02-1ST-1060 FS+10d | 21d | 24d | Roya-The Big Project Phase 01 (B1-4)7 days | Carpenter for concrete [3 h] |  | CW | B02 | 1stF | DS | B02 | Slb | Con |
|  | 2ndF | **2nd Floor** |  | 2026-08-12 | 2026-10-13 |  |  |  |  |  |  |  |  |  |  |  |  |  |
| CON-B02-2ND-1000 |  | Scaffolding works for Walls, Col. & Cores (B02) (2nd) | 5d | 2026-08-12 | 2026-08-17 | CON-B02-1ST-1070 FS+8d | -2d | 0d |  | Carpenter for concrete [15 h] |  | CW | B02 | 2ndF | SC | B02 | COL | Con |
| CON-B02-2ND-1010 |  | RFT for Walls, Col. & Cores (B02) (2nd) | 12d | 2026-08-15 | 2026-08-29 | CON-B02-2ND-1000 SS+2d, CON-B02-2ND-1000 FF, E-APP-B02-2ND-1000, P-MDEL-1110 | -2d | 0d |  | Steel Fixer [24 h]; the big cash [290453]; Big Quantity RFT [7.15]; Labor [12 h] | 290,453.31 | CW | B02 | 2ndF | SFC | B02 | COL | Con |
| CON-B02-2ND-1020 |  | Shuttering for Walls, Col. & Cores (B02) (2nd) | 12d | 2026-08-18 | 2026-09-01 | CON-B02-2ND-1010 SS+3d, CON-B02-2ND-1010 FF, E-APP-B02-2ND-1000 | -2d | 0d |  | Carpenter for concrete [24 h]; the big cash [42415.3]; Labor [12 h] | 42,415.29 | CW | B02 | 2ndF | SC | B02 | COL | Con |
| CON-B02-2ND-1030 |  | Pouring for Walls, Col. & Cores (B02) (2nd) | 2d | 2026-09-02 | 2026-09-03 | CON-B02-2ND-1020, P-MDEL-1030 | -2d | 0d |  | Carpenter for concrete [4 h]; the big cash [63622.9]; Big Quantity Concrete [11.1] | 63,622.93 | CW | B02 | 2ndF | PC | B02 | COL | Con |
| CON-B02-2ND-1040 |  | Shuttering for Slabs, Beams & Stairs (B02) (2nd) | 15d | 2026-09-05 | 2026-09-21 | E-APP-B02-2ND-1030, E-APP-B02-2ND-1020, E-APP-B02-2ND-1010, CON-B02-2ND-1030, CON-B02-1ST-1080 | -2d | 0d |  | Carpenter for concrete [90 h]; the big cash [1538338]; Labor [45 h] | 1,538,338.14 | CW | B02 | 2ndF | SS | B02 | Slb | Con |
| CON-B02-2ND-1050 |  | RFT for Slabs, Beams & Stairs (B02) (2nd) | 15d | 2026-09-09 | 2026-09-26 | CON-B02-2ND-1040 SS+4d, CON-B02-2ND-1040 FF, E-APP-B02-2ND-1010, E-APP-B02-2ND-1020, E-APP-B02-2ND-1030, P-MDEL-1110 | -2d | 0d |  | Steel Fixer [90 h]; the big cash [1663672]; Big Quantity RFT [40.96]; Labor [45 h] | 1,663,672.33 | CW | B02 | 2ndF | SFS | B02 | Slb | Con |
| CON-B02-2ND-1060 |  | Pouring for Slabs, Beams & Stairs (B02) (2nd) | 3d | 2026-09-27 | 2026-09-29 | CON-B02-2ND-1050, P-MDEL-1030 | -2d | 0d |  | Carpenter for concrete [6 h]; the big cash [1025559]; Big Quantity Concrete [267.64] | 1,025,558.76 | CW | B02 | 2ndF | PS | B02 | Slb | Con |
| CON-B02-2ND-1070 |  | Curing for Slabs, Beams & Stairs (B02) (2nd) | 5d | 2026-09-30 | 2026-10-04 | CON-B02-2ND-1060 | -2d | 0d | Roya-The Big Project Phase 01 (B1-4)7 days | Labor [5 h] |  | CW | B02 | 2ndF | DS | B02 | Slb | Con |
| CON-B02-2ND-1080 |  | Dismantling Formwork (B02) (2nd) | 1d | 2026-10-13 | 2026-10-13 | CON-B02-2ND-1060 FS+10d | 19d | 21d | Roya-The Big Project Phase 01 (B1-4)7 days | Carpenter for concrete [3 h] |  | CW | B02 | 2ndF | DS | B02 | Slb | Con |
|  | 3rdF | **3rd Floor** |  | 2026-10-13 | 2026-12-11 |  |  |  |  |  |  |  |  |  |  |  |  |  |
| CON-B02-3RD-1000 |  | Scaffolding works for Walls, Col. & Cores (B02) (3rd) | 5d | 2026-10-13 | 2026-10-18 | CON-B02-2ND-1070 FS+8d | -2d | 0d |  | Carpenter for concrete [15 h] |  | CW | B02 | 3rdF | SC | B02 | COL | Con |
| CON-B02-3RD-1010 |  | RFT for Walls, Col. & Cores (B02) (3rd) | 12d | 2026-10-15 | 2026-10-28 | CON-B02-3RD-1000 SS+2d, CON-B02-3RD-1000 FF, E-APP-B02-3RD-1000, P-MDEL-1100 | -2d | 0d |  | Steel Fixer [24 h]; the big cash [287346]; Big Quantity RFT [7.07]; Labor [12 h] | 287,345.88 | CW | B02 | 3rdF | SFC | B02 | COL | Con |
| CON-B02-3RD-1020 |  | Shuttering for Walls, Col. & Cores (B02) (3rd) | 12d | 2026-10-19 | 2026-11-01 | CON-B02-3RD-1010 SS+3d, CON-B02-3RD-1010 FF, E-APP-B02-3RD-1000 | -2d | 0d |  | Carpenter for concrete [24 h]; the big cash [41962.1]; Labor [12 h] | 41,962.11 | CW | B02 | 3rdF | SC | B02 | COL | Con |
| CON-B02-3RD-1030 |  | Pouring for Walls, Col. & Cores (B02) (3rd) | 2d | 2026-11-02 | 2026-11-03 | CON-B02-3RD-1020, P-MDEL-1030 | -2d | 0d |  | Carpenter for concrete [4 h]; the big cash [62943.2]; Big Quantity Concrete [10.98] | 62,943.17 | CW | B02 | 3rdF | PC | B02 | COL | Con |
| CON-B02-3RD-1040 |  | Shuttering for Slabs, Beams & Stairs(B02) (3rd) | 15d | 2026-11-04 | 2026-11-21 | E-APP-B02-3RD-1030, E-APP-B02-3RD-1020, E-APP-B02-3RD-1010, CON-B02-3RD-1030, CON-B02-2ND-1080 | -2d | 0d |  | Carpenter for concrete [90 h]; the big cash [1411527]; Labor [45 h] | 1,411,527 | CW | B02 | 3rdF | SS | B02 | Slb | Con |
| CON-B02-3RD-1050 |  | RFT for Slabs, Beams & Stairs (B02) (3rd) | 15d | 2026-11-09 | 2026-11-25 | CON-B02-3RD-1040 SS+4d, CON-B02-3RD-1040 FF, E-APP-B02-3RD-1010, E-APP-B02-3RD-1020, E-APP-B02-3RD-1030, P-MDEL-1100 | -2d | 0d |  | Steel Fixer [90 h]; the big cash [1375591]; Big Quantity RFT [33.86]; Labor [45 h] | 1,375,590.95 | CW | B02 | 3rdF | SFS | B02 | Slb | Con |
| CON-B02-3RD-1060 |  | Pouring for Slabs, Beams & Stairs (B02) (3rd) | 3d | 2026-11-26 | 2026-11-29 | CON-B02-3RD-1050, P-MDEL-1030 | -2d | 0d |  | Carpenter for concrete [6 h]; the big cash [941018]; Big Quantity Concrete [245.77] | 941,018 | CW | B02 | 3rdF | PS | B02 | Slb | Con |
| CON-B02-3RD-1070 |  | Curing for Slabs, Beams & Stairs (B02) (3rd) | 5d | 2026-11-30 | 2026-12-04 | CON-B02-3RD-1060 | -3d | 0d | Roya-The Big Project Phase 01 (B1-4)7 days | Labor [5 h] |  | CW | B02 | 3rdF | DS | B02 | Slb | Con |
| CON-B02-3RD-1080 |  | Dismantling Formwork (B02) (3rd) | 1d | 2026-12-11 | 2026-12-11 | CON-B02-3RD-1060 FS+10d | 21d | 23d | Roya-The Big Project Phase 01 (B1-4)7 days | Carpenter for concrete [3 h] |  | CW | B02 | 3rdF | DS | B02 | Slb | Con |

| ID | WBS | Activity | Duration | Start | Finish | Predecessors | Complete | Planned start | Planned finish | Total float | Free float | Calendar | Resources | Cost | Actual cost | Work Type | Building Name | Floor Name | Activities | Buildings NO. | Site Cinstruction | BOQ Division |
| --- | --- | --- | --- | --- | --- | --- | --- | --- | --- | --- | --- | --- | --- | --- | --- | --- | --- | --- | --- | --- | --- | --- |
|  | 4thF | **4th Floor** |  | 2026-12-13 | 2027-02-11 |  |  |  |  |  |  |  |  |  |  |  |  |  |  |  |  |  |
| CON-B02-4TH-1000 |  | Scaffolding works for Walls, Col. & Cores (B02) (4th) | 5d | 2026-12-13 | 2026-12-17 | CON-B02-3RD-1070 FS+8d |  |  |  | -2d | 0d |  | Carpenter for concrete [15 h] |  |  | CW | B02 | 4thF | SC | B02 | COL | Con |
| CON-B02-4TH-1010 |  | RFT for Walls, Col. & Cores (B02) (4th) | 12d | 2026-12-15 | 2026-12-28 | CON-B02-4TH-1000 SS+2d, CON-B02-4TH-1000 FF, E-APP-B02-4TH-1000, P-MDEL-1090 |  |  |  | -2d | 0d |  | Steel Fixer [24 h]; the big cash [287346]; Big Quantity RFT [7.07]; Labor [12 h] | 287,345.88 |  | CW | B02 | 4thF | SFC | B02 | COL | Con |
| CON-B02-4TH-1020 |  | Shuttering for Walls, Col. & Cores (B02) (4th) | 12d | 2026-12-19 | 2026-12-31 | CON-B02-4TH-1010 SS+3d, CON-B02-4TH-1010 FF, E-APP-B02-4TH-1000 |  |  |  | -2d | 0d |  | Carpenter for concrete [24 h]; the big cash [41962.1]; Labor [12 h] | 41,962.11 |  | CW | B02 | 4thF | SC | B02 | COL | Con |
| CON-B02-4TH-1030 |  | Pouring for Walls, Col. & Cores (B02) (4th) | 2d | 2027-01-02 | 2027-01-03 | CON-B02-4TH-1020, P-MDEL-1030 |  |  |  | -2d | 0d |  | Carpenter for concrete [4 h]; the big cash [62943.2]; Big Quantity Concrete [10.98] | 62,943.17 |  | CW | B02 | 4thF | PC | B02 | COL | Con |
| CON-B02-4TH-1040 |  | Shuttering for Slabs, Beams & Stairs (B02) (4th) | 15d | 2027-01-04 | 2027-01-21 | E-APP-B02-4TH-1030, E-APP-B02-4TH-1020, E-APP-B02-4TH-1010, CON-B02-4TH-1030, CON-B02-3RD-1080 |  |  |  | -2d | 0d |  | Carpenter for concrete [90 h]; the big cash [1420117]; Labor [45 h] | 1,420,116.69 |  | CW | B02 | 4thF | SS | B02 | Slb | Con |
| CON-B02-4TH-1050 |  | RFT for Slabs, Beams & Stairs (B02) (4th) | 15d | 2027-01-09 | 2027-01-26 | CON-B02-4TH-1040 SS+3d, CON-B02-4TH-1040 FF, E-APP-B02-4TH-1010, E-APP-B02-4TH-1020, E-APP-B02-4TH-1030, P-MDEL-1090 |  |  |  | -2d | 0d |  | Steel Fixer [90 h]; the big cash [1396303]; Big Quantity RFT [34.37]; Labor [45 h] | 1,396,302.87 |  | CW | B02 | 4thF | SFS | B02 | Slb | Con |
| CON-B02-4TH-1060 |  | Pouring for Slabs, Beams & Stairs (B02) (4th) | 3d | 2027-01-27 | 2027-01-30 | CON-B02-4TH-1050, P-MDEL-1030 |  |  |  | -2d | 0d |  | Carpenter for concrete [6 h]; the big cash [946744]; Big Quantity Concrete [247.25] | 946,744.46 |  | CW | B02 | 4thF | PS | B02 | Slb | Con |
| CON-B02-4TH-1070 |  | Curing for Slabs, Beams & Stairs (B02) (4th) | 5d | 2027-01-31 | 2027-02-04 | CON-B02-4TH-1060 |  |  |  | -3d | 0d | Roya-The Big Project Phase 01 (B1-4)7 days | Labor [5 h] |  |  | CW | B02 | 4thF | DS | B02 | Slb | Con |
| CON-B02-4TH-1080 |  | Dismantling Formwork (B02) (4th) | 1d | 2027-02-11 | 2027-02-11 | CON-B02-4TH-1060 FS+10d |  |  |  | 19d | 22d | Roya-The Big Project Phase 01 (B1-4)7 days | Carpenter for concrete [3 h] |  |  | CW | B02 | 4thF | DS | B02 | Slb | Con |
|  | RF | **Roof Floor** |  | 2027-02-13 | 2027-03-23 |  |  |  |  |  |  |  |  |  |  |  |  |  |  |  |  |  |
| CON-B02-RF-1000 |  | Scaffolding works for Walls, Col. & Cores (B02) (RF) | 2d | 2027-02-13 | 2027-02-14 | CON-B02-4TH-1070 FS+8d |  |  |  | -2d | 0d |  | Carpenter for concrete [6 h] |  |  | CW | B02 | RF | SC | B02 | COL | Con |
| CON-B02-RF-1010 |  | RFT for Walls, Col. & Cores (B02) (RF) | 3d | 2027-02-15 | 2027-02-17 | CON-B02-RF-1000, E-APP-B02-RF-1000, P-MDEL-1200 |  |  |  | -2d | 0d |  | Steel Fixer [12 h]; the big cash [98462.9]; Big Quantity RFT [2.42]; Labor [6 h] | 98,462.88 |  | CW | B02 | RF | SFC | B02 | COL | Con |
| CON-B02-RF-1020 |  | Shuttering for Walls, Col. & Cores (B02) (RF) | 3d | 2027-02-18 | 2027-02-21 | CON-B02-RF-1010, E-APP-B02-RF-1000 |  |  |  | -2d | 0d |  | Carpenter for concrete [12 h]; the big cash [14384.9]; Labor [6 h] | 14,384.92 |  | CW | B02 | RF | SC | B02 | COL | Con |
| CON-B02-RF-1030 |  | Pouring for Walls, Col. & Cores (B02) (RF) | 2d | 2027-02-22 | 2027-02-23 | CON-B02-RF-1020, P-MDEL-1030 |  |  |  | -2d | 0d |  | Carpenter for concrete [4 h]; the big cash [21577.4]; Big Quantity Concrete [3.76] | 21,577.38 |  | CW | B02 | RF | SFS | B02 | COL | Con |
| CON-B02-RF-1040 |  | Shuttering for Slabs, Beams (B02) (RF) | 4d | 2027-02-24 | 2027-02-28 | E-APP-B02-RF-1020, E-APP-B02-RF-1010, CON-B02-RF-1030 |  |  |  | -2d | 0d |  | Carpenter for concrete [8 h]; the big cash [102501]; Labor [4 h] | 102,501.45 |  | CW | B02 | RF | SS | B02 | Slb | Con |
| CON-B02-RF-1050 |  | RFT for Slabs, Beams (B02) (RF) | 4d | 2027-03-01 | 2027-03-04 | CON-B02-RF-1040, E-APP-B02-RF-1010, E-APP-B02-RF-1020, P-MDEL-1200 |  |  |  | -2d | 0d |  | Steel Fixer [8 h]; the big cash [135612]; Big Quantity RFT [3.34]; Labor [4 h] | 135,611.77 |  | CW | B02 | RF | PC | B02 | Slb | Con |
| CON-B02-RF-1060 |  | Pouring for Slabs, Beams (B02) (RF) | 2d | 2027-03-06 | 2027-03-07 | CON-B02-RF-1050, P-MDEL-1030, CON-B02-4TH-1080 |  |  |  | -2d | 0d |  | Carpenter for concrete [4 h]; the big cash [68330]; Big Quantity Concrete [17.79] | 68,330 |  | CW | B02 | RF | PS | B02 | Slb | Con |
| CON-B02-RF-1070 |  | Curing for Slabs, Beams (B02) (RF) | 5d | 2027-03-08 | 2027-03-12 | CON-B02-RF-1060 |  |  |  | 14d | 10d | Roya-The Big Project Phase 01 (B1-4)7 days | Labor [5 h] |  |  | CW | B02 | RF | DS | B02 | Slb | Con |
| CON-B02-RF-1080 |  | Dismantling Formwork (B02) (RF) | 1d | 2027-03-23 | 2027-03-23 | CON-B02-RF-1060 FS+10d, CON-B02-RF-1070 |  |  |  | 4d | 0d | Roya-The Big Project Phase 01 (B1-4)7 days | Carpenter for concrete [3 h] |  |  | CW | B02 | RF | DS | B02 | Slb | Con |
|  | P01 | **Part 01** |  | 2025-10-05 | 2027-04-14 |  |  |  |  |  |  |  |  |  |  |  |  |  |  |  |  |  |
|  | B04 | **B04** |  | 2025-10-05 | 2027-04-14 |  |  |  |  |  |  |  |  |  |  |  |  |  |  |  |  |  |
|  | SUB | **Substructure** |  | 2025-10-05 | 2026-05-21 |  |  |  |  |  |  |  |  |  |  |  |  |  |  |  |  |  |
|  | 1 | **Footing** |  | 2025-12-01 | 2026-03-08 |  |  |  |  |  |  |  |  |  |  |  |  |  |  |  |  |  |
| CON-B04-FOOT-1000 |  | Shuttering for PC Raft (B04) (footing) | 1d | 2025-12-01 A | 2025-12-03 A | E-APP-B04-FOOT-1010, CON-EW-B04-1010, P-MDEL-1020 | 100% | 2025-12-31 | 2025-12-31 |  |  |  | Carpenter for concrete [3 h]; the big cash [606042]; Labor [3 h] | 606,042 | 606,042 | CW | B04 | Foot | SPC | B04 | PC | Con |
| CON-B04-FOOT-1010 |  | Pouring for PC Raft (B04) (footing) | 1d | 2025-12-22 A | 2025-12-23 A | CON-B04-FOOT-1000, P-MDEL-1030 | 100% | 2026-01-01 | 2026-01-01 |  |  |  | Carpenter for concrete [2 h]; the big cash [1414098]; Big Quantity Concrete [557.28] | 1,414,098 | 1,414,098 | CW | B04 | Foot | PPC | B04 | PC | Con |
| CON-B04-FOOT-1020 |  | Curing for PC Raft (B04) (footing) | 3d | 2025-12-23 A | 2025-12-23 A | CON-B04-FOOT-1010 | 100% | 2026-01-02 | 2026-01-04 |  |  | Roya-The Big Project Phase 01 (B1-4)7 days | Labor [3 h] |  |  | CW | B04 | Foot | DPC | B04 | PC | Con |
| CON-B04-FOOT-1030 |  | Waterproofing & Ins. Protection works (B04) (footing) | 2d | 2025-12-24 A | 2025-12-24 A | CON-B04-FOOT-1020 SS+3d, P-MDEL-1040, E-APP-B04-FOOT-1000, CON-B04-FOOT-1020 FF | 100% | 2026-01-05 | 2026-01-06 |  |  |  | Water Proofing Tech [6 h]; the big cash [1133535]; Big Quantity Proofing [2518.97] | 1,133,534.97 | 1,133,534.97 | CW | B04 | Foot | WP | B04 | WP | T&M |
| CON-B04-FOOT-1040 |  | Shuttering for RC Raft & Footings (B04) (footing) | 8d | 2026-01-12 | 2026-01-20 | CON-B04-FOOT-1030, E-APP-B04-FOOT-1020 |  |  |  | 1d | 0d |  | Carpenter for concrete [144 h]; the big cash [4333635]; Labor [72 h] | 4,333,635.39 |  | CW | B04 | Foot | SF | B04 | RC | Con |
| CON-B04-FOOT-1050 |  | RFT for RC Raft & Footings (B04) (footing) | 8d | 2026-01-13 | 2026-01-21 | CON-B04-FOOT-1040 SS+1d, E-APP-B04-FOOT-1030, CON-B04-FOOT-1040 FF, P-MDEL-1000 |  |  |  | 1d | 0d |  | Steel Fixer [240 h]; loader [1 h]; the big cash [12042079]; Big Quantity RFT [296.46]; Labor [120 h] | 12,042,079.29 |  | CW | B04 | Foot | SFF | B04 | RC | Con |
| CON-B04-FOOT-1060 |  | Shuttering for Columns & Walls Below SOG (B01) (footing) | 5d | 2026-01-18 | 2026-01-22 | CON-B04-FOOT-1040 SS+5d, E-APP-B04-FOOT-1020 |  |  |  | 2d | 0d |  | Carpenter for concrete [20 h]; the big cash [95249.7]; Labor [10 h] | 95,249.7 |  |  |  | Foot |  | B04 | BSOG | Con |
| CON-B04-FOOT-1070 |  | RFT for Columns & Walls Below SOG (B04) (footing) | 5d | 2026-01-19 | 2026-01-24 | CON-B04-FOOT-1060 SS+1d, CON-B04-FOOT-1060 FF, E-APP-B04-FOOT-1030, P-MDEL-1000 |  |  |  | 2d | 0d |  | Steel Fixer [10 h]; the big cash [127646]; Big Quantity RFT [3.14]; Labor [5 h] | 127,645.88 |  |  |  | Foot |  | B04 | BSOG | Con |
| CON-B04-FOOT-1080 |  | Pouring for RC Raft & Footings (B04) (footing) | 2d | 2026-01-26 | 2026-01-27 | CON-B04-FOOT-1050 SS+10d, P-MDEL-1030 |  |  |  | 1d | 0d |  | Carpenter for concrete [4 h]; the big cash [10111816]; Big Quantity Concrete [2003.53] | 10,111,815.91 |  | CW | B04 | Foot | PF | B04 | RC | Con |
| CON-B04-FOOT-1090 |  | Pouring Columns & Walls Below SOG (B01) (footing) | 1d | 2026-01-26 | 2026-01-26 | CON-B04-FOOT-1070 |  |  |  | 2d | 1d |  | Carpenter for concrete [2 h]; the big cash [222249]; Big Quantity Concrete [34.89] | 222,249.3 |  |  |  | Foot |  | B04 | BSOG | Con |
| CON-B04-FOOT-1100 |  | Curing & Deshuttering for RC Raft & Footings (B04) (footing) | 3d | 2026-01-28 | 2026-01-30 | CON-B04-FOOT-1080, CON-B04-FOOT-1090 |  |  |  | 1d | 0d | Roya-The Big Project Phase 01 (B1-4)7 days | Labor [3 h]; Carpenter for concrete [6 h] |  |  | CW | B04 | Foot | DSF | B04 | RC | Con |
| CON-B04-FOOT-1110 |  | Bitumen Ins. for RC Raft & Footings (B04) (footing) | 3d | 2026-03-02 | 2026-03-04 | CON-B04-FOOT-1100, P-MDEL-1050, E-APP-B04-FOOT-1000 |  |  |  | 261d | 0d |  | Water Proofing Tech [9 h]; the big cash [181366]; Big Quantity Bitumine [2015.17] | 181,365.6 |  | CW | B04 | Foot | WP | B04 | WP | T&M |
| CON-B04-FOOT-1120 |  | Soil Backfilling (B04) (footing) | 3d | 2026-03-05 | 2026-03-08 | CON-B04-FOOT-1110 |  |  |  | 261d | 25d |  | loader [12 h]; the big cash [574080]; Big Quantity Backfiling [1248]; TRUCK [24 h]; Compactor [6 h]; Labor [6 h] | 574,080 |  | CW | B04 | Foot | BFW | B04 | BF | EW |

| ID | WBS | Activity | Duration | Start | Finish | Predecessors | Complete | Remaining | Planned start | Planned finish | Total float | Free float | Calendar | Resources | Cost | Actual cost | Work Type | Building Name | Floor Name | Activities | Buildings NO. | Site Cinstruction | BOQ Division |
| --- | --- | --- | --- | --- | --- | --- | --- | --- | --- | --- | --- | --- | --- | --- | --- | --- | --- | --- | --- | --- | --- | --- | --- |
|  | 3 | **Basement 2** |  | 2025-10-05 | 2026-05-21 |  |  |  |  |  |  |  |  |  |  |  |  |  |  |  |  |  |  |
| CON-B04-BAS02-1000 |  | Scaffolding works for Walls, Col. & Cores (B04) (Bas 02) | 7d | 2026-01-31 | 2026-02-07 | CON-B04-FOOT-1100 |  |  |  |  | 1d | 0d |  | Carpenter for concrete [21 h] |  |  | CW | B04 | Bsmt02 | SC | B04 | COL | Con |
| CON-B04-BAS02-1010 |  | RFT for Walls, Col. & Cores (B04) (Bas 02) | 10d | 2026-01-31 | 2026-02-10 | CON-B04-BAS02-1000 SS, CON-B04-BAS02-1000 FF, E-APP-B04-BAS02-1000, P-MDEL-1170 |  |  |  |  | 1d | 0d |  | Steel Fixer [140 h]; the big cash [1998244]; Big Quantity RFT [49.19]; Labor [70 h] | 1,998,244.03 |  | CW | B04 | Bsmt02 | SFC | B04 | COL | Con |
| CON-B04-BAS02-1020 |  | Shuttering for Walls, Col. & Cores (B04) (Bas 02) | 10d | 2026-02-07 | 2026-02-17 | CON-B04-BAS02-1010 SS+6d, CON-B04-BAS02-1010 FF, E-APP-B04-BAS02-1000 |  |  |  |  | 1d | 0d |  | Carpenter for concrete [160 h]; the big cash [1639958]; Labor [80 h] | 1,639,957.83 |  | CW | B04 | Bsmt02 | SC | B04 | COL | Con |
| CON-B04-BAS02-1030 |  | Pouring for Walls, Col. & Cores (B04) (Bas 02) | 2d | 2026-02-18 | 2026-02-19 | CON-B04-BAS02-1020, P-MDEL-1030 |  |  |  |  | 1d | 0d |  | Carpenter for concrete [4 h]; the big cash [2459937]; Big Quantity Concrete [429.12] | 2,459,936.74 |  | CW | B04 | Bsmt02 | PC | B04 | COL | Con |
| CON-B04-BAS02-1050 |  | Shuttering for Stairs (B04) (Bas 02) | 6d | 2026-02-22 | 2026-02-28 | E-APP-B04-BAS02-1010, E-APP-B04-BAS02-1020, CON-B04-BAS02-1030 FS+1d |  |  |  |  | 14d | 0d |  | Carpenter for concrete [12 h]; the big cash [17372.2]; Labor [6 h] | 17,372.16 |  | CW | B04 | Bsmt02 | SS | B04 | STR | Con |
| CON-B04-BAS02-1070 |  | Shuttering for Ramps (B04) (Bas 02) | 6d | 2026-02-23 | 2026-03-01 | CON-B04-BAS02-1030 FS+2d |  |  |  |  | 13d | 0d |  | Carpenter for concrete [48 h]; the big cash [527475]; Labor [24 h] | 527,474.8 |  |  |  | Bsmt02 |  | B04 | RMP | Con |
| CON-B04-BAS02-1080 |  | RFT for Stairs (B04) (Bas 02) | 5d | 2026-02-24 | 2026-03-01 | CON-B04-BAS02-1050 SS+2d, CON-B04-BAS02-1050 FF, E-APP-B04-BAS02-1010, P-MDEL-1170 |  |  |  |  | 14d | 0d |  | Steel Fixer [10 h]; the big cash [21800.2]; Big Quantity RFT [0.54]; Labor [5 h] | 21,800.21 |  | CW | B04 | Bsmt02 | SFS | B04 | STR | Con |
| CON-B04-BAS02-1040 |  | Shuttering for Slabs & Beams (B04) (Bas 02) | 8d | 2026-02-25 | 2026-03-05 | E-APP-B04-BAS02-1040, E-APP-B04-BAS02-1030, CON-B04-BAS02-1030 |  |  |  |  | -3d | 0d |  | Carpenter for concrete [160 h]; the big cash [2076088]; Labor [80 h] | 2,076,088.44 |  | CW | B04 | Bsmt02 | SS | B04 | Slb | Con |
| CON-B04-BAS02-1090 |  | RFT for Ramps (B04) (Bas 02) | 5d | 2026-02-25 | 2026-03-02 | CON-B04-BAS02-1070 SS+2d, CON-B04-BAS02-1070 FF, E-APP-B04-BAS02-1020, P-MDEL-1170 |  |  |  |  | 13d | 0d |  | Steel Fixer [40 h]; the big cash [1075623]; Big Quantity RFT [26.48]; Labor [20 h] | 1,075,623.24 |  |  |  | Bsmt02 |  | B04 | RMP | Con |
| CON-B04-BAS02-1060 |  | RFT for Slabs & Beams (B04) (Bas 02) | 10d | 2026-02-28 | 2026-03-10 | CON-B04-BAS02-1040 SS+2d, CON-B04-BAS02-1040 FF, E-APP-B04-BAS02-1030, E-APP-B04-BAS02-1040, P-MDEL-1170 |  |  |  |  | -3d | 0d |  | Steel Fixer [140 h]; the big cash [3266945]; Big Quantity RFT [80.43]; Labor [70 h] | 3,266,944.59 |  | CW | B04 | Bsmt02 | SFS | B04 | Slb | Con |
| CON-B04-BAS02-1100 |  | Pouring for Stairs (B04) (Bas 02) | 2d | 2026-03-02 | 2026-03-03 | CON-B04-BAS02-1080, P-MDEL-1030 |  |  |  |  | 14d | 0d |  | Carpenter for concrete [4 h]; the big cash [26058.2]; Big Quantity Concrete [4.64] | 26,058.24 |  | CW | B04 | Bsmt02 | PS | B04 | STR | Con |
| CON-B04-BAS02-1110 |  | Pouring for Ramps (B04) (Bas 02) | 2d | 2026-03-03 | 2026-03-04 | CON-B04-BAS02-1090, P-MDEL-1030 |  |  |  |  | 13d | 0d |  | Carpenter for concrete [4 h]; the big cash [791212]; Big Quantity Concrete [168.38] | 791,212.2 |  |  |  | Bsmt02 |  | B04 | RMP | Con |
| CON-B04-BAS02-1150 |  | Curing for Ramps & Stairs (B04) (Bas 02) | 3d | 2026-03-05 | 2026-03-07 | CON-B04-BAS02-1100, CON-B04-BAS02-1110 |  |  |  |  | 20d | 22d | Roya-The Big Project Phase 01 (B1-4)7 days | Labor [3 h] |  |  |  |  |  |  |  |  |  |
| CON-B04-BAS02-1130 |  | Pouring for Slabs & Beams (B04) (Bas 02) | 2d | 2026-03-11 | 2026-03-12 | CON-B04-BAS02-1060, P-MDEL-1030, CON-B04-WT-1210 |  |  |  |  | -3d | 0d |  | Carpenter for concrete [4 h]; the big cash [3114133]; Big Quantity Concrete [510.74] | 3,114,132.67 |  | CW | B04 | Bsmt02 | PS | B04 | Slb | Con |
| CON-B04-BAS02-1120 |  | Curing for Slabs, Beams (B04) (Bas 02) | 3d | 2026-03-13 | 2026-03-15 | CON-B04-BAS02-1100 SS, CON-B04-BAS02-1110, CON-B04-BAS02-1130 |  |  |  |  | 12d | 14d | Roya-The Big Project Phase 01 (B1-4)7 days | Labor [3 h] |  |  | CW | B04 | Bsmt02 | DS | B04 | Slb | Con |
| CON-B04-BAS02-1140 |  | Dismantling Formwork (B04) (Bas 02) | 1d | 2026-03-30 | 2026-03-30 | CON-B04-BAS02-1130 FS+10d, CON-B04-BAS02-1120, CON-B04-BAS02-1150 |  |  |  |  | -2d | 1d | Roya-The Big Project Phase 01 (B1-4)7 days | Carpenter for concrete [3 h] |  |  | CW | B04 | Bsmt02 | DS | B04 | Slb | Con |
|  | 2 | **Water Tank** |  | 2025-10-05 | 2026-02-24 |  |  |  |  |  |  |  |  |  |  |  |  |  |  |  |  |  |  |
| CON-B04-WT-1000 |  | Excavation for Water Tank (+198.15) (B04) (Water Tank) | 10d | 2025-10-05 A | 2025-11-10 A | KD-MOB-1000 FS+21d, KD-MOB-1010 FS+21d, KD-MOB-1020 FS+21d | 100% |  | 2025-10-25 | 2025-11-04 |  |  |  | loader [10 h]; Excecavator [10 h]; TRUCK [20 h] |  |  | CW | TNK | TNK | EW | B04 | TNK | Con |
| CON-B04-WT-1010 |  | Compaction of Soil (B04) (Water Tank) | 3d | 2025-10-10 A | 2025-10-11 A | CON-B04-WT-1000 | 100% |  | 2025-11-05 | 2025-11-08 |  |  |  | Compactor [3 h]; Labor [3 h] |  |  | CW | TNK | TNK | RW | B04 | TNK | Con |
| CON-B04-WT-1020 |  | Shuttering for PC Raft (B04) (Water Tank) | 2d | 2025-10-12 A | 2025-10-18 A | CON-B04-WT-1010, E-APP-B04-WT-1000, P-MDEL-1020 | 100% |  | 2025-10-12 | 2025-10-13 |  |  |  | Carpenter for concrete [4 h]; the big cash [138613]; Labor [4 h] | 138,612.75 | 138,612.75 | CW | TNK | TNK | SPC | B04 | TNK | Con |
| CON-B04-WT-1030 |  | Pouring for PC Raft (B04) (Water Tank) | 1d | 2025-10-15 A | 2025-10-16 A | CON-B04-WT-1020, P-MDEL-1020 | 100% |  | 2026-01-04 | 2026-01-04 |  |  |  | Carpenter for concrete [2 h]; the big cash [323430]; Big Quantity Concrete [127.46] | 323,429.75 | 323,429.75 | CW | TNK | TNK | PPC | B04 | TNK | Con |
| CON-B04-WT-1040 |  | Curing for PC Raft (B04) (Water Tank) | 3d | 2025-10-18 A | 2025-10-21 A | CON-B04-WT-1030 | 100% |  | 2026-01-05 | 2026-01-07 |  |  | Roya-The Big Project Phase 01 (B1-4)7 days | Labor [3 h] |  |  | CW | TNK | TNK | DPC | B04 | TNK | Con |
| CON-B04-WT-1050 |  | Waterproofing & Ins. Protection works (B04) (Water Tank) | 2d | 2025-12-12 A | 2025-12-16 A | P-MDEL-1040, E-APP-B04-FOOT-1000, CON-B04-WT-1040 FS+5d | 100% |  | 2026-01-13 | 2026-01-14 |  |  |  | Water Proofing Tech [6 h]; the big cash [630000]; Big Quantity Insulation [1000] | 630,000 | 630,000 | CW | TNK | TNK | WP | B04 | TNK | T&M |
| CON-B04-WT-1060 |  | Shuttering for RC Raft (B04) (Water Tank) | 4d | 2026-01-01 A | 2026-01-04 A | CON-B04-WT-1050, E-APP-B04-WT-1010 | 100% |  | 2026-01-13 | 2026-01-17 |  |  |  | Carpenter for concrete [32 h]; the big cash [1423684]; Labor [16 h] | 1,423,684 | 1,423,684 | CW | TNK | TNK | SF | B04 | TNK | Con |
| CON-B04-WT-1070 |  | RFT for RC Raft (B04) (Water Tank) | 5d | 2026-01-01 A | 2026-01-12 | CON-B04-WT-1060 SS+1d, E-APP-B04-WT-1020, CON-B04-WT-1060, P-MDEL-1000 | 100% | 0d | 2026-01-14 | 2026-01-19 | 9d | 0d |  | Steel Fixer [40 h]; the big cash [1860691]; Big Quantity RFT [45.81]; Labor [20 h] | 1,860,691.06 | 1,860,691.06 | CW | TNK | TNK | SFF | B04 | TNK | Con |
| CON-B04-WT-1080 |  | Pouring for RC Raft (B04) (Water Tank) | 2d | 2026-01-12 | 2026-01-13 | CON-B04-WT-1070, P-MDEL-1030 |  |  |  |  | 9d | 0d |  | Carpenter for concrete [4 h]; the big cash [2135526]; Big Quantity Concrete [378.64] | 2,135,526.01 |  | CW | TNK | TNK | PF | B04 | TNK | Con |
| CON-B04-WT-1090 |  | Curing & Deshuttering for RC Raft (B04) (Water Tank) | 3d | 2026-01-14 | 2026-01-16 | CON-B04-WT-1080 |  |  |  |  | 12d | 1d | Roya-The Big Project Phase 01 (B1-4)7 days | Labor [3 h]; Carpenter for concrete [6 h] |  |  | CW | TNK | TNK | DSF | B04 | TNK | Con |
| CON-B04-WT-1100 |  | Shuttering for Walls (B04) (Water Tank) | 8d | 2026-01-17 | 2026-01-26 | CON-B04-WT-1090 SS+2d, E-APP-B04-WT-1030 |  |  |  |  | 9d | 0d |  | Carpenter for concrete [144 h]; the big cash [1256387]; Labor [72 h] | 1,256,386.72 |  | CW | TNK | TNK | ST | B04 | TNK | Con |
| CON-B04-WT-1110 |  | RFT for Walls (B04) (Water Tank) | 8d | 2026-01-17 | 2026-01-26 | CON-B04-WT-1100 SS, CON-B04-WT-1100 FF, E-APP-B04-WT-1030, P-MDEL-1000 |  |  |  |  | 9d | 0d |  | Steel Fixer [112 h]; the big cash [1653461]; Big Quantity RFT [40.71]; Labor [56 h] | 1,653,461.47 |  | CW | TNK | TNK | SFT | B04 | TNK | Con |
| CON-B04-WT-1120 |  | Installation for Waterstop Insulation (B04) (Water Tank) | 4d | 2026-01-19 | 2026-01-22 | CON-B04-WT-1110 SS+2d |  |  |  |  | 11d | 2d |  | Labor [4 h] |  |  | CW | TNK | TNK | WP | B04 | TNK | Con |
| CON-B04-WT-1130 |  | Pouring for Walls (B04) (Water Tank) | 2d | 2026-01-27 | 2026-01-28 | CON-B04-WT-1110, P-MDEL-1030, CON-B04-WT-1120 |  |  |  |  | 9d | 0d |  | Carpenter for concrete [4 h]; the big cash [1884580]; Big Quantity Concrete [334.15] | 1,884,580.07 |  | CW | TNK | TNK | PT | B04 | TNK | Con |
| CON-B04-WT-1140 |  | Curing & Deshuttering for Walls (B04) (Water Tank) | 5d | 2026-01-27 | 2026-01-31 | CON-B04-WT-1130 SS, CON-B04-WT-1130 FF |  |  |  |  | 11d | 1d | Roya-The Big Project Phase 01 (B1-4)7 days | Labor [5 h]; Carpenter for concrete [10 h] |  |  | CW | TNK | TNK | DT | B04 | TNK | Con |
| CON-B04-WT-1150 |  | Formwork for Top Slab (B04) (Water Tank) | 6d | 2026-01-31 | 2026-02-05 | CON-B04-WT-1140 SS+3d, E-APP-B04-WT-1040 |  |  |  |  | 9d | 0d |  | Carpenter for concrete [36 h]; the big cash [327929]; Labor [18 h] | 327,929.28 |  | CW | TNK | TNK | ST | B04 | TNK | Con |
| CON-B04-WT-1160 |  | RFT for Top Slab (B04) (Water Tank) | 6d | 2026-02-01 | 2026-02-07 | CON-B04-WT-1150 SS+1d, CON-B04-WT-1150 FF, E-APP-B04-WT-1040, P-MDEL-1000 |  |  |  |  | 9d | 0d |  | Steel Fixer [24 h]; the big cash [447259]; Big Quantity RFT [11.01]; Labor [12 h] | 447,258.67 |  | CW | TNK | TNK | SFT | B04 | TNK | Con |
| CON-B04-WT-1170 |  | Pouring for Top Slab (B04) (Water Tank) | 1d | 2026-02-08 | 2026-02-08 | CON-B04-WT-1160, P-MDEL-1030 |  |  |  |  | 9d | 0d |  | Carpenter for concrete [2 h]; the big cash [491894]; Big Quantity Concrete [87.22] | 491,893.92 |  | CW | TNK | TNK | PT | B04 | TNK | Con |
| CON-B04-WT-1180 |  | Curing & Desmantling Formwork for Top Slab (B04) (Water Tank) | 5d | 2026-02-09 | 2026-02-13 | CON-B04-WT-1170 |  |  |  |  | 10d | 0d | Roya-The Big Project Phase 01 (B1-4)7 days | Labor [10 h] |  |  | CW | TNK | TNK | DT | B04 | TNK | Con |
| CON-B04-WT-1190 |  | Clearing Surface & Insulation for Inner Side (B04) (Water Tank) | 5d | 2026-02-16 | 2026-02-21 | CON-B04-WT-1180 FS+2d |  |  |  |  | 9d | 0d |  | the big cash [283500]; Water Proofing Tech [15 h]; Big Quantity Insulation | 283,500 |  | CW | TNK | TNK |  | B04 | TNK | T&M |
| CON-B04-WT-1200 |  | Insulation for Outer Side (B04) (Water Tank) | 5d | 2026-02-16 | 2026-02-21 | CON-B04-WT-1140 FS+1d, CON-B04-WT-1190 FF, E-APP-B04-FOOT-1000 |  |  |  |  | 9d | 0d |  | the big cash [283500]; Big Quantity Insulation [900]; Water Proofing Tech [15 h] | 283,500 |  | CW | TNK | TNK |  | B04 | TNK | T&M |
| CON-B04-WT-1210 |  | Backfilling works (B04) (Water Tank) | 3d | 2026-02-22 | 2026-02-24 | CON-B04-WT-1200 |  |  |  |  | 9d | 12d |  | loader [1 h]; TRUCK [6 h] |  |  | CW | TNK | TNK | BFW | B04 | TNK | Con |

| ID | WBS | Activity | Duration | Start | Finish | Predecessors | Total float | Free float | Calendar | Resources | Cost | Work Type | Building Name | Floor Name | Activities | Buildings NO. | Site Cinstruction | BOQ Division |
| --- | --- | --- | --- | --- | --- | --- | --- | --- | --- | --- | --- | --- | --- | --- | --- | --- | --- | --- |
|  | 1 | **S.O.G** |  | 2026-04-12 | 2026-05-21 |  |  |  |  |  |  |  |  |  |  |  |  |  |
| CON-B04-SOG-1000 |  | Soil Backfilling & Compaction (B04) (Sog) | 7d | 2026-04-12 | 2026-04-20 | CON-B03-SOG-1000 SS+10d, CON-B04-BAS02-1140, CON-B04-FOOT-1120 | 236d | 0d |  | loader [14 h]; TRUCK [28 h]; the big cash [344448]; Compactor [7 h]; Big Quantity Backfiling [832]; Labor [7 h] | 344,448 | CW | B04 | SOG | BFW | B04 | BF | EW |
| CON-B04-SOG-1010 |  | Soil Compaction Test (B04) (Sog) | 2d | 2026-04-21 | 2026-04-22 | CON-B04-SOG-1000, CON-B03-SOG-1010 | 236d | 0d |  | Compactor [2 h]; the big cash [38272]; Labor [2 h] | 38,272 | CW | B04 | SOG | BFW | B04 | RPC | EW |
| CON-B04-SOG-1020 |  | DPM Layer works (B04) (Sog) | 10d | 2026-04-23 | 2026-05-04 | CON-B04-SOG-1010, P-MDEL-1040, E-APP-B04-FOOT-1000 | 236d | 0d |  | Labor [10 h]; the big cash [225054] | 225,054.09 | CW | B04 | SOG |  | B04 | SOG | Con |
| CON-B04-SOG-1030 |  | Blinding Concrete works (B04) (Sog) | 12d | 2026-04-29 | 2026-05-12 | CON-B04-SOG-1020 SS+5d, CON-B04-SOG-1020 FF, CON-B03-SOG-1030 SS | 236d | 0d |  | Carpenter for concrete [12 h]; the big cash [450108] | 450,108.17 | CW | B04 | SOG | SSOG | B04 | SOG | Con |
| CON-B04-SOG-1040 |  | Shuttering & RFT for S.O.G (B04) (Sog) | 15d | 2026-05-05 | 2026-05-21 | CON-B04-SOG-1030 SS+5d, CON-B04-SOG-1030 FF, CON-B03-SOG-1040 SS, E-APP-B04-SOG-1010, E-APP-B04-SOG-1000, P-MDEL-1150 | 236d | 0d |  | Carpenter for concrete [90 h]; Steel Fixer [90 h]; the big cash [675162]; Big Quantity RFT [5.35]; Labor [90 h] | 675,162.26 | CW | B04 | SOG | SFSOG | B04 | SOG | Con |
| CON-B04-SOG-1050 |  | Pouring for S.O.G (B04) (Sog) | 10d | 2026-05-11 | 2026-05-21 | CON-B04-SOG-1040 SS, CON-B04-SOG-1040 FF, CON-B03-SOG-1050 SS, P-MDEL-1030 | 236d | 0d |  | Carpenter for concrete [20 h]; the big cash [900216]; Big Quantity Concrete [1311.66] | 900,216.35 | CW | B04 | SOG | PSOG | B04 | SOG | Con |
| CON-B04-SOG-1060 |  | Curing & Smoothing Surface for S.O.G (B04) (Sog) | 10d | 2026-05-12 | 2026-05-21 | CON-B04-SOG-1050 SS+1d, CON-B04-SOG-1050 FF | 310d | 342d | Roya-The Big Project Phase 01 (B1-4)7 days | Labor [10 h] |  | CW | B04 | SOG | DSOG | B04 | SOG | Con |
|  | 2 | **Basement 1** |  | 2026-03-14 | 2026-05-03 |  |  |  |  |  |  |  |  |  |  |  |  |  |
| CON-B04-BAS01-1000 |  | Scaffolding works for Walls, Col. & Cores (B04) (Bas 01) | 7d | 2026-03-14 | 2026-03-25 | CON-B04-BAS02-1130 | -3d | 0d |  | Carpenter for concrete [21 h] |  | CW | B04 | Bsmt01 | SC | B04 | COL | Con |
| CON-B04-BAS01-1010 |  | RFT for Walls, Col. & Cores (B04) (Bas 01) | 8d | 2026-03-14 | 2026-03-26 | CON-B04-BAS01-1000 SS, CON-B04-BAS01-1000 FF, E-APP-B04-BAS01-1000, P-MDEL-1160 | -3d | 0d |  | Steel Fixer [128 h]; the big cash [1868167]; Big Quantity RFT [45.99]; Labor [64 h] | 1,868,166.61 | CW | B04 | Bsmt01 | SFC | B04 | COL | Con |
| CON-B04-BAS01-1020 |  | Shuttering for Walls, Col. & Cores (B04) (Bas 01) | 6d | 2026-03-23 | 2026-03-29 | CON-B04-BAS01-1010 SS+4d, CON-B04-BAS01-1010 FF, E-APP-B04-BAS01-1000 | -3d | 0d |  | Carpenter for concrete [144 h]; the big cash [1532278]; Labor [72 h] | 1,532,278.45 | CW | B04 | Bsmt01 | SC | B04 | COL | Con |
| CON-B04-BAS01-1030 |  | Pouring for Walls, Col. & Cores (B04) (Bas 01) | 2d | 2026-03-30 | 2026-03-31 | CON-B04-BAS01-1020, P-MDEL-1030 | -3d | 0d |  | Carpenter for concrete [4 h]; the big cash [2298418]; Big Quantity Concrete [400.94] | 2,298,417.67 | CW | B04 | Bsmt01 | PC | B04 | COL | Con |
| CON-B04-BAS01-1040 |  | Shuttering for Slabs & Beams (B04) (Bas 01) | 8d | 2026-04-01 | 2026-04-09 | E-APP-B04-BAS01-1040, E-APP-B04-BAS01-1030, CON-B04-BAS01-1030, CON-B04-BAS02-1140 | -3d | 0d |  | Carpenter for concrete [176 h]; the big cash [2326995]; Labor [88 h] | 2,326,995.01 | CW | B04 | Bsmt01 | SS | B04 | Slb | Con |
| CON-B04-BAS01-1050 |  | Shuttering for Ramps (B04) (Bas 01) | 7d | 2026-04-01 | 2026-04-08 | CON-B04-BAS01-1030, E-APP-B04-BAS01-1020 | -3d | 0d |  | Carpenter for concrete [56 h]; the big cash [527475]; Labor [28 h] | 527,474.8 |  |  | Bsmt01 |  | B04 | RMP | Con |
| CON-B04-BAS01-1060 |  | Shuttering for Stairs (B04) (Bas 01) | 6d | 2026-04-04 | 2026-04-09 | CON-B04-BAS01-1040 SS+2d, E-APP-B04-BAS01-1010 | -3d | 0d |  | Carpenter for concrete [12 h]; the big cash [17372.2]; Labor [6 h] | 17,372.16 | CW | B04 | Bsmt01 | SS | B04 | STR | Con |
| CON-B04-BAS01-1070 |  | RFT for Slabs & Beams (B04) (Bas 01) | 8d | 2026-04-06 | 2026-04-15 | CON-B04-BAS01-1040 SS+4d, CON-B04-BAS01-1040 FF, E-APP-B04-BAS01-1030, E-APP-B04-BAS01-1040, P-MDEL-1160 | -3d | 0d |  | Steel Fixer [160 h]; the big cash [3546755]; Big Quantity RFT [87.32]; Labor [80 h] | 3,546,754.6 | CW | B04 | Bsmt01 | SFS | B04 | Slb | Con |
| CON-B04-BAS01-1080 |  | RFT for Ramps (B04) (Bas 01) | 7d | 2026-04-07 | 2026-04-15 | CON-B04-BAS01-1050 SS+5d, CON-B04-BAS01-1050 FF, E-APP-B04-BAS01-1020, P-MDEL-1160 | -3d | 0d |  | Steel Fixer [42 h]; the big cash [1075623]; Big Quantity RFT [26.48]; Labor [21 h] | 1,075,623.24 |  |  | Bsmt01 |  | B04 | RMP | Con |
| CON-B04-BAS01-1090 |  | RFT for Stairs (B04) (Bas 01) | 5d | 2026-04-09 | 2026-04-15 | CON-B04-BAS01-1060 SS+5d, CON-B04-BAS01-1060 FF, E-APP-B04-BAS01-1010, P-MDEL-1160 | -3d | 0d |  | Steel Fixer [10 h]; the big cash [21800.2]; Big Quantity RFT [0.54]; Labor [5 h] | 21,800.21 | CW | B04 | Bsmt01 | SFS | B04 | STR | Con |
| CON-B04-BAS01-1100 |  | Pouring for Stairs (B04) (Bas 01) | 2d | 2026-04-16 | 2026-04-18 | CON-B04-BAS01-1090, P-MDEL-1030 | -3d | 0d |  | Carpenter for concrete [4 h]; the big cash [26058.2]; Big Quantity Concrete [4.64] | 26,058.24 | CW | B04 | Bsmt01 | PS | B04 | STR | Con |
| CON-B04-BAS01-1110 |  | Pouring for Ramps (B04) (Bas 01) | 2d | 2026-04-16 | 2026-04-18 | CON-B04-BAS01-1080, P-MDEL-1030 | -3d | 0d |  | Carpenter for concrete [4 h]; the big cash [791212]; Big Quantity Concrete [137.65] | 791,212.2 |  |  | Bsmt01 |  | B04 | RMP | Con |
| CON-B04-BAS01-1120 |  | Pouring for Slabs & Beams (B04) (Bas 01) | 2d | 2026-04-16 | 2026-04-18 | CON-B04-BAS01-1070, P-MDEL-1030 | -3d | 0d |  | Carpenter for concrete [4 h]; the big cash [3490493]; Big Quantity Concrete [607.05] | 3,490,492.52 | CW | B04 | Bsmt01 | PS | B04 | Slb | Con |
| CON-B04-BAS01-1130 |  | Curing for Slabs, Beams (B04) (Bas 01) | 3d | 2026-04-19 | 2026-04-21 | CON-B04-BAS01-1100, CON-B04-BAS01-1120 | 7d | 11d | Roya-The Big Project Phase 01 (B1-4)7 days | Labor [3 h] |  | CW | B04 | Bsmt01 | DS | B04 | Slb | Con |
| CON-B04-BAS01-1150 |  | Curing for Ramps & Stairs (B04) (Bas 01) | 4d | 2026-04-19 | 2026-04-22 | CON-B04-BAS01-1100, CON-B04-BAS01-1110 | -4d | 0d | Roya-The Big Project Phase 01 (B1-4)7 days | Labor [3 h] |  |  |  |  |  |  |  |  |
| CON-B04-BAS01-1140 |  | Dismantling Formwork (B04) (Bas 01) | 1d | 2026-05-03 | 2026-05-03 | CON-B04-BAS01-1120 FS+12d, CON-B04-BAS01-1130, CON-B04-BAS01-1150 FS+10d | -4d | 0d | Roya-The Big Project Phase 01 (B1-4)7 days | Carpenter for concrete [3 h] |  | CW | B04 | Bsmt01 | DS | B04 | Slb | Con |

| ID | WBS | Activity | Duration | Start | Finish | Predecessors | Total float | Free float | Calendar | Resources | Cost | Work Type | Building Name | Floor Name | Activities | Buildings NO. | Site Cinstruction | BOQ Division |
| --- | --- | --- | --- | --- | --- | --- | --- | --- | --- | --- | --- | --- | --- | --- | --- | --- | --- | --- |
|  | SUP | **Superstructure** |  | 2026-04-19 | 2027-04-14 |  |  |  |  |  |  |  |  |  |  |  |  |  |
|  | GF | **GR Floor** |  | 2026-04-19 | 2026-05-27 |  |  |  |  |  |  |  |  |  |  |  |  |  |
| CON-B04-GR-1000 |  | Scaffolding works for Walls, Col. & Cores (B04) (GR) | 7d | 2026-04-19 | 2026-04-26 | CON-B04-BAS01-1120 | -3d | 0d |  | Carpenter for concrete [21 h] |  | CW | B04 | GF | SC | B04 | COL | Con |
| CON-B04-GR-1010 |  | RFT for Walls, Col. & Cores (B04) (GR) | 9d | 2026-04-21 | 2026-04-30 | CON-B04-GR-1000 SS+2d, CON-B04-GR-1000 FF, E-APP-B04-GR-1000, P-MDEL-1130 | -3d | 0d |  | Steel Fixer [54 h]; the big cash [860551]; Big Quantity RFT [21.19]; Labor [27 h] | 860,550.95 | CW | B04 | GF | SFC | B04 | COL | Con |
| CON-B04-GR-1020 |  | Shuttering for Walls, Col. & Cores (B04) (GR) | 7d | 2026-04-23 | 2026-04-30 | CON-B04-GR-1010 SS+2d, CON-B04-GR-1010 FF, E-APP-B04-GR-1000 | -3d | 0d |  | Carpenter for concrete [56 h]; the big cash [469910]; Labor [28 h] | 469,909.97 | CW | B04 | GF | SC | B04 | COL | Con |
| CON-B04-GR-1030 |  | Pouring for Walls, Col. & Cores (B04) (GR) | 2d | 2026-05-02 | 2026-05-03 | CON-B04-GR-1020, P-MDEL-1030 | -3d | 0d |  | Carpenter for concrete [4 h]; the big cash [704865]; Big Quantity Concrete [122.96] | 704,864.95 | CW | B04 | GF | PC | B04 | COL | Con |
| CON-B04-GR-1040 |  | Shuttering for Slabs & Beams (B04) (GR) | 6d | 2026-05-04 | 2026-05-10 | E-APP-B04-GR-1030, E-APP-B04-GR-1020, CON-B04-GR-1030, CON-B04-BAS01-1140 | -3d | 0d |  | Carpenter for concrete [96 h]; the big cash [1192565]; Labor [48 h] | 1,192,564.74 | CW | B04 | GF | SS | B04 | Slb | Con |
| CON-B04-GR-1050 |  | Shuttering for Stairs (B04) (GR) | 6d | 2026-05-06 | 2026-05-12 | CON-B04-GR-1040 SS+2d, E-APP-B04-GR-1010 | -2d | 0d |  | Carpenter for concrete [12 h]; the big cash [34744.3]; Labor [6 h] | 34,744.32 | CW | B04 | GF | SS | B04 | STR | Con |
| CON-B04-GR-1060 |  | RFT for Slabs & Beams (B04) (GR) | 5d | 2026-05-07 | 2026-05-12 | CON-B04-GR-1040 SS+3d, CON-B04-GR-1040 FF, E-APP-B04-GR-1020, E-APP-B04-GR-1030, P-MDEL-1130 | -3d | 0d |  | Steel Fixer [80 h]; the big cash [1765215]; Big Quantity RFT [43.46]; Labor [40 h] | 1,765,214.97 | CW | B04 | GF | SFS | B04 | Slb | Con |
| CON-B04-GR-1070 |  | RFT for Stairs (B04) (GR) | 4d | 2026-05-09 | 2026-05-12 | CON-B04-GR-1050 SS+1d, CON-B04-GR-1050 FF, E-APP-B04-GR-1010, P-MDEL-1130 | -2d | 0d |  | Steel Fixer [8 h]; the big cash [43600.4]; Big Quantity RFT [1.07]; Labor [4 h] | 43,600.41 | CW | B04 | GF | SFS | B04 | STR | Con |
| CON-B04-GR-1080 |  | Pouring for Slabs & Beams (B04) (GR) | 2d | 2026-05-13 | 2026-05-14 | CON-B04-GR-1060, P-MDEL-1030 | -3d | 0d |  | Carpenter for concrete [4 h]; the big cash [1788847]; Big Quantity Concrete [311.17] | 1,788,847.1 | CW | B04 | GF | PS | B04 | Slb | Con |
| CON-B04-GR-1090 |  | Pouring for Stairs (B04) (GR) | 2d | 2026-05-13 | 2026-05-14 | CON-B04-GR-1070, P-MDEL-1030 | -2d | 0d |  | Carpenter for concrete [4 h]; the big cash [52116.5]; Big Quantity Concrete [9.28] | 52,116.48 | CW | B04 | GF | PS | B04 | STR | Con |
| CON-B04-GR-1100 |  | Curing for Slabs, Beams & Stairs (B04) (GR) | 3d | 2026-05-15 | 2026-05-17 | CON-B04-GR-1090, CON-B04-GR-1080 | -2d | 29d | Roya-The Big Project Phase 01 (B1-4)7 days | Labor [3 h] |  | CW | B04 | GF | DS | B04 | Slb | Con |
| CON-B04-GR-1110 |  | Dismantling Formwork (B04) (GR) | 1d | 2026-05-27 | 2026-05-27 | CON-B04-GR-1080 FS+10d | 7d | 35d | Roya-The Big Project Phase 01 (B1-4)7 days | Carpenter for concrete [3 h] |  | CW | B04 | GF | DS | B04 | Slb | Con |
|  | 1stF | **1st Floor** |  | 2026-06-16 | 2026-08-04 |  |  |  |  |  |  |  |  |  |  |  |  |  |
| CON-B04-1ST-1000 |  | Scaffolding works for Walls, Col. & Cores (B04) (1st) | 5d | 2026-06-16 | 2026-06-21 | CON-B04-GR-1100, KD-MS-1040 | -23d | 0d |  | Carpenter for concrete [15 h] |  | CW | B04 | 1stF | SC | B04 | COL | Con |
| CON-B04-1ST-1010 |  | RFT for Walls, Col. & Cores (B04) (1st) | 7d | 2026-06-20 | 2026-06-27 | CON-B04-1ST-1000 SS+3d, CON-B04-1ST-1000 FF, E-APP-B04-1ST-1000, P-MDEL-1120 | -23d | 0d |  | Steel Fixer [42 h]; the big cash [552282]; Big Quantity RFT [13.6]; Labor [21 h] | 552,281.71 | CW | B04 | 1stF | SFC | B04 | COL | Con |
| CON-B04-1ST-1020 |  | Shuttering for Walls, Col. & Cores (B04) (1st) | 6d | 2026-06-22 | 2026-06-28 | CON-B04-1ST-1010 SS+2d, CON-B04-1ST-1010 FF, E-APP-B04-1ST-1000 | -23d | 0d |  | Carpenter for concrete [36 h]; the big cash [302177]; Labor [18 h] | 302,176.92 | CW | B04 | 1stF | SC | B04 | COL | Con |
| CON-B04-1ST-1030 |  | Pouring for Walls, Col. & Cores (B04) (1st) | 2d | 2026-06-29 | 2026-07-01 | CON-B04-1ST-1020, P-MDEL-1030 | -23d | 0d |  | Carpenter for concrete [4 h]; the big cash [453265]; Big Quantity Concrete [79.07] | 453,265.38 | CW | B04 | 1stF | PC | B04 | COL | Con |
| CON-B04-1ST-1040 |  | Shuttering for Slabs, Beams & Stairs (B04) (1st) | 10d | 2026-07-02 | 2026-07-13 | E-APP-B04-1ST-1030, E-APP-B04-1ST-1020, E-APP-B04-1ST-1010, CON-B04-1ST-1030, CON-B04-GR-1110 | -23d | 0d |  | Carpenter for concrete [80 h]; the big cash [1003884]; Labor [40 h] | 1,003,883.55 | CW | B04 | 1stF | SS | B04 | Slb | Con |
| CON-B04-1ST-1050 |  | RFT for Slabs, Beams & Stairs (B04) (1st) | 10d | 2026-07-07 | 2026-07-18 | CON-B04-1ST-1040 SS+4d, CON-B04-1ST-1040 FF, E-APP-B04-1ST-1010, E-APP-B04-1ST-1020, E-APP-B04-1ST-1030, P-MDEL-1120 | -23d | 0d |  | Steel Fixer [80 h]; the big cash [1487995]; Big Quantity RFT [36.63]; Labor [40 h] | 1,487,994.98 | CW | B04 | 1stF | SFS | B04 | Slb | Con |
| CON-B04-1ST-1060 |  | Pouring for Slabs, Beams & Stairs (B04) (1st) | 3d | 2026-07-19 | 2026-07-21 | CON-B04-1ST-1050, P-MDEL-1030 | -23d | 0d |  | Carpenter for concrete [6 h]; the big cash [1505825]; Big Quantity Concrete [262.14] | 1,505,825.33 | CW | B04 | 1stF | PS | B04 | Slb | Con |
| CON-B04-1ST-1070 |  | Curing for Slabs, Beams & Stairs (B04) (1st) | 3d | 2026-07-22 | 2026-07-24 | CON-B04-1ST-1060 | -28d | 0d | Roya-The Big Project Phase 01 (B1-4)7 days | Labor [3 h] |  | CW | B04 | 1stF | DS | B04 | Slb | Con |
| CON-B04-1ST-1080 |  | Dismantling Formwork (B04) (1st) | 1d | 2026-08-04 | 2026-08-04 | CON-B04-1ST-1060 FS+10d | -21d | 6d | Roya-The Big Project Phase 01 (B1-4)7 days | Carpenter for concrete [3 h] |  | CW | B04 | 1stF | DS | B04 | Slb | Con |

| ID | WBS | Activity | Duration | Start | Finish | Predecessors | Total float | Free float | Calendar | Resources | Cost | Work Type | Building Name | Floor Name | Activities | Buildings NO. | Site Cinstruction | BOQ Division |
| --- | --- | --- | --- | --- | --- | --- | --- | --- | --- | --- | --- | --- | --- | --- | --- | --- | --- | --- |
|  | 2ndF | **2nd Floor** |  | 2026-07-25 | 2026-09-13 |  |  |  |  |  |  |  |  |  |  |  |  |  |
| CON-B04-2ND-1000 |  | Scaffolding works for Walls, Col. & Cores (B04) (2nd) | 5d | 2026-07-25 | 2026-07-29 | CON-B04-1ST-1070 | -22d | 0d |  | Carpenter for concrete [15 h] |  | CW | B04 | 2ndF | SC | B04 | COL | Con |
| CON-B04-2ND-1010 |  | RFT for Walls, Col. & Cores (B04) (2nd) | 8d | 2026-07-28 | 2026-08-05 | CON-B04-2ND-1000 SS+3d, CON-B04-2ND-1000 FF, E-APP-B04-2ND-1000, P-MDEL-1110 | -22d | 0d |  | Steel Fixer [48 h]; the big cash [549836]; Big Quantity RFT [13.54]; Labor [24 h] | 549,836.38 | CW | B04 | 2ndF | SFC | B04 | COL | Con |
| CON-B04-2ND-1020 |  | Shuttering for Walls, Col. & Cores (B04) (2nd) | 8d | 2026-08-01 | 2026-08-09 | CON-B04-2ND-1010 SS+3d, CON-B04-2ND-1010 FF, E-APP-B04-2ND-1000 | -22d | 0d |  | Carpenter for concrete [32 h]; the big cash [300845]; Labor [16 h] | 300,845.35 | CW | B04 | 2ndF | SC | B04 | COL | Con |
| CON-B04-2ND-1030 |  | Pouring for Walls, Col. & Cores (B04) (2nd) | 1d | 2026-08-10 | 2026-08-10 | CON-B04-2ND-1020, P-MDEL-1030 | -22d | 0d |  | Carpenter for concrete [2 h]; the big cash [451268]; Big Quantity Concrete [78.72] | 451,268.03 | CW | B04 | 2ndF | PC | B04 | COL | Con |
| CON-B04-2ND-1040 |  | Shuttering for Slabs, Beams & Stairs (B04) (2nd) | 10d | 2026-08-11 | 2026-08-22 | E-APP-B04-2ND-1030, E-APP-B04-2ND-1020, E-APP-B04-2ND-1010, CON-B04-2ND-1030, CON-B04-1ST-1080 | -22d | 0d |  | Carpenter for concrete [80 h]; the big cash [982426]; Labor [40 h] | 982,426.22 | CW | B04 | 2ndF | SS | B04 | Slb | Con |
| CON-B04-2ND-1050 |  | RFT for Slabs, Beams & Stairs (B04) (2nd) | 10d | 2026-08-16 | 2026-08-26 | CON-B04-2ND-1040 SS+4d, CON-B04-2ND-1040 FF, E-APP-B04-2ND-1010, E-APP-B04-2ND-1020, E-APP-B04-2ND-1030, P-MDEL-1110 | -22d | 0d |  | Steel Fixer [80 h]; the big cash [1425382]; Big Quantity RFT [35.09]; Labor [40 h] | 1,425,382.16 | CW | B04 | 2ndF | SFS | B04 | Slb | Con |
| CON-B04-2ND-1060 |  | Pouring for Slabs, Beams & Stairs (B04) (2nd) | 3d | 2026-08-29 | 2026-08-31 | CON-B04-2ND-1050, P-MDEL-1030 | -22d | 0d |  | Carpenter for concrete [6 h]; the big cash [1473639]; Big Quantity Concrete [256.58] | 1,473,639.33 | CW | B04 | 2ndF | PS | B04 | Slb | Con |
| CON-B04-2ND-1070 |  | Curing for Slabs, Beams & Stairs (B04) (2nd) | 3d | 2026-09-01 | 2026-09-03 | CON-B04-2ND-1060 | -27d | 1d | Roya-The Big Project Phase 01 (B1-4)7 days | Labor [3 h] |  | CW | B04 | 2ndF | DS | B04 | Slb | Con |
| CON-B04-2ND-1080 |  | Dismantling Formwork (B04) (2nd) | 1d | 2026-09-13 | 2026-09-13 | CON-B04-2ND-1060 FS+10d | -20d | 8d | Roya-The Big Project Phase 01 (B1-4)7 days | Carpenter for concrete [3 h] |  | CW | B04 | 2ndF | DS | B04 | Slb | Con |
|  | 3rdF | **3rd Floor** |  | 2026-09-05 | 2026-10-25 |  |  |  |  |  |  |  |  |  |  |  |  |  |
| CON-B04-3RD-1000 |  | Scaffolding works for Walls, Col. & Cores (B04) (3rd) | 5d | 2026-09-05 | 2026-09-09 | CON-B04-2ND-1070 | -23d | 0d |  | Carpenter for concrete [15 h] |  | CW | B04 | 3rdF | SC | B04 | COL | Con |
| CON-B04-3RD-1010 |  | RFT for Walls, Col. & Cores (B04) (3rd) | 8d | 2026-09-08 | 2026-09-16 | CON-B04-3RD-1000 SS+3d, CON-B04-3RD-1000 FF, E-APP-B04-2RD-1000, P-MDEL-1100 | -23d | 0d |  | Steel Fixer [32 h]; the big cash [463096]; Big Quantity RFT [11.4]; Labor [16 h] | 463,096.43 | CW | B04 | 3rdF | SFC | B04 | COL | Con |
| CON-B04-3RD-1020 |  | Shuttering for Walls, Col. & Cores (B04) (3rd) | 8d | 2026-09-12 | 2026-09-20 | CON-B04-3RD-1010 SS+3d, CON-B04-3RD-1010 FF, E-APP-B04-2RD-1000 | -23d | 0d |  | Carpenter for concrete [32 h]; the big cash [253264]; Labor [16 h] | 253,264.03 | CW | B04 | 3rdF | SC | B04 | COL | Con |
| CON-B04-3RD-1030 |  | Pouring for Walls, Col. & Cores (B04) (3rd) | 1d | 2026-09-21 | 2026-09-21 | CON-B04-3RD-1020, P-MDEL-1030 | -23d | 0d |  | Carpenter for concrete [2 h]; the big cash [379896]; Big Quantity Concrete [66.27] | 379,896.04 | CW | B04 | 3rdF | PC | B04 | COL | Con |
| CON-B04-3RD-1040 |  | Shuttering for Slabs, Beams & Stairs (B04) (3rd) | 10d | 2026-09-22 | 2026-10-03 | E-APP-B04-2RD-1030, E-APP-B04-2RD-1020, E-APP-B04-2RD-1010, CON-B04-3RD-1030, CON-B04-2ND-1080 | -23d | 0d |  | Carpenter for concrete [60 h]; the big cash [703252]; Labor [30 h] | 703,251.92 | CW | B04 | 3rdF | SS | B04 | Slb | Con |
| CON-B04-3RD-1050 |  | RFT for Slabs, Beams & Stairs (B04) (3rd) | 10d | 2026-09-27 | 2026-10-08 | CON-B04-3RD-1040 SS+4d, CON-B04-3RD-1040 FF, E-APP-B04-2RD-1010, E-APP-B04-2RD-1020, E-APP-B04-2RD-1030, P-MDEL-1100 | -23d | 0d |  | Steel Fixer [60 h]; the big cash [1024574]; Big Quantity RFT [25.22]; Labor [30 h] | 1,024,574.26 | CW | B04 | 3rdF | SFS | B04 | Slb | Con |
| CON-B04-3RD-1060 |  | Pouring for Slabs, Beams & Stairs (B04) (3rd) | 3d | 2026-10-10 | 2026-10-12 | CON-B04-3RD-1050, P-MDEL-1030 | -23d | 0d |  | Carpenter for concrete [6 h]; the big cash [1054878]; Big Quantity Concrete [183.72] | 1,054,877.87 | CW | B04 | 3rdF | PS | B04 | Slb | Con |
| CON-B04-3RD-1070 |  | Curing for Slabs, Beams & Stairs (B04) (3rd) | 3d | 2026-10-13 | 2026-10-15 | CON-B04-3RD-1060 | -14d | 9d | Roya-The Big Project Phase 01 (B1-4)7 days | Labor [3 h] |  | CW | B04 | 3rdF | DS | B04 | Slb | Con |
| CON-B04-3RD-1080 |  | Dismantling Formwork (B04) (3rd) | 1d | 2026-10-25 | 2026-10-25 | CON-B04-3RD-1060 FS+10d, CON-B04-3RD-1070 | -23d | 5d | Roya-The Big Project Phase 01 (B1-4)7 days | Carpenter for concrete [3 h] |  | CW | B04 | 3rdF | DS | B04 | Slb | Con |
|  | 4thF | **4th Floor** |  | 2026-10-13 | 2026-11-30 |  |  |  |  |  |  |  |  |  |  |  |  |  |
| CON-B04-4TH-1000 |  | Scaffolding works for Walls, Col. & Cores (B04) (4th) | 5d | 2026-10-13 | 2026-10-18 | CON-B04-3RD-1060 | -23d | 0d |  | Carpenter for concrete [15 h] |  | CW | B04 | 4thF | SC | B04 | COL | Con |
| CON-B04-4TH-1010 |  | RFT for Walls, Col. & Cores (B04) (4th) | 8d | 2026-10-17 | 2026-10-25 | CON-B04-4TH-1000 SS+3d, CON-B04-4TH-1000 FF, E-APP-B04-4TH-1000, P-MDEL-1090 | -23d | 0d |  | Steel Fixer [32 h]; the big cash [463096]; Big Quantity RFT [11.4]; Labor [16 h] | 463,096.43 | CW | B04 | 4thF | SFC | B04 | COL | Con |
| CON-B04-4TH-1020 |  | Shuttering for Walls, Col. & Cores (B04) (4th) | 8d | 2026-10-20 | 2026-10-28 | CON-B04-4TH-1010 SS+3d, CON-B04-4TH-1010 FF, E-APP-B04-4TH-1000 | -23d | 0d |  | Carpenter for concrete [32 h]; the big cash [253264]; Labor [16 h] | 253,264.03 | CW | B04 | 4thF | SC | B04 | COL | Con |
| CON-B04-4TH-1030 |  | Pouring for Walls, Col. & Cores (B04) (4th) | 1d | 2026-10-29 | 2026-10-29 | CON-B04-4TH-1020, P-MDEL-1030 | -23d | 0d |  | Carpenter for concrete [2 h]; the big cash [379896]; Big Quantity Concrete [66.27] | 379,896.04 | CW | B04 | 4thF | PC | B04 | COL | Con |
| CON-B04-4TH-1040 |  | Shuttering for Slabs, Beams & Stairs (B04) (4th) | 10d | 2026-10-31 | 2026-11-10 | E-APP-B04-4TH-1030, E-APP-B04-4TH-1020, E-APP-B04-4TH-1010, CON-B04-4TH-1030, CON-B04-3RD-1080 | -23d | 0d |  | Carpenter for concrete [60 h]; the big cash [701981]; Labor [30 h] | 701,981.29 | CW | B04 | 4thF | SS | B04 | Slb | Con |
| CON-B04-4TH-1050 |  | RFT for Slabs, Beams & Stairs (B04) (4th) | 10d | 2026-11-04 | 2026-11-15 | CON-B04-4TH-1040 SS+4d, CON-B04-4TH-1040 FF, E-APP-B04-4TH-1010, E-APP-B04-4TH-1020, E-APP-B04-4TH-1030, P-MDEL-1090 | -23d | 0d |  | Steel Fixer [60 h]; the big cash [1023094]; Big Quantity RFT [25.19]; Labor [30 h] | 1,023,093.85 | CW | B04 | 4thF | SFS | B04 | Slb | Con |
| CON-B04-4TH-1060 |  | Pouring for Slabs, Beams & Stairs (B04) (4th) | 2d | 2026-11-16 | 2026-11-17 | CON-B04-4TH-1050, P-MDEL-1030 | -23d | 0d |  | Carpenter for concrete [4 h]; the big cash [1052972]; Big Quantity Concrete [183.39] | 1,052,971.93 | CW | B04 | 4thF | PS | B04 | Slb | Con |
| CON-B04-4TH-1070 |  | Curing for Slabs, Beams & Stairs (B04) (4th) | 3d | 2026-11-18 | 2026-11-20 | CON-B04-4TH-1060 | -27d | 0d | Roya-The Big Project Phase 01 (B1-4)7 days | Labor [3 h] |  | CW | B04 | 4thF | DS | B04 | Slb | Con |
| CON-B04-4TH-1080 |  | Dismantling Formwork (B04) (4th) | 1d | 2026-11-30 | 2026-11-30 | CON-B04-4TH-1060 FS+10d | -21d | 6d | Roya-The Big Project Phase 01 (B1-4)7 days | Carpenter for concrete [3 h] |  | CW | B04 | 4thF | DS | B04 | Slb | Con |

| ID | WBS | Activity | Duration | Start | Finish | Predecessors | Total float | Free float | Calendar | Resources | Cost | Work Type | Building Name | Floor Name | Activities | Buildings NO. | BOQ Division | Site Cinstruction |
| --- | --- | --- | --- | --- | --- | --- | --- | --- | --- | --- | --- | --- | --- | --- | --- | --- | --- | --- |
|  | 5thF | **5th Floor** |  | 2026-11-21 | 2027-01-04 |  |  |  |  |  |  |  |  |  |  |  |  |  |
| CON-B04-5TH-1000 |  | Scaffolding works for Walls, Col. & Cores (B04) (5th) | 5d | 2026-11-21 | 2026-11-25 | CON-B04-4TH-1070 | -23d | 0d |  | Carpenter for concrete [15 h] |  | CW | B04 | 5thF | SC | B04 | Con |  |
| CON-B04-5TH-1010 |  | RFT for Walls, Col. & Cores (B04) (5th) | 8d | 2026-11-24 | 2026-12-02 | CON-B04-5TH-1000 SS+3d, CON-B04-5TH-1000 FF, E-APP-B04-5TH-1000, P-MDEL-1080 | -23d | 0d |  | Steel Fixer [32 h]; the big cash [463096]; Big Quantity RFT [11.4]; Labor [16 h] | 463,096.43 | CW | B04 | 5thF | SFC | B04 | Con |  |
| CON-B04-5TH-1020 |  | Shuttering for Walls, Col. & Cores (B04) (5th) | 8d | 2026-11-26 | 2026-12-05 | CON-B04-5TH-1010 SS+2d, CON-B04-5TH-1010 FF, E-APP-B04-5TH-1000 | -23d | 0d |  | Carpenter for concrete [32 h]; the big cash [253264]; Labor [16 h] | 253,264.03 | CW | B04 | 5thF | SC | B04 | Con |  |
| CON-B04-5TH-1030 |  | Pouring for Walls, Col. & Cores (B04) (5th) | 1d | 2026-12-06 | 2026-12-06 | CON-B04-5TH-1020, P-MDEL-1030 | -23d | 0d |  | Carpenter for concrete [2 h]; the big cash [379896]; Big Quantity Concrete [66.27] | 379,896.04 | CW | B04 | 5thF | PC | B04 | Con |  |
| CON-B04-5TH-1040 |  | Shuttering for Slabs, Beams & Stairs (B04) (5th) | 10d | 2026-12-07 | 2026-12-17 | E-APP-B04-5TH-1030, E-APP-B04-5TH-1020, E-APP-B04-5TH-1010, CON-B04-5TH-1030, CON-B04-4TH-1080 | -23d | 0d |  | Carpenter for concrete [60 h]; the big cash [702158]; Labor [30 h] | 702,157.56 | CW | B04 | 5thF | SS | B04 | Con |  |
| CON-B04-5TH-1050 |  | RFT for Slabs, Beams & Stairs (B04) (5th) | 10d | 2026-12-10 | 2026-12-21 | CON-B04-5TH-1040 SS+3d, CON-B04-5TH-1040 FF, E-APP-B04-5TH-1010, E-APP-B04-5TH-1020, E-APP-B04-5TH-1030, P-MDEL-1080 | -23d | 0d |  | Steel Fixer [60 h]; the big cash [1023349]; Big Quantity RFT [25.19]; Labor [30 h] | 1,023,348.88 | CW | B04 | 5thF | SFC | B04 | Con |  |
| CON-B04-5TH-1060 |  | Pouring for Slabs, Beams & Stairs (B04) (5th) | 1d | 2026-12-22 | 2026-12-22 | CON-B04-5TH-1050, P-MDEL-1030 | -23d | 0d |  | Carpenter for concrete [2 h]; the big cash [1053236]; Big Quantity Concrete [183.43] | 1,053,236.03 | CW | B04 | 5thF | PS | B04 | Con |  |
| CON-B04-5TH-1070 |  | Curing for Slabs, Beams & Stairs (B04) (5th) | 3d | 2026-12-23 | 2026-12-25 | CON-B04-5TH-1060 | -27d | 0d | Roya-The Big Project Phase 01 (B1-4)7 days | Labor [3 h] |  | CW | B04 | 5thF | DS | B04 | Con |  |
| CON-B04-5TH-1080 |  | Dismantling Formwork (B04) (5th) | 1d | 2027-01-04 | 2027-01-04 | CON-B04-5TH-1060 FS+10d | -24d | 4d | Roya-The Big Project Phase 01 (B1-4)7 days | Carpenter for concrete [3 h] |  | CW | B04 | 5thF | DS | B04 | Con |  |
|  | 6thF | **6th Floor** |  | 2026-12-26 | 2027-02-04 |  |  |  |  |  |  |  |  |  |  |  |  |  |
| CON-B04-6TH-1000 |  | Scaffolding works for Walls, Col. & Cores (B04) (6th) | 3d | 2026-12-26 | 2026-12-28 | CON-B04-5TH-1070 | -23d | 0d |  | Carpenter for concrete [9 h] |  | CW | B04 | 6thF | SC | B04 | Con | COL |
| CON-B04-6TH-1010 |  | RFT for Walls, Col. & Cores (B04) (6th) | 5d | 2026-12-29 | 2027-01-03 | CON-B04-6TH-1000 SS+3d, CON-B04-6TH-1000 FF, E-APP-B04-6TH-1000, P-MDEL-1070 | -23d | 0d |  | Steel Fixer [30 h]; the big cash [463096]; Big Quantity RFT [11.4]; Labor [15 h] | 463,096.43 | CW | B04 | 6thF | SFC | B04 | Con | COL |
| CON-B04-6TH-1020 |  | Shuttering for Walls, Col. & Cores (B04) (6th) | 5d | 2026-12-31 | 2027-01-05 | CON-B04-6TH-1010 SS+2d, CON-B04-6TH-1010 FF, E-APP-B04-6TH-1000 | -23d | 0d |  | Carpenter for concrete [30 h]; the big cash [253264]; Labor [15 h] | 253,264.03 | CW | B04 | 6thF | SC | B04 | Con | COL |
| CON-B04-6TH-1030 |  | Pouring for Walls, Col. & Cores (B04) (6th) | 1d | 2027-01-06 | 2027-01-06 | CON-B04-6TH-1020, P-MDEL-1030 | -23d | 0d |  | Carpenter for concrete [2 h]; the big cash [379896]; Big Quantity Concrete [66.27] | 379,896.04 | CW | B04 | 6thF | PC | B04 | Con | COL |
| CON-B04-6TH-1040 |  | Shuttering for Slabs, Beams & Stairs (B04) (6th) | 8d | 2027-01-09 | 2027-01-17 | E-APP-B04-6TH-1030, E-APP-B04-6TH-1020, E-APP-B04-6TH-1010, CON-B04-6TH-1030, CON-B04-5TH-1080 | -23d | 0d |  | Carpenter for concrete [64 h]; the big cash [702522]; Labor [32 h] | 702,521.6 | CW | B04 | 6thF | SS | B04 | Con | Slb |
| CON-B04-6TH-1050 |  | RFT for Slabs, Beams & Stairs (B04) (6th) | 8d | 2027-01-12 | 2027-01-20 | CON-B04-6TH-1040 SS+3d, CON-B04-6TH-1040 FF, E-APP-B04-6TH-1010, E-APP-B04-6TH-1020, E-APP-B04-6TH-1030, P-MDEL-1070 | -23d | 0d |  | Steel Fixer [64 h]; the big cash [1023876]; Big Quantity RFT [25.21]; Labor [32 h] | 1,023,875.56 | CW | B04 | 6thF | SFC | B04 | Con | Slb |
| CON-B04-6TH-1060 |  | Pouring for Slabs, Beams & Stairs (B04) (6th) | 1d | 2027-01-21 | 2027-01-21 | CON-B04-6TH-1050, P-MDEL-1030 | -23d | 0d |  | Carpenter for concrete [2 h]; the big cash [1053782]; Big Quantity Concrete [183.53] | 1,053,782.4 | CW | B04 | 6thF | PS | B04 | Con | Slb |
| CON-B04-6TH-1070 |  | Curing for Slabs, Beams & Stairs (B04) (6th) | 3d | 2027-01-22 | 2027-01-24 | CON-B04-6TH-1060 | -28d | 1d | Roya-The Big Project Phase 01 (B1-4)7 days | Labor [3 h] |  | CW | B04 | 6thF | DS | B04 | Con | Slb |
| CON-B04-6TH-1080 |  | Dismantling Formwork (B04) (6th) | 1d | 2027-02-04 | 2027-02-04 | CON-B04-6TH-1060 FS+10d | -25d | 3d | Roya-The Big Project Phase 01 (B1-4)7 days | Carpenter for concrete [3 h] |  | CW | B04 | 6thF | DS | B04 | Con | Slb |
|  | 7thF | **7th Floor** |  | 2027-01-26 | 2027-03-04 |  |  |  |  |  |  |  |  |  |  |  |  |  |
| CON-B04-7TH-1000 |  | Scaffolding works for Walls, Col. & Cores (B04) (7th) | 4d | 2027-01-26 | 2027-01-30 | CON-B04-6TH-1070 | -23d | 0d |  | Carpenter for concrete [12 h] |  | CW | B04 | 7thF | SC | B04 | Con | COL |
| CON-B04-7TH-1010 |  | RFT for Walls, Col. & Cores (B04) (7th) | 5d | 2027-01-30 | 2027-02-03 | CON-B04-7TH-1000 SS+3d, CON-B04-7TH-1000 FF, E-APP-B04-7TH-1000, P-MDEL-1190 | -23d | 0d |  | Steel Fixer [30 h]; the big cash [463096]; Big Quantity RFT [11.4]; Labor [15 h] | 463,096.43 | CW | B04 | 7thF | SFC | B04 | Con | COL |
| CON-B04-7TH-1020 |  | Shuttering for Walls, Col. & Cores (B04) (7th) | 5d | 2027-02-01 | 2027-02-06 | CON-B04-7TH-1010 SS+2d, CON-B04-7TH-1010 FF, E-APP-B04-7TH-1000 | -23d | 0d |  | Carpenter for concrete [30 h]; the big cash [253264]; Labor [15 h] | 253,264.03 | CW | B04 | 7thF | SC | B04 | Con | COL |
| CON-B04-7TH-1030 |  | Pouring for Walls, Col. & Cores (B04) (7th) | 1d | 2027-02-07 | 2027-02-07 | CON-B04-7TH-1020, P-MDEL-1030 | -23d | 0d |  | Carpenter for concrete [2 h]; the big cash [379896]; Big Quantity Concrete [66.27] | 379,896.04 | CW | B04 | 7thF | PC | B04 | Con | COL |
| CON-B04-7TH-1040 |  | Shuttering for Slabs, Beams & Stairs (B04) (7th) | 8d | 2027-02-08 | 2027-02-16 | E-APP-B04-7TH-1030, E-APP-B04-7TH-1020, E-APP-B04-7TH-1010, CON-B04-7TH-1030, CON-B04-6TH-1080 | -23d | 0d |  | Carpenter for concrete [64 h]; the big cash [708262]; Labor [32 h] | 708,261.94 | CW | B04 | 7thF | SS | B04 | Con | Slb |
| CON-B04-7TH-1050 |  | RFT for Slabs, Beams & Stairs (B04) (7th) | 8d | 2027-02-10 | 2027-02-18 | CON-B04-7TH-1040 SS+2d, CON-B04-7TH-1040 FF, E-APP-B04-7TH-1010, E-APP-B04-7TH-1020, E-APP-B04-7TH-1030, P-MDEL-1190 | -23d | 0d |  | Steel Fixer [64 h]; the big cash [1032180]; Big Quantity RFT [25.41]; Labor [32 h] | 1,032,180.5 | CW | B04 | 7thF | SFC | B04 | Con | Slb |
| CON-B04-7TH-1060 |  | Pouring for Slabs, Beams & Stairs (B04) (7th) | 1d | 2027-02-20 | 2027-02-20 | CON-B04-7TH-1050, P-MDEL-1030 | -23d | 0d |  | Carpenter for concrete [2 h]; the big cash [1062393]; Big Quantity Concrete [185.03] | 1,062,392.9 | CW | B04 | 7thF | PS | B04 | Con | Slb |
| CON-B04-7TH-1070 |  | Curing for Slabs, Beams & Stairs (B04) (7th) | 3d | 2027-02-21 | 2027-02-23 | CON-B04-7TH-1060 | -28d | 0d | Roya-The Big Project Phase 01 (B1-4)7 days | Labor [3 h] |  | CW | B04 | 7thF | DS | B04 | Con | Slb |
| CON-B04-7TH-1080 |  | Dismantling Formwork (B04) (7th) | 1d | 2027-03-04 | 2027-03-04 | CON-B04-7TH-1060 FS+10d | -24d | 8d | Roya-The Big Project Phase 01 (B1-4)7 days | Carpenter for concrete [3 h] |  | CW | B04 | 7thF | DS | B04 | Con | Slb |

| ID | WBS | Activity | Duration | Start | Finish | Predecessors | Complete | Remaining | Planned start | Planned finish | Total float | Free float | Calendar | Resources | Cost | Actual cost | Work Type | Building Name | Floor Name | Activities | Buildings NO. | Site Cinstruction | BOQ Division |
| --- | --- | --- | --- | --- | --- | --- | --- | --- | --- | --- | --- | --- | --- | --- | --- | --- | --- | --- | --- | --- | --- | --- | --- |
|  | 8thF | **8th Floor** |  | 2027-02-24 | 2027-04-04 |  |  |  |  |  |  |  |  |  |  |  |  |  |  |  |  |  |  |
| CON-B04-8TH-1000 |  | Scaffolding works for Walls, Col. & Cores (B04) (8th) | 4d | 2027-02-24 | 2027-02-28 | CON-B04-7TH-1070 |  |  |  |  | -24d | 0d |  | Carpenter for concrete [12 h] |  |  | CW | B04 | 8thF | SC | B04 | COL | Con |
| CON-B04-8TH-1010 |  | RFT for Walls, Col. & Cores (B04) (8th) | 6d | 2027-02-27 | 2027-03-04 | CON-B04-8TH-1000 SS+2d, CON-B04-8TH-1000 FF, E-APP-B04-8TH-1000, P-MDEL-1180 |  |  |  |  | -24d | 0d |  | Steel Fixer [36 h]; the big cash [463096]; Big Quantity RFT [11.4]; Labor [18 h] | 463,096.43 |  | CW | B04 | 8thF | SFC | B04 | COL | Con |
| CON-B04-8TH-1020 |  | Shuttering for Walls, Col. & Cores (B04) (8th) | 6d | 2027-03-01 | 2027-03-07 | CON-B04-8TH-1010 SS+2d, CON-B04-8TH-1010 FF, E-APP-B04-8TH-1000 |  |  |  |  | -24d | 0d |  | Carpenter for concrete [24 h]; the big cash [253264]; Labor [12 h] | 253,264.03 |  | CW | B04 | 8thF | SC | B04 | COL | Con |
| CON-B04-8TH-1030 |  | Pouring for Walls, Col. & Cores (B04) (8th) | 1d | 2027-03-08 | 2027-03-08 | CON-B04-8TH-1020, P-MDEL-1030 |  |  |  |  | -24d | 0d |  | Carpenter for concrete [2 h]; the big cash [379896]; Big Quantity Concrete [66.27] | 379,896.04 |  | CW | B04 | 8thF | PC | B04 | COL | Con |
| CON-B04-8TH-1040 |  | Shuttering for Slabs, Beams & Stairs (B04) (8th) | 4d | 2027-03-13 | 2027-03-16 | E-APP-B04-8TH-1030, E-APP-B04-8TH-1020, E-APP-B04-8TH-1010, CON-B04-8TH-1030, CON-B04-7TH-1080 |  |  |  |  | -24d | 0d |  | Carpenter for concrete [56 h]; the big cash [684393]; Labor [28 h] | 684,392.83 |  | CW | B04 | 8thF | SS | B04 | Slb | Con |
| CON-B04-8TH-1050 |  | RFT for Slabs, Beams & Stairs (B04) (8th) | 6d | 2027-03-15 | 2027-03-21 | CON-B04-8TH-1040 SS+2d, CON-B04-8TH-1040 FF, E-APP-B04-8TH-1010, E-APP-B04-8TH-1020, E-APP-B04-8TH-1030, P-MDEL-1180 |  |  |  |  | -24d | 0d |  | Steel Fixer [60 h]; the big cash [1004314]; Big Quantity RFT [24.72]; Labor [30 h] | 1,004,314.01 |  | CW | B04 | 8thF | SFS | B04 | Slb | Con |
| CON-B04-8TH-1060 |  | Pouring for Slabs, Beams & Stairs (B04) (8th) | 1d | 2027-03-22 | 2027-03-22 | CON-B04-8TH-1050, P-MDEL-1030 |  |  |  |  | -24d | 0d |  | Carpenter for concrete [2 h]; the big cash [1026589]; Big Quantity Concrete [178.58] | 1,026,589.25 |  | CW | B04 | 8thF | PS | B04 | Slb | Con |
| CON-B04-8TH-1070 |  | Curing for Slabs, Beams & Stairs (B04) (8th) | 3d | 2027-03-23 | 2027-03-25 | CON-B04-8TH-1060 |  |  |  |  | -31d | 1d | Roya-The Big Project Phase 01 (B1-4)7 days | Labor [3 h] |  |  | CW | B04 | 8thF | DS | B04 | Slb | Con |
| CON-B04-8TH-1080 |  | Dismantling Formwork (B04) (8th) | 1d | 2027-04-04 | 2027-04-04 | CON-B04-8TH-1060 FS+10d |  |  |  |  | -32d | 0d | Roya-The Big Project Phase 01 (B1-4)7 days | Carpenter for concrete [3 h] |  |  | CW | B04 | 8thF | DS | B04 | Slb | Con |
|  | RF | **Roof Floor** |  | 2027-03-27 | 2027-04-14 |  |  |  |  |  |  |  |  |  |  |  |  |  |  |  |  |  |  |
| CON-B04-RF-1000 |  | Scaffolding works for Walls, Col. & Cores (B04) (RF) | 1d | 2027-03-27 | 2027-03-27 | CON-B04-8TH-1070 |  |  |  |  | -24d | 0d |  | Carpenter for concrete [3 h] |  |  | CW | B04 | RF | SC | B04 | COL | Con |
| CON-B04-RF-1010 |  | RFT for Walls, Col. & Cores (B04) (RF) | 1d | 2027-03-28 | 2027-03-28 | CON-B04-RF-1000, E-APP-B04-RF-1000, P-MDEL-1200 |  |  |  |  | -24d | 0d |  | Steel Fixer [10 h]; the big cash [160083]; Big Quantity RFT [3.94]; Labor [5 h] | 160,083.42 |  | CW | B04 | RF | SFC | B04 | COL | Con |
| CON-B04-RF-1020 |  | Shuttering for Walls, Col. & Cores (B04) (RF) | 1d | 2027-03-29 | 2027-03-29 | CON-B04-RF-1010, E-APP-B04-RF-1000 |  |  |  |  | -24d | 0d |  | Carpenter for concrete [10 h]; the big cash [90857.2]; Labor [5 h] | 90,857.25 |  | CW | B04 | RF | SC | B04 | COL | Con |
| CON-B04-RF-1030 |  | Pouring for Walls, Col. & Cores (B04) (RF) | 1d | 2027-03-30 | 2027-03-30 | CON-B04-RF-1020, P-MDEL-1030 |  |  |  |  | -24d | 0d |  | Carpenter for concrete [2 h]; the big cash [136286]; Big Quantity Concrete [23.77] | 136,285.88 |  | CW | B04 | RF | SFS | B04 | COL | Con |
| CON-B04-RF-1040 |  | Shuttering for Slabs, Beams (B04) (RF) | 2d | 2027-03-31 | 2027-04-01 | E-APP-B04-RF-1020, E-APP-B04-RF-1010, CON-B04-RF-1030 |  |  |  |  | -24d | 0d |  | Carpenter for concrete [8 h]; the big cash [74908]; Labor [4 h] | 74,908.04 |  | CW | B04 | RF | SS | B04 | Slb | Con |
| CON-B04-RF-1050 |  | RFT for Slabs, Beams (B04) (RF) | 2d | 2027-04-03 | 2027-04-04 | CON-B04-RF-1040, E-APP-B04-RF-1010, E-APP-B04-RF-1020, P-MDEL-1200 |  |  |  |  | -24d | 0d |  | Steel Fixer [8 h]; the big cash [157799]; Big Quantity RFT [3.88]; Labor [4 h] | 157,798.92 |  | CW | B04 | RF | PC | B04 | Slb | Con |
| CON-B04-RF-1060 |  | Pouring for Slabs, Beams (B04) (RF) | 1d | 2027-04-05 | 2027-04-05 | CON-B04-RF-1050, P-MDEL-1030, CON-B04-8TH-1080 |  |  |  |  | -24d | 0d |  | Carpenter for concrete [2 h]; the big cash [112362]; Big Quantity Concrete [19.49] | 112,362.06 |  | CW | B04 | RF | PS | B04 | Slb | Con |
| CON-B04-RF-1070 |  | Curing for Slabs, Beams (B04) (RF) | 3d | 2027-04-06 | 2027-04-08 | CON-B04-RF-1060 |  |  |  |  | -32d | 0d | Roya-The Big Project Phase 01 (B1-4)7 days | Labor [3 h] |  |  | CW | B04 | RF | DS | B04 | Slb | Con |
| CON-B04-RF-1080 |  | Dismantling Formwork (B04) (RF) | 1d | 2027-04-14 | 2027-04-14 | CON-B04-RF-1070 FS+5d |  |  |  |  | -32d | 0d | Roya-The Big Project Phase 01 (B1-4)7 days | Carpenter for concrete [3 h] |  |  | CW | B04 | RF | DS | B04 | Slb | Con |
|  | B03 | **B03** |  | 2025-12-01 | 2027-04-10 |  |  |  |  |  |  |  |  |  |  |  |  |  |  |  |  |  |  |
|  | SUB | **Substructure** |  | 2025-12-01 | 2026-05-10 |  |  |  |  |  |  |  |  |  |  |  |  |  |  |  |  |  |  |
|  | F | **Footing** |  | 2025-12-01 | 2026-03-09 |  |  |  |  |  |  |  |  |  |  |  |  |  |  |  |  |  |  |
| CON-B03-FOOT-1000 |  | Shuttering for PC Raft (B03) (footing) | 1d | 2025-12-01 A | 2025-12-03 A | E-APP-B03-FOOT-1010, CON-EW-B03-1010, P-MDEL-1020 | 100% |  | 2025-12-31 | 2025-12-31 |  |  |  | Carpenter for concrete [3 h]; the big cash [459469]; Labor [3 h] | 459,468.75 | 459,468.75 | CW | B03 | Foot | SPC | B03 | PC | Con |
| CON-B03-FOOT-1010 |  | Pouring for PC Raft (B03) (footing) | 1d | 2025-12-22 A | 2025-12-23 A | CON-B03-FOOT-1000, P-MDEL-1030 | 100% |  | 2026-01-01 | 2026-01-01 |  |  |  | Carpenter for concrete [2 h]; the big cash [1072094]; Big Quantity Concrete [422.5] | 1,072,093.75 | 1,072,093.75 | CW | B03 | Foot | PPC | B03 | RC | Con |
| CON-B03-FOOT-1020 |  | Curing for PC Raft (B03) (footing) | 3d | 2025-12-23 A | 2025-12-23 A | CON-B03-FOOT-1010 | 100% |  | 2026-01-02 | 2026-01-04 |  |  | Roya-The Big Project Phase 01 (B1-4)7 days | Carpenter for concrete [3 h] |  |  | CW | B03 | Foot | DPC | B03 | PC | Con |
| CON-B03-FOOT-1030 |  | Waterproofing & Ins. Protection works (B03) (footing) | 2d | 2025-12-24 A | 2025-12-24 A | P-MDEL-1040, E-APP-B03-FOOT-1000, CON-B03-FOOT-1020 | 100% |  | 2026-01-05 | 2026-01-06 |  |  |  | Water Proofing Tech [6 h]; the big cash [860385]; Big Quantity Proofing [1911.97] | 860,385.35 | 860,385.35 | CW | B03 | Foot | WP | B03 | WP | T&M |
| CON-B03-FOOT-1050 |  | RFT for RC Raft & Footings (B03) (footing) | 10d | 2026-01-01 A | 2026-01-12 | CON-B03-FOOT-1040 SS+1d, E-APP-B03-FOOT-1030, CON-B03-FOOT-1040 FF, P-MDEL-1000 | 100% | 0d | 2026-01-01 | 2026-01-13 | 5d | 0d |  | Steel Fixer [160 h]; loader [1 h]; the big cash [7996512]; Big Quantity RFT [196.86]; Labor [80 h] | 7,996,512.12 | 7,996,512.12 | CW | B03 | Foot | SFF | B03 | RC | Con |
| CON-B03-FOOT-1040 |  | Shuttering for RC Raft & Footings (B03) (footing) | 10d | 2026-01-04 A | 2026-01-12 | CON-B03-FOOT-1030 SS+3d, E-APP-B03-FOOT-1020, CON-B03-FOOT-1030 FF | 100% | 0d | 2025-12-31 | 2026-01-12 | -2d | 0d |  | Carpenter for concrete [100 h]; the big cash [2877740]; Labor [50 h] | 2,877,739.56 | 2,877,739.56 | CW | B03 | Foot | SF | B03 | RC | Con |
| CON-B03-FOOT-1060 |  | Shuttering for Columns & Walls Below SOG (B01) (footing) | 5d | 2026-01-12 | 2026-01-17 | CON-B03-FOOT-1040 SS+4d, E-APP-B03-FOOT-1020 |  |  |  |  | -2d | 0d |  | Carpenter for concrete [10 h]; the big cash [44307.9]; Labor [5 h] | 44,307.9 |  |  |  | Foot |  | B03 | BSOG | Con |
| CON-B03-FOOT-1080 |  | Pouring for RC Raft & Footings (B03) (footing) | 1d | 2026-01-12 | 2026-01-12 | CON-B03-FOOT-1050, P-MDEL-1030 |  |  |  |  | 5d | 0d |  | Carpenter for concrete [2 h]; the big cash [6714726]; Big Quantity Concrete [1330.44] | 6,714,725.63 |  | CW | B03 | Foot | PF | B03 | RC | Con |
| CON-B03-FOOT-1070 |  | RFT for Columns & Walls Below SOG (B03) (footing) | 5d | 2026-01-14 | 2026-01-19 | CON-B03-FOOT-1060 SS+2d, CON-B03-FOOT-1060 FF, E-APP-B03-FOOT-1030, P-MDEL-1000 |  |  |  |  | -2d | 0d |  | Steel Fixer [10 h]; the big cash [59377.8]; Big Quantity RFT [1.46]; Labor [5 h] | 59,377.83 |  |  |  | Foot |  | B03 | BSOG | Con |
| CON-B03-FOOT-1090 |  | Pouring Columns & Walls Below SOG (B01) (footing) | 1d | 2026-01-20 | 2026-01-20 | CON-B03-FOOT-1070 |  |  |  |  | -2d | 0d |  | Carpenter for concrete [2 h]; the big cash [103385]; Big Quantity Concrete [16.23] | 103,385.1 |  |  |  | Foot |  | B03 | BSOG | Con |
| CON-B03-FOOT-1100 |  | Curing & Deshuttering for RC Raft & Footings (B03) (footing) | 3d | 2026-01-21 | 2026-01-23 | CON-B03-FOOT-1080, CON-B03-FOOT-1090 |  |  |  |  | -2d | 0d | Roya-The Big Project Phase 01 (B1-4)7 days | Carpenter for concrete [6 h]; Labor [3 h] |  |  | CW | B03 | Foot | DSF | B03 | RC | Con |
| CON-B03-FOOT-1110 |  | Bitumen Ins. for RC Raft & Footings (B03) (footing) | 3d | 2026-03-02 | 2026-03-04 | CON-B03-FOOT-1100, P-MDEL-1050, E-APP-B03-FOOT-1000 |  |  |  |  | 250d | 0d |  | Water Proofing Tech [9 h]; the big cash [137662]; Big Quantity Bitumine [1529.57] | 137,661.66 |  | CW | B03 | Foot | WP | B03 | WP | T&M |
| CON-B03-FOOT-1120 |  | Soil Backfilling (B03) (footing) | 4d | 2026-03-05 | 2026-03-09 | CON-B03-FOOT-1110 |  |  |  |  | 250d | 14d |  | loader [2 h]; the big cash [381216]; Big Quantity Backfiling [828.73]; Compactor [4 h]; TRUCK [16 h]; Labor [4 h] | 381,216.36 |  | CW | B03 | Foot | BFW | B03 | BF | EW |

| ID | WBS | Activity | Duration | Start | Finish | Predecessors | Total float | Free float | Calendar | Resources | Cost | Work Type | Building Name | Floor Name | Activities | Buildings NO. | Site Cinstruction | BOQ Division |
| --- | --- | --- | --- | --- | --- | --- | --- | --- | --- | --- | --- | --- | --- | --- | --- | --- | --- | --- |
|  | 2ndB | **Basement 2** |  | 2026-01-24 | 2026-05-09 |  |  |  |  |  |  |  |  |  |  |  |  |  |
| CON-B03-BAS02-1000 |  | Scaffolding works for Walls, Col. & Cores (B03) (Bas 02) | 6d | 2026-01-24 | 2026-01-31 | CON-B03-FOOT-1100 | -1d | 12d |  | Carpenter for concrete [18 h] |  | CW | B03 | Bsmt02 | SC | B03 | COL | Con |
| CON-B03-BAS02-1010 |  | RFT for Walls, Col. & Cores (B03) (Bas 02) | 12d | 2026-02-08 | 2026-02-21 | CON-B03-BAS02-1000 SS, CON-B03-BAS02-1000 FF, CON-B02-BAS02-1010, E-APP-B03-BAS02-1000, P-MDEL-1170 | -13d | 0d |  | Steel Fixer [72 h]; the big cash [1145013]; Big Quantity RFT [28.19]; Labor [36 h] | 1,145,012.81 | CW | B03 | Bsmt02 | SFC | B03 | COL | Con |
| CON-B03-BAS02-1020 |  | Shuttering for Walls, Col. & Cores (B03) (Bas 02) | 12d | 2026-02-11 | 2026-02-24 | CON-B03-BAS02-1010 SS+3d, CON-B02-BAS02-1020 SS, CON-B03-BAS02-1010 FF, E-APP-B03-BAS02-1000 | -13d | 0d |  | Carpenter for concrete [96 h]; the big cash [928590]; Labor [48 h] | 928,590.39 | CW | B03 | Bsmt02 | SC | B03 | COL | Con |
| CON-B03-BAS02-1030 |  | Pouring for Walls, Col. & Cores (B03) (Bas 02) | 2d | 2026-02-25 | 2026-02-26 | CON-B02-BAS02-1030, CON-B03-BAS02-1020, P-MDEL-1030 | -13d | 0d |  | Carpenter for concrete [4 h]; the big cash [1392886]; Big Quantity Concrete [242.98] | 1,392,885.58 | CW | B03 | Bsmt02 | PS | B03 | COL | Con |
| CON-B03-BAS02-1040 |  | Shuttering for Slabs & Beams (B03) (Bas 02) | 8d | 2026-02-28 | 2026-03-08 | CON-B02-BAS02-1040 SS, E-APP-B03-BAS02-1030, E-APP-B03-BAS02-1020, CON-B03-BAS02-1030 | -13d | 0d |  | Carpenter for concrete [96 h]; the big cash [1703596]; Labor [48 h] | 1,703,595.99 | CW | B03 | Bsmt02 | SS | B03 | Slb | Con |
| CON-B03-BAS02-1050 |  | Shuttering for Stairs (B03) (Bas 02) | 6d | 2026-03-02 | 2026-03-08 | CON-B03-BAS02-1040 SS+2d, CON-B02-BAS02-1050 SS, E-APP-B03-BAS02-1010 | -5d | 0d |  | Carpenter for concrete [12 h]; the big cash [17372.2]; Labor [6 h] | 17,372.16 | CW | B03 | Bsmt02 | SS | B03 | STR | Con |
| CON-B03-BAS02-1060 |  | RFT for Slabs & Beams (B03) (Bas 02) | 10d | 2026-03-02 | 2026-03-12 | CON-B03-BAS02-1040 SS+2d, CON-B02-BAS02-1060 SS, CON-B03-BAS02-1040 FF, E-APP-B03-BAS02-1020, E-APP-B03-BAS02-1030, P-MDEL-1170 | -13d | 0d |  | Steel Fixer [80 h]; the big cash [1730166]; Big Quantity RFT [42.59]; Labor [40 h] | 1,730,165.79 | CW | B03 | Bsmt02 | SFS | B03 | Slb | Con |
| CON-B03-BAS02-1070 |  | RFT for Stairs (B03) (Bas 02) | 6d | 2026-03-04 | 2026-03-10 | CON-B03-BAS02-1050 SS+2d, CON-B02-BAS02-1070, CON-B03-BAS02-1050 FF, E-APP-B03-BAS02-1010, P-MDEL-1170 | -5d | 0d |  | Steel Fixer [12 h]; the big cash [32613.8]; Big Quantity RFT [0.8]; Labor [6 h] | 32,613.8 | CW | B03 | Bsmt02 | SFS | B03 | STR | Con |
| CON-B03-BAS02-1080 |  | Pouring for Stairs (B03) (Bas 02) | 2d | 2026-03-11 | 2026-03-12 | CON-B02-BAS02-1080, CON-B03-BAS02-1070, P-MDEL-1030 | -5d | 0d |  | Carpenter for concrete [4 h]; the big cash [26058.2]; Big Quantity Concrete [4.64] | 26,058.24 | CW | B03 | Bsmt02 | PC | B03 | STR | Con |
| CON-B03-BAS02-1090 |  | Curing for Slabs, Beams & Stairs (B03) (Bas 02) | 5d | 2026-03-13 | 2026-03-17 | CON-B03-BAS02-1080, CON-B02-BAS02-1090 | 6d | 12d | Roya-The Big Project Phase 01 (B1-4)7 days | Labor [5 h] |  | CW | B03 | Bsmt02 | DS | B03 | Slb | Con |
| CON-B03-BAS02-1100 |  | Pouring for Slabs & Beams B03) (Bas 02) | 2d | 2026-03-14 | 2026-03-15 | CON-B02-BAS02-1100, CON-B03-BAS02-1060, P-MDEL-1030 | -13d | 0d |  | Carpenter for concrete [4 h]; the big cash [1135731]; Big Quantity Concrete [296.28] | 1,135,730.66 | CW | B03 | Bsmt02 | PS | B03 | Slb | Con |
| CON-B03-BAS02-1110 |  | Dismantling Formwork (B03) (Bas 02) | 1d | 2026-03-30 | 2026-03-30 | CON-B02-BAS02-1110, CON-B03-BAS02-1080 FS+10d, CON-B03-BAS02-1090 | -6d | 0d | Roya-The Big Project Phase 01 (B1-4)7 days | Carpenter for concrete [3 h] |  | CW | B03 | Bsmt02 | DS | B03 | Slb | Con |
|  | SOG | **S.O.G** |  | 2026-03-31 | 2026-05-09 |  |  |  |  |  |  |  |  |  |  |  |  |  |
| CON-B03-SOG-1000 |  | Soil Backfilling & Compaction (B03) (sog) | 7d | 2026-03-31 | 2026-04-07 | CON-B03-BAS02-1110, CON-B03-FOOT-1120 | 236d | 0d |  | loader [2 h]; the big cash [228730]; Compactor [7 h]; TRUCK [28 h]; Big Quantity Backfiling [552.49]; Labor [7 h] | 228,729.82 | CW | B03 | SOG | BFW | B03 | BF | EW |
| CON-B03-SOG-1010 |  | Soil Compaction Test (B03) (sog) | 2d | 2026-04-08 | 2026-04-09 | CON-B03-SOG-1000 | 244d | 0d |  | the big cash [25414.4]; Compactor [2 h]; Labor [2 h] | 25,414.42 | CW | B03 | SOG | BFW | B03 | RPC | EW |
| CON-B03-SOG-1020 |  | DPM Layer works (B03) (sog) | 10d | 2026-04-11 | 2026-04-22 | CON-B03-SOG-1010, P-MDEL-1040, E-APP-B03-FOOT-1000 | 244d | 0d |  | Labor [10 h]; the big cash [115955] | 115,955.2 | CW | B03 | SOG |  | B03 | SOG | Con |
| CON-B03-SOG-1030 |  | Blinding Concrete works (B03) (sog) | 12d | 2026-04-18 | 2026-04-30 | CON-B03-SOG-1020 SS+5d, CON-B03-SOG-1020 FF | 244d | 0d |  | Carpenter for concrete [12 h]; the big cash [231910] | 231,910.41 | CW | B03 | SOG | SSOG | B03 | SOG | Con |
| CON-B03-SOG-1040 |  | Shuttering & RFT for S.O.G (B03) (sog) | 10d | 2026-04-23 | 2026-05-04 | CON-B03-SOG-1030 SS+5d, CON-B03-SOG-1030 FF, E-APP-B03-SOG-1010, E-APP-B03-SOG-1000, P-MDEL-1150 | 244d | 0d |  | Carpenter for concrete [60 h]; the big cash [347866]; Big Quantity RFT [2.76]; Labor [60 h]; Steel Fixer [60 h] | 347,865.61 | CW | B03 | SOG | SFSOG | B03 | SOG | Con |
| CON-B03-SOG-1050 |  | Pouring for S.O.G (B03) (sog) | 7d | 2026-05-02 | 2026-05-09 | CON-B03-SOG-1040 SS+7d, CON-B03-SOG-1040 FF, P-MDEL-1030 | 244d | 0d |  | Carpenter for concrete [14 h]; the big cash [463821]; Big Quantity Concrete [675.81] | 463,820.82 | CW | B03 | SOG | PSOG | B03 | SOG | Con |
| CON-B03-SOG-1060 |  | Curing & Smoothing Surface for S.O.G (B03) (sog) | 7d | 2026-05-03 | 2026-05-09 | CON-B03-SOG-1050 SS+1d, CON-B03-SOG-1050 FF | 322d | 336d | Roya-The Big Project Phase 01 (B1-4)7 days | Labor [7 h] |  | CW | B03 | SOG | DSOG | B03 | SOG | Con |
|  | 1stB | **Basement 1** |  | 2026-03-21 | 2026-05-10 |  |  |  |  |  |  |  |  |  |  |  |  |  |
| CON-B03-BAS01-1000 |  | Scaffolding works for Walls, Col. & Cores (B03) (Bas 01) | 6d | 2026-03-21 | 2026-03-26 | CON-B02-BAS01-1000, CON-B03-BAS02-1100 | -13d | 2d |  | Carpenter for concrete [18 h] |  | CW | B03 | Bsmt01 | SC | B03 | COL | Con |
| CON-B03-BAS01-1010 |  | RFT for Walls, Col. & Cores (B03) (Bas 01) | 12d | 2026-03-23 | 2026-04-05 | CON-B03-BAS01-1000 SS, CON-B02-BAS01-1010, CON-B03-BAS01-1000 FF, E-APP-B03-BAS01-1000, P-MDEL-1160 | -15d | 0d |  | Steel Fixer [72 h]; the big cash [882884]; Big Quantity RFT [21.74]; Labor [36 h] | 882,883.82 | CW | B03 | Bsmt01 | SFC | B03 | COL | Con |
| CON-B03-BAS01-1020 |  | Shuttering for Walls, Col. & Cores (B03) (Bas 01) | 12d | 2026-03-26 | 2026-04-08 | CON-B03-BAS01-1010 SS+3d, CON-B02-BAS01-1020, CON-B03-BAS01-1010 FF, E-APP-B03-BAS01-1000 | -15d | 0d |  | Carpenter for concrete [72 h]; the big cash [716427]; Labor [36 h] | 716,427.39 | CW | B03 | Bsmt01 | SC | B03 | COL | Con |
| CON-B03-BAS01-1030 |  | Pouring for Walls, Col. & Cores (B03) (Bas 01) | 2d | 2026-04-09 | 2026-04-11 | CON-B03-BAS01-1020, CON-B02-BAS01-1030, P-MDEL-1030 | -15d | 0d |  | Carpenter for concrete [4 h]; the big cash [1074641]; Big Quantity Concrete [187.46] | 1,074,641.09 | CW | B03 | Bsmt01 | PC | B03 | COL | Con |
| CON-B03-BAS01-1040 |  | Shuttering for Slabs & Beams (B03) (Bas 01) | 8d | 2026-04-12 | 2026-04-21 | CON-B02-BAS01-1040, E-APP-B03-BAS01-1030, E-APP-B03-BAS01-1020, CON-B03-BAS01-1030, CON-B03-BAS02-1110 | -15d | 0d |  | Carpenter for concrete [96 h]; the big cash [1268963]; Labor [48 h] | 1,268,962.7 | CW | B03 | Bsmt01 | SS | B03 | Slb | Con |
| CON-B03-BAS01-1050 |  | RFT for Slabs & Beams (B03) (Bas 01) | 10d | 2026-04-15 | 2026-04-26 | CON-B03-BAS01-1040 SS+2d, CON-B02-BAS01-1060, CON-B03-BAS01-1040 FF, E-APP-B03-BAS01-1020, E-APP-B03-BAS01-1030, P-MDEL-1160 | -2d | 0d |  | Steel Fixer [80 h]; the big cash [1863491]; Big Quantity RFT [45.88]; Labor [40 h] | 1,863,491.47 | CW | B03 | Bsmt01 | SFC | B03 | Slb | Con |
| CON-B03-BAS01-1060 |  | Shuttering for Stairs (B03) (Bas 01) | 8d | 2026-04-16 | 2026-04-25 | CON-B03-BAS01-1040 SS+3d, CON-B02-BAS01-1050, E-APP-B03-BAS01-1010 | -15d | 0d |  | Carpenter for concrete [16 h]; the big cash [17372.2]; Labor [8 h] | 17,372.16 | CW | B03 | Bsmt01 | SS | B03 | STR | Con |
| CON-B03-BAS01-1070 |  | RFT for Stairs (B03) (Bas 01) | 6d | 2026-04-19 | 2026-04-25 | CON-B03-BAS01-1060 SS+2d, CON-B02-BAS01-1070, CON-B03-BAS01-1060 FF, E-APP-B03-BAS01-1010, P-MDEL-1160 | -15d | 0d |  | Steel Fixer [12 h]; the big cash [32613.8]; Big Quantity RFT [0.8]; Labor [6 h] | 32,613.8 | CW | B03 | Bsmt01 | SFS | B03 | STR | Con |
| CON-B03-BAS01-1080 |  | Pouring for Stairs (B03) (Bas 01) | 2d | 2026-04-26 | 2026-04-27 | CON-B02-BAS01-1080, CON-B03-BAS01-1070, P-MDEL-1030 | -15d | 0d |  | Carpenter for concrete [4 h]; the big cash [26058.2]; Big Quantity Concrete [4.64] | 26,058.24 | CW | B03 | Bsmt01 | PS | B03 | STR | Con |
| CON-B03-BAS01-1090 |  | Pouring for Slabs & Beams (B03) (Bas 01) | 2d | 2026-04-27 | 2026-04-28 | CON-B03-BAS01-1050, P-MDEL-1030 | -2d | 0d |  | Carpenter for concrete [4 h]; the big cash [1903444]; Big Quantity Concrete [331.12] | 1,903,444.06 | CW | B03 | Bsmt01 | PS | B03 | Slb | Con |
| CON-B03-BAS01-1100 |  | Curing for Slabs, Beams & Stairs (B03) (Bas 01) | 5d | 2026-04-28 | 2026-05-02 | CON-B03-BAS01-1080, CON-B02-BAS01-1100 | -19d | 0d | Roya-The Big Project Phase 01 (B1-4)7 days | Labor [5 h] |  | CW | B03 | Bsmt01 | DS | B03 | Slb | Con |
| CON-B03-BAS01-1110 |  | Dismantling Formwork (B03) (Bas 01) | 1d | 2026-05-10 | 2026-05-10 | CON-B03-BAS01-1080 FS+10d, CON-B03-BAS01-1090 | -13d | 6d | Roya-The Big Project Phase 01 (B1-4)7 days | Carpenter for concrete [3 h] |  | CW | B03 | Bsmt01 | DS | B03 | Slb | Con |

| ID | WBS | Activity | Duration | Start | Finish | Predecessors | Total float | Free float | Calendar | Resources | Cost | Work Type | Building Name | Floor Name | Activities | Buildings NO. | Site Cinstruction | BOQ Division |
| --- | --- | --- | --- | --- | --- | --- | --- | --- | --- | --- | --- | --- | --- | --- | --- | --- | --- | --- |
|  | SUP | **Superstructure** |  | 2026-05-03 | 2027-04-10 |  |  |  |  |  |  |  |  |  |  |  |  |  |
|  | GF | **GR Floor** |  | 2026-05-03 | 2026-06-18 |  |  |  |  |  |  |  |  |  |  |  |  |  |
| CON-B03-GR-1000 |  | Scaffolding works for Walls, Col. & Cores (B03) (GR) | 7d | 2026-05-03 | 2026-05-10 | CON-B03-BAS01-1100 | -16d | 0d |  | Carpenter for concrete [21 h] |  | CW | B03 | GF | SC | B03 | COL | Con |
| CON-B03-GR-1010 |  | RFT for Walls, Col. & Cores (B03) (GR) | 8d | 2026-05-03 | 2026-05-11 | CON-B03-GR-1000 SS, CON-B03-GR-1000 FF, E-APP-B03-GR-1000, P-MDEL-1130 | -16d | 0d |  | Steel Fixer [48 h]; the big cash [656399]; Big Quantity RFT [16.16]; Labor [24 h] | 656,398.89 | CW | B03 | GF | SFC | B03 | COL | Con |
| CON-B03-GR-1020 |  | Shuttering for Walls, Col. & Cores (B03) (GR) | 8d | 2026-05-05 | 2026-05-13 | CON-B03-GR-1010 SS+2d, CON-B03-GR-1010 FF, E-APP-B03-GR-1000 | -16d | 0d |  | Carpenter for concrete [48 h]; the big cash [355173]; Labor [24 h] | 355,173.29 | CW | B03 | GF | SC | B03 | COL | Con |
| CON-B03-GR-1030 |  | Pouring for Walls, Col. & Cores (B03) (GR) | 2d | 2026-05-14 | 2026-05-16 | CON-B03-GR-1020, P-MDEL-1030 | -16d | 0d |  | Carpenter for concrete [4 h]; the big cash [532760]; Big Quantity Concrete [92.94] | 532,759.93 | CW | B03 | GF | PC | B03 | COL | Con |
| CON-B03-GR-1040 |  | Shuttering for Slabs & Beams (B03) (GR) | 7d | 2026-05-17 | 2026-05-24 | E-APP-B03-GR-1030, E-APP-B03-GR-1020, CON-B03-GR-1030, CON-B03-BAS01-1110 | -16d | 0d |  | Carpenter for concrete [70 h]; the big cash [858317]; Labor [35 h] | 858,317.45 | CW | B03 | GF | SS | B03 | Slb | Con |
| CON-B03-GR-1050 |  | Shuttering for Stairs (B03) (GR) | 5d | 2026-05-19 | 2026-05-24 | CON-B03-GR-1040 SS+2d, E-APP-B03-GR-1010 | -16d | 0d |  | Carpenter for concrete [10 h]; the big cash [34744.3]; Labor [5 h] | 34,744.32 | CW | B03 | GF | SS | B03 | STR | Con |
| CON-B03-GR-1060 |  | RFT for Slabs & Beams (B03) (GR) | 5d | 2026-05-20 | 2026-05-25 | CON-B03-GR-1040 SS+3d, CON-B03-GR-1050 FF, E-APP-B03-GR-1020, E-APP-B03-GR-1030, P-MDEL-1130 | -16d | 0d |  | Steel Fixer [60 h]; the big cash [1321990]; Big Quantity RFT [32.55]; Labor [30 h] | 1,321,990.03 | CW | B03 | GF | SFS | B03 | Slb | Con |
| CON-B03-GR-1070 |  | RFT for Stairs (B03) (GR) | 4d | 2026-05-21 | 2026-05-25 | CON-B03-GR-1050 SS+2d, CON-B03-GR-1040 FF, CON-B03-GR-1060 FF, E-APP-B03-GR-1010, P-MDEL-1130 | -16d | 0d |  | Steel Fixer [8 h]; the big cash [65227.6]; Big Quantity RFT [1.61]; Labor [4 h] | 65,227.6 | CW | B03 | GF | SFS | B03 | STR | Con |
| CON-B03-GR-1080 |  | Pouring for Slabs & Beams (B03) (GR) | 2d | 2026-05-26 | 2026-06-01 | P-MDEL-1030, CON-B03-GR-1060 | -16d | 0d |  | Carpenter for concrete [4 h]; the big cash [1287476]; Big Quantity Concrete [223.89] | 1,287,476.18 | CW | B03 | GF | PS | B03 | Slb | Con |
| CON-B03-GR-1090 |  | Pouring for Stairs (B03) (GR) | 2d | 2026-05-26 | 2026-06-01 | P-MDEL-1030, CON-B03-GR-1070 | -16d | 0d |  | Carpenter for concrete [4 h]; the big cash [52116.5]; Big Quantity Concrete [9.28] | 52,116.48 | CW | B03 | GF | PS | B03 | STR | Con |
| CON-B03-GR-1100 |  | Curing for Slabs, Beams & Stairs (B03) (GR) | 3d | 2026-06-02 | 2026-06-04 | CON-B03-GR-1090, CON-B03-GR-1080 | -23d | 0d | Roya-The Big Project Phase 01 (B1-4)7 days | Labor [3 h] |  | CW | B03 | GF | DS | B03 | Slb | Con |
| CON-B03-GR-1110 |  | Dismantling Formwork (B03) (GR) | 1d | 2026-06-18 | 2026-06-18 | CON-B03-GR-1080 FS+14d | 8d | 32d | Roya-The Big Project Phase 01 (B1-4)7 days | Carpenter for concrete [3 h] |  | CW | B03 | GF | DS | B03 | Slb | Con |
|  | 1stF | **1st Floor** |  | 2026-06-25 | 2026-08-30 |  |  |  |  |  |  |  |  |  |  |  |  |  |
| CON-B03-1ST-1000 |  | Scaffolding works for Walls, Col. & Cores (B03) (1st) | 5d | 2026-06-25 | 2026-07-01 | CON-B03-GR-1100 FS+20d | -20d | 0d |  | Carpenter for concrete [15 h] |  | CW | B03 | 1stF | SC | B03 | COL | Con |
| CON-B03-1ST-1010 |  | RFT for Walls, Col. & Cores (B03) (1st) | 12d | 2026-06-29 | 2026-07-13 | CON-B03-1ST-1000 SS+3d, CON-B03-1ST-1000 FF, E-APP-B03-1ST-1000, P-MDEL-1120 | -20d | 0d |  | Steel Fixer [24 h]; the big cash [388169]; Big Quantity RFT [9.56]; Labor [12 h] | 388,168.78 | CW | B03 | 1stF | SFC | B03 | COL | Con |
| CON-B03-1ST-1020 |  | Shuttering for Walls, Col. & Cores (B03) (1st) | 12d | 2026-07-05 | 2026-07-18 | CON-B03-1ST-1010 SS+4d, CON-B03-1ST-1010 FF, E-APP-B03-1ST-1000 | -20d | 0d |  | Carpenter for concrete [24 h]; the big cash [209944]; Labor [12 h] | 209,943.72 | CW | B03 | 1stF | SC | B03 | COL | Con |
| CON-B03-1ST-1030 |  | Pouring for Walls, Col. & Cores (B03) (1st) | 2d | 2026-07-19 | 2026-07-20 | CON-B03-1ST-1020, P-MDEL-1030 | -20d | 0d |  | Carpenter for concrete [4 h]; the big cash [314916]; Big Quantity Concrete [54.93] | 314,915.58 | CW | B03 | 1stF | PC | B03 | COL | Con |
| CON-B03-1ST-1040 |  | Shuttering for Slabs, Beams & Stairs (B03) (1st) | 15d | 2026-07-21 | 2026-08-08 | E-APP-B03-1ST-1030, E-APP-B03-1ST-1020, E-APP-B03-1ST-1010, CON-B03-1ST-1030, CON-B03-GR-1110 | -20d | 0d |  | Carpenter for concrete [90 h]; the big cash [945064]; Labor [45 h] | 945,063.75 | CW | B03 | 1stF | SS | B03 | Slb | Con |
| CON-B03-1ST-1050 |  | RFT for Slabs, Beams & Stairs (B03) (1st) | 15d | 2026-07-27 | 2026-08-12 | CON-B03-1ST-1040 SS+4d, CON-B03-1ST-1040 FF, E-APP-B03-1ST-1010, E-APP-B03-1ST-1020, E-APP-B03-1ST-1030, P-MDEL-1120 | -20d | 0d |  | Steel Fixer [90 h]; the big cash [1396338]; Big Quantity RFT [34.38]; Labor [45 h] | 1,396,338.34 | CW | B03 | 1stF | SFS | B03 | Slb | Con |
| CON-B03-1ST-1060 |  | Pouring for Slabs, Beams & Stairs (B03) (1st) | 3d | 2026-08-13 | 2026-08-16 | CON-B03-1ST-1050, P-MDEL-1030 | -20d | 0d |  | Carpenter for concrete [6 h]; the big cash [1417596]; Big Quantity Concrete [246.82] | 1,417,595.63 | CW | B03 | 1stF | PS | B03 | Slb | Con |
| CON-B03-1ST-1070 |  | Curing for Slabs, Beams & Stairs (B03) (1st) | 5d | 2026-08-17 | 2026-08-21 | CON-B03-1ST-1060 | -24d | 0d | Roya-The Big Project Phase 01 (B1-4)7 days | Labor [5 h] |  | CW | B03 | 1stF | DS | B03 | Slb | Con |
| CON-B03-1ST-1080 |  | Dismantling Formwork (B03) (1st) | 1d | 2026-08-30 | 2026-08-30 | CON-B03-1ST-1060 FS+10d | 2d | 26d | Roya-The Big Project Phase 01 (B1-4)7 days | Carpenter for concrete [3 h] |  | CW | B03 | 1stF | DS | B03 | Slb | Con |

| ID | WBS | Activity | Duration | Start | Finish | Predecessors | Total float | Free float | Calendar | Resources | Cost | Work Type | Building Name | Floor Name | Activities | Buildings NO. | Site Cinstruction | BOQ Division |
| --- | --- | --- | --- | --- | --- | --- | --- | --- | --- | --- | --- | --- | --- | --- | --- | --- | --- | --- |
|  | 2ndF | **2nd Floor** |  | 2026-09-01 | 2026-11-03 |  |  |  |  |  |  |  |  |  |  |  |  |  |
| CON-B03-2ND-1000 |  | Scaffolding works for Walls, Col. & Cores (B03) (2nd) | 5d | 2026-09-01 | 2026-09-06 | CON-B03-1ST-1070 FS+10d | -20d | 0d |  | Carpenter for concrete [15 h] |  | CW | B03 | 2ndF | SC | B03 | COL | Con |
| CON-B03-2ND-1010 |  | RFT for Walls, Col. & Cores (B03) (2nd) | 12d | 2026-09-05 | 2026-09-17 | CON-B03-2ND-1000 SS+3d, CON-B03-2ND-1000 FF, E-APP-B03-2ND-1000, P-MDEL-1110 | -20d | 0d |  | Steel Fixer [24 h]; the big cash [388169]; Big Quantity RFT [9.56]; Labor [12 h] | 388,168.78 | CW | B03 | 2ndF | SFC | B03 | COL | Con |
| CON-B03-2ND-1020 |  | Shuttering for Walls, Col. & Cores (B03) (2nd) | 12d | 2026-09-09 | 2026-09-22 | CON-B03-2ND-1010 SS+4d, CON-B03-2ND-1010 FF, E-APP-B03-2ND-1000 | -20d | 0d |  | Carpenter for concrete [24 h]; the big cash [209944]; Labor [12 h] | 209,943.72 | CW | B03 | 2ndF | SC | B03 | COL | Con |
| CON-B03-2ND-1030 |  | Pouring for Walls, Col. & Cores (B03) (2nd) | 2d | 2026-09-23 | 2026-09-24 | CON-B03-2ND-1020, P-MDEL-1030 | -20d | 0d |  | Carpenter for concrete [4 h]; the big cash [314916]; Big Quantity Concrete [54.93] | 314,915.58 | CW | B03 | 2ndF | PC | B03 | COL | Con |
| CON-B03-2ND-1040 |  | Shuttering for Slabs, Beams & Stairs (B03) (2nd) | 15d | 2026-09-26 | 2026-10-13 | E-APP-B03-2ND-1030, E-APP-B03-2ND-1020, E-APP-B03-2ND-1010, CON-B03-2ND-1030, CON-B03-1ST-1080 | -20d | 0d |  | Carpenter for concrete [90 h]; the big cash [946708]; Labor [45 h] | 946,707.68 | CW | B03 | 2ndF | SS | B03 | Slb | Con |
| CON-B03-2ND-1050 |  | RFT for Slabs, Beams & Stairs(B03) (2nd) | 15d | 2026-09-30 | 2026-10-18 | CON-B03-2ND-1040 SS+4d, CON-B03-2ND-1040 FF, E-APP-B03-2ND-1010, E-APP-B03-2ND-1020, E-APP-B03-2ND-1030, P-MDEL-1110 | -20d | 0d |  | Steel Fixer [90 h]; the big cash [1398717]; Big Quantity RFT [34.43]; Labor [45 h] | 1,398,716.73 | CW | B03 | 2ndF | SFS | B03 | Slb | Con |
| CON-B03-2ND-1060 |  | Pouring for Slabs, Beams & Stairs (B03) (2nd) | 3d | 2026-10-19 | 2026-10-21 | CON-B03-2ND-1050, P-MDEL-1030 | -20d | 0d |  | Carpenter for concrete [6 h]; the big cash [1420062]; Big Quantity Concrete [247.25] | 1,420,061.52 | CW | B03 | 2ndF | PS | B03 | Slb | Con |
| CON-B03-2ND-1070 |  | Curing for Slabs, Beams & Stairs (B03) (2nd) | 3d | 2026-10-22 | 2026-10-24 | CON-B03-2ND-1060 | -24d | 0d | Roya-The Big Project Phase 01 (B1-4)7 days | Labor [3 h] |  | CW | B03 | 2ndF | DS | B03 | Slb | Con |
| CON-B03-2ND-1080 |  | Dismantling Formwork (B03) (2nd) | 1d | 2026-11-03 | 2026-11-03 | CON-B03-2ND-1060 FS+10d | 0d | 25d | Roya-The Big Project Phase 01 (B1-4)7 days | Carpenter for concrete [3 h] |  | CW | B03 | 2ndF | DS | B03 | Slb | Con |
|  | 3rdF | **3rd Floor** |  | 2026-11-04 | 2027-01-05 |  |  |  |  |  |  |  |  |  |  |  |  |  |
| CON-B03-3RD-1000 |  | Scaffolding works for Walls, Col. & Cores (B03) (3rd) | 5d | 2026-11-04 | 2026-11-09 | CON-B03-2ND-1070 FS+10d | -21d | 0d |  | Carpenter for concrete [15 h] |  | CW | B03 | 3rdF | SC | B03 |  | Con |
| CON-B03-3RD-1010 |  | RFT for Walls, Col. & Cores (B03) (3rd) | 12d | 2026-11-08 | 2026-11-21 | CON-B03-3RD-1000 SS+3d, CON-B03-3RD-1000 FF, E-APP-B03-3RD-1000, P-MDEL-1100 | -21d | 0d |  | Steel Fixer [24 h]; the big cash [384021]; Big Quantity RFT [9.45]; Labor [12 h] | 384,021.48 | CW | B03 | 3rdF | SFC | B03 |  | Con |
| CON-B03-3RD-1020 |  | Shuttering for Walls, Col. & Cores (B03) (3rd) | 12d | 2026-11-12 | 2026-11-25 | CON-B03-3RD-1010 SS+4d, CON-B03-3RD-1010 FF, E-APP-B03-3RD-1000 | -21d | 0d |  | Carpenter for concrete [24 h]; the big cash [207991]; Labor [12 h] | 207,990.75 | CW | B03 | 3rdF | SC | B03 |  | Con |
| CON-B03-3RD-1030 |  | Pouring for Walls, Col. & Cores (B03) (3rd) | 2d | 2026-11-26 | 2026-11-28 | CON-B03-3RD-1020, P-MDEL-1030 | -21d | 0d |  | Carpenter for concrete [4 h]; the big cash [311986]; Big Quantity Concrete [54.42] | 311,986.13 | CW | B03 | 3rdF | PC | B03 |  | Con |
| CON-B03-3RD-1040 |  | Shuttering for Slabs, Beams & Stairs (B03) (3rd) | 15d | 2026-11-29 | 2026-12-15 | E-APP-B03-3RD-1030, E-APP-B03-3RD-1020, E-APP-B03-3RD-1010, CON-B03-3RD-1030, CON-B03-2ND-1080 | -21d | 0d |  | Carpenter for concrete [90 h]; the big cash [943408]; Labor [45 h] | 943,408.33 | CW | B03 | 3rdF | SS | B03 |  | Con |
| CON-B03-3RD-1050 |  | RFT for Slabs, Beams & Stairs (B03) (3rd) | 15d | 2026-12-03 | 2026-12-20 | CON-B03-3RD-1040 SS+4d, CON-B03-3RD-1040 FF, E-APP-B03-3RD-1010, E-APP-B03-3RD-1020, E-APP-B03-3RD-1030, P-MDEL-1100 | -21d | 0d |  | Steel Fixer [90 h]; the big cash [1393943]; Big Quantity RFT [34.32]; Labor [45 h] | 1,393,943.32 | CW | B03 | 3rdF | SFS | B03 |  | Con |
| CON-B03-3RD-1060 |  | Pouring for Slabs, Beams & Stairs (B03) (3rd) | 3d | 2026-12-21 | 2026-12-23 | CON-B03-3RD-1050, P-MDEL-1030 | -21d | 0d |  | Carpenter for concrete [6 h]; the big cash [1415112]; Big Quantity Concrete [246.39] | 1,415,112.49 | CW | B03 | 3rdF | PS | B03 |  | Con |
| CON-B03-3RD-1070 |  | Curing for Slabs, Beams & Stairs (B03) (3rd) | 3d | 2026-12-24 | 2026-12-26 | CON-B03-3RD-1060 | -24d | 0d | Roya-The Big Project Phase 01 (B1-4)7 days | Labor [3 h] |  | CW | B03 | 3rdF | DS | B03 |  | Con |
| CON-B03-3RD-1080 |  | Dismantling Formwork (B03) (3rd) | 1d | 2027-01-05 | 2027-01-05 | CON-B03-3RD-1060 FS+10d | 0d | 27d | Roya-The Big Project Phase 01 (B1-4)7 days | Carpenter for concrete [3 h] |  | CW | B03 | 3rdF | DS | B03 |  | Con |
|  | 4thF | **4th Floor** |  | 2027-01-06 | 2027-03-08 |  |  |  |  |  |  |  |  |  |  |  |  |  |
| CON-B03-4TH-1000 |  | Scaffolding works for Walls, Col. & Cores (B03) (4th) | 5d | 2027-01-06 | 2027-01-12 | CON-B03-3RD-1070 FS+10d | -21d | 0d |  | Carpenter for concrete [15 h] |  | CW | B03 | 4thF | SC | B03 | COL | Con |
| CON-B03-4TH-1010 |  | RFT for Walls, Col. & Cores (B03) (4th) | 12d | 2027-01-11 | 2027-01-24 | CON-B03-4TH-1000 SS+3d, CON-B03-4TH-1000 FF, E-APP-B03-4TH-1000, P-MDEL-1090 | -21d | 0d |  | Steel Fixer [24 h]; the big cash [384021]; Big Quantity RFT [9.45]; Labor [12 h] | 384,021.48 | CW | B03 | 4thF | SFC | B03 | COL | Con |
| CON-B03-4TH-1020 |  | Shuttering for Walls, Col. & Cores (B03) (4th) | 12d | 2027-01-16 | 2027-01-30 | CON-B03-4TH-1010 SS+4d, CON-B03-4TH-1010 FF, E-APP-B03-4TH-1000 | -21d | 0d |  | Carpenter for concrete [24 h]; the big cash [207991]; Labor [12 h] | 207,990.75 | CW | B03 | 4thF | SC | B03 | COL | Con |
| CON-B03-4TH-1030 |  | Pouring for Walls, Col. & Cores (B03) (4th) | 2d | 2027-01-31 | 2027-02-01 | CON-B03-4TH-1020, P-MDEL-1030 | -21d | 0d |  | Carpenter for concrete [4 h]; the big cash [311986]; Big Quantity Concrete [54.42] | 311,986.13 | CW | B03 | 4thF | PC | B03 | COL | Con |
| CON-B03-4TH-1040 |  | Shuttering for Slabs, Beams & Stairs (B03) (4th) | 12d | 2027-02-02 | 2027-02-15 | E-APP-B03-4TH-1030, E-APP-B03-4TH-1020, E-APP-B03-4TH-1010, CON-B03-4TH-1030, CON-B03-3RD-1080 | -21d | 0d |  | Carpenter for concrete [72 h]; the big cash [908706]; Labor [36 h] | 908,706.16 | CW | B03 | 4thF | SS | B03 | Slb | Con |
| CON-B03-4TH-1050 |  | RFT for Slabs, Beams & Stairs (B03) (4th) | 12d | 2027-02-07 | 2027-02-20 | CON-B03-4TH-1040 SS+4d, CON-B03-4TH-1040 FF, E-APP-B03-4TH-1010, E-APP-B03-4TH-1020, E-APP-B03-4TH-1030, P-MDEL-1090 | -21d | 0d |  | Steel Fixer [72 h]; the big cash [1328777]; Big Quantity RFT [32.71]; Labor [36 h] | 1,328,776.71 | CW | B03 | 4thF | SFS | B03 | Slb | Con |
| CON-B03-4TH-1060 |  | Pouring for Slabs, Beams & Stairs (B03) (4th) | 3d | 2027-02-21 | 2027-02-23 | CON-B03-4TH-1050, P-MDEL-1030 | -21d | 0d |  | Carpenter for concrete [6 h]; the big cash [1363059]; Big Quantity Concrete [237.12] | 1,363,059.24 | CW | B03 | 4thF | PS | B03 | Slb | Con |
| CON-B03-4TH-1070 |  | Curing for Slabs, Beams & Stairs (B03) (4th) | 3d | 2027-02-24 | 2027-02-26 | CON-B03-4TH-1060 | -24d | 4d | Roya-The Big Project Phase 01 (B1-4)7 days | Labor [3 h] |  | CW | B03 | 4thF | DS | B03 | Slb | Con |
| CON-B03-4TH-1080 |  | Dismantling Formwork (B03) (4th) | 1d | 2027-03-08 | 2027-03-08 | CON-B03-4TH-1060 FS+10d | -8d | 20d | Roya-The Big Project Phase 01 (B1-4)7 days | Carpenter for concrete [3 h] |  | CW | B03 | 4thF | DS | B03 | Slb | Con |

| ID | WBS | Activity | Duration | Start | Finish | Predecessors | Total float | Free float | Calendar | Resources | Cost | Work Type | Building Name | Floor Name | Activities | Buildings NO. | Site Cinstruction | BOQ Division |
| --- | --- | --- | --- | --- | --- | --- | --- | --- | --- | --- | --- | --- | --- | --- | --- | --- | --- | --- |
|  | RF | **Roof Floor** |  | 2027-03-13 | 2027-04-10 |  |  |  |  |  |  |  |  |  |  |  |  |  |
| CON-B03-RF-1000 |  | Scaffolding works for Walls, Col. & Cores (B03) (RF) | 2d | 2027-03-13 | 2027-03-14 | CON-B03-4TH-1070 FS+10d | -21d | 0d |  | Carpenter for concrete [6 h] |  | CW | B03 | RF | SC | B03 | COL | Con |
| CON-B03-RF-1010 |  | RFT for Walls, Col. & Cores (B03) (RF) | 2d | 2027-03-15 | 2027-03-16 | CON-B03-RF-1000, E-APP-B03-RF-1000, P-MDEL-1200 | -21d | 0d |  | Steel Fixer [12 h]; the big cash [131645]; Big Quantity RFT [3.24]; Labor [6 h] | 131,645.36 | CW | B03 | RF | SFC | B03 | COL | Con |
| CON-B03-RF-1020 |  | Shuttering for Walls, Col. & Cores (B03) (RF) | 2d | 2027-03-17 | 2027-03-18 | CON-B03-RF-1010, E-APP-B03-RF-1000 | -21d | 0d |  | Carpenter for concrete [8 h]; the big cash [70928.1]; Labor [4 h] | 70,928.13 | CW | B03 | RF | SC | B03 | COL | Con |
| CON-B03-RF-1030 |  | Pouring for Walls, Col. & Cores (B03) (RF) | 2d | 2027-03-20 | 2027-03-21 | CON-B03-RF-1020, P-MDEL-1030 | -21d | 0d |  | Carpenter for concrete [4 h]; the big cash [106392]; Big Quantity Concrete [18.56] | 106,392.2 | CW | B03 | RF | PC | B03 | COL | Con |
| CON-B03-RF-1040 |  | Shuttering for Slabs, Beams (B03) (RF) | 3d | 2027-03-22 | 2027-03-24 | E-APP-B03-RF-1020, E-APP-B03-RF-1010, CON-B03-RF-1030 | -21d | 0d |  | Carpenter for concrete [6 h]; the big cash [105708]; Labor [3 h] | 105,708.2 | CW | B03 | RF | SS | B03 | Slb | Con |
| CON-B03-RF-1050 |  | RFT for Slabs, Beams (B03) (RF) | 3d | 2027-03-25 | 2027-03-28 | CON-B03-RF-1040, E-APP-B03-RF-1010, E-APP-B03-RF-1020, P-MDEL-1200 | -21d | 0d |  | Steel Fixer [6 h]; the big cash [143820]; Big Quantity RFT [3.54]; Labor [3 h] | 143,819.76 | CW | B03 | RF | SFS | B03 | Slb | Con |
| CON-B03-RF-1060 |  | Pouring for Slabs, Beams (B03) (RF) | 2d | 2027-03-29 | 2027-03-30 | CON-B03-RF-1050, P-MDEL-1030, CON-B03-4TH-1080 | -21d | 0d |  | Carpenter for concrete [4 h]; the big cash [70472.1]; Big Quantity Concrete [18.34] | 70,472.14 | CW | B03 | RF | PS | B03 | Slb | Con |
| CON-B03-RF-1070 |  | Curing for Slabs, Beams (B03) (RF) | 5d | 2027-03-31 | 2027-04-04 | CON-B03-RF-1060 | -14d | 0d | Roya-The Big Project Phase 01 (B1-4)7 days | Labor [5 h] |  | CW | B03 | RF | DS | B03 | Slb | Con |
| CON-B03-RF-1080 |  | Dismantling Formwork (B03) (RF) | 1d | 2027-04-10 | 2027-04-10 | CON-B03-RF-1070 FS+5d | -14d | 0d | Roya-The Big Project Phase 01 (B1-4)7 days | Carpenter for concrete [3 h] |  | CW | B03 | RF | DS | B03 | Slb | Con |
|  | HO | **Handover** |  | 2026-01-12 | 2027-05-27 |  |  |  |  |  |  |  |  |  |  |  |  |  |
|  | 1 | **As-built** |  | 2026-01-12 | 2027-05-18 |  |  |  |  |  |  |  |  |  |  |  |  |  |
|  | S | **Submittal** |  | 2026-01-12 | 2027-05-11 |  |  |  |  |  |  |  |  |  |  |  |  |  |
|  | P02 | **Part 02** |  | 2026-01-12 | 2027-05-11 |  |  |  |  |  |  |  |  |  |  |  |  |  |
|  | B01 | **B01** |  | 2026-01-12 | 2027-05-11 |  |  |  |  |  |  |  |  |  |  |  |  |  |
|  | SUB | **Substructre** |  | 2026-01-12 | 2026-08-08 |  |  |  |  |  |  |  |  |  |  |  |  |  |
|  | 1 | **Replacement** |  | 2026-01-12 | 2026-02-02 |  |  |  |  |  |  |  |  |  |  |  |  |  |
| AB-SUB-B01-REP-1000 |  | Submittal for General Replacement Plan & Typical Sections for Replacement / Backfilling DWGs As-Built Drawing (B01) | 18d | 2026-01-12 | 2026-02-02 | CON-EW-B01-1000, CON-EW-B01-1010 | 342d | 0d |  |  |  |  |  |  |  |  |  | HO |
|  | F | **Footing** |  | 2026-01-12 | 2026-02-23 |  |  |  |  |  |  |  |  |  |  |  |  |  |
| AB-SUB-B01-FOOT-1000 |  | Submittal for PC Raft Conc. Dim. DWGs As-Built Drawing (B01) (footing) | 18d | 2026-01-12 | 2026-02-02 | CON-B01-FOOT-1010 | 342d | 0d |  |  |  | DS |  |  |  |  |  | HO |
| AB-SUB-B01-FOOT-1010 |  | Submittal for Waterproofing Layout Plan DWGs As-Built Drawing (B01) | 18d | 2026-01-12 | 2026-02-02 | CON-B01-FOOT-1030 | 342d | 0d |  |  |  |  |  |  |  |  |  | HO |
| AB-SUB-B01-FOOT-1020 |  | Submittal for RC Raft & Footings Conc. Dim. DWGs As-Built Drawing (B01) (footing) | 18d | 2026-02-03 | 2026-02-23 | CON-B01-FOOT-1090 | 324d | 0d |  |  |  | DS |  |  |  |  |  | HO |
| AB-SUB-B01-FOOT-1030 |  | Submittal for RC Raft & Footings RFT DWGs As-Built Drawing (B01) (footing) | 18d | 2026-02-03 | 2026-02-23 | CON-B01-FOOT-1090 | 324d | 0d |  |  |  | DS |  |  |  |  |  | HO |
|  | 2ndB | **Basement 2** |  | 2026-03-04 | 2026-08-08 |  |  |  |  |  |  |  |  |  |  |  |  |  |
| AB-SUB-B01-BAS2-1000 |  | Submittal for Col. & Walls Conc. Dim. & RFT DWGs As-Built Drawing (B01) (Bas 02) | 18d | 2026-03-04 | 2026-03-29 | CON-B01-BAS02-1030 | 299d | 0d |  |  |  | DS |  |  |  |  |  | HO |
| AB-SUB-B01-BAS2-1010 |  | Submittal for Stairs Conc. Dim. & RFT DWGs As-Built Drawing (B01) (Bas 02) | 18d | 2026-03-23 | 2026-04-12 | CON-B01-BAS02-1100 | 287d | 0d |  |  |  | DS |  |  |  |  |  | HO |
| AB-SUB-B01-BAS2-1020 |  | Submittal for Ramps Conc. Dim. & RFT DWGs As-Built Drawing (B01) (Bas 02) | 18d | 2026-03-25 | 2026-04-15 | CON-B01-BAS02-1110 | 285d | 0d |  |  |  | DS |  |  |  |  |  | HO |
| AB-SUB-B01-BAS2-1030 |  | Submittal for Slabs Conc. Dim. & RFT DWGs As-Built Drawing (B01) (Bas 02) | 18d | 2026-03-26 | 2026-04-16 | CON-B01-BAS02-1130 | 284d | 0d |  |  |  | DS |  |  |  |  |  | HO |
| AB-SUB-B01-BAS2-1040 |  | Submittal for Beams Conc. Dim. & RFT DWGs As-Built Drawing (B01) (Bas 02) | 18d | 2026-03-26 | 2026-04-16 | CON-B01-BAS02-1130 | 284d | 0d |  |  |  | DS |  |  |  |  |  | HO |

| ID | WBS | Activity | Duration | Start | Finish | Predecessors | Total float | Free float | Work Type | BOQ Division |
| --- | --- | --- | --- | --- | --- | --- | --- | --- | --- | --- |
|  | SOG | **S.O.G** |  | 2026-07-13 | 2026-08-08 |  |  |  |  |  |
| AB-SUB-B01-SOG-1000 |  | Submittal for S.O.G Conc. Dim. DWGs As-Built Drawing (B01) (Sog) | 18d | 2026-07-13 | 2026-08-03 | CON-B01-SOG-1040 | 197d | 0d | DS | HO |
| AB-SUB-B01-SOG-1010 |  | Submittal for S.O.G RFT DWGs As-Built Drawing (B01) (Sog) | 18d | 2026-07-18 | 2026-08-08 | CON-B01-SOG-1050 | 193d | 0d | DS | HO |
|  | 1stB | **Basement 1** |  | 2026-04-19 | 2026-05-26 |  |  |  |  |  |
| AB-SUB-B01-BAS1-1000 |  | Submittal for Col. & Walls Conc. Dim. & RFT DWGs As-Built Drawing (B01) (Bas 01) | 18d | 2026-04-19 | 2026-05-09 | CON-B01-BAS01-1030 | 265d | 0d | DS | HO |
| AB-SUB-B01-BAS1-1010 |  | Submittal for Stairs Conc. Dim. & RFT DWGs As-Built Drawing (B01) (Bas 01) | 18d | 2026-05-04 | 2026-05-24 | CON-B01-BAS01-1100 | 252d | 0d | DS | HO |
| AB-SUB-B01-BAS1-1020 |  | Submittal for Slabs Conc. Dim. & RFT DWGs As-Built Drawing (B01) (Bas 01) | 18d | 2026-05-05 | 2026-05-25 | CON-B01-BAS01-1110 | 251d | 0d | DS | HO |
| AB-SUB-B01-BAS1-1030 |  | Submittal for Beams Conc. Dim. & RFT DWGs As-Built Drawing (B01) (Bas 01) | 18d | 2026-05-05 | 2026-05-25 | CON-B01-BAS01-1110 | 251d | 0d | DS | HO |
| AB-SUB-B01-BAS1-1040 |  | Submittal for Ramps Conc. Dim. & RFT DWGs As-Built Drawing (B01) (Bas 01) | 18d | 2026-05-06 | 2026-05-26 | CON-B01-BAS01-1130 | 250d | 0d | DS | HO |
|  | SUP | **Superstructure** |  | 2026-05-21 | 2027-05-11 |  |  |  |  |  |
|  | GF | **Ground Floor** |  | 2026-05-21 | 2026-07-07 |  |  |  |  |  |
| AB-SUB-B01-GR-1000 |  | Submittal for Col. & Walls Conc. Dim. & RFT DWGs As-Built Drawing (B01) | 18d | 2026-05-21 | 2026-06-15 | CON-B01-GR-1030 | 237d | 0d | DS | HO |
| AB-SUB-B01-GR-1010 |  | Submittal for Stairs Conc. Dim. & RFT DWGs As-Built Drawing (B01) | 18d | 2026-06-11 | 2026-07-02 | CON-B01-GR-1080 | 223d | 0d | DS | HO |
| AB-SUB-B01-GR-1020 |  | Submittal for Slabs Conc. Dim. & RFT DWGs As-Built Drawing (B01) | 18d | 2026-06-16 | 2026-07-07 | CON-B01-GR-1090 | 219d | 0d | DS | HO |
| AB-SUB-B01-GR-1030 |  | Submittal for Beams Conc. Dim. & RFT DWGs As-Built Drawing (B01) | 18d | 2026-06-16 | 2026-07-07 | CON-B01-GR-1090 | 219d | 0d | DS | HO |
|  | 1stF | **1st Floor** |  | 2026-07-05 | 2026-08-17 |  |  |  |  |  |
| AB-SUB-B01-1ST-1000 |  | Submittal for Col. & Walls Conc. Dim. & RFT DWGs As-Built Drawing (B01) (1st) | 18d | 2026-07-05 | 2026-07-26 | CON-B01-1ST-1030 | 204d | 0d | DS | HO |
| AB-SUB-B01-1ST-1010 |  | Submittal for Slabs Conc. Dim. & RFT DWGs As-Built Drawing (B01) (1st) | 18d | 2026-07-28 | 2026-08-17 | CON-B01-1ST-1060 | 185d | 0d | DS | HO |
| AB-SUB-B01-1ST-1020 |  | Submittal for Beams Conc. Dim. & RFT DWGs As-Built Drawing (B01) (1st) | 18d | 2026-07-28 | 2026-08-17 | CON-B01-1ST-1060 | 185d | 0d | DS | HO |
| AB-SUB-B01-1ST-1030 |  | Submittal for Stairs Conc. Dim. & RFT DWGs As-Built Drawing (B01) (1st) | 18d | 2026-07-28 | 2026-08-17 | CON-B01-1ST-1060 | 185d | 0d | DS | HO |
|  | 2ndF | **2nd Floor** |  | 2026-08-15 | 2026-09-22 |  |  |  |  |  |
| AB-SUB-B01-2ND-1000 |  | Submittal for Col. & Walls Conc. Dim. & RFT DWGs As-Built Drawing (B01) (2nd) | 18d | 2026-08-15 | 2026-09-05 | CON-B01-2ND-1030 | 170d | 0d | DS | HO |
| AB-SUB-B01-2ND-1010 |  | Submittal for Slabs Conc. Dim. & RFT DWGs As-Built Drawing (B01) (2nd) | 18d | 2026-09-02 | 2026-09-22 | CON-B01-2ND-1060 | 155d | 0d | DS | HO |
| AB-SUB-B01-2ND-1020 |  | Submittal for Beams Conc. Dim. & RFT DWGs As-Built Drawing (B01) (2nd) | 18d | 2026-09-02 | 2026-09-22 | CON-B01-2ND-1060 | 155d | 0d | DS | HO |
| AB-SUB-B01-2ND-1030 |  | Submittal for Stairs Conc. Dim. & RFT DWGs As-Built Drawing (B01) (2nd) | 18d | 2026-09-02 | 2026-09-22 | CON-B01-2ND-1060 | 155d | 0d | DS | HO |

| ID | WBS | Activity | Duration | Start | Finish | Predecessors | Total float | Free float | Work Type | BOQ Division |
| --- | --- | --- | --- | --- | --- | --- | --- | --- | --- | --- |
|  | 3rdF | **3rd Floor** |  | 2026-09-21 | 2026-11-01 |  |  |  |  |  |
| AB-SUB-B01-3RD-1000 |  | Submittal for Col. & Walls Conc. Dim. & RFT DWGs As-Built Drawing (B01) (3rd) | 18d | 2026-09-21 | 2026-10-12 | CON-B01-3RD-1030 | 139d | 0d | DS | HO |
| AB-SUB-B01-3RD-1010 |  | Submittal for Slabs Conc. Dim. & RFT DWGs As-Built Drawing (B01) (3rd) | 18d | 2026-10-12 | 2026-11-01 | CON-B01-3RD-1060 | 122d | 0d | DS | HO |
| AB-SUB-B01-3RD-1020 |  | Submittal for Beams Conc. Dim. & RFT DWGs As-Built Drawing (B01) (3rd) | 18d | 2026-10-12 | 2026-11-01 | CON-B01-3RD-1060 | 122d | 0d | DS | HO |
| AB-SUB-B01-3RD-1030 |  | Submittal for Stairs Conc. Dim. & RFT DWGs As-Built Drawing (B01) (3rd) | 18d | 2026-10-12 | 2026-11-01 | CON-B01-3RD-1060 | 122d | 0d | DS | HO |
|  | 4thF | **4th Floor** |  | 2026-10-31 | 2026-12-12 |  |  |  |  |  |
| AB-SUB-B01-4TH-1000 |  | Submittal for Col. & Walls Conc. Dim. & RFT DWGs As-Built Drawing (B01) (4th) | 18d | 2026-10-31 | 2026-11-19 | CON-B01-4TH-1030 | 106d | 0d | DS | HO |
| AB-SUB-B01-4TH-1010 |  | Submittal for Slabs Conc. Dim. & RFT DWGs As-Built Drawing (B01) (4th) | 18d | 2026-11-22 | 2026-12-12 | CON-B01-4TH-1060 | 87d | 0d | DS | HO |
| AB-SUB-B01-4TH-1020 |  | Submittal for Beams Conc. Dim. & RFT DWGs As-Built Drawing (B01) (4th) | 18d | 2026-11-22 | 2026-12-12 | CON-B01-4TH-1060 | 87d | 0d | DS | HO |
| AB-SUB-B01-4TH-1030 |  | Submittal for Stairs Conc. Dim. & RFT DWGs As-Built Drawing (B01) (4th) | 18d | 2026-11-22 | 2026-12-12 | CON-B01-4TH-1060 | 87d | 0d | DS | HO |
|  | 5thF | **5th Floor** |  | 2026-12-09 | 2027-01-17 |  |  |  |  |  |
| AB-SUB-B01-5TH-1000 |  | Submittal for Col. & Walls Conc. Dim. & RFT DWGs As-Built Drawing (B01) (5th) | 18d | 2026-12-09 | 2026-12-29 | CON-B01-5TH-1030 | 72d | 0d | DS | HO |
| AB-SUB-B01-5TH-1010 |  | Submittal for Slabs Conc. Dim. & RFT DWGs As-Built Drawing (B01) (5th) | 18d | 2026-12-27 | 2027-01-17 | CON-B01-5TH-1060 | 57d | 0d | DS | HO |
| AB-SUB-B01-5TH-1020 |  | Submittal for Beams Conc. Dim. & RFT DWGs As-Built Drawing (B01) (5th) | 18d | 2026-12-27 | 2027-01-17 | CON-B01-5TH-1060 | 57d | 0d | DS | HO |
| AB-SUB-B01-5TH-1030 |  | Submittal for Stairs Conc. Dim. & RFT DWGs As-Built Drawing (B01) (5th) | 18d | 2026-12-27 | 2027-01-17 | CON-B01-5TH-1060 | 57d | 0d | DS | HO |
|  | 6thF | **6th Floor** |  | 2027-01-14 | 2027-02-22 |  |  |  |  |  |
| AB-SUB-B01-6TH-1000 |  | Submittal for Col. & Walls Conc. Dim. & RFT DWGs As-Built Drawing (B01) (6th) | 18d | 2027-01-14 | 2027-02-04 | CON-B01-6TH-1030 | 42d | 0d | DS | HO |
| AB-SUB-B01-6TH-1010 |  | Submittal for Slabs Conc. Dim. & RFT DWGs As-Built Drawing (B01) (6th) | 18d | 2027-02-02 | 2027-02-22 | CON-B01-6TH-1060 | 27d | 0d | DS | HO |
| AB-SUB-B01-6TH-1020 |  | Submittal for Beams Conc. Dim. & RFT DWGs As-Built Drawing (B01) (6th) | 18d | 2027-02-02 | 2027-02-22 | CON-B01-6TH-1060 | 27d | 0d | DS | HO |
| AB-SUB-B01-6TH-1030 |  | Submittal for Stairs Conc. Dim. & RFT DWGs As-Built Drawing (B01) (6th) | 18d | 2027-02-02 | 2027-02-22 | CON-B01-6TH-1060 | 27d | 0d | DS | HO |
|  | 7thF | **7th Floor** |  | 2027-02-17 | 2027-03-29 |  |  |  |  |  |
| AB-SUB-B01-7TH-1000 |  | Submittal for Col. & Walls Conc. Dim. & RFT DWGs As-Built Drawing (B01) (7th) | 18d | 2027-02-17 | 2027-03-13 | CON-B01-7TH-1030 | 14d | 0d | DS | HO |
| AB-SUB-B01-7TH-1010 |  | Submittal for Slabs Conc. Dim. & RFT DWGs As-Built Drawing (B01) (7th) | 18d | 2027-03-06 | 2027-03-29 | CON-B01-7TH-1060 | 0d |  | DS | HO |
| AB-SUB-B01-7TH-1020 |  | Submittal for Beams Conc. Dim. & RFT DWGs As-Built Drawing (B01) (7th) | 18d | 2027-03-06 | 2027-03-29 | CON-B01-7TH-1060 | 0d |  | DS | HO |
| AB-SUB-B01-7TH-1030 |  | Submittal for Stairs Conc. Dim. & RFT DWGs As-Built Drawing (B01) (7th) | 18d | 2027-03-06 | 2027-03-29 | CON-B01-7TH-1060 | 0d |  | DS | HO |

| ID | WBS | Activity | Duration | Start | Finish | Predecessors | Total float | Free float | Work Type | BOQ Division |
| --- | --- | --- | --- | --- | --- | --- | --- | --- | --- | --- |
|  | 8thF | **8th Floor** |  | 2027-03-23 | 2027-04-26 |  |  |  |  |  |
| AB-SUB-B01-8TH-1000 |  | Submittal for Col. & Walls Conc. Dim. & RFT DWGs As-Built Drawing (B01) (8th) | 18d | 2027-03-23 | 2027-04-12 | CON-B01-8TH-1030 | -12d | 0d | DS | HO |
| AB-SUB-B01-8TH-1010 |  | Submittal for Slabs Conc. Dim. & RFT DWGs As-Built Drawing (B01) (8th) | 18d | 2027-04-06 | 2027-04-26 | CON-B01-8TH-1060 | -24d | 0d | DS | HO |
| AB-SUB-B01-8TH-1020 |  | Submittal for Beams Conc. Dim. & RFT DWGs As-Built Drawing (B01) (8th) | 18d | 2027-04-06 | 2027-04-26 | CON-B01-8TH-1060 | -24d | 0d | DS | HO |
| AB-SUB-B01-8TH-1030 |  | Submittal for Stairs Conc. Dim. & RFT DWGs As-Built Drawing (B01) (8th) | 18d | 2027-04-06 | 2027-04-26 | CON-B01-8TH-1060 | -24d | 0d | DS | HO |
|  | RF | **Roof Floor** |  | 2027-04-15 | 2027-05-11 |  |  |  |  |  |
| AB-SUB-B01-RF-1000 |  | Submittal for Col. & Walls Conc. Dim. & RFT DWGs As-Built Drawing (B01) (RF) | 18d | 2027-04-15 | 2027-05-05 | CON-B01-9TH-1030 | -32d | 0d | DS | HO |
| AB-SUB-B01-RF-1010 |  | Submittal for Slabs Conc. Dim. & RFT DWGs As-Built Drawing (B01) (RF) | 18d | 2027-04-21 | 2027-05-11 | CON-B01-9TH-1060 | -37d | 0d | DS | HO |
| AB-SUB-B01-RF-1020 |  | Submittal for Beams Conc. Dim. & RFT DWGs As-Built Drawing (B01) (RF) | 18d | 2027-04-21 | 2027-05-11 | CON-B01-9TH-1060 | -37d | 0d | DS | HO |
|  | B02 | **B02** |  | 2026-01-12 | 2027-03-31 |  |  |  |  |  |
|  | SUB | **Substructre** |  | 2026-01-12 | 2026-08-25 |  |  |  |  |  |
|  | 1 | **Replacement** |  | 2026-01-12 | 2026-02-02 |  |  |  |  |  |
| AB-SUB-B02-REP-1000 |  | Submittal for General Replacement Plan & Typical Sections for Replacement / Backfilling DWGs As-Built Drawing (B02) | 18d | 2026-01-12 | 2026-02-02 | CON-EW-B02-1000, CON-EW-B02-1010 | 342d | 0d |  | HO |
|  | F | **Footing** |  | 2026-01-12 | 2026-03-30 |  |  |  |  |  |
| AB-SUB-B02-FOOT-1000 |  | Submittal for PC Raft Conc. Dim. DWGs As-Built Drawing (B02) (footing) | 18d | 2026-01-12 | 2026-02-02 | CON-B02-FOOT-1000, CON-B02-FOOT-1010 | 342d | 0d | DS | HO |
| AB-SUB-B02-FOOT-1010 |  | Submittal for RC Raft & Footings Conc. Dim. DWGs As-Built Drawing (B02) (footing) | 18d | 2026-01-12 | 2026-02-02 | CON-B02-FOOT-1040 | 342d | 0d | DS | HO |
| AB-SUB-B02-FOOT-1020 |  | Submittal for RC Raft & Footings RFT DWGs As-Built Drawing (B02) (footing) | 18d | 2026-01-14 | 2026-02-04 | CON-B02-FOOT-1050, CON-B02-FOOT-1090 | 340d | 0d | DS | HO |
| AB-SUB-B02-FOOT-1030 |  | Submittal for Waterproofing Layout Plan DWGs As-Built Drawing (B02) | 18d | 2026-03-05 | 2026-03-30 | CON-B02-FOOT-1110 | 298d | 0d |  | HO |
|  | 2ndB | **Basement 2** |  | 2026-02-14 | 2026-08-25 |  |  |  |  |  |
| AB-SUB-B02-BAS2-1000 |  | Submittal for Col. & Walls Conc. Dim.& RFT DWGs As-Built Drawing (B02) (Bas 02) | 18d | 2026-02-14 | 2026-03-05 | CON-B02-BAS02-1030 | 315d | 0d | DS | HO |
| AB-SUB-B02-BAS2-1010 |  | Submittal for Stairs Conc. Dim.& RFT DWGs As-Built Drawing (B02) (Bas 02) | 18d | 2026-02-25 | 2026-03-22 | CON-B02-BAS02-1070 | 305d | 0d | DS | HO |
| AB-SUB-B02-BAS2-1020 |  | Submittal for Slabs Conc. Dim.& RFT DWGs As-Built Drawing (B02) (Bas 02) | 18d | 2026-03-02 | 2026-03-26 | CON-B02-BAS02-1100 | 301d | 0d | DS | HO |
| AB-SUB-B02-BAS2-1030 |  | Submittal for Beams Conc. Dim.& RFT DWGs As-Built Drawing (B02) (Bas 02) | 18d | 2026-03-02 | 2026-03-26 | CON-B02-BAS02-1100 | 301d | 0d | DS | HO |
|  | 2 | **S.O.G** |  | 2026-08-05 | 2026-08-25 |  |  |  |  |  |
| AB-SUB-B02-SOG-1000 |  | Submittal for S.O.G Conc. Dim. DWGs As-Built Drawing (B02) (Sog) | 18d | 2026-08-05 | 2026-08-25 | CON-B02-SOG-1040, CON-B02-SOG-1050 | 178d | 0d | DS | HO |
| AB-SUB-B02-SOG-1010 |  | Submittal for S.O.G RFT DWGs As-Built Drawing (B02) (Sog) | 18d | 2026-08-05 | 2026-08-25 | CON-B02-SOG-1050, CON-B02-SOG-1040 | 178d | 0d | DS | HO |

| ID | WBS | Activity | Duration | Start | Finish | Predecessors | Total float | Free float | Work Type | BOQ Division |
| --- | --- | --- | --- | --- | --- | --- | --- | --- | --- | --- |
|  | 1stB | **Basement 1** |  | 2026-03-28 | 2026-05-04 |  |  |  |  |  |
| AB-SUB-B02-BAS1-1000 |  | Submittal for Col. & Walls Conc. Dim. & RFT DWGs As-Built Drawing (B02) (Bas 01) | 18d | 2026-03-28 | 2026-04-18 | CON-B02-BAS01-1030 | 283d | 0d | DS | HO |
| AB-SUB-B02-BAS1-1010 |  | Submittal for Stairs Conc. Dim. & RFT DWGs As-Built Drawing (B02) (Bas 01) | 18d | 2026-04-11 | 2026-05-02 | CON-B02-BAS01-1080 | 271d | 0d | DS | HO |
| AB-SUB-B02-BAS1-1020 |  | Submittal for Slabs Conc. Dim. & RFT DWGs As-Built Drawing (B02) (Bas 01) | 18d | 2026-04-14 | 2026-05-04 | CON-B02-BAS01-1090 | 269d | 0d | DS | HO |
| AB-SUB-B02-BAS1-1030 |  | Submittal for Beams Conc. Dim. & RFT DWGs As-Built Drawing (B02) (Bas 01) | 18d | 2026-04-14 | 2026-05-04 | CON-B02-BAS01-1090 | 269d | 0d | DS | HO |
|  | SUP | **Superstructure** |  | 2026-05-06 | 2027-03-31 |  |  |  |  |  |
|  | GF | **Ground Floor** |  | 2026-05-06 | 2026-06-23 |  |  |  |  |  |
| AB-SUB-B02-GR-1000 |  | Submittal for Col. & Walls Conc. Dim. & RFT DWGs As-Built Drawing (B02) (GF) | 18d | 2026-05-06 | 2026-05-26 | CON-B02-GR-1030 | 250d | 0d | DS | HO |
| AB-SUB-B02-GR-1010 |  | Submittal for Stairs Conc. Dim. & RFT DWGs As-Built Drawing (B02) (GF) | 18d | 2026-05-21 | 2026-06-15 | CON-B02-GR-1080 | 237d | 0d | DS | HO |
| AB-SUB-B02-GR-1020 |  | Submittal for Slabs Conc. Dim. & RFT DWGs As-Built Drawing (B02) (GF) | 18d | 2026-06-03 | 2026-06-23 | CON-B02-GR-1100 | 230d | 0d | DS | HO |
| AB-SUB-B02-GR-1030 |  | Submittal for Beams Conc. Dim. & RFT DWGs As-Built Drawing (B02) (GF) | 18d | 2026-06-03 | 2026-06-23 | CON-B02-GR-1100 | 230d | 0d | DS | HO |
|  | 1stF | **1st Floor** |  | 2026-07-07 | 2026-08-19 |  |  |  |  |  |
| AB-SUB-B02-1ST-1000 |  | Submittal for Col. & Walls Conc. Dim. & RFT DWGs As-Built Drawing (B02) (1st) | 18d | 2026-07-07 | 2026-07-28 | CON-B02-1ST-1030 | 202d | 0d | DS | HO |
| AB-SUB-B02-1ST-1010 |  | Submittal for Slabs Conc. Dim. & RFT DWGs As-Built Drawing (B02) (1st) | 18d | 2026-07-30 | 2026-08-19 | CON-B02-1ST-1060 | 183d | 0d | DS | HO |
| AB-SUB-B02-1ST-1020 |  | Submittal for Beams Conc. Dim. & RFT DWGs As-Built Drawing (B02) (1st) | 18d | 2026-07-30 | 2026-08-19 | CON-B02-1ST-1060 | 183d | 0d | DS | HO |
| AB-SUB-B02-1ST-1030 |  | Submittal for Stairs Conc. Dim. & RFT DWGs As-Built Drawing (B02) (1st) | 18d | 2026-07-30 | 2026-08-19 | CON-B02-1ST-1060 | 183d | 0d | DS | HO |
|  | 2ndF | **2nd Floor** |  | 2026-09-05 | 2026-10-21 |  |  |  |  |  |
| AB-SUB-B02-2ND-1000 |  | Submittal for Col. & Walls Conc. Dim. & RFT DWGs As-Built Drawing (B02) (2nd) | 18d | 2026-09-05 | 2026-09-24 | CON-B02-2ND-1030 | 153d | 0d | DS | HO |
| AB-SUB-B02-2ND-1010 |  | Submittal for Slabs Conc. Dim. & RFT DWGs As-Built Drawing (B02) (2nd) | 18d | 2026-09-30 | 2026-10-21 | CON-B02-2ND-1060 | 131d | 0d | DS | HO |
| AB-SUB-B02-2ND-1020 |  | Submittal for Beams Conc. Dim. & RFT DWGs As-Built Drawing (B02) (2nd) | 18d | 2026-09-30 | 2026-10-21 | CON-B02-2ND-1060 | 131d | 0d | DS | HO |
| AB-SUB-B02-2ND-1030 |  | Submittal for Stairs Conc. Dim. & RFT DWGs As-Built Drawing (B02) (2nd) | 18d | 2026-09-30 | 2026-10-21 | CON-B02-2ND-1060 | 131d | 0d | DS | HO |
|  | 3rdF | **3rd Floor** |  | 2026-11-04 | 2026-12-20 |  |  |  |  |  |
| AB-SUB-B02-3RD-1000 |  | Submittal for Col. & Walls Conc. Dim. & RFT DWGs As-Built Drawing (B02) (3rd) | 18d | 2026-11-04 | 2026-11-24 | CON-B02-3RD-1030 | 102d | 0d | DS | HO |
| AB-SUB-B02-3RD-1010 |  | Submittal for Slabs Conc. Dim. & RFT DWGs As-Built Drawing (B02) (3rd) | 18d | 2026-11-30 | 2026-12-20 | CON-B02-3RD-1060 | 80d | 0d | DS | HO |
| AB-SUB-B02-3RD-1020 |  | Submittal for Beams Conc. Dim. & RFT DWGs As-Built Drawing (B02) (3rd) | 18d | 2026-11-30 | 2026-12-20 | CON-B02-3RD-1060 | 80d | 0d | DS | HO |
| AB-SUB-B02-3RD-1030 |  | Submittal for Stairs Conc. Dim. & RFT DWGs As-Built Drawing (B02) (3rd) | 18d | 2026-11-30 | 2026-12-20 | CON-B02-3RD-1060 | 80d | 0d | DS | HO |

| ID | WBS | Activity | Duration | Start | Finish | Predecessors | Total float | Free float | Work Type | BOQ Division |
| --- | --- | --- | --- | --- | --- | --- | --- | --- | --- | --- |
|  | 4thF | **4th Floor** |  | 2027-01-04 | 2027-02-20 |  |  |  |  |  |
| AB-SUB-B02-4TH-1000 |  | Submittal for Col. & Walls Conc. Dim. & RFT DWGs As-Built Drawing (B02) (4th) | 18d | 2027-01-04 | 2027-01-26 | CON-B02-4TH-1030 | 50d | 0d | DS | HO |
| AB-SUB-B02-4TH-1010 |  | Submittal for Slabs Conc. Dim. & RFT DWGs As-Built Drawing (B02) (4th) | 18d | 2027-01-31 | 2027-02-20 | CON-B02-4TH-1060 | 29d | 0d | DS | HO |
| AB-SUB-B02-4TH-1020 |  | Submittal for Beams Conc. Dim. & RFT DWGs As-Built Drawing (B02) (4th) | 18d | 2027-01-31 | 2027-02-20 | CON-B02-4TH-1060 | 29d | 0d | DS | HO |
| AB-SUB-B02-4TH-1030 |  | Submittal for Stairs Conc. Dim. & RFT DWGs As-Built Drawing (B02) (4th) | 18d | 2027-01-31 | 2027-02-20 | CON-B02-4TH-1060 | 29d | 0d | DS | HO |
|  | RF | **Roof Floor** |  | 2027-02-24 | 2027-03-31 |  |  |  |  |  |
| AB-SUB-B02-RF-1000 |  | Submittal for Col. & Walls Conc. Dim. & RFT DWGs As-Built Drawing (B02) (RF) | 18d | 2027-02-24 | 2027-03-20 | CON-B02-RF-1030 | 8d | 0d | DS | HO |
| AB-SUB-B02-RF-1010 |  | Submittal for Slabs Conc. Dim. & RFT DWGs As-Built Drawing (B02) (RF) | 18d | 2027-03-08 | 2027-03-31 | CON-B02-RF-1060 | -2d | 0d | DS | HO |
| AB-SUB-B02-RF-1020 |  | Submittal for Beams Conc. Dim. & RFT DWGs As-Built Drawing (B02) (RF) | 18d | 2027-03-08 | 2027-03-31 | CON-B02-RF-1060 | -2d | 0d | DS | HO |
|  | P01 | **Part 01** |  | 2026-01-12 | 2027-04-20 |  |  |  |  |  |
|  | B03 | **B03** |  | 2026-01-12 | 2027-04-20 |  |  |  |  |  |
|  | SUB | **Substructre** |  | 2026-01-12 | 2026-06-03 |  |  |  |  |  |
|  | 1 | **Replacement** |  | 2026-01-12 | 2026-02-02 |  |  |  |  |  |
| AB-SUB-B03-REP-1000 |  | Submittal for General Replacement Plan & Typical Sections for Replacement / Backfilling DWGs As-Built Drawing (B03) | 18d | 2026-01-12 | 2026-02-02 | CON-EW-B03-1000, CON-EW-B03-1010 | 342d | 0d |  | HO |
|  | F | **Footing** |  | 2026-01-12 | 2026-03-30 |  |  |  |  |  |
| AB-SUB-B03-FOOT-1000 |  | Submittal for PC Raft Conc. Dim. DWGs As-Built Drawing (B03) (footing) | 18d | 2026-01-12 | 2026-02-02 | CON-B03-FOOT-1000, CON-B03-FOOT-1010 | 342d | 0d | DS | HO |
| AB-SUB-B03-FOOT-1010 |  | Submittal for RC Raft & Footings Conc. Dim. DWGs As-Built Drawing (B03) (footing) | 18d | 2026-01-12 | 2026-02-02 | CON-B03-FOOT-1040 | 342d | 0d | DS | HO |
| AB-SUB-B03-FOOT-1020 |  | Submittal for RC Raft & Footings RFT DWGs As-Built Drawing (B03) (footing) | 18d | 2026-01-13 | 2026-02-03 | CON-B03-FOOT-1050, CON-B03-FOOT-1080 | 341d | 0d | DS | HO |
| AB-SUB-B03-FOOT-1030 |  | Submittal for Waterproofing Layout Plan DWGs As-Built Drawing (B03) | 18d | 2026-03-05 | 2026-03-30 | CON-B03-FOOT-1110 | 298d | 0d |  | HO |
|  | 2ndB | **Basement 2** |  | 2026-02-28 | 2026-06-03 |  |  |  |  |  |
| AB-SUB-B03-BAS2-1000 |  | Submittal for Col. & Walls Conc. Dim. & RFT DWGs As-Built Drawing (B03) (Bas 02) | 18d | 2026-02-28 | 2026-03-24 | CON-B03-BAS02-1030 | 303d | 0d | DS | HO |
| AB-SUB-B03-BAS2-1010 |  | Submittal for Stairs Conc. Dim. & RFT DWGs As-Built Drawing (B03) (Bas 02) | 18d | 2026-03-14 | 2026-04-07 | CON-B03-BAS02-1080 | 291d | 0d | DS | HO |
| AB-SUB-B03-BAS2-1020 |  | Submittal for Slabs Conc. Dim. & RFT DWGs As-Built Drawing (B03) (Bas 02) | 18d | 2026-03-21 | 2026-04-09 | CON-B03-BAS02-1100 | 289d | 0d | DS | HO |
| AB-SUB-B03-BAS2-1030 |  | Submittal for Beams Conc. Dim. & RFT DWGs As-Built Drawing (B03) (Bas 02) | 18d | 2026-03-21 | 2026-04-09 | CON-B03-BAS02-1100 | 289d | 0d | DS | HO |

| ID | WBS | Activity | Duration | Start | Finish | Predecessors | Total float | Free float | Work Type | BOQ Division |
| --- | --- | --- | --- | --- | --- | --- | --- | --- | --- | --- |
|  | 1 | **S.O.G** |  | 2026-05-05 | 2026-06-03 |  |  |  |  |  |
| AB-SUB-B03-SOG-1000 |  | Submittal for S.O.G Conc. Dim. DWGs As-Built Drawing (B03) (Sog) | 18d | 2026-05-05 | 2026-05-25 | CON-B03-SOG-1040 | 251d | 0d | DS | HO |
| AB-SUB-B03-SOG-1010 |  | Submittal for S.O.G RFT DWGs As-Built Drawing (B03) (Sog) | 18d | 2026-05-10 | 2026-06-03 | CON-B03-SOG-1050 | 247d | 0d | DS | HO |
|  | 1stB | **Basement 1** |  | 2026-04-12 | 2026-05-19 |  |  |  |  |  |
| AB-SUB-B03-BAS1-1000 |  | Submittal for Col. & Walls Conc. Dim. & RFT DWGs As-Built Drawing (B03) (Bas 01) | 18d | 2026-04-12 | 2026-05-03 | CON-B03-BAS01-1030 | 270d | 0d | DS | HO |
| AB-SUB-B03-BAS1-1010 |  | Submittal for Stairs Conc. Dim. & RFT DWGs As-Built Drawing (B03) (Bas 01) | 18d | 2026-04-28 | 2026-05-18 | CON-B03-BAS01-1080 | 257d | 0d | DS | HO |
| AB-SUB-B03-BAS1-1020 |  | Submittal for Slabs Conc. Dim. & RFT DWGs As-Built Drawing (B03) (Bas 01) | 18d | 2026-04-29 | 2026-05-19 | CON-B03-BAS01-1090 | 256d | 0d | DS | HO |
| AB-SUB-B03-BAS1-1030 |  | Submittal for Beams Conc. Dim. & RFT DWGs As-Built Drawing (B03) (Bas 01) | 18d | 2026-04-29 | 2026-05-19 | CON-B03-BAS01-1090 | 256d | 0d | DS | HO |
|  | SUP | **Superstructure** |  | 2026-05-17 | 2027-04-20 |  |  |  |  |  |
|  | GF | **Ground Floor** |  | 2026-05-17 | 2026-06-22 |  |  |  |  |  |
| AB-SUB-B03-GR-1000 |  | Submittal for Col. & Walls Conc. Dim. & RFT DWGs As-Built Drawing (B03) (GF) | 18d | 2026-05-17 | 2026-06-10 | CON-B03-GR-1030 | 241d | 0d | DS | HO |
| AB-SUB-B03-GR-1010 |  | Submittal for Slabs Conc. Dim. & RFT DWGs As-Built Drawing (B03) (GF) | 18d | 2026-06-02 | 2026-06-22 | CON-B03-GR-1080 | 231d | 0d | DS | HO |
| AB-SUB-B03-GR-1020 |  | Submittal for Beams Conc. Dim. & RFT DWGs As-Built Drawing (B03) (GF) | 18d | 2026-06-02 | 2026-06-22 | CON-B03-GR-1080 | 231d | 0d | DS | HO |
| AB-SUB-B03-GR-1030 |  | Submittal for Stairs Conc. Dim. & RFT DWGs As-Built Drawing (B03) (GF) | 18d | 2026-06-02 | 2026-06-22 | CON-B03-GR-1090 | 231d | 0d | DS | HO |
|  | 1stF | **1st Floor** |  | 2026-07-21 | 2026-09-07 |  |  |  |  |  |
| AB-SUB-B03-1ST-1000 |  | Submittal for Col. & Walls Conc. Dim. & RFT DWGs As-Built Drawing (B03) (1st) | 18d | 2026-07-21 | 2026-08-11 | CON-B03-1ST-1030 | 190d | 0d | DS | HO |
| AB-SUB-B03-1ST-1010 |  | Submittal for Slabs Conc. Dim. & RFT DWGs As-Built Drawing (B03) (1st) | 18d | 2026-08-17 | 2026-09-07 | CON-B03-1ST-1060 | 168d | 0d | DS | HO |
| AB-SUB-B03-1ST-1020 |  | Submittal for Beams Conc. Dim. & RFT DWGs As-Built Drawing (B03) (1st) | 18d | 2026-08-17 | 2026-09-07 | CON-B03-1ST-1060 | 168d | 0d | DS | HO |
| AB-SUB-B03-1ST-1030 |  | Submittal for Stairs Conc. Dim. & RFT DWGs As-Built Drawing (B03) (1st) | 18d | 2026-08-17 | 2026-09-07 | CON-B03-1ST-1060 | 168d | 0d | DS | HO |
|  | 2ndF | **2nd Floor** |  | 2026-09-26 | 2026-11-11 |  |  |  |  |  |
| AB-SUB-B03-2ND-1000 |  | Submittal for Col. & Walls Conc. Dim. & RFT DWGs As-Built Drawing (B03) (2nd) | 18d | 2026-09-26 | 2026-10-17 | CON-B03-2ND-1030 | 135d | 0d | DS | HO |
| AB-SUB-B03-2ND-1010 |  | Submittal for Slabs Conc. Dim. & RFT DWGs As-Built Drawing (B03) (2nd) | 18d | 2026-10-22 | 2026-11-11 | CON-B03-2ND-1060 | 113d | 0d | DS | HO |
| AB-SUB-B03-2ND-1020 |  | Submittal for Beams Conc. Dim. & RFT DWGs As-Built Drawing (B03) (2nd) | 18d | 2026-10-22 | 2026-11-11 | CON-B03-2ND-1060 | 113d | 0d | DS | HO |
| AB-SUB-B03-2ND-1030 |  | Submittal for Stairs Conc. Dim. & RFT DWGs As-Built Drawing (B03) (2nd) | 18d | 2026-10-22 | 2026-11-11 | CON-B03-2ND-1060 | 113d | 0d | DS | HO |

| ID | WBS | Activity | Duration | Start | Finish | Predecessors | Total float | Free float | Work Type | BOQ Division |
| --- | --- | --- | --- | --- | --- | --- | --- | --- | --- | --- |
|  | 3rdF | **3rd Floor** |  | 2026-11-29 | 2027-01-14 |  |  |  |  |  |
| AB-SUB-B03-3RD-1000 |  | Submittal for Col. & Walls Conc. Dim. & RFT DWGs As-Built Drawing (B03) (3rd) | 18d | 2026-11-29 | 2026-12-19 | CON-B03-3RD-1030 | 81d | 0d | DS | HO |
| AB-SUB-B03-3RD-1010 |  | Submittal for Slabs Conc. Dim. & RFT DWGs As-Built Drawing (B03) (3rd) | 18d | 2026-12-24 | 2027-01-14 | CON-B03-3RD-1060 | 59d | 0d | DS | HO |
| AB-SUB-B03-3RD-1020 |  | Submittal for Beams Conc. Dim. & RFT DWGs As-Built Drawing (B03) (3rd) | 18d | 2026-12-24 | 2027-01-14 | CON-B03-3RD-1060 | 59d | 0d | DS | HO |
| AB-SUB-B03-3RD-1030 |  | Submittal for Stairs Conc. Dim. & RFT DWGs As-Built Drawing (B03) (3rd) | 18d | 2026-12-24 | 2027-01-14 | CON-B03-3RD-1060 | 59d | 0d | DS | HO |
|  | 4thF | **4th Floor** |  | 2027-02-02 | 2027-03-20 |  |  |  |  |  |
| AB-SUB-B03-4TH-1000 |  | Submittal for Col. & Walls Conc. Dim. & RFT DWGs As-Built Drawing (B03) (4th) | 18d | 2027-02-02 | 2027-02-22 | CON-B03-4TH-1030 | 27d | 0d | DS | HO |
| AB-SUB-B03-4TH-1010 |  | Submittal for Slabs Conc. Dim. & RFT DWGs As-Built Drawing (B03) (4th) | 18d | 2027-02-24 | 2027-03-20 | CON-B03-4TH-1060 | 8d | 0d | DS | HO |
| AB-SUB-B03-4TH-1020 |  | Submittal for Beams Conc. Dim. & RFT DWGs As-Built Drawing (B03) (4th) | 18d | 2027-02-24 | 2027-03-20 | CON-B03-4TH-1060 | 8d | 0d | DS | HO |
| AB-SUB-B03-4TH-1030 |  | Submittal for Stairs Conc. Dim. & RFT DWGs As-Built Drawing (B03) (4th) | 18d | 2027-02-24 | 2027-03-20 | CON-B03-4TH-1060 | 8d | 0d | DS | HO |
|  | RF | **Roof Floor** |  | 2027-03-22 | 2027-04-20 |  |  |  |  |  |
| AB-SUB-B03-RF-1000 |  | Submittal for Col. & Walls Conc. Dim. & RFT DWGs As-Built Drawing (B03) (RF) | 18d | 2027-03-22 | 2027-04-11 | CON-B03-RF-1030 | -11d | 0d | DS | HO |
| AB-SUB-B03-RF-1010 |  | Submittal for Slabs Conc. Dim. & RFT DWGs As-Built Drawing (B03) (RF) | 18d | 2027-03-31 | 2027-04-20 | CON-B03-RF-1060 | -21d | 0d | DS | HO |
| AB-SUB-B03-RF-1020 |  | Submittal for Beams Conc. Dim. & RFT DWGs As-Built Drawing (B03) (RF) | 18d | 2027-03-31 | 2027-04-20 | CON-B03-RF-1060 | -21d | 0d | DS | HO |
|  | B04 | **B04** |  | 2026-01-12 | 2027-04-18 |  |  |  |  |  |
|  | SUB | **Substructre** |  | 2026-01-12 | 2026-06-16 |  |  |  |  |  |
|  | 1 | **Replacement** |  | 2026-01-12 | 2026-02-02 |  |  |  |  |  |
| AB-SUB-B04-REP-1000 |  | Submittal for General Replacement Plan & Typical Sections for Replacement / Backfilling DWGs As-Built Drawing (B04) | 18d | 2026-01-12 | 2026-02-02 | CON-EW-B04-1000, CON-EW-B04-1010 | 342d | 0d |  | HO |
|  | F | **Footing** |  | 2026-01-12 | 2026-03-30 |  |  |  |  |  |
| AB-SUB-B04-FOOT-1000 |  | Submittal for PC Raft Conc. Dim. DWGs As-Built Drawing (B04) (footing) | 18d | 2026-01-12 | 2026-02-02 | CON-B04-FOOT-1000, CON-B04-FOOT-1010 | 342d | 0d | DS | HO |
| AB-SUB-B04-FOOT-1010 |  | Submittal for RC Raft & Footings Conc. Dim. DWGs As-Built Drawing (B04) (footing) | 18d | 2026-01-21 | 2026-02-11 | CON-B04-FOOT-1040 | 334d | 0d | DS | HO |
| AB-SUB-B04-FOOT-1020 |  | Submittal for RC Raft & Footings RFT DWGs As-Built Drawing (B04) (footing) | 18d | 2026-01-28 | 2026-02-17 | CON-B04-FOOT-1050, CON-B04-FOOT-1080 | 329d | 0d | DS | HO |
| AB-SUB-B04-FOOT-1030 |  | Submittal for Waterproofing Layout Plan DWGs As-Built Drawing (B04) | 18d | 2026-03-05 | 2026-03-30 | CON-B04-FOOT-1030, CON-B04-FOOT-1110 | 298d | 0d |  | HO |
|  | 2ndB | **Basement 2** |  | 2026-01-12 | 2026-06-16 |  |  |  |  |  |
| AB-SUB-B04-BAS2-1000 |  | Submittal for Col. & Walls Conc. Dim. & RFT DWGs As-Built Drawing (B04) (Bas 02) | 18d | 2026-02-11 | 2026-03-03 | CON-B04-BAS02-1010 | 317d | 0d | DS | HO |
| AB-SUB-B04-BAS2-1010 |  | Submittal for Stairs Conc. Dim. & RFT DWGs As-Built Drawing (B04) (Bas 02) | 18d | 2026-03-04 | 2026-03-29 | CON-B04-BAS02-1100 | 299d | 0d | DS | HO |
| AB-SUB-B04-BAS2-1020 |  | Submittal for Ramps Conc. Dim. & RFT DWGs As-Built Drawing (B04) (Bas 02) | 18d | 2026-03-05 | 2026-03-30 | CON-B04-BAS02-1110 | 298d | 0d | DS | HO |
| AB-SUB-B04-BAS2-1030 |  | Submittal for Slabs Conc. Dim. & RFT DWGs As-Built Drawing (B04) (Bas 02) | 18d | 2026-03-14 | 2026-04-07 | CON-B04-BAS02-1130 | 291d | 0d | DS | HO |
| AB-SUB-B04-BAS2-1040 |  | Submittal for Beams Conc. Dim. & RFT DWGs As-Built Drawing (B04) (Bas 02) | 18d | 2026-03-14 | 2026-04-07 | CON-B04-BAS02-1130 | 291d | 0d | DS | HO |

| ID | WBS | Activity | Duration | Start | Finish | Predecessors | Total float | Free float | Work Type | BOQ Division |
| --- | --- | --- | --- | --- | --- | --- | --- | --- | --- | --- |
|  | 1 | **Water Tank** |  | 2026-01-12 | 2026-03-01 |  |  |  |  |  |
| AB-SUB-B04-WT-1000 |  | Submittal for PC Raft Conc. Dim. DWGs As-Built Drawing (B04) (Water Tank) | 18d | 2026-01-12 | 2026-02-02 | CON-B04-WT-1030 | 342d | 0d | DS | HO |
| AB-SUB-B04-WT-1010 |  | Submittal for RC Raft Conc. Dim. DWGs As-Built Drawing (B04) (Water Tank) | 18d | 2026-01-12 | 2026-02-02 | CON-B04-WT-1060 | 342d | 0d | DS | HO |
| AB-SUB-B04-WT-1020 |  | Submittal for RC Raft RFT DWGs As-Built Drawing (B04) (Water Tank) | 18d | 2026-01-12 | 2026-02-02 | CON-B04-WT-1070 | 342d | 0d | DS | HO |
| AB-SUB-B04-WT-1030 |  | Submittal for Col. & Walls DWGs As-Built Drawing (B04) (Water Tank) | 18d | 2026-01-29 | 2026-02-18 | CON-B04-WT-1100, CON-B04-WT-1110, CON-B04-WT-1130 | 328d | 0d | DS | HO |
| AB-SUB-B04-WT-1040 |  | Submittal for Slabs DWGs As-Built Drawing (B04) (Water Tank) | 18d | 2026-02-09 | 2026-03-01 | CON-B04-WT-1150, CON-B04-WT-1160, CON-B04-WT-1170 | 319d | 0d | DS | HO |
|  | 2 | **S.O.G** |  | 2026-05-23 | 2026-06-16 |  |  |  |  |  |
| AB-SUB-B04-SOG-1000 |  | Submittal for S.O.G Conc. Dim. DWGs As-Built Drawing (B04) (Sog) | 18d | 2026-05-23 | 2026-06-16 | CON-B04-SOG-1040 | 236d | 0d | DS | HO |
| AB-SUB-B04-SOG-1010 |  | Submittal for S.O.G RFT DWGs As-Built Drawing (B04) (Sog) | 18d | 2026-05-23 | 2026-06-16 | CON-B04-SOG-1050, CON-B04-SOG-1040 | 236d | 0d | DS | HO |
|  | 1stB | **Basement 1** |  | 2026-04-01 | 2026-05-09 |  |  |  |  |  |
| AB-SUB-B04-BAS1-1000 |  | Submittal for Col. & Walls Conc. Dim. & RFT DWGs As-Built Drawing (B04) (Bas 01) | 18d | 2026-04-01 | 2026-04-22 | CON-B04-BAS01-1030 | 279d | 0d | DS | HO |
| AB-SUB-B04-BAS1-1010 |  | Submittal for Stairs Conc. Dim. & RFT DWGs As-Built Drawing (B04) (Bas 01) | 18d | 2026-04-19 | 2026-05-09 | CON-B04-BAS01-1110 | 265d | 0d | DS | HO |
| AB-SUB-B04-BAS1-1020 |  | Submittal for Ramps Conc. Dim. & RFT DWGs As-Built Drawing (B04) (Bas 01) | 18d | 2026-04-19 | 2026-05-09 | CON-B04-BAS01-1110 | 265d | 0d | DS | HO |
| AB-SUB-B04-BAS1-1030 |  | Submittal for Slabs Conc. Dim. & RFT DWGs As-Built Drawing (B04) (Bas 01) | 18d | 2026-04-19 | 2026-05-09 | CON-B04-BAS01-1120 | 265d | 0d | DS | HO |
| AB-SUB-B04-BAS1-1040 |  | Submittal for Beams Conc. Dim. & RFT DWGs As-Built Drawing (B04) (Bas 01) | 18d | 2026-04-19 | 2026-05-09 | CON-B04-BAS01-1120 | 265d | 0d | DS | HO |
|  | SUP | **Superstructure** |  | 2026-05-04 | 2027-04-18 |  |  |  |  |  |
|  | GF | **Ground Floor** |  | 2026-05-04 | 2026-06-09 |  |  |  |  |  |
| AB-SUB-B04-GR-1000 |  | Submittal for Col. & Walls Conc. Dim. & RFT DWGs As-Built Drawing (B04) (GF) | 18d | 2026-05-04 | 2026-05-24 | CON-B04-GR-1030 | 252d | 0d | DS | HO |
| AB-SUB-B04-GR-1010 |  | Submittal for Slabs Conc. Dim. & RFT DWGs As-Built Drawing (B04) (GF) | 18d | 2026-05-16 | 2026-06-09 | CON-B04-GR-1080 | 242d | 0d | DS | HO |
| AB-SUB-B04-GR-1020 |  | Submittal for Beams Conc. Dim. & RFT DWGs As-Built Drawing (B04) (GF) | 18d | 2026-05-16 | 2026-06-09 | CON-B04-GR-1080 | 242d | 0d | DS | HO |
| AB-SUB-B04-GR-1030 |  | Submittal for Stairs Conc. Dim. & RFT DWGs As-Built Drawing (B04) (GF) | 18d | 2026-05-16 | 2026-06-09 | CON-B04-GR-1090 | 242d | 0d | DS | HO |
|  | 1stF | **1st Floor** |  | 2026-07-02 | 2026-08-12 |  |  |  |  |  |
| AB-SUB-B04-1ST-1000 |  | Submittal for Col. & Walls Conc. Dim. & RFT DWGs As-Built Drawing (B04) (1st) | 18d | 2026-07-02 | 2026-07-22 | CON-B04-1ST-1030 | 206d | 0d | DS | HO |
| AB-SUB-B04-1ST-1010 |  | Submittal for Slabs Conc. Dim. & RFT DWGs As-Built Drawing (B04) (1st) | 18d | 2026-07-22 | 2026-08-12 | CON-B04-1ST-1060 | 189d | 0d | DS | HO |
| AB-SUB-B04-1ST-1020 |  | Submittal for Beams Conc. Dim. & RFT DWGs As-Built Drawing (B04) (1st) | 18d | 2026-07-22 | 2026-08-12 | CON-B04-1ST-1060 | 189d | 0d | DS | HO |
| AB-SUB-B04-1ST-1030 |  | Submittal for Stairs Conc. Dim. & RFT DWGs As-Built Drawing (B04) (1st) | 18d | 2026-07-22 | 2026-08-12 | CON-B04-1ST-1060 | 189d | 0d | DS | HO |

| ID | WBS | Activity | Duration | Start | Finish | Predecessors | Total float | Free float | Work Type | BOQ Division |
| --- | --- | --- | --- | --- | --- | --- | --- | --- | --- | --- |
|  | 2ndF | **2nd Floor** |  | 2026-08-11 | 2026-09-21 |  |  |  |  |  |
| AB-SUB-B04-2ND-1000 |  | Submittal for Col. & Walls Conc. Dim. & RFT DWGs As-Built Drawing (B04) (2nd) | 18d | 2026-08-11 | 2026-09-01 | CON-B04-2ND-1030 | 173d | 0d | DS | HO |
| AB-SUB-B04-2ND-1010 |  | Submittal for Slabs Conc. Dim. & RFT DWGs As-Built Drawing (B04) (2nd) | 18d | 2026-09-01 | 2026-09-21 | CON-B04-2ND-1060 | 156d | 0d | DS | HO |
| AB-SUB-B04-2ND-1020 |  | Submittal for Beams Conc. Dim. & RFT DWGs As-Built Drawing (B04) (2nd) | 18d | 2026-09-01 | 2026-09-21 | CON-B04-2ND-1060 | 156d | 0d | DS | HO |
| AB-SUB-B04-2ND-1030 |  | Submittal for Stairs Conc. Dim. & RFT DWGs As-Built Drawing (B04) (2nd) | 18d | 2026-09-01 | 2026-09-21 | CON-B04-2ND-1060 | 156d | 0d | DS | HO |
|  | 3rdF | **3rd Floor** |  | 2026-09-22 | 2026-11-02 |  |  |  |  |  |
| AB-SUB-B04-3RD-1000 |  | Submittal for Col. & Walls Conc. Dim. & RFT DWGs As-Built Drawing (B04) (3rd) | 18d | 2026-09-22 | 2026-10-13 | CON-B04-3RD-1030 | 138d | 0d | DS | HO |
| AB-SUB-B04-3RD-1010 |  | Submittal for Slabs Conc. Dim. & RFT DWGs As-Built Drawing (B04) (3rd) | 18d | 2026-10-13 | 2026-11-02 | CON-B04-3RD-1060 | 121d | 0d | DS | HO |
| AB-SUB-B04-3RD-1020 |  | Submittal for Beams Conc. Dim. & RFT DWGs As-Built Drawing (B04) (3rd) | 18d | 2026-10-13 | 2026-11-02 | CON-B04-3RD-1060 | 121d | 0d | DS | HO |
| AB-SUB-B04-3RD-1030 |  | Submittal for Stairs Conc. Dim. & RFT DWGs As-Built Drawing (B04) (3rd) | 18d | 2026-10-13 | 2026-11-02 | CON-B04-3RD-1060 | 121d | 0d | DS | HO |
|  | 4thF | **4th Floor** |  | 2026-10-31 | 2026-12-08 |  |  |  |  |  |
| AB-SUB-B04-4TH-1000 |  | Submittal for Col. & Walls Conc. Dim. & RFT DWGs As-Built Drawing (B04) (4th) | 18d | 2026-10-31 | 2026-11-19 | CON-B04-4TH-1030 | 106d | 0d | DS | HO |
| AB-SUB-B04-4TH-1010 |  | Submittal for Slabs Conc. Dim. & RFT DWGs As-Built Drawing (B04) (4th) | 18d | 2026-11-18 | 2026-12-08 | CON-B04-4TH-1060 | 90d | 0d | DS | HO |
| AB-SUB-B04-4TH-1020 |  | Submittal for Beams Conc. Dim. & RFT DWGs As-Built Drawing (B04) (4th) | 18d | 2026-11-18 | 2026-12-08 | CON-B04-4TH-1060 | 90d | 0d | DS | HO |
| AB-SUB-B04-4TH-1030 |  | Submittal for Stairs Conc. Dim. & RFT DWGs As-Built Drawing (B04) (4th) | 18d | 2026-11-18 | 2026-12-08 | CON-B04-4TH-1060 | 90d | 0d | DS | HO |
|  | 5thF | **5th Floor** |  | 2026-12-07 | 2027-01-13 |  |  |  |  |  |
| AB-SUB-B04-5TH-1000 |  | Submittal for Col. & Walls Conc. Dim. & RFT DWGs As-Built Drawing (B04) (5th) | 18d | 2026-12-07 | 2026-12-27 | CON-B04-5TH-1030 | 74d | 0d | DS | HO |
| AB-SUB-B04-5TH-1010 |  | Submittal for Slabs Conc. Dim. & RFT DWGs As-Built Drawing (B04) (5th) | 18d | 2026-12-23 | 2027-01-13 | CON-B04-5TH-1060 | 60d | 0d | DS | HO |
| AB-SUB-B04-5TH-1020 |  | Submittal for Beams Conc. Dim. & RFT DWGs As-Built Drawing (B04) (5th) | 18d | 2026-12-23 | 2027-01-13 | CON-B04-5TH-1060 | 60d | 0d | DS | HO |
| AB-SUB-B04-5TH-1030 |  | Submittal for Stairs Conc. Dim. & RFT DWGs As-Built Drawing (B04) (5th) | 18d | 2026-12-23 | 2027-01-13 | CON-B04-5TH-1060 | 60d | 0d | DS | HO |
|  | 6thF | **6th Floor** |  | 2027-01-09 | 2027-02-13 |  |  |  |  |  |
| AB-SUB-B04-6TH-1000 |  | Submittal for Col. & Walls Conc. Dim. & RFT DWGs As-Built Drawing (B04) (6th) | 18d | 2027-01-09 | 2027-01-30 | CON-B04-6TH-1030 | 47d | 0d | DS | HO |
| AB-SUB-B04-6TH-1010 |  | Submittal for Slabs Conc. Dim. & RFT DWGs As-Built Drawing (B04) (6th) | 18d | 2027-01-23 | 2027-02-13 | CON-B04-6TH-1060 | 35d | 0d | DS | HO |
| AB-SUB-B04-6TH-1020 |  | Submittal for Beams Conc. Dim. & RFT DWGs As-Built Drawing (B04) (6th) | 18d | 2027-01-23 | 2027-02-13 | CON-B04-6TH-1060 | 35d | 0d | DS | HO |
| AB-SUB-B04-6TH-1030 |  | Submittal for Stairs Conc. Dim. & RFT DWGs As-Built Drawing (B04) (6th) | 18d | 2027-01-23 | 2027-02-13 | CON-B04-6TH-1060 | 39d | 0d | DS | HO |

| ID | WBS | Activity | Duration | Start | Finish | Predecessors | Total float | Free float | Work Type | BOQ Division |
| --- | --- | --- | --- | --- | --- | --- | --- | --- | --- | --- |
|  | 7thF | **7th Floor** |  | 2027-02-08 | 2027-03-16 |  |  |  |  |  |
| AB-SUB-B04-7TH-1000 |  | Submittal for Col. & Walls Conc. Dim. & RFT DWGs As-Built Drawing (B04) (7th) | 18d | 2027-02-08 | 2027-02-28 | CON-B04-7TH-1030 | 22d | 0d | DS | HO |
| AB-SUB-B04-7TH-1010 |  | Submittal for Slabs Conc. Dim. & RFT DWGs As-Built Drawing (B04) (7th) | 18d | 2027-02-21 | 2027-03-16 | CON-B04-7TH-1060 | 11d | 0d | DS | HO |
| AB-SUB-B04-7TH-1020 |  | Submittal for Beams Conc. Dim. & RFT DWGs As-Built Drawing (B04) (7th) | 18d | 2027-02-21 | 2027-03-16 | CON-B04-7TH-1060 | 11d | 0d | DS | HO |
| AB-SUB-B04-7TH-1030 |  | Submittal for Stairs Conc. Dim. & RFT DWGs As-Built Drawing (B04) (7th) | 18d | 2027-02-21 | 2027-03-16 | CON-B04-7TH-1060 | 11d | 0d | DS | HO |
|  | 8thF | **8th Floor** |  | 2027-03-13 | 2027-04-12 |  |  |  |  |  |
| AB-SUB-B04-8TH-1000 |  | Submittal for Col. & Walls Conc. Dim. & RFT DWGs As-Built Drawing (B04) (8th) | 18d | 2027-03-13 | 2027-04-01 | CON-B04-8TH-1030 | -3d | 0d | DS | HO |
| AB-SUB-B04-8TH-1010 |  | Submittal for Slabs Conc. Dim. & RFT DWGs As-Built Drawing (B04) (8th) | 18d | 2027-03-23 | 2027-04-12 | CON-B04-8TH-1060 | -12d | 0d | DS | HO |
| AB-SUB-B04-8TH-1020 |  | Submittal for Beams Conc. Dim. & RFT DWGs As-Built Drawing (B04) (8th) | 18d | 2027-03-23 | 2027-04-12 | CON-B04-8TH-1060 | -12d | 0d | DS | HO |
| AB-SUB-B04-8TH-1030 |  | Submittal for Stairs Conc. Dim. & RFT DWGs As-Built Drawing (B04) (8th) | 18d | 2027-03-23 | 2027-04-12 | CON-B04-8TH-1060 | -12d | 0d | DS | HO |
|  | RF | **Roof Floor** |  | 2027-03-31 | 2027-04-18 |  |  |  |  |  |
| AB-SUB-B04-RF-1000 |  | Submittal for Col. & Walls Conc. Dim. & RFT DWGs As-Built Drawing (B04) (RF) | 8d | 2027-03-31 | 2027-04-08 | CON-B04-RF-1030 | -19d | 0d | DS | HO |
| AB-SUB-B04-RF-1010 |  | Submittal for Slabs Conc. Dim. & RFT DWGs As-Built Drawing (B04) (RF) | 11d | 2027-04-06 | 2027-04-18 | CON-B04-RF-1060 | -24d | 0d | DS | HO |
| AB-SUB-B04-RF-1020 |  | Submittal for Beams Conc. Dim. & RFT DWGs As-Built Drawing (B04) (RF) | 11d | 2027-04-06 | 2027-04-18 | CON-B04-RF-1060 | -24d | 0d | DS | HO |
|  | A | **Approval** |  | 2026-01-27 | 2027-05-18 |  |  |  |  |  |
|  | P02 | **Part 02** |  | 2026-01-27 | 2027-05-18 |  |  |  |  |  |
|  | B01 | **B01** |  | 2026-01-27 | 2027-05-18 |  |  |  |  |  |
|  | SUB | **Substructre** |  | 2026-01-27 | 2026-08-15 |  |  |  |  |  |
|  | 1 | **Replacement** |  | 2026-01-27 | 2026-02-09 |  |  |  |  |  |
| AB-APP-B01-REP-1000 |  | Approval for General Replacement Plan & Typical Sections for Replacement / Backfilling DWGs As-Built Drawing (B01) | 12d | 2026-01-27 | 2026-02-09 | AB-SUB-B01-REP-1000 SS+12d, AB-SUB-B01-REP-1000 FF+6d | 342d | 379d |  | HO |
|  | F | **Footing** |  | 2026-01-27 | 2026-03-02 |  |  |  |  |  |
| AB-APP-B01-FOOT-1000 |  | Approval for PC Raft Conc. Dim. DWGs As-Built Drawing (B01) (footing) | 12d | 2026-01-27 | 2026-02-09 | AB-SUB-B01-FOOT-1000 SS+12d, AB-SUB-B01-FOOT-1000 FF+6d | 342d | 379d | DA | HO |
| AB-APP-B01-FOOT-1010 |  | Approval for Waterproofing Layout Plan DWGs As-Built Drawing (B01) | 12d | 2026-01-27 | 2026-02-09 | AB-SUB-B01-FOOT-1010 SS+12d, AB-SUB-B01-FOOT-1010 FF+6d | 342d | 379d |  | HO |
| AB-APP-B01-FOOT-1020 |  | Approval for RC Raft & Footings Conc. Dim. DWGs As-Built Drawing (B01) | 12d | 2026-02-17 | 2026-03-02 | AB-SUB-B01-FOOT-1020 SS+12d, AB-SUB-B01-FOOT-1020 FF+6d | 324d | 361d | DA | HO |
| AB-APP-B01-FOOT-1030 |  | Approval for RC Raft & Footings RFT DWGs As-Built Drawing (B01) | 12d | 2026-02-17 | 2026-03-02 | AB-SUB-B01-FOOT-1030 SS+12d, AB-SUB-B01-FOOT-1030 FF+6d | 324d | 361d | DA | HO |

| ID | WBS | Activity | Duration | Start | Finish | Predecessors | Total float | Free float | Work Type | BOQ Division |
| --- | --- | --- | --- | --- | --- | --- | --- | --- | --- | --- |
|  | 2ndB | **Basement 2** |  | 2026-03-23 | 2026-08-15 |  |  |  |  |  |
| AB-APP-B01-BAS2-1000 |  | Approval for Col. & Walls Conc. Dim. & RFT DWGs As-Built Drawing (B01) (Bas 02) | 12d | 2026-03-23 | 2026-04-05 | AB-SUB-B01-BAS2-1000 SS+12d, AB-SUB-B01-BAS2-1000 FF+6d | 299d | 336d | DA | HO |
| AB-APP-B01-BAS2-1010 |  | Approval for Stairs Conc. Dim. & RFT DWGs As-Built Drawing (B01) (Bas 02) | 12d | 2026-04-06 | 2026-04-20 | AB-SUB-B01-BAS2-1010 SS+12d, AB-SUB-B01-BAS2-1010 FF+6d | 287d | 324d | DA | HO |
| AB-APP-B01-BAS2-1020 |  | Approval for Ramps Conc. Dim. & RFT DWGs As-Built Drawing (B01) (Bas 02) | 12d | 2026-04-08 | 2026-04-22 | AB-SUB-B01-BAS2-1020 SS+12d, AB-SUB-B01-BAS2-1020 FF+6d | 285d | 322d | DA | HO |
| AB-APP-B01-BAS2-1030 |  | Approval for Slabs Conc. Dim. & RFT DWGs As-Built Drawing (B01) (Bas 02) | 12d | 2026-04-09 | 2026-04-23 | AB-SUB-B01-BAS2-1030 SS+12d, AB-SUB-B01-BAS2-1030 FF+6d | 284d | 321d | DA | HO |
| AB-APP-B01-BAS2-1040 |  | Approval for Beams Conc. Dim. & RFT DWGs As-Built Drawing (B01) (Bas 02) | 12d | 2026-04-09 | 2026-04-23 | AB-SUB-B01-BAS2-1040 SS+12d, AB-SUB-B01-BAS2-1040 FF+6d | 284d | 321d | DA | HO |
|  | 1 | **S.O.G** |  | 2026-07-28 | 2026-08-15 |  |  |  |  |  |
| AB-APP-B01-SOG-1000 |  | Approval for S.O.G Conc. Dim.DWGs As-Built Drawing (B01) (Sog) | 12d | 2026-07-28 | 2026-08-10 | AB-SUB-B01-SOG-1000 SS+12d, AB-SUB-B01-SOG-1000 FF+6d | 197d | 234d | DA | HO |
| AB-APP-B01-SOG-1010 |  | Approval for S.O.G RFT DWGs As-Built Drawing (B01) (Sog) | 12d | 2026-08-02 | 2026-08-15 | AB-SUB-B01-SOG-1010 SS+12d, AB-SUB-B01-SOG-1010 FF+6d | 193d | 230d | DA | HO |
|  | 1stB | **Basement 1** |  | 2026-05-03 | 2026-06-07 |  |  |  |  |  |
| AB-APP-B01-BAS1-1000 |  | Approval for Col. & Walls Conc. Dim. & RFT DWGs As-Built Drawing (B01) (Bas 01) | 12d | 2026-05-03 | 2026-05-16 | AB-SUB-B01-BAS1-1000 SS+12d, AB-SUB-B01-BAS1-1000 FF+6d | 265d | 302d | DA | HO |
| AB-APP-B01-BAS1-1010 |  | Approval for Stairs Conc. Dim. & RFT DWGs As-Built Drawing (B01) (Bas 01) | 12d | 2026-05-18 | 2026-06-04 | AB-SUB-B01-BAS1-1010 SS+12d, AB-SUB-B01-BAS1-1010 FF+6d | 252d | 289d | DA | HO |
| AB-APP-B01-BAS1-1020 |  | Approval for Slabs Conc. Dim. & RFT DWGs As-Built Drawing (B01) (Bas 01) | 12d | 2026-05-19 | 2026-06-06 | AB-SUB-B01-BAS1-1020 SS+12d, AB-SUB-B01-BAS1-1020 FF+6d | 251d | 288d | DA | HO |
| AB-APP-B01-BAS1-1030 |  | Approval for Beams Conc. Dim. & RFT DWGs As-Built Drawing (B01) (Bas 01) | 12d | 2026-05-19 | 2026-06-06 | AB-SUB-B01-BAS1-1030 SS+12d, AB-SUB-B01-BAS1-1030 FF+6d | 251d | 288d | DA | HO |
| AB-APP-B01-BAS1-1040 |  | Approval for Ramps Conc. Dim. & RFT DWGs As-Built Drawing (B01) (Bas 01) | 12d | 2026-05-20 | 2026-06-07 | AB-SUB-B01-BAS1-1040 SS+12d, AB-SUB-B01-BAS1-1040 FF+6d | 250d | 287d | DA | HO |
|  | SUP | **Superstructure** |  | 2026-06-09 | 2027-05-18 |  |  |  |  |  |
|  | GF | **Ground Floor** |  | 2026-06-09 | 2026-07-14 |  |  |  |  |  |
| AB-APP-B01-GR-1000 |  | Approval for Col. & Walls Conc. Dim. & RFT DWGs As-Built Drawing (B01) (GF) | 12d | 2026-06-09 | 2026-06-22 | AB-SUB-B01-GR-1000 SS+12d, AB-SUB-B01-GR-1000 FF+6d | 237d | 274d | DA | HO |
| AB-APP-B01-GR-1010 |  | Approval for Stairs Conc. Dim. & RFT DWGs As-Built Drawing (B01) (GF) | 12d | 2026-06-25 | 2026-07-09 | AB-SUB-B01-GR-1010 SS+12d, AB-SUB-B01-GR-1010 FF+6d | 223d | 260d | DA | HO |
| AB-APP-B01-GR-1020 |  | Approval for Slabs Conc. Dim. & RFT DWGs As-Built Drawing (B01) (GF) | 12d | 2026-07-01 | 2026-07-14 | AB-SUB-B01-GR-1020 SS+12d, AB-SUB-B01-GR-1020 FF+6d | 219d | 256d | DA | HO |
| AB-APP-B01-GR-1030 |  | Approval for Beams Conc. Dim. & RFT DWGs As-Built Drawing (B01) (GF) | 12d | 2026-07-01 | 2026-07-14 | AB-SUB-B01-GR-1030 SS+12d, AB-SUB-B01-GR-1030 FF+6d | 219d | 256d | DA | HO |
|  | 1stF | **1st Floor** |  | 2026-07-19 | 2026-08-24 |  |  |  |  |  |
| AB-APP-B01-1ST-1000 |  | Approval for Col. & Walls Conc. Dim. & RFT DWGs As-Built Drawing (B01) (1st) | 12d | 2026-07-19 | 2026-08-02 | AB-SUB-B01-1ST-1000 SS+12d, AB-SUB-B01-1ST-1000 FF+6d | 204d | 241d | DA | HO |
| AB-APP-B01-1ST-1010 |  | Approval for Slabs Conc. Dim. & RFT DWGs As-Built Drawing (B01) (1st) | 12d | 2026-08-11 | 2026-08-24 | AB-SUB-B01-1ST-1010 SS+12d, AB-SUB-B01-1ST-1010 FF+6d | 185d | 222d | DA | HO |
| AB-APP-B01-1ST-1020 |  | Approval for Beams Conc. Dim. & RFT DWGs As-Built Drawing (B01) (1st) | 12d | 2026-08-11 | 2026-08-24 | AB-SUB-B01-1ST-1020 SS+12d, AB-SUB-B01-1ST-1020 FF+6d | 185d | 222d | DA | HO |
| AB-APP-B01-1ST-1030 |  | Approval for Stairs Conc. Dim. & RFT DWGs As-Built Drawing (B01) (1st) | 12d | 2026-08-11 | 2026-08-24 | AB-SUB-B01-1ST-1030 SS+12d, AB-SUB-B01-1ST-1030 FF+6d | 185d | 222d | DA | HO |

| ID | WBS | Activity | Duration | Start | Finish | Predecessors | Total float | Free float | Work Type | BOQ Division |
| --- | --- | --- | --- | --- | --- | --- | --- | --- | --- | --- |
|  | 2ndF | **2nd Floor** |  | 2026-08-30 | 2026-09-29 |  |  |  |  |  |
| AB-APP-B01-2ND-1000 |  | Approval for Col. & Walls Conc. Dim. & RFT DWGs As-Built Drawing (B01) (2nd) | 12d | 2026-08-30 | 2026-09-12 | AB-SUB-B01-2ND-1000 SS+12d, AB-SUB-B01-2ND-1000 FF+6d | 170d | 207d | DA | HO |
| AB-APP-B01-2ND-1010 |  | Approval for Slabs Conc. Dim. & RFT DWGs As-Built Drawing (B01) (2nd) | 12d | 2026-09-16 | 2026-09-29 | AB-SUB-B01-2ND-1010 SS+12d, AB-SUB-B01-2ND-1010 FF+6d | 155d | 192d | DA | HO |
| AB-APP-B01-2ND-1020 |  | Approval for Beams Conc. Dim. & RFT DWGs As-Built Drawing (B01) (2nd) | 12d | 2026-09-16 | 2026-09-29 | AB-SUB-B01-2ND-1020 SS+12d, AB-SUB-B01-2ND-1020 FF+6d | 155d | 192d | DA | HO |
| AB-APP-B01-2ND-1030 |  | Approval for Stairs Conc. Dim. & RFT DWGs As-Built Drawing (B01) (2nd) | 12d | 2026-09-16 | 2026-09-29 | AB-SUB-B01-2ND-1030 SS+12d, AB-SUB-B01-2ND-1030 FF+6d | 155d | 192d | DA | HO |
|  | 3rdF | **3rd Floor** |  | 2026-10-05 | 2026-11-08 |  |  |  |  |  |
| AB-APP-B01-3RD-1000 |  | Approval for Col. & Walls Conc. Dim. & RFT DWGs As-Built Drawing (B01) (3rd) | 12d | 2026-10-05 | 2026-10-19 | AB-SUB-B01-3RD-1000 SS+12d, AB-SUB-B01-3RD-1000 FF+6d | 139d | 176d | DA | HO |
| AB-APP-B01-3RD-1010 |  | Approval for Slabs Conc. Dim. & RFT DWGs As-Built Drawing (B01) (3rd) | 12d | 2026-10-26 | 2026-11-08 | AB-SUB-B01-3RD-1010 SS+12d, AB-SUB-B01-3RD-1010 FF+6d | 122d | 159d | DA | HO |
| AB-APP-B01-3RD-1020 |  | Approval for Beams Conc. Dim. & RFT DWGs As-Built Drawing (B01) (3rd) | 12d | 2026-10-26 | 2026-11-08 | AB-SUB-B01-3RD-1020 SS+12d, AB-SUB-B01-3RD-1020 FF+6d | 122d | 159d | DA | HO |
| AB-APP-B01-3RD-1030 |  | Approval for Stairs Conc. Dim. & RFT DWGs As-Built Drawing (B01) (3rd) | 12d | 2026-10-26 | 2026-11-08 | AB-SUB-B01-3RD-1030 SS+12d, AB-SUB-B01-3RD-1030 FF+6d | 122d | 159d | DA | HO |
|  | 4thF | **4th Floor** |  | 2026-11-14 | 2026-12-19 |  |  |  |  |  |
| AB-APP-B01-4TH-1000 |  | Approval for Col. & Walls Conc. Dim. & RFT DWGs As-Built Drawing (B01) (4th) | 12d | 2026-11-14 | 2026-11-26 | AB-SUB-B01-4TH-1000 SS+12d, AB-SUB-B01-4TH-1000 FF+6d | 106d | 143d | DA | HO |
| AB-APP-B01-4TH-1010 |  | Approval for Slabs Conc. Dim. & RFT DWGs As-Built Drawing (B01) (4th) | 12d | 2026-12-06 | 2026-12-19 | AB-SUB-B01-4TH-1010 SS+12d, AB-SUB-B01-4TH-1010 FF+6d | 87d | 124d | DA | HO |
| AB-APP-B01-4TH-1020 |  | Approval for Beams Conc. Dim. & RFT DWGs As-Built Drawing (B01) (4th) | 12d | 2026-12-06 | 2026-12-19 | AB-SUB-B01-4TH-1020 SS+12d, AB-SUB-B01-4TH-1020 FF+6d | 87d | 124d | DA | HO |
| AB-APP-B01-4TH-1030 |  | Approval for Stairs Conc. Dim. & RFT DWGs As-Built Drawing (B01) (4th) | 12d | 2026-12-06 | 2026-12-19 | AB-SUB-B01-4TH-1030 SS+12d, AB-SUB-B01-4TH-1030 FF+6d | 87d | 124d | DA | HO |
|  | 5thF | **5th Floor** |  | 2026-12-23 | 2027-01-24 |  |  |  |  |  |
| AB-APP-B01-5TH-1000 |  | Approval for Col. & Walls Conc. Dim. & RFT DWGs As-Built Drawing (B01) (5th) | 12d | 2026-12-23 | 2027-01-05 | AB-SUB-B01-5TH-1000 SS+12d, AB-SUB-B01-5TH-1000 FF+6d | 72d | 109d | DA | HO |
| AB-APP-B01-5TH-1010 |  | Approval for Slabs Conc. Dim. & RFT DWGs As-Built Drawing (B01) (5th) | 12d | 2027-01-11 | 2027-01-24 | AB-SUB-B01-5TH-1010 SS+12d, AB-SUB-B01-5TH-1010 FF+6d | 57d | 94d | DA | HO |
| AB-APP-B01-5TH-1020 |  | Approval for Beams Conc. Dim. & RFT DWGs As-Built Drawing (B01) (5th) | 12d | 2027-01-11 | 2027-01-24 | AB-SUB-B01-5TH-1020 SS+12d, AB-SUB-B01-5TH-1020 FF+6d | 57d | 94d | DA | HO |
| AB-APP-B01-5TH-1030 |  | Approval for Stairs Conc. Dim. & RFT DWGs As-Built Drawing (B01) (5th) | 12d | 2027-01-11 | 2027-01-24 | AB-SUB-B01-5TH-1030 SS+12d, AB-SUB-B01-5TH-1030 FF+6d | 57d | 94d | DA | HO |
|  | 6thF | **6th Floor** |  | 2027-01-30 | 2027-03-01 |  |  |  |  |  |
| AB-APP-B01-6TH-1000 |  | Approval for Col. & Walls Conc. Dim. & RFT DWGs As-Built Drawing (B01) (6th) | 12d | 2027-01-30 | 2027-02-11 | AB-SUB-B01-6TH-1000 SS+12d, AB-SUB-B01-6TH-1000 FF+6d | 42d | 79d | DA | HO |
| AB-APP-B01-6TH-1010 |  | Approval for Slabs Conc. Dim. & RFT DWGs As-Built Drawing (B01) (6th) | 12d | 2027-02-16 | 2027-03-01 | AB-SUB-B01-6TH-1010 SS+12d, AB-SUB-B01-6TH-1010 FF+6d | 27d | 64d | DA | HO |
| AB-APP-B01-6TH-1020 |  | Approval for Beams Conc. Dim. & RFT DWGs As-Built Drawing (B01) (6th) | 12d | 2027-02-16 | 2027-03-01 | AB-SUB-B01-6TH-1020 SS+12d, AB-SUB-B01-6TH-1020 FF+6d | 27d | 64d | DA | HO |
| AB-APP-B01-6TH-1030 |  | Approval for Stairs Conc. Dim. & RFT DWGs As-Built Drawing (B01) (6th) | 12d | 2027-02-16 | 2027-03-01 | AB-SUB-B01-6TH-1030 SS+12d, AB-SUB-B01-6TH-1030 FF+6d | 27d | 64d | DA | HO |

| ID | WBS | Activity | Duration | Start | Finish | Predecessors | Total float | Free float | Work Type | BOQ Division |
| --- | --- | --- | --- | --- | --- | --- | --- | --- | --- | --- |
|  | 7thF | **7th Floor** |  | 2027-03-03 | 2027-04-05 |  |  |  |  |  |
| AB-APP-B01-7TH-1000 |  | Approval for Col. & Walls Conc. Dim. & RFT DWGs As-Built Drawing (B01) (7th) | 12d | 2027-03-03 | 2027-03-20 | AB-SUB-B01-7TH-1000 SS+12d, AB-SUB-B01-7TH-1000 FF+6d | 14d | 51d | DA | HO |
| AB-APP-B01-7TH-1010 |  | Approval for Slabs Conc. Dim. & RFT DWGs As-Built Drawing (B01) (7th) | 12d | 2027-03-23 | 2027-04-05 | AB-SUB-B01-7TH-1010 SS+12d, AB-SUB-B01-7TH-1010 FF+6d | 0d | 37d | DA | HO |
| AB-APP-B01-7TH-1020 |  | Approval for Beams Conc. Dim. & RFT DWGs As-Built Drawing (B01) (7th) | 12d | 2027-03-23 | 2027-04-05 | AB-SUB-B01-7TH-1020 SS+12d, AB-SUB-B01-7TH-1020 FF+6d | 0d | 37d | DA | HO |
| AB-APP-B01-7TH-1030 |  | Approval for Stairs Conc. Dim. & RFT DWGs As-Built Drawing (B01) (7th) | 12d | 2027-03-23 | 2027-04-05 | AB-SUB-B01-7TH-1030 SS+12d, AB-SUB-B01-7TH-1030 FF+6d | 0d | 37d | DA | HO |
|  | 8thF | **8th Floor** |  | 2027-04-06 | 2027-05-03 |  |  |  |  |  |
| AB-APP-B01-8TH-1000 |  | Approval for Col. & Walls Conc. Dim. & RFT DWGs As-Built Drawing (B01) (8th) | 12d | 2027-04-06 | 2027-04-19 | AB-SUB-B01-8TH-1000 SS+12d, AB-SUB-B01-8TH-1000 FF+6d | -12d | 25d | DA | HO |
| AB-APP-B01-8TH-1010 |  | Approval for Slabs Conc. Dim. & RFT DWGs As-Built Drawing (B01) (8th) | 12d | 2027-04-20 | 2027-05-03 | AB-SUB-B01-8TH-1010 SS+12d, AB-SUB-B01-8TH-1010 FF+6d | -24d | 13d | DA | HO |
| AB-APP-B01-8TH-1020 |  | Approval for Beams Conc. Dim. & RFT DWGs As-Built Drawing (B01) (8th) | 12d | 2027-04-20 | 2027-05-03 | AB-SUB-B01-8TH-1020 SS+12d, AB-SUB-B01-8TH-1020 FF+6d | -24d | 13d | DA | HO |
| AB-APP-B01-8TH-1030 |  | Approval for Stairs Conc. Dim. & RFT DWGs As-Built Drawing (B01) (8th) | 12d | 2027-04-20 | 2027-05-03 | AB-SUB-B01-8TH-1030 SS+12d, AB-SUB-B01-8TH-1030 FF+6d | -24d | 13d | DA | HO |
|  | RF | **Roof Floor** |  | 2027-04-29 | 2027-05-18 |  |  |  |  |  |
| AB-APP-B01-RF-1000 |  | Approval for Col. & Walls Conc. Dim. & RFT DWGs As-Built Drawing (B01) (RF) | 12d | 2027-04-29 | 2027-05-12 | AB-SUB-B01-RF-1000 SS+12d, AB-SUB-B01-RF-1000 FF+6d | -32d | 5d | DA | HO |
| AB-APP-B01-RF-1010 |  | Approval for Slabs Conc. Dim. & RFT DWGs As-Built Drawing (B01) (RF) | 12d | 2027-05-05 | 2027-05-18 | AB-SUB-B01-RF-1010 SS+12d, AB-SUB-B01-RF-1010 FF+6d | -37d | 0d | DA | HO |
| AB-APP-B01-RF-1020 |  | Approval for Beams Conc. Dim. & RFT DWGs As-Built Drawing (B01) (RF) | 12d | 2027-05-05 | 2027-05-18 | AB-SUB-B01-RF-1020 SS+12d, AB-SUB-B01-RF-1020 FF+6d | -37d | 0d | DA | HO |
|  | B02 | **B02** |  | 2026-01-27 | 2027-04-07 |  |  |  |  |  |
|  | SUB | **Substructre** |  | 2026-01-27 | 2026-09-02 |  |  |  |  |  |
|  | 1 | **Replacement** |  | 2026-01-27 | 2026-02-09 |  |  |  |  |  |
| AB-APP-B02-REP-1000 |  | Approval for General Replacement Plan & Typical Sections for Replacement / Backfilling DWGs As-Built Drawing (B02) | 12d | 2026-01-27 | 2026-02-09 | AB-SUB-B02-REP-1000 SS+12d, AB-SUB-B02-REP-1000 FF+6d | 342d | 379d |  | HO |
|  | F | **Footing** |  | 2026-01-27 | 2026-04-06 |  |  |  |  |  |
| AB-APP-B02-FOOT-1000 |  | Approval for PC Raft Conc. Dim. DWGs As-Built Drawing (B02) (footing) | 12d | 2026-01-27 | 2026-02-09 | AB-SUB-B02-FOOT-1000 SS+12d, AB-SUB-B02-FOOT-1000 FF+6d | 342d | 379d | DA | HO |
| AB-APP-B02-FOOT-1010 |  | Approval for RC Raft & Footings Conc. Dim. DWGs As-Built Drawing (B02) (footing) | 12d | 2026-01-27 | 2026-02-09 | AB-SUB-B02-FOOT-1010 SS+12d, AB-SUB-B02-FOOT-1010 FF+6d | 342d | 379d | DA | HO |
| AB-APP-B02-FOOT-1020 |  | Approval for RC Raft & Footings RFT DWGs As-Built Drawing (B02) (footing) | 12d | 2026-01-29 | 2026-02-11 | AB-SUB-B02-FOOT-1020 SS+12d, AB-SUB-B02-FOOT-1020 FF+6d | 340d | 377d | DA | HO |
| AB-APP-B02-FOOT-1030 |  | Approval for Waterproofing Layout Plan DWGs As-Built Drawing (B02) | 12d | 2026-03-24 | 2026-04-06 | AB-SUB-B02-FOOT-1030 SS+12d, AB-SUB-B02-FOOT-1030 FF+6d | 298d | 335d |  | HO |
|  | 2ndB | **Basement 2** |  | 2026-02-28 | 2026-09-02 |  |  |  |  |  |
| AB-APP-B02-BAS2-1000 |  | Approval for Col. & Walls Conc. Dim. & RFT DWGs As-Built Drawing (B02) (Bas 02) | 12d | 2026-02-28 | 2026-03-12 | AB-SUB-B02-BAS2-1000 SS+12d, AB-SUB-B02-BAS2-1000 FF+6d | 315d | 352d | DA | HO |
| AB-APP-B02-BAS2-1010 |  | Approval for Stairs Conc. Dim. & RFT DWGs As-Built Drawing (B02) (Bas 02) | 12d | 2026-03-11 | 2026-03-29 | AB-SUB-B02-BAS2-1010 SS+12d, AB-SUB-B02-BAS2-1010 FF+6d | 305d | 342d | DA | HO |
| AB-APP-B02-BAS2-1020 |  | Approval for Slabs Conc. Dim. & RFT DWGs As-Built Drawing (B02) (Bas 02) | 12d | 2026-03-21 | 2026-04-02 | AB-SUB-B02-BAS2-1020 SS+12d, AB-SUB-B02-BAS2-1020 FF+6d | 301d | 338d | DA | HO |
| AB-APP-B02-BAS2-1030 |  | Approval for Beams Conc. Dim. & RFT DWGs As-Built Drawing (B02) (Bas 02) | 12d | 2026-03-21 | 2026-04-02 | AB-SUB-B02-BAS2-1030 SS+12d, AB-SUB-B02-BAS2-1030 FF+6d | 301d | 338d | DA | HO |

| ID | WBS | Activity | Duration | Start | Finish | Predecessors | Total float | Free float | Work Type | BOQ Division |
| --- | --- | --- | --- | --- | --- | --- | --- | --- | --- | --- |
|  | SOG | **S.O.G** |  | 2026-08-19 | 2026-09-02 |  |  |  |  |  |
| AB-APP-B02-SOG-1000 |  | Approval for S.O.G Conc. Dim. DWGs As-Built Drawing (B02) (Sog) | 12d | 2026-08-19 | 2026-09-02 | AB-SUB-B02-SOG-1000 SS+12d, AB-SUB-B02-SOG-1000 FF+6d | 178d | 215d | DA | HO |
| AB-APP-B02-SOG-1010 |  | Approval for S.O.G RFT DWGs As-Built Drawing (B02) (Sog) | 12d | 2026-08-19 | 2026-09-02 | AB-SUB-B02-SOG-1010 SS+12d, AB-SUB-B02-SOG-1010 FF+6d | 178d | 215d | DA | HO |
|  | 1stB | **Basement 1** |  | 2026-04-11 | 2026-05-11 |  |  |  |  |  |
| AB-APP-B02-BAS1-1000 |  | Approval for Col. & Walls Conc. Dim. & RFT DWGs As-Built Drawing (B02) (Bas 01) | 12d | 2026-04-11 | 2026-04-25 | AB-SUB-B02-BAS1-1000 SS+12d, AB-SUB-B02-BAS1-1000 FF+6d | 283d | 320d | DA | HO |
| AB-APP-B02-BAS1-1010 |  | Approval for Stairs Conc. Dim. & RFT DWGs As-Built Drawing (B02) (Bas 01) | 12d | 2026-04-26 | 2026-05-09 | AB-SUB-B02-BAS1-1010 SS+12d, AB-SUB-B02-BAS1-1010 FF+6d | 271d | 308d | DA | HO |
| AB-APP-B02-BAS1-1020 |  | Approval for Slabs Conc. Dim. & RFT DWGs As-Built Drawing (B02) (Bas 01) | 12d | 2026-04-28 | 2026-05-11 | AB-SUB-B02-BAS1-1020 SS+12d, AB-SUB-B02-BAS1-1020 FF+6d | 269d | 306d | DA | HO |
| AB-APP-B02-BAS1-1030 |  | Approval for Beams Conc. Dim. & RFT DWGs As-Built Drawing (B02) (Bas 01) | 12d | 2026-04-28 | 2026-05-11 | AB-SUB-B02-BAS1-1030 SS+12d, AB-SUB-B02-BAS1-1030 FF+6d | 269d | 306d | DA | HO |
|  | SUP | **Superstructure** |  | 2026-05-20 | 2027-04-07 |  |  |  |  |  |
|  | GF | **Ground Floor** |  | 2026-05-20 | 2026-07-01 |  |  |  |  |  |
| AB-APP-B02-GR-1000 |  | Approval for Col. & Walls Conc. Dim. & RFT DWGs As-Built Drawing (B02) (GF) | 12d | 2026-05-20 | 2026-06-07 | AB-SUB-B02-GR-1000 SS+12d, AB-SUB-B02-GR-1000 FF+6d | 250d | 287d | DA | HO |
| AB-APP-B02-GR-1010 |  | Approval for Stairs Conc. Dim. & RFT DWGs As-Built Drawing (B02) (GF) | 12d | 2026-06-09 | 2026-06-22 | AB-SUB-B02-GR-1010 SS+12d, AB-SUB-B02-GR-1010 FF+6d | 237d | 274d | DA | HO |
| AB-APP-B02-GR-1020 |  | Approval for Slabs Conc. Dim. & RFT DWGs As-Built Drawing (B02) (GF) | 12d | 2026-06-17 | 2026-07-01 | AB-SUB-B02-GR-1020 SS+12d, AB-SUB-B02-GR-1020 FF+6d | 230d | 267d | DA | HO |
| AB-APP-B02-GR-1030 |  | Approval for Beams Conc. Dim. & RFT DWGs As-Built Drawing (B02) (GF) | 12d | 2026-06-17 | 2026-07-01 | AB-SUB-B02-GR-1030 SS+12d, AB-SUB-B02-GR-1030 FF+6d | 230d | 267d | DA | HO |
|  | 1stF | **1st Floor** |  | 2026-07-21 | 2026-08-26 |  |  |  |  |  |
| AB-APP-B02-1ST-1000 |  | Approval for Col. & Walls Conc. Dim. & RFT DWGs As-Built Drawing (B02) (1st) | 12d | 2026-07-21 | 2026-08-04 | AB-SUB-B02-1ST-1000 SS+12d, AB-SUB-B02-1ST-1000 FF+6d | 202d | 239d | DA | HO |
| AB-APP-B02-1ST-1010 |  | Approval for Slabs Conc. Dim. & RFT DWGs As-Built Drawing (B02) (1st) | 12d | 2026-08-13 | 2026-08-26 | AB-SUB-B02-1ST-1010 SS+12d, AB-SUB-B02-1ST-1010 FF+6d | 183d | 220d | DA | HO |
| AB-APP-B02-1ST-1020 |  | Approval for Beams Conc. Dim. & RFT DWGs As-Built Drawing (B02) (1st) | 12d | 2026-08-13 | 2026-08-26 | AB-SUB-B02-1ST-1020 SS+12d, AB-SUB-B02-1ST-1020 FF+6d | 183d | 220d | DA | HO |
| AB-APP-B02-1ST-1030 |  | Approval for Stairs Conc. Dim. & RFT DWGs As-Built Drawing (B02) (1st) | 12d | 2026-08-13 | 2026-08-26 | AB-SUB-B02-1ST-1030 SS+12d, AB-SUB-B02-1ST-1030 FF+6d | 183d | 220d | DA | HO |
|  | 2ndF | **2nd Floor** |  | 2026-09-19 | 2026-10-28 |  |  |  |  |  |
| AB-APP-B02-2ND-1000 |  | Approval for Col. & Walls Conc. Dim. & RFT DWGs As-Built Drawing (B02) (2nd) | 12d | 2026-09-19 | 2026-10-01 | AB-SUB-B02-2ND-1000 SS+12d, AB-SUB-B02-2ND-1000 FF+6d | 153d | 190d | DA | HO |
| AB-APP-B02-2ND-1010 |  | Approval for Slabs Conc. Dim. & RFT DWGs As-Built Drawing (B02) (2nd) | 12d | 2026-10-15 | 2026-10-28 | AB-SUB-B02-2ND-1010 SS+12d, AB-SUB-B02-2ND-1010 FF+6d | 131d | 168d | DA | HO |
| AB-APP-B02-2ND-1020 |  | Approval for Beams Conc. Dim. & RFT DWGs As-Built Drawing (B02) (2nd) | 12d | 2026-10-15 | 2026-10-28 | AB-SUB-B02-2ND-1020 SS+12d, AB-SUB-B02-2ND-1020 FF+6d | 131d | 168d | DA | HO |
| AB-APP-B02-2ND-1030 |  | Approval for Stairs Conc. Dim. & RFT DWGs As-Built Drawing (B02) (2nd) | 12d | 2026-10-15 | 2026-10-28 | AB-SUB-B02-2ND-1030 SS+12d, AB-SUB-B02-2ND-1030 FF+6d | 131d | 168d | DA | HO |

| ID | WBS | Activity | Duration | Start | Finish | Predecessors | Total float | Free float | Work Type | BOQ Division |
| --- | --- | --- | --- | --- | --- | --- | --- | --- | --- | --- |
|  | 3rdF | **3rd Floor** |  | 2026-11-18 | 2026-12-27 |  |  |  |  |  |
| AB-APP-B02-3RD-1000 |  | Approval for Col. & Walls Conc. Dim. & RFT DWGs As-Built Drawing (B02) (3rd) | 12d | 2026-11-18 | 2026-12-01 | AB-SUB-B02-3RD-1000 SS+12d, AB-SUB-B02-3RD-1000 FF+6d | 102d | 139d | DA | HO |
| AB-APP-B02-3RD-1010 |  | Approval for Slabs Conc. Dim. & RFT DWGs As-Built Drawing (B02) (3rd) | 12d | 2026-12-14 | 2026-12-27 | AB-SUB-B02-3RD-1010 SS+12d, AB-SUB-B02-3RD-1010 FF+6d | 80d | 117d | DA | HO |
| AB-APP-B02-3RD-1020 |  | Approval for Beams Conc. Dim. & RFT DWGs As-Built Drawing (B02) (3rd) | 12d | 2026-12-14 | 2026-12-27 | AB-SUB-B02-3RD-1020 SS+12d, AB-SUB-B02-3RD-1020 FF+6d | 80d | 117d | DA | HO |
| AB-APP-B02-3RD-1030 |  | Approval for Stairs Conc. Dim. & RFT DWGs As-Built Drawing (B02) (3rd) | 12d | 2026-12-14 | 2026-12-27 | AB-SUB-B02-3RD-1030 SS+12d, AB-SUB-B02-3RD-1030 FF+6d | 80d | 117d | DA | HO |
|  | 4thF | **4th Floor** |  | 2027-01-19 | 2027-02-27 |  |  |  |  |  |
| AB-APP-B02-4TH-1000 |  | Approval for Col. & Walls Conc. Dim. & RFT DWGs As-Built Drawing (B02) (4th) | 12d | 2027-01-19 | 2027-02-02 | AB-SUB-B02-4TH-1000 SS+12d, AB-SUB-B02-4TH-1000 FF+6d | 50d | 87d | DA | HO |
| AB-APP-B02-4TH-1010 |  | Approval for Slabs Conc. Dim. & RFT DWGs As-Built Drawing (B02) (4th) | 12d | 2027-02-14 | 2027-02-27 | AB-SUB-B02-4TH-1010 SS+12d, AB-SUB-B02-4TH-1010 FF+6d | 29d | 66d | DA | HO |
| AB-APP-B02-4TH-1020 |  | Approval for Beams Conc. Dim. & RFT DWGs As-Built Drawing (B02) (4th) | 12d | 2027-02-14 | 2027-02-27 | AB-SUB-B02-4TH-1020 SS+12d, AB-SUB-B02-4TH-1020 FF+6d | 29d | 66d | DA | HO |
| AB-APP-B02-4TH-1030 |  | Approval for Stairs Conc. Dim. & RFT DWGs As-Built Drawing (B02) (4th) | 12d | 2027-02-14 | 2027-02-27 | AB-SUB-B02-4TH-1030 SS+12d, AB-SUB-B02-4TH-1030 FF+6d | 29d | 66d | DA | HO |
|  | RF | **Roof Floor** |  | 2027-03-14 | 2027-04-07 |  |  |  |  |  |
| AB-APP-B02-RF-1000 |  | Approval for Col. & Walls Conc. Dim. & RFT DWGs As-Built Drawing (B02) (RF) | 12d | 2027-03-14 | 2027-03-27 | AB-SUB-B02-RF-1000 SS+12d, AB-SUB-B02-RF-1000 FF+6d | 8d | 45d | DA | HO |
| AB-APP-B02-RF-1010 |  | Approval for Slabs Conc. Dim. & RFT DWGs As-Built Drawing (B02) (RF) | 12d | 2027-03-25 | 2027-04-07 | AB-SUB-B02-RF-1010 SS+12d, AB-SUB-B02-RF-1010 FF+6d | -2d | 35d | DA | HO |
| AB-APP-B02-RF-1020 |  | Approval for Beams Conc. Dim. & RFT DWGs As-Built Drawing (B02) (RF) | 12d | 2027-03-25 | 2027-04-07 | AB-SUB-B02-RF-1020 SS+12d, AB-SUB-B02-RF-1020 FF+6d | -2d | 35d | DA | HO |
|  | P01 | **Part 01** |  | 2026-01-27 | 2027-05-03 |  |  |  |  |  |
|  | B03 | **B03** |  | 2026-01-27 | 2027-04-29 |  |  |  |  |  |
|  | SUB | **Substructre** |  | 2026-01-27 | 2026-06-10 |  |  |  |  |  |
|  | 4 | **Replacement** |  | 2026-01-27 | 2026-02-09 |  |  |  |  |  |
| AB-APP-B03-REP-1000 |  | Approval for General Replacement Plan & Typical Sections for Replacement / Backfilling DWGs As-Built Drawing (B03) | 12d | 2026-01-27 | 2026-02-09 | AB-SUB-B03-REP-1000 SS+12d, AB-SUB-B03-REP-1000 FF+6d | 342d | 379d |  | HO |
|  | 1 | **Footing** |  | 2026-01-27 | 2026-04-06 |  |  |  |  |  |
| AB-APP-B03-FOOT-1000 |  | Approval for PC Raft Conc. Dim. DWGs As-Built Drawing (B03) (footing) | 12d | 2026-01-27 | 2026-02-09 | AB-SUB-B03-FOOT-1000 SS+12d, AB-SUB-B03-FOOT-1000 FF+6d | 342d | 379d | DA | HO |
| AB-APP-B03-FOOT-1010 |  | Approval for RC Raft & Footings Conc. Dim. DWGs (B03) (footing) | 12d | 2026-01-27 | 2026-02-09 | AB-SUB-B03-FOOT-1010 SS+12d, AB-SUB-B03-FOOT-1010 FF+6d | 342d | 379d | DA | HO |
| AB-APP-B03-FOOT-1020 |  | Approval for RC Raft & Footings RFT DWGs As-Built Drawing (B03) (footing) | 12d | 2026-01-28 | 2026-02-10 | AB-SUB-B03-FOOT-1020 SS+12d, AB-SUB-B03-FOOT-1020 FF+6d | 341d | 378d | DA | HO |
| AB-APP-B03-FOOT-1030 |  | Approval for Waterproofing Layout Plan DWGs As-Built Drawing(B03) | 12d | 2026-03-24 | 2026-04-06 | AB-SUB-B03-FOOT-1030 SS+12d, AB-SUB-B03-FOOT-1030 FF+6d | 298d | 335d |  | HO |

| ID | WBS | Activity | Duration | Start | Finish | Predecessors | Total float | Free float | Work Type | BOQ Division |
| --- | --- | --- | --- | --- | --- | --- | --- | --- | --- | --- |
|  | 3 | **Basement 2** |  | 2026-03-14 | 2026-06-10 |  |  |  |  |  |
| AB-APP-B03-BAS2-1000 |  | Approval for Col. & Walls Conc. Dim. & RFT DWGs As-Built Drawing (B03) (Bas 02) | 12d | 2026-03-14 | 2026-03-31 | AB-SUB-B03-BAS2-1000 SS+12d, AB-SUB-B03-BAS2-1000 FF+6d | 303d | 340d | DA | HO |
| AB-APP-B03-BAS2-1010 |  | Approval for Stairs Conc. Dim. & RFT DWGs As-Built Drawing (B03) (Bas 02) | 12d | 2026-04-01 | 2026-04-15 | AB-SUB-B03-BAS2-1010 SS+12d, AB-SUB-B03-BAS2-1010 FF+6d | 291d | 328d | DA | HO |
| AB-APP-B03-BAS2-1020 |  | Approval for Slabs Conc. Dim. & RFT DWGs As-Built Drawing (B03) (Bas 02) | 12d | 2026-04-04 | 2026-04-18 | AB-SUB-B03-BAS2-1020 SS+12d, AB-SUB-B03-BAS2-1020 FF+6d | 289d | 326d | DA | HO |
| AB-APP-B03-BAS2-1030 |  | Approval for Beams Conc. Dim. & RFT DWGs As-Built Drawing (B03) (Bas 02) | 12d | 2026-04-04 | 2026-04-18 | AB-SUB-B03-BAS2-1030 SS+12d, AB-SUB-B03-BAS2-1030 FF+6d | 289d | 326d | DA | HO |
|  | 2 | **S.O.G** |  | 2026-05-19 | 2026-06-10 |  |  |  |  |  |
| AB-APP-B03-SOG-1000 |  | Approval for S.O.G Conc. Dim. DWGs As-Built Drawing (B03) (Sog) | 12d | 2026-05-19 | 2026-06-06 | AB-SUB-B03-SOG-1000 SS+12d, AB-SUB-B03-SOG-1000 FF+6d | 251d | 288d | DA | HO |
| AB-APP-B03-SOG-1010 |  | Approval for S.O.G RFT DWGs As-Built Drawing (B03) (Sog) | 12d | 2026-05-24 | 2026-06-10 | AB-SUB-B03-SOG-1010 SS+12d, AB-SUB-B03-SOG-1010 FF+6d | 247d | 284d | DA | HO |
|  | 2 | **Basement 1** |  | 2026-04-27 | 2026-05-26 |  |  |  |  |  |
| AB-APP-B03-BAS1-1000 |  | Approval for Col. & Walls Conc. Dim. & RFT DWGs As-Built Drawing (B03) (Bas 01) | 12d | 2026-04-27 | 2026-05-10 | AB-SUB-B03-BAS1-1000 SS+12d, AB-SUB-B03-BAS1-1000 FF+6d | 270d | 307d | DA | HO |
| AB-APP-B03-BAS1-1010 |  | Approval for Stairs Conc. Dim. & RFT DWGs As-Built Drawing (B03) (Bas 01) | 12d | 2026-05-12 | 2026-05-25 | AB-SUB-B03-BAS1-1010 SS+12d, AB-SUB-B03-BAS1-1010 FF+6d | 257d | 294d | DA | HO |
| AB-APP-B03-BAS1-1020 |  | Approval for Slabs Conc. Dim. & RFT DWGs As-Built Drawing (B03) (Bas 01) | 12d | 2026-05-13 | 2026-05-26 | AB-SUB-B03-BAS1-1020 SS+12d, AB-SUB-B03-BAS1-1020 FF+6d | 256d | 293d | DA | HO |
| AB-APP-B03-BAS1-1030 |  | Approval for Beams Conc. Dim. & RFT DWGs As-Built Drawing (B03) (Bas 01) | 12d | 2026-05-13 | 2026-05-26 | AB-SUB-B03-BAS1-1030 SS+12d, AB-SUB-B03-BAS1-1030 FF+6d | 256d | 293d | DA | HO |
|  | SUP | **Superstructure** |  | 2026-06-04 | 2027-04-29 |  |  |  |  |  |
|  | GF | **Ground Floor** |  | 2026-06-04 | 2026-06-29 |  |  |  |  |  |
| AB-APP-B03-GR-1000 |  | Approval for Col. & Walls Conc. Dim. & RFT DWGs As-Built Drawing (B03) (GF) | 12d | 2026-06-04 | 2026-06-17 | AB-SUB-B03-GR-1000 SS+12d, AB-SUB-B03-GR-1000 FF+6d | 241d | 278d | DA | HO |
| AB-APP-B03-GR-1010 |  | Approval for Slabs Conc. Dim. & RFT DWGs As-Built Drawing (B03) (GF) | 12d | 2026-06-16 | 2026-06-29 | AB-SUB-B03-GR-1010 SS+12d, AB-SUB-B03-GR-1010 FF+6d | 231d | 268d | DA | HO |
| AB-APP-B03-GR-1020 |  | Approval for Beams Conc. Dim. & RFT DWGs As-Built Drawing (B03) (GF) | 12d | 2026-06-16 | 2026-06-29 | AB-SUB-B03-GR-1020 SS+12d, AB-SUB-B03-GR-1020 FF+6d | 231d | 268d | DA | HO |
| AB-APP-B03-GR-1030 |  | Approval for Stairs Conc. Dim. & RFT DWGs As-Built Drawing (B03) (GF) | 12d | 2026-06-16 | 2026-06-29 | AB-SUB-B03-GR-1030 SS+12d, AB-SUB-B03-GR-1030 FF+6d | 231d | 268d | DA | HO |
|  | 1stF | **1st Floor** |  | 2026-08-05 | 2026-09-14 |  |  |  |  |  |
| AB-APP-B03-1ST-1000 |  | Approval for Col. & Walls Conc. Dim. & RFT DWGs As-Built Drawing (B03) (1st) | 12d | 2026-08-05 | 2026-08-18 | AB-SUB-B03-1ST-1000 SS+12d, AB-SUB-B03-1ST-1000 FF+6d | 190d | 227d | DA | HO |
| AB-APP-B03-1ST-1010 |  | Approval for Slabs Conc. Dim. & RFT DWGs As-Built Drawing (B03) (1st) | 12d | 2026-09-01 | 2026-09-14 | AB-SUB-B03-1ST-1010 SS+12d, AB-SUB-B03-1ST-1010 FF+6d | 168d | 205d | DA | HO |
| AB-APP-B03-1ST-1020 |  | Approval for Beams Conc. Dim. & RFT DWGs As-Built Drawing (B03) (1st) | 12d | 2026-09-01 | 2026-09-14 | AB-SUB-B03-1ST-1020 SS+12d, AB-SUB-B03-1ST-1020 FF+6d | 168d | 205d | DA | HO |
| AB-APP-B03-1ST-1030 |  | Approval for Stairs Conc. Dim. & RFT DWGs As-Built Drawing (B03) (1st) | 12d | 2026-09-01 | 2026-09-14 | AB-SUB-B03-1ST-1030 SS+12d, AB-SUB-B03-1ST-1030 FF+6d | 168d | 205d | DA | HO |

| ID | WBS | Activity | Duration | Start | Finish | Predecessors | Total float | Free float | Work Type | BOQ Division |
| --- | --- | --- | --- | --- | --- | --- | --- | --- | --- | --- |
|  | 2ndF | **2nd Floor** |  | 2026-10-11 | 2026-11-18 |  |  |  |  |  |
| AB-APP-B03-2ND-1000 |  | Approval for Col. & Walls Conc. Dim. & RFT DWGs As-Built Drawing (B03) (2nd) | 12d | 2026-10-11 | 2026-10-24 | AB-SUB-B03-2ND-1000 SS+12d, AB-SUB-B03-2ND-1000 FF+6d | 135d | 172d | DA | HO |
| AB-APP-B03-2ND-1010 |  | Approval for Slabs Conc. Dim. & RFT DWGs As-Built Drawing (B03) (2nd) | 12d | 2026-11-05 | 2026-11-18 | AB-SUB-B03-2ND-1010 SS+12d, AB-SUB-B03-2ND-1010 FF+6d | 113d | 150d | DA | HO |
| AB-APP-B03-2ND-1020 |  | Approval for Beams Conc. Dim. & RFT DWGs As-Built Drawing (B03) (2nd) | 12d | 2026-11-05 | 2026-11-18 | AB-SUB-B03-2ND-1020 SS+12d, AB-SUB-B03-2ND-1020 FF+6d | 113d | 150d | DA | HO |
| AB-APP-B03-2ND-1030 |  | Approval for Stairs Conc. Dim. & RFT DWGs As-Built Drawing (B03) (2nd) | 12d | 2026-11-05 | 2026-11-18 | AB-SUB-B03-2ND-1030 SS+12d, AB-SUB-B03-2ND-1030 FF+6d | 113d | 150d | DA | HO |
|  | 3rdF | **3rd Floor** |  | 2026-12-13 | 2027-01-21 |  |  |  |  |  |
| AB-APP-B03-3RD-1000 |  | Approval for Col. & Walls Conc. Dim. & RFT DWGs As-Built Drawing (B03) (3rd) | 12d | 2026-12-13 | 2026-12-26 | AB-SUB-B03-3RD-1000 SS+12d, AB-SUB-B03-3RD-1000 FF+6d | 81d | 118d | DA | HO |
| AB-APP-B03-3RD-1010 |  | Approval for Slabs Conc. Dim. & RFT DWGs As-Built Drawing (B03) (3rd) | 12d | 2027-01-09 | 2027-01-21 | AB-SUB-B03-3RD-1010 SS+12d, AB-SUB-B03-3RD-1010 FF+6d | 59d | 96d | DA | HO |
| AB-APP-B03-3RD-1020 |  | Approval for Beams Conc. Dim. & RFT DWGs As-Built Drawing (B03) (3rd) | 12d | 2027-01-09 | 2027-01-21 | AB-SUB-B03-3RD-1020 SS+12d, AB-SUB-B03-3RD-1020 FF+6d | 59d | 96d | DA | HO |
| AB-APP-B03-3RD-1030 |  | Approval for Stairs Conc. Dim. & RFT DWGs As-Built Drawing (B03) (3rd) | 12d | 2027-01-09 | 2027-01-21 | AB-SUB-B03-3RD-1030 SS+12d, AB-SUB-B03-3RD-1030 FF+6d | 59d | 96d | DA | HO |
|  | 4thF | **4th Floor** |  | 2027-02-16 | 2027-03-27 |  |  |  |  |  |
| AB-APP-B03-4TH-1000 |  | Approval for Col. & Walls Conc. Dim. & RFT DWGs As-Built Drawing (B03) (4th) | 12d | 2027-02-16 | 2027-03-01 | AB-SUB-B03-4TH-1000 SS+12d, AB-SUB-B03-4TH-1000 FF+6d | 27d | 64d | DA | HO |
| AB-APP-B03-4TH-1010 |  | Approval for Slabs Conc. Dim. & RFT DWGs As-Built Drawing (B03) (4th) | 12d | 2027-03-14 | 2027-03-27 | AB-SUB-B03-4TH-1010 SS+12d, AB-SUB-B03-4TH-1010 FF+6d | 8d | 45d | DA | HO |
| AB-APP-B03-4TH-1020 |  | Approval for Beams Conc. Dim. & RFT DWGs As-Built Drawing (B03) (4th) | 12d | 2027-03-14 | 2027-03-27 | AB-SUB-B03-4TH-1020 SS+12d, AB-SUB-B03-4TH-1020 FF+6d | 8d | 45d | DA | HO |
| AB-APP-B03-4TH-1030 |  | Approval for Stairs Conc. Dim. & RFT DWGs As-Built Drawing (B03) (4th) | 12d | 2027-03-14 | 2027-03-27 | AB-SUB-B03-4TH-1030 SS+12d, AB-SUB-B03-4TH-1030 FF+6d | 8d | 45d | DA | HO |
|  | RF | **Roof Floor** |  | 2027-04-05 | 2027-04-29 |  |  |  |  |  |
| AB-APP-B03-RF-1000 |  | Approval for Col. & Walls Conc. Dim. & RFT DWGs As-Built Drawing (B03) (RF) | 12d | 2027-04-05 | 2027-04-18 | AB-SUB-B03-RF-1000 SS+12d, AB-SUB-B03-RF-1000 FF+6d | -11d | 26d | DA | HO |
| AB-APP-B03-RF-1010 |  | Approval for Slabs Conc. Dim. & RFT DWGs As-Built Drawing (B03) (RF) | 14d | 2027-04-14 | 2027-04-29 | AB-SUB-B03-RF-1010 SS+12d, AB-SUB-B03-RF-1010 FF+6d | -21d | 16d | DA | HO |
| AB-APP-B03-RF-1020 |  | Approval for Beams Conc. Dim. & RFT DWGs As-Built Drawing (B03) (RF) | 14d | 2027-04-14 | 2027-04-29 | AB-SUB-B03-RF-1020 SS+12d, AB-SUB-B03-RF-1020 FF+6d | -21d | 16d | DA | HO |
|  | B04 | **B04** |  | 2026-01-27 | 2027-05-03 |  |  |  |  |  |
|  | SUB | **Substructre** |  | 2026-01-27 | 2026-06-23 |  |  |  |  |  |
|  | 1 | **Replacement** |  | 2026-01-27 | 2026-02-09 |  |  |  |  |  |
| AB-APP-B04-REP-1000 |  | Approval for General Replacement Plan & Typical Sections for Replacement / Backfilling DWGs As-Built Drawing (B04) | 12d | 2026-01-27 | 2026-02-09 | AB-SUB-B04-REP-1000 SS+12d, AB-SUB-B04-REP-1000 FF+6d | 342d | 379d |  | HO |
|  | F | **Footing** |  | 2026-01-27 | 2026-04-06 |  |  |  |  |  |
| AB-APP-B04-FOOT-1000 |  | Approval for PC Raft Conc. Dim. Conc. Dim. & RFT DWGs As-Built Drawing (B04) (footing) | 12d | 2026-01-27 | 2026-02-09 | AB-SUB-B04-FOOT-1000 SS+12d, AB-SUB-B04-FOOT-1000 FF+6d | 342d | 379d | DA | HO |
| AB-APP-B04-FOOT-1010 |  | Approval for RC Raft & Footings Conc. Dim. Conc. Dim. & RFT DWGs As-Built Drawing (B04) (footing) | 12d | 2026-02-05 | 2026-02-18 | AB-SUB-B04-FOOT-1010 SS+12d, AB-SUB-B04-FOOT-1010 FF+6d | 334d | 371d | DA | HO |
| AB-APP-B04-FOOT-1020 |  | Approval for RC Raft & Footings RFT Conc. Dim. & RFT DWGs As-Built Drawing (B04) (footing) | 12d | 2026-02-11 | 2026-02-24 | AB-SUB-B04-FOOT-1020 SS+12d, AB-SUB-B04-FOOT-1020 FF+6d | 329d | 366d | DA | HO |
| AB-APP-B04-FOOT-1030 |  | Approval for Waterproofing Layout Plan (B04) | 12d | 2026-03-24 | 2026-04-06 | AB-SUB-B04-FOOT-1030 SS+12d, AB-SUB-B04-FOOT-1030 FF+6d | 298d | 335d |  | HO |

| ID | WBS | Activity | Duration | Start | Finish | Predecessors | Total float | Free float | Work Type | BOQ Division |
| --- | --- | --- | --- | --- | --- | --- | --- | --- | --- | --- |
|  | 2ndF | **Basement 2** |  | 2026-01-27 | 2026-06-23 |  |  |  |  |  |
| AB-APP-B04-BAS2-1000 |  | Approval for Col. & Walls Conc. Dim. & RFT DWGs As-Built Drawing (B04) (Bas 02) | 12d | 2026-02-25 | 2026-03-10 | AB-SUB-B04-BAS2-1000 SS+12d, AB-SUB-B04-BAS2-1000 FF+6d | 317d | 354d | DA | HO |
| AB-APP-B04-BAS2-1010 |  | Approval for Stairs Conc. Dim. & RFT DWGs As-Built Drawing (B04) (Bas 02) | 12d | 2026-03-23 | 2026-04-05 | AB-SUB-B04-BAS2-1010 SS+12d, AB-SUB-B04-BAS2-1010 FF+6d | 299d | 336d | DA | HO |
| AB-APP-B04-BAS2-1020 |  | Approval for Ramps Conc. Dim. & RFT DWGs As-Built Drawing (B04) (Bas 02) | 12d | 2026-03-24 | 2026-04-06 | AB-SUB-B04-BAS2-1020 SS+12d, AB-SUB-B04-BAS2-1020 FF+6d | 298d | 335d | DA | HO |
| AB-APP-B04-BAS2-1030 |  | Approval for Slabs Conc. Dim. & RFT DWGs As-Built Drawing (B04) (Bas 02) | 12d | 2026-04-01 | 2026-04-15 | AB-SUB-B04-BAS2-1030 SS+12d, AB-SUB-B04-BAS2-1030 FF+6d | 291d | 328d | DA | HO |
| AB-APP-B04-BAS2-1040 |  | Approval for Beams Conc. Dim. & RFT DWGs As-Built Drawing (B04) (Bas 02) | 12d | 2026-04-01 | 2026-04-15 | AB-SUB-B04-BAS2-1040 SS+12d, AB-SUB-B04-BAS2-1040 FF+6d | 291d | 328d | DA | HO |
|  | WT | **Water Tank** |  | 2026-01-27 | 2026-03-08 |  |  |  |  |  |
| AB-APP-B04-WT-1000 |  | Approval for PC Raft Conc. Dim. DWGs As-Built Drawing (B04) (Water Tank) | 12d | 2026-01-27 | 2026-02-09 | AB-SUB-B04-WT-1000 SS+12d, AB-SUB-B04-WT-1000 FF+6d | 342d | 379d | DA | HO |
| AB-APP-B04-WT-1010 |  | Approval for RC Raft Conc. Dim. DWGs As-Built Drawing (B04) (Water Tank) | 12d | 2026-01-27 | 2026-02-09 | AB-SUB-B04-WT-1010 SS+12d, AB-SUB-B04-WT-1010 FF+6d | 342d | 379d | DA | HO |
| AB-APP-B04-WT-1020 |  | Approval for RC Raft RFT DWGs As-Built Drawing (B04) (Water Tank) | 12d | 2026-01-27 | 2026-02-09 | AB-SUB-B04-WT-1020 SS+12d, AB-SUB-B04-WT-1020 FF+6d | 342d | 379d | DA | HO |
| AB-APP-B04-WT-1030 |  | Approval for Col. & Walls DWGs As-Built Drawing (B04) (Water Tank) | 12d | 2026-02-12 | 2026-02-25 | AB-SUB-B04-WT-1030 SS+12d, AB-SUB-B04-WT-1030 FF+6d | 328d | 365d | DA | HO |
| AB-APP-B04-WT-1040 |  | Approval for Slabs DWGs As-Built Drawing (B04) (Water Tank) | 12d | 2026-02-23 | 2026-03-08 | AB-SUB-B04-WT-1040 SS+12d, AB-SUB-B04-WT-1040 FF+6d | 319d | 356d | DA | HO |
|  | SOG | **S.O.G** |  | 2026-06-10 | 2026-06-23 |  |  |  |  |  |
| AB-APP-B04-SOG-1000 |  | Approval for S.O.G Conc. Dim. DWGs As-Built Drawing (B04) (Sog) | 12d | 2026-06-10 | 2026-06-23 | AB-SUB-B04-SOG-1000 SS+12d, AB-SUB-B04-SOG-1000 FF+6d | 236d | 273d | DA | HO |
| AB-APP-B04-SOG-1010 |  | Approval for S.O.G RFT DWGs As-Built Drawing (B04) (Sog) | 12d | 2026-06-10 | 2026-06-23 | AB-SUB-B04-SOG-1010 SS+12d, AB-SUB-B04-SOG-1010 FF+6d | 236d | 273d | DA | HO |
|  | 1stB | **Basement 1** |  | 2026-04-16 | 2026-05-16 |  |  |  |  |  |
| AB-APP-B04-BAS1-1000 |  | Approval for Col. & Walls Conc. Dim. & RFT DWGs As-Built Drawing (B04) (Bas 01) | 12d | 2026-04-16 | 2026-04-29 | AB-SUB-B04-BAS1-1000 SS+12d, AB-SUB-B04-BAS1-1000 FF+6d | 279d | 316d | DA | HO |
| AB-APP-B04-BAS1-1010 |  | Approval for Stairs Conc. Dim. & RFT DWGs As-Built Drawing (B04) (Bas 01) | 12d | 2026-05-03 | 2026-05-16 | AB-SUB-B04-BAS1-1010 SS+12d, AB-SUB-B04-BAS1-1010 FF+6d | 265d | 302d | DA | HO |
| AB-APP-B04-BAS1-1020 |  | Approval for Ramps Conc. Dim. & RFT DWGs As-Built Drawing (B04) (Bas 01) | 12d | 2026-05-03 | 2026-05-16 | AB-SUB-B04-BAS1-1020 SS+12d, AB-SUB-B04-BAS1-1020 FF+6d | 265d | 302d | DA | HO |
| AB-APP-B04-BAS1-1030 |  | Approval for Slabs Conc. Dim. & RFT DWGs As-Built Drawing (B04) (Bas 01) | 12d | 2026-05-03 | 2026-05-16 | AB-SUB-B04-BAS1-1030 SS+12d, AB-SUB-B04-BAS1-1030 FF+6d | 265d | 302d | DA | HO |
| AB-APP-B04-BAS1-1040 |  | Approval for Beams Conc. Dim. & RFT DWGs As-Built Drawing (B04) (Bas 01) | 12d | 2026-05-03 | 2026-05-16 | AB-SUB-B04-BAS1-1040 SS+12d, AB-SUB-B04-BAS1-1040 FF+6d | 265d | 302d | DA | HO |
|  | SUP | **Superstructure** |  | 2026-05-18 | 2027-05-03 |  |  |  |  |  |
|  | GF | **Ground Floor** |  | 2026-05-18 | 2026-06-16 |  |  |  |  |  |
| AB-APP-B04-GR-1000 |  | Approval for Col. & Walls Conc. Dim. & RFT DWGs As-Built Drawing (B04) (GF) | 12d | 2026-05-18 | 2026-06-04 | AB-SUB-B04-GR-1000 SS+12d, AB-SUB-B04-GR-1000 FF+6d | 252d | 289d | DA | HO |
| AB-APP-B04-GR-1010 |  | Approval for Slabs Conc. Dim. & RFT DWGs As-Built Drawing (B04) (GF) | 12d | 2026-06-03 | 2026-06-16 | AB-SUB-B04-GR-1010 SS+12d, AB-SUB-B04-GR-1010 FF+6d | 242d | 279d | DA | HO |
| AB-APP-B04-GR-1020 |  | Approval for Beams Conc. Dim. & RFT DWGs As-Built Drawing (B04) (GF) | 12d | 2026-06-03 | 2026-06-16 | AB-SUB-B04-GR-1020 SS+12d, AB-SUB-B04-GR-1020 FF+6d | 242d | 279d | DA | HO |
| AB-APP-B04-GR-1030 |  | Approval for Stairs Conc. Dim. & RFT DWGs As-Built Drawing (B04) (GF) | 12d | 2026-06-03 | 2026-06-16 | AB-SUB-B04-GR-1030 SS+12d, AB-SUB-B04-GR-1030 FF+6d | 242d | 279d | DA | HO |

| ID | WBS | Activity | Duration | Start | Finish | Predecessors | Total float | Free float | Work Type | BOQ Division |
| --- | --- | --- | --- | --- | --- | --- | --- | --- | --- | --- |
|  | 1stF | **1st Floor** |  | 2026-07-16 | 2026-08-19 |  |  |  |  |  |
| AB-APP-B04-1ST-1000 |  | Approval for Col. & Walls Conc. Dim. & RFT DWGs As-Built Drawing (B04) (1st) | 12d | 2026-07-16 | 2026-07-30 | AB-SUB-B04-1ST-1000 SS+12d, AB-SUB-B04-1ST-1000 FF+6d | 206d | 243d | DA | HO |
| AB-APP-B04-1ST-1010 |  | Approval for Slabs Conc. Dim. & RFT DWGs As-Built Drawing (B04) (1st) | 12d | 2026-08-06 | 2026-08-19 | AB-SUB-B04-1ST-1010 SS+12d, AB-SUB-B04-1ST-1010 FF+6d | 189d | 226d | DA | HO |
| AB-APP-B04-1ST-1020 |  | Approval for Beams Conc. Dim. & RFT DWGs As-Built Drawing (B04) (1st) | 12d | 2026-08-06 | 2026-08-19 | AB-SUB-B04-1ST-1020 SS+12d, AB-SUB-B04-1ST-1020 FF+6d | 189d | 226d | DA | HO |
| AB-APP-B04-1ST-1030 |  | Approval for Stairs Conc. Dim. & RFT DWGs As-Built Drawing (B04) (1st) | 12d | 2026-08-06 | 2026-08-19 | AB-SUB-B04-1ST-1030 SS+12d, AB-SUB-B04-1ST-1030 FF+6d | 189d | 226d | DA | HO |
|  | 2ndF | **2nd Floor** |  | 2026-08-25 | 2026-09-28 |  |  |  |  |  |
| AB-APP-B04-2ND-1000 |  | Approval for Col. & Walls Conc. Dim. & RFT DWGs As-Built Drawing (B04) (2nd) | 12d | 2026-08-25 | 2026-09-08 | AB-SUB-B04-2ND-1000 SS+12d, AB-SUB-B04-2ND-1000 FF+6d | 173d | 210d | DA | HO |
| AB-APP-B04-2ND-1010 |  | Approval for Slabs Conc. Dim. & RFT DWGs As-Built Drawing (B04) (2nd) | 12d | 2026-09-15 | 2026-09-28 | AB-SUB-B04-2ND-1010 SS+12d, AB-SUB-B04-2ND-1010 FF+6d | 156d | 193d | DA | HO |
| AB-APP-B04-2ND-1020 |  | Approval for Beams Conc. Dim. & RFT DWGs As-Built Drawing (B04) (2nd) | 12d | 2026-09-15 | 2026-09-28 | AB-SUB-B04-2ND-1020 SS+12d, AB-SUB-B04-2ND-1020 FF+6d | 156d | 193d | DA | HO |
| AB-APP-B04-2ND-1030 |  | Approval for Stairs Conc. Dim. & RFT DWGs As-Built Drawing (B04) (2nd) | 12d | 2026-09-15 | 2026-09-28 | AB-SUB-B04-2ND-1030 SS+12d, AB-SUB-B04-2ND-1030 FF+6d | 156d | 193d | DA | HO |
|  | 3rdF | **3rd Floor** |  | 2026-10-07 | 2026-11-09 |  |  |  |  |  |
| AB-APP-B04-3TH-1000 |  | Approval for Col. & Walls Conc. Dim. & RFT DWGs As-Built Drawing (B04) (3rd) | 12d | 2026-10-07 | 2026-10-20 | AB-SUB-B04-3RD-1000 SS+12d, AB-SUB-B04-3RD-1000 FF+6d | 138d | 175d | DA | HO |
| AB-APP-B04-3TH-1010 |  | Approval for Slabs Conc. Dim. & RFT DWGs As-Built Drawing (B04) (3rd) | 12d | 2026-10-27 | 2026-11-09 | AB-SUB-B04-3RD-1010 SS+12d, AB-SUB-B04-3RD-1010 FF+6d | 121d | 158d | DA | HO |
| AB-APP-B04-3TH-1020 |  | Approval for Beams Conc. Dim. & RFT DWGs As-Built Drawing (B04) (3rd) | 12d | 2026-10-27 | 2026-11-09 | AB-SUB-B04-3RD-1020 SS+12d, AB-SUB-B04-3RD-1020 FF+6d | 121d | 158d | DA | HO |
| AB-APP-B04-3TH-1030 |  | Approval for Stairs Conc. Dim. & RFT DWGs As-Built Drawing (B04) (3rd) | 12d | 2026-10-27 | 2026-11-09 | AB-SUB-B04-3RD-1030 SS+12d, AB-SUB-B04-3RD-1030 FF+6d | 121d | 158d | DA | HO |
|  | 4thF | **4th Floor** |  | 2026-11-14 | 2026-12-15 |  |  |  |  |  |
| AB-APP-B04-4TH-1000 |  | Approval for Col. & Walls Conc. Dim. & RFT DWGs As-Built Drawing (B04) (4th) | 12d | 2026-11-14 | 2026-11-26 | AB-SUB-B04-4TH-1000 SS+12d, AB-SUB-B04-4TH-1000 FF+6d | 106d | 143d | DA | HO |
| AB-APP-B04-4TH-1010 |  | Approval for Slabs Conc. Dim. & RFT DWGs As-Built Drawing (B04) (4th) | 12d | 2026-12-02 | 2026-12-15 | AB-SUB-B04-4TH-1010 SS+12d, AB-SUB-B04-4TH-1010 FF+6d | 90d | 127d | DA | HO |
| AB-APP-B04-4TH-1020 |  | Approval for Beams Conc. Dim. & RFT DWGs As-Built Drawing (B04) (4th) | 12d | 2026-12-02 | 2026-12-15 | AB-SUB-B04-4TH-1020 SS+12d, AB-SUB-B04-4TH-1020 FF+6d | 90d | 127d | DA | HO |
| AB-APP-B04-4TH-1030 |  | Approval for Stairs Conc. Dim. & RFT DWGs As-Built Drawing (B04) (4th) | 12d | 2026-12-02 | 2026-12-15 | AB-SUB-B04-4TH-1030 SS+12d, AB-SUB-B04-4TH-1030 FF+6d | 90d | 127d | DA | HO |
|  | 5thF | **5th Floor** |  | 2026-12-21 | 2027-01-20 |  |  |  |  |  |
| AB-APP-B04-5TH-1000 |  | Approval for Col. & Walls Conc. Dim. & RFT DWGs As-Built Drawing (B04) (5th) | 12d | 2026-12-21 | 2027-01-03 | AB-SUB-B04-5TH-1000 SS+12d, AB-SUB-B04-5TH-1000 FF+6d | 74d | 111d | DA | HO |
| AB-APP-B04-5TH-1010 |  | Approval for Slabs Conc. Dim. & RFT DWGs As-Built Drawing (B04) (5th) | 12d | 2027-01-06 | 2027-01-20 | AB-SUB-B04-5TH-1010 SS+12d, AB-SUB-B04-5TH-1010 FF+6d | 60d | 97d | DA | HO |
| AB-APP-B04-5TH-1020 |  | Approval for Beams Conc. Dim. & RFT DWGs As-Built Drawing (B04) (5th) | 12d | 2027-01-06 | 2027-01-20 | AB-SUB-B04-5TH-1020 SS+12d, AB-SUB-B04-5TH-1020 FF+6d | 60d | 97d | DA | HO |
| AB-APP-B04-5TH-1030 |  | Approval for Stairs Conc. Dim. & RFT DWGs As-Built Drawing (B04) (5th) | 12d | 2027-01-06 | 2027-01-20 | AB-SUB-B04-5TH-1030 SS+12d, AB-SUB-B04-5TH-1030 FF+6d | 60d | 97d | DA | HO |

| ID | WBS | Activity | Duration | Start | Finish | Predecessors | Total float | Free float | Calendar | Resources | Work Type | BOQ Division |
| --- | --- | --- | --- | --- | --- | --- | --- | --- | --- | --- | --- | --- |
|  | 6thF | **6th Floor** |  | 2027-01-23 | 2027-02-20 |  |  |  |  |  |  |  |
| AB-APP-B04-6TH-1000 |  | Approval for Col. & Walls Conc. Dim. & RFT DWGs As-Built Drawing (B04) (6th) | 12d | 2027-01-23 | 2027-02-06 | AB-SUB-B04-6TH-1000 SS+12d, AB-SUB-B04-6TH-1000 FF+6d | 47d | 84d |  |  | DA | HO |
| AB-APP-B04-6TH-1030 |  | Approval for Stairs Conc. Dim. & RFT DWGs As-Built Drawing (B04) (6th) | 12d | 2027-02-02 | 2027-02-15 | AB-SUB-B04-6TH-1030 SS+6d, AB-SUB-B04-6TH-1030 FF+2d | 39d | 76d |  |  | DA | HO |
| AB-APP-B04-6TH-1010 |  | Approval for Slabs Conc. Dim. & RFT DWGs As-Built Drawing (B04) (6th) | 12d | 2027-02-07 | 2027-02-20 | AB-SUB-B04-6TH-1010 SS+12d, AB-SUB-B04-6TH-1010 FF+6d | 35d | 72d |  |  | DA | HO |
| AB-APP-B04-6TH-1020 |  | Approval for Beams Conc. Dim. & RFT DWGs As-Built Drawing (B04) (6th) | 12d | 2027-02-07 | 2027-02-20 | AB-SUB-B04-6TH-1020 SS+12d, AB-SUB-B04-6TH-1020 FF+6d | 35d | 72d |  |  | DA | HO |
|  | 7thF | **7th Floor** |  | 2027-02-22 | 2027-03-23 |  |  |  |  |  |  |  |
| AB-APP-B04-7TH-1000 |  | Approval for Col. & Walls Conc. Dim. & RFT DWGs As-Built Drawing (B04) (7th) | 12d | 2027-02-22 | 2027-03-07 | AB-SUB-B04-7TH-1000 SS+12d, AB-SUB-B04-7TH-1000 FF+6d | 22d | 59d |  |  | DA | HO |
| AB-APP-B04-7TH-1010 |  | Approval for Slabs Conc. Dim. & RFT DWGs As-Built Drawing (B04) (7th) | 12d | 2027-03-07 | 2027-03-23 | AB-SUB-B04-7TH-1010 SS+12d, AB-SUB-B04-7TH-1010 FF+6d | 11d | 48d |  |  | DA | HO |
| AB-APP-B04-7TH-1020 |  | Approval for Beams Conc. Dim. & RFT DWGs As-Built Drawing (B04) (7th) | 12d | 2027-03-07 | 2027-03-23 | AB-SUB-B04-7TH-1020 SS+12d, AB-SUB-B04-7TH-1020 FF+6d | 11d | 48d |  |  | DA | HO |
| AB-APP-B04-7TH-1030 |  | Approval for Stairs Conc. Dim. & RFT DWGs As-Built Drawing (B04) (7th) | 12d | 2027-03-07 | 2027-03-23 | AB-SUB-B04-7TH-1030 SS+12d, AB-SUB-B04-7TH-1030 FF+6d | 11d | 48d |  |  | DA | HO |
|  | 8thF | **8th Floor** |  | 2027-03-27 | 2027-04-19 |  |  |  |  |  |  |  |
| AB-APP-B04-8TH-1000 |  | Approval for Col. & Walls Conc. Dim. & RFT DWGs As-Built Drawing (B04) (8th) | 12d | 2027-03-27 | 2027-04-08 | AB-SUB-B04-8TH-1000 SS+12d, AB-SUB-B04-8TH-1000 FF+6d | -3d | 34d |  |  | DA | HO |
| AB-APP-B04-8TH-1010 |  | Approval for Slabs Conc. Dim. & RFT DWGs As-Built Drawing (B04) (8th) | 12d | 2027-04-06 | 2027-04-19 | AB-SUB-B04-8TH-1010 SS+12d, AB-SUB-B04-8TH-1010 FF+6d | -12d | 25d |  |  | DA | HO |
| AB-APP-B04-8TH-1020 |  | Approval for Beams Conc. Dim. & RFT DWGs As-Built Drawing (B04) (8th) | 12d | 2027-04-06 | 2027-04-19 | AB-SUB-B04-8TH-1020 SS+12d, AB-SUB-B04-8TH-1020 FF+6d | -12d | 25d |  |  | DA | HO |
| AB-APP-B04-8TH-1030 |  | Approval for Stairs Conc. Dim. & RFT DWGs As-Built Drawing (B04) (8th) | 12d | 2027-04-06 | 2027-04-19 | AB-SUB-B04-8TH-1030 SS+12d, AB-SUB-B04-8TH-1030 FF+6d | -12d | 25d |  |  | DA | HO |
|  | RF | **Roof Floor** |  | 2027-04-14 | 2027-05-03 |  |  |  |  |  |  |  |
| AB-APP-B04-RF-1000 |  | Approval for Col. & Walls Conc. Dim. & RFT DWGs As-Built Drawing (B04) (RF) | 12d | 2027-04-14 | 2027-04-27 | AB-SUB-B04-RF-1000 SS+12d, AB-SUB-B04-RF-1000 FF+6d | -19d | 18d |  |  | DA | HO |
| AB-APP-B04-RF-1010 |  | Approval for Slabs Conc. Dim. & RFT DWGs As-Built Drawing (B04) (RF) | 12d | 2027-04-20 | 2027-05-03 | AB-SUB-B04-RF-1010 SS+12d, AB-SUB-B04-RF-1010 FF+6d | -24d | 13d |  |  | DA | HO |
| AB-APP-B04-RF-1020 |  | Approval for Beams Conc. Dim. & RFT DWGs As-Built Drawing (B04) (RF) | 12d | 2027-04-20 | 2027-05-03 | AB-SUB-B04-RF-1020 SS+12d, AB-SUB-B04-RF-1020 FF+6d | -24d | 13d |  |  | DA | HO |
|  | 2 | **Handover Works** |  | 2027-03-24 | 2027-05-27 |  |  |  |  |  |  |  |
| HO-1020 |  | Snag list for B02 | 10d | 2027-03-24 | 2027-04-04 | CON-B02-RF-1080, CON-B02-SOG-1060 | 3d | 44d |  |  |  | HO |
| HO-1030 |  | Snag list for B03 | 10d | 2027-04-11 | 2027-04-21 | CON-B03-RF-1080, CON-B03-SOG-1060 | -12d | 29d |  |  |  | HO |
| HO-1040 |  | Snag list for B04 | 10d | 2027-04-29 | 2027-05-10 | CON-B04-RF-1080 FS+14d, CON-B04-SOG-1060 | -28d | 13d |  |  |  | HO |
| HO-1010 |  | Snag list for B01 | 10d | 2027-05-15 | 2027-05-25 | CON-B01-9TH-1080 FS+14d, CON-B01-SOG-1060 | -41d | 0d |  |  |  | HO |
| HO-1050 |  | Snag list for As-Built | 2d | 2027-05-19 | 2027-05-20 | AB-APP-B01-FOOT-1000, AB-APP-B01-FOOT-1020, AB-APP-B01-FOOT-1030, AB-APP-B02-FOOT-1000, AB-APP-B02-FOOT-1010, AB-APP-B02-FOOT-1020, AB-APP-B02-BAS2-1000, AB-APP-B02-BAS2-1020, AB-APP-B02-BAS2-1030, AB-APP-B02-BAS2-1010, AB-APP-B01-BAS2-1000, AB-APP-B01-BAS2-1030, AB-APP-B01-BAS2-1040, AB-APP-B01-BAS2-1010, AB-APP-B01-BAS2-1020, AB-APP-B02-BAS1-1000, AB-APP-B02-BAS1-1020, AB-APP-B02-BAS1-1030, AB-APP-B02-BAS1-1010, AB-APP-B01-BAS1-1000, AB-APP-B01-BAS1-1020, AB-APP-B01-BAS1-1030, AB-APP-B01-BAS1-1010, AB-APP-B01-BAS1-1040, AB-APP-B02-GR-1000, AB-APP-B02-GR-1020, AB-APP-B02-GR-1030, AB-APP-B02-GR-1010, AB-APP-B01-GR-1000, AB-APP-B01-GR-1020, AB-APP-B01-GR-1030, AB-APP-B01-GR-1010, AB-APP-B02-1ST-1000, AB-APP-B02-1ST-1010, AB-APP-B02-1ST-1020, AB-APP-B02-1ST-1030, AB-APP-B02-2ND-1000, AB-APP-B02-2ND-1010, AB-APP-B02-2ND-1020, AB-APP-B02-2ND-1030, AB-APP-B02-3RD-1000, AB-APP-B02-3RD-1010, AB-APP-B02-3RD-1020, AB-APP-B02-3RD-1030, AB-APP-B02-4TH-1000, AB-APP-B02-4TH-1010, AB-APP-B02-4TH-1020, AB-APP-B02-4TH-1030, AB-APP-B01-1ST-1000, AB-APP-B01-1ST-1010, AB-APP-B01-1ST-1020, AB-APP-B01-1ST-1030, AB-APP-B01-2ND-1000, AB-APP-B01-2ND-1010, AB-APP-B01-2ND-1020, AB-APP-B01-2ND-1030, AB-APP-B01-3RD-1000, AB-APP-B01-3RD-1010, AB-APP-B01-3RD-1020, AB-APP-B01-3RD-1030, AB-APP-B01-4TH-1000, AB-APP-B01-4TH-1010, AB-APP-B01-4TH-1020, AB-APP-B01-4TH-1030, AB-APP-B01-5TH-1000, AB-APP-B01-5TH-1010, AB-APP-B01-5TH-1020, AB-APP-B01-5TH-1030, AB-APP-B01-6TH-1000, AB-APP-B01-6TH-1010, AB-APP-B01-6TH-1020, AB-APP-B01-6TH-1030, AB-APP-B01-7TH-1000, AB-APP-B01-7TH-1010, AB-APP-B01-7TH-1020, AB-APP-B01-7TH-1030, AB-APP-B01-8TH-1000, AB-APP-B01-8TH-1010, AB-APP-B01-8TH-1020, AB-APP-B01-8TH-1030, AB-APP-B02-RF-1000, AB-APP-B02-RF-1010, AB-APP-B02-RF-1020, AB-APP-B01-RF-1000, AB-APP-B01-RF-1010, AB-APP-B01-RF-1020, AB-APP-B03-FOOT-1000, AB-APP-B03-FOOT-1010, AB-APP-B03-FOOT-1020, AB-APP-B04-FOOT-1000, AB-APP-B04-FOOT-1010, AB-APP-B04-FOOT-1020, AB-APP-B03-BAS2-1000, AB-APP-B03-BAS2-1020, AB-APP-B03-BAS2-1030, AB-APP-B03-BAS2-1010, AB-APP-B04-BAS2-1000, AB-APP-B04-BAS2-1030, AB-APP-B04-BAS2-1040, AB-APP-B04-BAS2-1010, AB-APP-B04-BAS2-1020, AB-APP-B03-BAS1-1000, AB-APP-B03-BAS1-1020, AB-APP-B03-BAS1-1030, AB-APP-B03-BAS1-1010, AB-APP-B04-BAS1-1000, AB-APP-B04-BAS1-1030, AB-APP-B04-BAS1-1040, AB-APP-B04-BAS1-1010, AB-APP-B04-BAS1-1020, AB-APP-B04-GR-1000, AB-APP-B04-GR-1010, AB-APP-B04-GR-1020, AB-APP-B04-GR-1030, AB-APP-B03-GR-1000, AB-APP-B03-GR-1010, AB-APP-B03-GR-1020, AB-APP-B03-GR-1030, AB-APP-B04-1ST-1000, AB-APP-B04-1ST-1010, AB-APP-B04-1ST-1020, AB-APP-B04-1ST-1030, AB-APP-B04-2ND-1000, AB-APP-B04-2ND-1010, AB-APP-B04-2ND-1020, AB-APP-B04-2ND-1030, AB-APP-B04-3TH-1000, AB-APP-B04-3TH-1010, AB-APP-B04-3TH-1020, AB-APP-B04-3TH-1030, AB-APP-B04-4TH-1000, AB-APP-B04-4TH-1010, AB-APP-B04-4TH-1020, AB-APP-B04-4TH-1030, AB-APP-B04-5TH-1000, AB-APP-B04-5TH-1010, AB-APP-B04-5TH-1020, AB-APP-B04-5TH-1030, AB-APP-B04-6TH-1000, AB-APP-B04-6TH-1010, AB-APP-B04-6TH-1020, AB-APP-B04-6TH-1030, AB-APP-B04-7TH-1000, AB-APP-B04-7TH-1010, AB-APP-B04-7TH-1020, AB-APP-B04-7TH-1030, AB-APP-B04-8TH-1000, AB-APP-B04-8TH-1010, AB-APP-B04-8TH-1020, AB-APP-B04-8TH-1030, AB-APP-B03-1ST-1000, AB-APP-B03-1ST-1010, AB-APP-B03-1ST-1020, AB-APP-B03-1ST-1030, AB-APP-B03-2ND-1000, AB-APP-B03-2ND-1010, AB-APP-B03-2ND-1020, AB-APP-B03-2ND-1030, AB-APP-B03-3RD-1000, AB-APP-B03-3RD-1010, AB-APP-B03-3RD-1020, AB-APP-B03-3RD-1030, AB-APP-B03-4TH-1000, AB-APP-B03-4TH-1010, AB-APP-B03-4TH-1020, AB-APP-B03-4TH-1030, AB-APP-B04-RF-1000, AB-APP-B04-RF-1010, AB-APP-B04-RF-1020, AB-APP-B03-RF-1000, AB-APP-B03-RF-1010, AB-APP-B03-RF-1020, AB-APP-B01-SOG-1000, AB-APP-B01-SOG-1010, AB-APP-B02-SOG-1000, AB-APP-B02-SOG-1010, AB-APP-B03-SOG-1000, AB-APP-B03-SOG-1010, AB-APP-B04-SOG-1000, AB-APP-B04-SOG-1010, AB-APP-B04-WT-1000, AB-APP-B04-WT-1010, AB-APP-B04-WT-1030, AB-APP-B04-WT-1040, AB-APP-B04-WT-1020, AB-APP-B01-REP-1000, AB-APP-B02-REP-1000, AB-APP-B03-REP-1000, AB-APP-B04-REP-1000, AB-APP-B03-FOOT-1030, AB-APP-B04-FOOT-1030, AB-APP-B01-FOOT-1010, AB-APP-B02-FOOT-1030 | -43d | 5d | Roya-The Big Project Phase 01 (B1-4)7 days |  |  | HO |
| HO-1000 |  | Demobilization | 2d | 2027-05-26 | 2027-05-27 | HO-1030, HO-1020, HO-1010, HO-1040, HO-1050 | -41d | 0d |  | Labor [40 h] | TC | HO |

## Activity codes

| Code | Value | Meaning |
| --- | --- | --- |
| Activities | BFW | BackFilling Works |
| Activities | DCW | Deshuttering for C&W below SOG |
| Activities | DPC | DeShuttering for PC |
| Activities | DS | Deshuttering for Slabs&Beams&Stairs |
| Activities | DSF | Deshuttering for Foundation |
| Activities | DSOG | Deshuttering for Slabs on grade |
| Activities | DT | Deshuttering for Tank |
| Activities | EW | Excavation Works |
| Activities | PC | Pouring for Columns & Shear Wall |
| Activities | PCW | Pouring for C&W below SOG |
| Activities | PF | Pouring for Foundation |
| Activities | PPC | Pouring for PC |
| Activities | PS | Pouring for Slabs&Beams&Stairs |
| Activities | PSOG | Pouring for Slabs on grade |
| Activities | PT | Pouring for Tank |
| Activities | RW | Replacement Works |
| Activities | SC | Shuttering for Columns & Shear Wall |
| Activities | SCW | Shuttering for C&W below SOG |
| Activities | SF | Shuttering for Foundation |
| Activities | SFC | SteelFixing for Columns & Shear Wall |
| Activities | SFCW | SteelFixing for C&W below SOG |
| Activities | SFF | SteelFixing for Foundation |
| Activities | SFS | SteelFixing for Slabs&Beams&Stairs |
| Activities | SFSOG | SteelFixing for Slabs on grade |
| Activities | SFT | SteelFixing for Tank |
| Activities | SPC | Shuttering for PC |
| Activities | SS | Shuttering for Slabs&Beams&Stairs |
| Activities | SSOG | Shuttering for Slabs on grade |
| Activities | ST | Shuttering for Tank |
| Activities | WP | Water proofing |
| BOQ Division | Con | Concrete |
| BOQ Division | Del | Material Delievry |
| BOQ Division | EW | Construction-Earth work |
| BOQ Division | Eng-App | Engineering-Approval |
| BOQ Division | Eng-Sub | Engineering-Submittal |
| BOQ Division | HO | Handover |
| BOQ Division | MS | Milestones |
| BOQ Division | Mat.App | Material Approval |
| BOQ Division | Mat.Sub | Material Submittal |
| BOQ Division | T&M | Thermal and Moisture |
| Building Name | B01 | Building A |
| Building Name | B02 | Building B |
| Building Name | B03 | Building C |
| Building Name | B04 | Building D |
| Building Name | TNK | Tank |
| Buildings NO. | B01 | Building B01 |
| Buildings NO. | B02 | Building B02 |
| Buildings NO. | B03 | Building B03 |
| Buildings NO. | B04 | Building B04 |
| Floor Name | 1F | First Floor |
| Floor Name | 1stF | First Floor |
| Floor Name | 2F | Second Floor |
| Floor Name | 2ndF | Second Floor |
| Floor Name | 3F | Third Floor |
| Floor Name | 3rdF | Theird Floor |
| Floor Name | 4F | Fourth Floor |
| Floor Name | 4thF | Fourth Floor |
| Floor Name | 5F | Fifth Floor |
| Floor Name | 5thF | Fifth Floor |
| Floor Name | 6F | Six Floor |
| Floor Name | 6thF | Sixth Floor |
| Floor Name | 7F | Seventh Floor |
| Floor Name | 7thF | Seventh Floor |
| Floor Name | 8F | Eight Floor |
| Floor Name | 8thF | Eighth Floor |
| Floor Name | BSMNT01 | Basement01 |
| Floor Name | BSMNT02 | Basement02 |
| Floor Name | Bsmt01 | Basment01 |
| Floor Name | Bsmt02 | Basment02 |
| Floor Name | Foot | Footing |
| Floor Name | GF | Ground Floor |
| Floor Name | RF | Roof Floor |
| Floor Name | SL | Soil |
| Floor Name | TNK | Tank |
| Floor Name | UG | Under Ground |
| Site Cinstruction | BF | Backfilling |
| Site Cinstruction | BSOG | Belw SOG |
| Site Cinstruction | COL | Columns |
| Site Cinstruction | PC | Blinding Raft |
| Site Cinstruction | RC | Raft Foundation |
| Site Cinstruction | RMP | Ramps |
| Site Cinstruction | RPC | Replacment |
| Site Cinstruction | STR | Stairs |
| Site Cinstruction | Slb | Slabs |
| Site Cinstruction | TNK | Tanks |
| Site Cinstruction | WP | Water Proof |
| Work Type | CW | Construction Work |
| Work Type | DA | Drawings Approval |
| Work Type | DS | Drawings Submital |
| Work Type | MA | Material Approval |
| Work Type | MD | Material Delivery |
| Work Type | MI | Milestones |
| Work Type | MO | Mobilization |
| Work Type | MS | Matrial Submital |
| Work Type | PO | Purchase Order |
| Work Type | SW | Soil Works |
| Work Type | TC | Close out |
