project_id,Activity ID,Activity Name,WBS,Baseline Start,Baseline Finish,Start,Finish,Actual Start,Actual Finish,Remaining Duration,Total Float,Free Float,Critical,Longest Path,Predecessors,Successors,Remaining Units,Budgeted Units,Physical % Complete
The Big -P.01-UP-20-April-26,KD-MS-1000,Project Start Date,The Big - P.01 - UP-24-MAY-26.KD.MI,11-Sep-25,,11-Sep-25,,11-Sep-25,,0,0,0,No,Yes,,"KD-MS-1010, KD-MS-1020, P-MS-1020, P-MS-1010, P-MS-1030, P-MS-1040, P-MS-1050, P-MS-1000, KD-MOB-1000, KD-MOB-1010, KD-MOB-1020, P-MS-1060",0.0,0,1.0
The Big -P.01-UP-20-April-26,KD-MS-1050,Project Finish Date,The Big - P.01 - UP-24-MAY-26.KD.MI,,10-Apr-27,,02-Sep-27,,,0,-144,0,Yes,Yes,HO-1000,,0.0,0,0.0
The Big -P.01-UP-20-April-26,KD-MS-1040,Ground Works Finish Date,The Big - P.01 - UP-24-MAY-26.KD.MI,,11-May-26,,23-Sep-26,,,0,-134,0,Yes,No,"CON-B01-GR-1090, CON-B02-GR-1100, CON-B04-GR-1080, CON-B03-GR-1080",CON-B04-1ST-1000,0.0,0,0.0
The Big -P.01-UP-20-April-26,KD-MS-1010,Contract Agreement,The Big - P.01 - UP-24-MAY-26.KD.MI,11-Sep-25,,11-Sep-25,,11-Sep-25,,0,0,0,No,Yes,KD-MS-1000,"KD-MOB-1000, KD-MOB-1010, KD-MOB-1020, E-DR-1000",0.0,0,1.0
The Big -P.01-UP-20-April-26,KD-MS-1020,IFC Drawing Package,The Big - P.01 - UP-24-MAY-26.KD.MI,11-Sep-25,,11-Sep-25,,11-Sep-25,,0,0,0,No,Yes,KD-MS-1000,E-DR-1000,0.0,0,1.0
The Big -P.01-UP-20-April-26,KD-MOB-1000,Surveying Works,The Big - P.01 - UP-24-MAY-26.KD.MO,11-Sep-25,28-Sep-25,13-Sep-25,29-Sep-25,13-Sep-25,29-Sep-25,0,0,0,No,Yes,"KD-MS-1000, KD-MS-1010","CON-B04-WT-1000, KD-MOB-1010",0.0,0,1.0
The Big -P.01-UP-20-April-26,KD-MOB-1010,Equipment Mobilization,The Big - P.01 - UP-24-MAY-26.KD.MO,11-Sep-25,28-Sep-25,13-Sep-25,29-Sep-25,13-Sep-25,29-Sep-25,0,0,0,No,Yes,"KD-MS-1000, KD-MS-1010, KD-MOB-1000","CON-B04-WT-1000, KD-MOB-1020",0.0,0,1.0
The Big -P.01-UP-20-April-26,KD-MOB-1020,Site Preparation,The Big - P.01 - UP-24-MAY-26.KD.MO,11-Sep-25,28-Sep-25,13-Sep-25,29-Sep-25,13-Sep-25,29-Sep-25,0,0,0,No,Yes,"KD-MS-1000, KD-MS-1010, KD-MOB-1010","CON-EW-B01-1000, CON-B04-WT-1000",0.0,30,1.0
The Big -P.01-UP-20-April-26,E-DR-1000,Design Review,The Big - P.01 - UP-24-MAY-26.EN.1,11-Sep-25,09-Nov-25,11-Sep-25,09-Nov-25,11-Sep-25,09-Nov-25,0,0,0,No,Yes,"KD-MS-1020, KD-MS-1010","E-SUB-B01-BAS02-1000, E-SUB-B01-SOG-1000, E-SUB-B01-BAS01-1000, E-SUB-B01-BAS01-1010, E-SUB-B01-BAS01-1020, E-SUB-B01-BAS01-1030, E-SUB-B01-BAS01-1040, E-SUB-B01-GR-1000, E-SUB-B01-GR-1010, E-SUB-B01-GR-1020, E-SUB-B01-GR-1030, E-SUB-B01-1ST-1000, E-SUB-B01-1ST-1010, E-SUB-B01-1ST-1020, E-SUB-B01-1ST-1030, E-SUB-B01-2ND-1000, E-SUB-B01-2ND-1010, E-SUB-B01-2ND-1020, E-SUB-B01-2ND-1030, E-SUB-B01-3RD-1000, E-SUB-B01-3RD-1010, E-SUB-B01-3RD-1020, E-SUB-B01-3RD-1030, E-SUB-B01-4TH-1000, E-SUB-B01-4TH-1010, E-SUB-B01-4TH-1020, E-SUB-B01-4TH-1030, E-SUB-B01-5TH-1000, E-SUB-B01-5TH-1010, E-SUB-B01-5TH-1020, E-SUB-B01-5TH-1030, E-SUB-B01-6TH-1000, E-SUB-B01-6TH-1010, E-SUB-B01-6TH-1020, E-SUB-B01-6TH-1030, E-SUB-B01-7TH-1000, E-SUB-B01-7TH-1010, E-SUB-B01-7TH-1020, E-SUB-B01-7TH-1030, E-SUB-B01-8TH-1000, E-SUB-B01-8TH-1010, E-SUB-B01-8TH-1020, E-SUB-B01-8TH-1030, E-SUB-B01-RF-1000, E-SUB-B01-RF-1010, E-SUB-B01-RF-1020, E-SUB-B02-BAS02-1000, E-SUB-B02-BAS02-1010, E-SUB-B02-BAS02-1020, E-SUB-B02-BAS02-1030, E-SUB-B02-SOG-1000, E-SUB-B02-SOG-1010, E-SUB-B02-BAS01-1000, E-SUB-B02-BAS01-1010, E-SUB-B02-BAS01-1020, E-SUB-B02-BAS01-1030, E-SUB-B02-GR-1000, E-SUB-B02-GR-1010, E-SUB-B02-GR-1020, E-SUB-B02-GR-1030, E-SUB-B02-1ST-1000, E-SUB-B02-1ST-1010, E-SUB-B02-1ST-1020, E-SUB-B02-1ST-1030, E-SUB-B02-2ND-1000, E-SUB-B02-2ND-1010, E-SUB-B02-2ND-1020, E-SUB-B02-2ND-1030, E-SUB-B02-3RD-1000, E-SUB-B02-3RD-1010, E-SUB-B02-3RD-1020, E-SUB-B02-3RD-1030, E-SUB-B02-4TH-1000, E-SUB-B02-4TH-1010, E-SUB-B02-4TH-1020, E-SUB-B02-4TH-1030, E-SUB-B02-RF-1000, E-SUB-B02-RF-1010, E-SUB-B02-RF-1020, E-SUB-B03-BAS02-1000, E-SUB-B03-BAS02-1010, E-SUB-B03-BAS02-1020, E-SUB-B03-BAS02-1030, E-SUB-B03-SOG-1000, E-SUB-B03-SOG-1010, E-SUB-B03-BAS01-1000, E-SUB-B03-BAS01-1010, E-SUB-B03-BAS01-1020, E-SUB-B03-BAS01-1030, E-SUB-B03-GR-1000, E-SUB-B03-GR-1010, E-SUB-B03-GR-1020, E-SUB-B03-GR-1030, E-SUB-B03-1ST-1000, E-SUB-B03-1ST-1010, E-SUB-B03-1ST-1020, E-SUB-B03-1ST-1030, E-SUB-B03-2ND-1000, E-SUB-B03-2ND-1010, E-SUB-B03-2ND-1020, E-SUB-B03-2ND-1030, E-SUB-B03-3RD-1000, E-SUB-B03-3RD-1010, E-SUB-B03-3RD-1020, E-SUB-B03-3RD-1030, E-SUB-B03-4TH-1000, E-SUB-B03-4TH-1010, E-SUB-B03-4TH-1020, E-SUB-B03-4TH-1030, E-SUB-B03-RF-1000, E-SUB-B03-RF-1010, E-SUB-B03-RF-1020, E-SUB-B04-BAS02-1000, E-SUB-B04-BAS02-1010, E-SUB-B04-BAS02-1020, E-SUB-B04-BAS02-1030, E-SUB-B04-BAS02-1040, E-SUB-B04-SOG-1000, E-SUB-B04-SOG-1010, E-SUB-B04-BAS01-1000, E-SUB-B04-BAS01-1010, E-SUB-B04-BAS01-1020, E-SUB-B04-BAS01-1030, E-SUB-B04-BAS01-1040, E-SUB-B04-GR-1000, E-SUB-B04-GR-1010, E-SUB-B04-GR-1020, E-SUB-B04-GR-1030, E-SUB-B04-1ST-1000, E-SUB-B04-1ST-1010, E-SUB-B04-1ST-1020, E-SUB-B04-1ST-1030, E-SUB-B04-2ND-1000, E-SUB-B04-2ND-1010, E-SUB-B04-2ND-1020, E-SUB-B04-2ND-1030, E-SUB-B04-3RD-1000, E-SUB-B04-3RD-1010, E-SUB-B04-3RD-1020, E-SUB-B04-3RD-1030, E-SUB-B04-4TH-1000, E-SUB-B04-4TH-1010, E-SUB-B04-4TH-1020, E-SUB-B04-4TH-1030, E-SUB-B04-5TH-1000, E-SUB-B04-5TH-1020, E-SUB-B04-5TH-1030, E-SUB-B04-5TH-1010, E-SUB-B04-6TH-1000, E-SUB-B04-6TH-1010, E-SUB-B04-6TH-1020, E-SUB-B04-6TH-1030, E-SUB-B04-7TH-1000, E-SUB-B04-7TH-1010, E-SUB-B04-7TH-1020, E-SUB-B04-7TH-1030, E-SUB-B04-8TH-1000, E-SUB-B04-8TH-1010, E-SUB-B04-8TH-1020, E-SUB-B04-8TH-1030, E-SUB-B04-RF-1000, E-SUB-B04-RF-1010, E-SUB-B04-RF-1020, E-SUB-B01-FOOT-1000, E-SUB-B01-FOOT-1010, E-SUB-B01-FOOT-1020, E-SUB-B01-BAS02-1040, E-SUB-B01-BAS02-1030, E-SUB-B01-BAS02-1010, E-SUB-B01-BAS02-1020, E-SUB-B01-SOG-1010, E-SUB-B01-REP-1000, E-SUB-B01-FOOT-1030, E-SUB-B02-REP-1000, E-SUB-B02-FOOT-1000, E-SUB-B02-FOOT-1030, E-SUB-B02-FOOT-1010, E-SUB-B02-FOOT-1020, E-SUB-B03-REP-1000, E-SUB-B03-FOOT-1010, E-SUB-B03-FOOT-1000, E-SUB-B03-FOOT-1020, E-SUB-B03-FOOT-1030, E-SUB-B04-REP-1000, E-SUB-B04-FOOT-1000, E-SUB-B04-FOOT-1010, E-SUB-B04-FOOT-1020, E-SUB-B04-FOOT-1030, E-SUB-B04-WT-1000, E-SUB-B04-WT-1010, E-SUB-B04-WT-1020, E-SUB-B04-WT-1030, E-SUB-B04-WT-1040",0.0,0,1.0
The Big -P.01-UP-20-April-26,E-SUB-B01-REP-1000,Submittal for General Replacement Plan & Typical Sections for Replacement / Backfilling DWGs  (B01),The Big - P.01 - UP-24-MAY-26.EN.2.S.P02.B01.SUB.1,11-Sep-25,01-Oct-25,11-Sep-25,13-Nov-25,11-Sep-25,13-Nov-25,0,0,0,No,Yes,E-DR-1000,"E-APP-B01-REP-1000, E-APP-B01-REP-1000",0.0,0,1.0
The Big -P.01-UP-20-April-26,E-SUB-B01-FOOT-1000,Submittal for PC Raft Conc. Dim. DWGs (B01) (footing),The Big - P.01 - UP-24-MAY-26.EN.2.S.P02.B01.SUB.F,01-Oct-25,22-Oct-25,16-Sep-25,27-Oct-25,16-Sep-25,27-Oct-25,0,0,0,No,Yes,E-DR-1000,"E-APP-B01-FOOT-1000, E-APP-B01-FOOT-1000, E-SUB-B01-FOOT-1010",0.0,0,1.0
The Big -P.01-UP-20-April-26,E-SUB-B01-FOOT-1010,Submittal for RC Raft & Footings Conc. Dim. DWGs (B01) (footing),The Big - P.01 - UP-24-MAY-26.EN.2.S.P02.B01.SUB.F,05-Oct-25,26-Oct-25,05-Oct-25,27-Oct-25,05-Oct-25,27-Oct-25,0,0,0,No,Yes,"E-DR-1000, E-SUB-B01-FOOT-1000","E-APP-B01-FOOT-1010, E-APP-B01-FOOT-1010, E-SUB-B01-FOOT-1030",0.0,0,1.0
The Big -P.01-UP-20-April-26,E-SUB-B01-FOOT-1020,Submittal for RC Raft & Footings RFT DWGs (B01) (footing),The Big - P.01 - UP-24-MAY-26.EN.2.S.P02.B01.SUB.F,13-Oct-25,02-Nov-25,01-Oct-25,30-Oct-25,01-Oct-25,30-Oct-25,0,0,0,No,Yes,"E-DR-1000, E-SUB-B01-FOOT-1030","E-APP-B01-FOOT-1020, E-APP-B01-FOOT-1020",0.0,0,1.0
The Big -P.01-UP-20-April-26,E-SUB-B01-FOOT-1030,Submittal for  Waterproofing Layout Plan (B01),The Big - P.01 - UP-24-MAY-26.EN.2.S.P02.B01.SUB.F,09-Oct-25,29-Oct-25,01-Oct-25,11-Oct-25,01-Oct-25,11-Oct-25,0,0,0,No,Yes,"E-DR-1000, E-SUB-B01-FOOT-1010","E-APP-B01-FOOT-1030, E-APP-B01-FOOT-1030, E-SUB-B01-FOOT-1020",0.0,0,1.0
The Big -P.01-UP-20-April-26,E-SUB-B01-BAS02-1000,Submittal for Col. & Walls Conc. Dim.  & RFT DWGs (B01) (Bas 02),The Big - P.01 - UP-24-MAY-26.EN.2.S.P02.B01.SUB.2ndB,10-Nov-25,30-Nov-25,10-Nov-25,03-Feb-26,10-Nov-25,03-Feb-26,0,0,0,No,No,E-DR-1000,"E-APP-B01-BAS02-1000, E-APP-B01-BAS02-1000, E-SUB-B01-BAS02-1010",0.0,0,1.0
The Big -P.01-UP-20-April-26,E-SUB-B01-BAS02-1040,Submittal for Slabs Conc. Dim.  & RFT DWGs (B01) (Bas 02),The Big - P.01 - UP-24-MAY-26.EN.2.S.P02.B01.SUB.2ndB,24-Nov-25,14-Dec-25,30-Nov-25,22-Feb-26,30-Nov-25,22-Feb-26,0,0,0,No,No,"E-DR-1000, E-SUB-B01-BAS02-1030","E-APP-B01-BAS02-1040, E-APP-B01-BAS02-1040",0.0,0,1.0
The Big -P.01-UP-20-April-26,E-SUB-B01-BAS02-1030,Submittal for Beams Conc. Dim.  & RFT DWGs (B01) (Bas 02),The Big - P.01 - UP-24-MAY-26.EN.2.S.P02.B01.SUB.2ndB,20-Nov-25,10-Dec-25,20-Nov-25,16-Feb-26,20-Nov-25,16-Feb-26,0,0,0,No,No,"E-DR-1000, E-SUB-B01-BAS02-1020","E-APP-B01-BAS02-1030, E-APP-B01-BAS02-1030, E-SUB-B01-BAS02-1040",0.0,0,1.0
The Big -P.01-UP-20-April-26,E-SUB-B01-BAS02-1010,Submittal for Stairs Conc. Dim.  & RFT DWGs (B01) (Bas 02),The Big - P.01 - UP-24-MAY-26.EN.2.S.P02.B01.SUB.2ndB,13-Nov-25,03-Dec-25,13-Nov-25,03-Dec-25,13-Nov-25,03-Dec-25,0,0,0,No,No,"E-DR-1000, E-SUB-B01-BAS02-1000","E-APP-B01-BAS02-1010, E-APP-B01-BAS02-1010, E-SUB-B01-BAS02-1020",0.0,0,1.0
The Big -P.01-UP-20-April-26,E-SUB-B01-BAS02-1020,Submittal for Ramps Conc. Dim.  & RFT DWGs (B01) (Bas 02),The Big - P.01 - UP-24-MAY-26.EN.2.S.P02.B01.SUB.2ndB,17-Nov-25,07-Dec-25,17-Nov-25,07-Dec-25,17-Nov-25,07-Dec-25,0,0,0,No,No,"E-DR-1000, E-SUB-B01-BAS02-1010","E-APP-B01-BAS02-1020, E-APP-B01-BAS02-1020, E-SUB-B01-BAS02-1030",0.0,0,1.0
The Big -P.01-UP-20-April-26,E-SUB-B01-SOG-1000,Submittal for S.O.G Conc. Dim. DWGs (B01) (Sog),The Big - P.01 - UP-24-MAY-26.EN.2.S.P02.B01.SUB.2ndB.SOG,10-Mar-26,04-Apr-26,12-Feb-26,04-Mar-26,12-Feb-26,04-Mar-26,0,0,0,No,No,E-DR-1000,"E-APP-B01-SOG-1000, E-APP-B01-SOG-1000, E-SUB-B01-SOG-1010",0.0,0,1.0
The Big -P.01-UP-20-April-26,E-SUB-B01-SOG-1010,Submittal for S.O.G RFT DWGs (B01) (Sog),The Big - P.01 - UP-24-MAY-26.EN.2.S.P02.B01.SUB.2ndB.SOG,14-Mar-26,07-Apr-26,16-Feb-26,08-Mar-26,16-Feb-26,08-Mar-26,0,0,0,No,No,"E-DR-1000, E-SUB-B01-SOG-1000","E-APP-B01-SOG-1010, E-APP-B01-SOG-1010",0.0,0,1.0
The Big -P.01-UP-20-April-26,E-SUB-B01-BAS01-1000,Submittal for Col. & Walls Conc. Dim.  & RFT DWGs (B01) (Bas 01),The Big - P.01 - UP-24-MAY-26.EN.2.S.P02.B01.SUB.1stB,17-Nov-25,07-Dec-25,22-Oct-25,03-Feb-26,22-Oct-25,03-Feb-26,0,0,0,No,No,E-DR-1000,"E-APP-B01-BAS01-1000, E-APP-B01-BAS01-1000, E-SUB-B01-BAS01-1010",0.0,0,1.0
The Big -P.01-UP-20-April-26,E-SUB-B01-BAS01-1040,Submittal for Slabs Conc. Dim.  & RFT DWGs (B01) (Bas 01),The Big - P.01 - UP-24-MAY-26.EN.2.S.P02.B01.SUB.1stB,01-Dec-25,21-Dec-25,05-Nov-25,31-Mar-26,05-Nov-25,31-Mar-26,0,0,0,No,No,"E-DR-1000, E-SUB-B01-BAS01-1030","E-APP-B01-BAS01-1040, E-APP-B01-BAS01-1040",0.0,0,1.0
The Big -P.01-UP-20-April-26,E-SUB-B01-BAS01-1030,Submittal for Beams Conc. Dim.  & RFT DWGs (B01) (Bas 01),The Big - P.01 - UP-24-MAY-26.EN.2.S.P02.B01.SUB.1stB,27-Nov-25,17-Dec-25,02-Nov-25,10-Mar-26,02-Nov-25,10-Mar-26,0,0,0,No,No,"E-DR-1000, E-SUB-B01-BAS01-1020","E-APP-B01-BAS01-1030, E-APP-B01-BAS01-1030, E-SUB-B01-BAS01-1040",0.0,0,1.0
The Big -P.01-UP-20-April-26,E-SUB-B01-BAS01-1010,Submittal for Stairs Conc. Dim.  & RFT DWGs (B01) (Bas 01),The Big - P.01 - UP-24-MAY-26.EN.2.S.P02.B01.SUB.1stB,20-Nov-25,10-Dec-25,26-Oct-25,15-Nov-25,26-Oct-25,15-Nov-25,0,0,0,No,No,"E-DR-1000, E-SUB-B01-BAS01-1000","E-APP-B01-BAS01-1010, E-APP-B01-BAS01-1010, E-SUB-B01-BAS01-1020",0.0,0,1.0
The Big -P.01-UP-20-April-26,E-SUB-B01-BAS01-1020,Submittal for Ramps Conc. Dim.  & RFT DWGs (B01) (Bas 01),The Big - P.01 - UP-24-MAY-26.EN.2.S.P02.B01.SUB.1stB,24-Nov-25,14-Dec-25,29-Oct-25,18-Nov-25,29-Oct-25,18-Nov-25,0,0,0,No,No,"E-DR-1000, E-SUB-B01-BAS01-1010","E-APP-B01-BAS01-1020, E-APP-B01-BAS01-1020, E-SUB-B01-BAS01-1030",0.0,0,1.0
The Big -P.01-UP-20-April-26,E-SUB-B01-GR-1000,Submittal for Col. & Walls Conc. Dim.  & RFT DWGs (B01),The Big - P.01 - UP-24-MAY-26.EN.2.S.P02.B01.SUP.GF,20-Nov-25,10-Dec-25,26-Oct-25,15-Nov-25,26-Oct-25,15-Nov-25,0,0,0,No,No,E-DR-1000,"E-APP-B01-GR-1000, E-APP-B01-GR-1000, E-SUB-B01-GR-1010",0.0,0,1.0
The Big -P.01-UP-20-April-26,E-SUB-B01-GR-1030,Submittal for Slabs Conc. Dim.  & RFT DWGs (B01),The Big - P.01 - UP-24-MAY-26.EN.2.S.P02.B01.SUP.GF,01-Dec-25,21-Dec-25,20-May-26,14-Jun-26,,,18,-60,0,Yes,No,"E-DR-1000, E-SUB-B01-GR-1020","E-APP-B01-GR-1030, E-APP-B01-GR-1030",0.0,0,0.0
The Big -P.01-UP-20-April-26,E-SUB-B01-GR-1020,Submittal for Beams Conc. Dim.  & RFT DWGs (B01),The Big - P.01 - UP-24-MAY-26.EN.2.S.P02.B01.SUP.GF,27-Nov-25,17-Dec-25,17-May-26,10-Jun-26,,,18,-60,0,Yes,No,"E-DR-1000, E-SUB-B01-GR-1010","E-APP-B01-GR-1020, E-APP-B01-GR-1020, E-SUB-B01-GR-1030",0.0,0,0.0
The Big -P.01-UP-20-April-26,E-SUB-B01-GR-1010,Submittal for Stairs Conc. Dim.  & RFT DWGs (B01),The Big - P.01 - UP-24-MAY-26.EN.2.S.P02.B01.SUP.GF,24-Nov-25,14-Dec-25,23-Mar-26,12-Apr-26,23-Mar-26,12-Apr-26,0,0,0,No,No,"E-DR-1000, E-SUB-B01-GR-1000","E-APP-B01-GR-1010, E-APP-B01-GR-1010, E-SUB-B01-GR-1020",0.0,0,1.0
The Big -P.01-UP-20-April-26,E-SUB-B01-1ST-1000,Submittal for Col. & Walls Conc. Dim.  & RFT DWGs (B01) (1st),The Big - P.01 - UP-24-MAY-26.EN.2.S.P02.B01.SUP.1stF,10-Dec-25,30-Dec-25,01-Feb-26,03-Feb-26,01-Feb-26,03-Feb-26,0,0,0,No,No,E-DR-1000,"E-APP-B01-1ST-1000, E-APP-B01-1ST-1000, E-SUB-B01-1ST-1010",0.0,0,1.0
The Big -P.01-UP-20-April-26,E-SUB-B01-1ST-1030,Submittal for Slabs Conc. Dim.  & RFT DWGs (B01) (1st),The Big - P.01 - UP-24-MAY-26.EN.2.S.P02.B01.SUP.1stF,20-Dec-25,10-Jan-26,19-May-26,13-Jun-26,,,18,-30,0,Yes,No,"E-DR-1000, E-SUB-B01-1ST-1020","E-APP-B01-1ST-1030, E-APP-B01-1ST-1030",0.0,0,0.0
The Big -P.01-UP-20-April-26,E-SUB-B01-1ST-1020,Submittal for Beams Conc. Dim.  & RFT DWGs (B01) (1st),The Big - P.01 - UP-24-MAY-26.EN.2.S.P02.B01.SUP.1stF,17-Dec-25,06-Jan-26,17-May-26,10-Jun-26,,,18,-30,0,Yes,No,"E-DR-1000, E-SUB-B01-1ST-1010","E-APP-B01-1ST-1020, E-APP-B01-1ST-1020, E-SUB-B01-1ST-1030",0.0,0,0.0
The Big -P.01-UP-20-April-26,E-SUB-B01-1ST-1010,Submittal for Stairs Conc. Dim.  & RFT DWGs (B01) (1st),The Big - P.01 - UP-24-MAY-26.EN.2.S.P02.B01.SUP.1stF,14-Dec-25,03-Jan-26,26-Oct-25,15-Nov-25,26-Oct-25,15-Nov-25,0,0,0,No,No,"E-DR-1000, E-SUB-B01-1ST-1000","E-APP-B01-1ST-1010, E-APP-B01-1ST-1010, E-SUB-B01-1ST-1020",0.0,0,1.0
The Big -P.01-UP-20-April-26,E-SUB-B01-2ND-1000,Submittal for Col. & Walls Conc. Dim.  & RFT DWGs (B01) (2nd),The Big - P.01 - UP-24-MAY-26.EN.2.S.P02.B01.SUP.2ndF,20-Dec-25,10-Jan-26,01-Feb-26,03-Mar-26,01-Feb-26,03-Mar-26,0,0,0,No,No,E-DR-1000,"E-APP-B01-2ND-1000, E-APP-B01-2ND-1000, E-SUB-B01-2ND-1010",0.0,0,1.0
The Big -P.01-UP-20-April-26,E-SUB-B01-2ND-1030,Submittal for Slabs Conc. Dim.  & RFT DWGs (B01) (2nd),The Big - P.01 - UP-24-MAY-26.EN.2.S.P02.B01.SUP.2ndF,30-Dec-25,20-Jan-26,20-May-26,14-Jun-26,,,18,3,0,No,No,"E-DR-1000, E-SUB-B01-2ND-1020","E-APP-B01-2ND-1030, E-APP-B01-2ND-1030",0.0,0,0.0
The Big -P.01-UP-20-April-26,E-SUB-B01-2ND-1020,Submittal for Beams Conc. Dim.  & RFT DWGs (B01) (2nd),The Big - P.01 - UP-24-MAY-26.EN.2.S.P02.B01.SUP.2ndF,27-Dec-25,17-Jan-26,17-May-26,10-Jun-26,,,18,3,0,No,No,"E-DR-1000, E-SUB-B01-2ND-1010","E-APP-B01-2ND-1020, E-APP-B01-2ND-1020, E-SUB-B01-2ND-1030",0.0,0,0.0
The Big -P.01-UP-20-April-26,E-SUB-B01-2ND-1010,Submittal for Stairs Conc. Dim.  & RFT DWGs (B01) (2nd),The Big - P.01 - UP-24-MAY-26.EN.2.S.P02.B01.SUP.2ndF,23-Dec-25,13-Jan-26,01-Nov-25,15-Nov-25,01-Nov-25,15-Nov-25,0,0,0,No,No,"E-DR-1000, E-SUB-B01-2ND-1000","E-APP-B01-2ND-1010, E-APP-B01-2ND-1010, E-SUB-B01-2ND-1020",0.0,0,1.0
The Big -P.01-UP-20-April-26,E-SUB-B01-3RD-1000,Submittal for Col. & Walls Conc. Dim.  & RFT DWGs (B01) (3rd),The Big - P.01 - UP-24-MAY-26.EN.2.S.P02.B01.SUP.3rdF,30-Dec-25,20-Jan-26,01-Feb-26,03-Mar-26,01-Feb-26,03-Mar-26,0,0,0,No,No,E-DR-1000,"E-APP-B01-3ED-1000, E-APP-B01-3ED-1000, E-SUB-B01-3RD-1010",0.0,0,1.0
The Big -P.01-UP-20-April-26,E-SUB-B01-3RD-1030,Submittal for Slabs Conc. Dim.  & RFT DWGs (B01) (3rd),The Big - P.01 - UP-24-MAY-26.EN.2.S.P02.B01.SUP.3rdF,11-Jan-26,01-Feb-26,20-May-26,14-Jun-26,,,18,22,0,No,No,"E-DR-1000, E-SUB-B01-3RD-1020","E-APP-B01-3ED-1030, E-APP-B01-3ED-1030",0.0,0,0.0
The Big -P.01-UP-20-April-26,E-SUB-B01-3RD-1020,Submittal for Beams Conc. Dim.  & RFT DWGs (B01) (3rd),The Big - P.01 - UP-24-MAY-26.EN.2.S.P02.B01.SUP.3rdF,06-Jan-26,28-Jan-26,17-May-26,10-Jun-26,,,18,22,0,No,No,"E-DR-1000, E-SUB-B01-3RD-1010","E-APP-B01-3ED-1020, E-APP-B01-3ED-1020, E-SUB-B01-3RD-1030",0.0,0,0.0
The Big -P.01-UP-20-April-26,E-SUB-B01-3RD-1010,Submittal for Stairs Conc. Dim.  & RFT DWGs (B01) (3rd),The Big - P.01 - UP-24-MAY-26.EN.2.S.P02.B01.SUP.3rdF,03-Jan-26,24-Jan-26,01-Nov-25,15-Nov-25,01-Nov-25,15-Nov-25,0,0,0,No,No,"E-DR-1000, E-SUB-B01-3RD-1000","E-APP-B01-3ED-1010, E-APP-B01-3ED-1010, E-SUB-B01-3RD-1020",0.0,0,1.0
The Big -P.01-UP-20-April-26,E-SUB-B01-4TH-1000,Submittal for Col. & Walls Conc. Dim.  & RFT DWGs (B01) (4th),The Big - P.01 - UP-24-MAY-26.EN.2.S.P02.B01.SUP.4thF,14-Jan-26,04-Feb-26,01-Feb-26,03-Feb-26,01-Feb-26,03-Feb-26,0,0,0,No,No,E-DR-1000,"E-APP-B01-4TH-1000, E-APP-B01-4TH-1000, E-SUB-B01-4TH-1010",0.0,0,1.0
The Big -P.01-UP-20-April-26,E-SUB-B01-4TH-1030,Submittal for Slabs Conc. Dim.  & RFT DWGs (B01) (4th),The Big - P.01 - UP-24-MAY-26.EN.2.S.P02.B01.SUP.4thF,26-Jan-26,15-Feb-26,20-May-26,14-Jun-26,,,18,55,0,No,No,"E-DR-1000, E-SUB-B01-4TH-1020","E-APP-B01-4TH-1030, E-APP-B01-4TH-1030",0.0,0,0.0
The Big -P.01-UP-20-April-26,E-SUB-B01-4TH-1020,Submittal for Beams Conc. Dim.  & RFT DWGs (B01) (4th),The Big - P.01 - UP-24-MAY-26.EN.2.S.P02.B01.SUP.4thF,21-Jan-26,11-Feb-26,17-May-26,10-Jun-26,,,18,55,0,No,No,"E-DR-1000, E-SUB-B01-4TH-1010","E-APP-B01-4TH-1020, E-APP-B01-4TH-1020, E-SUB-B01-4TH-1030",0.0,0,0.0
The Big -P.01-UP-20-April-26,E-SUB-B01-4TH-1010,Submittal for Stairs Conc. Dim.  & RFT DWGs (B01) (4th),The Big - P.01 - UP-24-MAY-26.EN.2.S.P02.B01.SUP.4thF,18-Jan-26,08-Feb-26,01-Nov-25,15-Nov-25,01-Nov-25,15-Nov-25,0,0,0,No,No,"E-DR-1000, E-SUB-B01-4TH-1000","E-APP-B01-4TH-1010, E-APP-B01-4TH-1010, E-SUB-B01-4TH-1020",0.0,0,1.0
The Big -P.01-UP-20-April-26,E-SUB-B01-5TH-1000,Submittal for Col. & Walls Conc. Dim.  & RFT DWGs (B01) (5th),The Big - P.01 - UP-24-MAY-26.EN.2.S.P02.B01.SUP.5thF,24-Jan-26,14-Feb-26,01-Feb-26,03-Feb-26,01-Feb-26,03-Feb-26,0,0,0,No,No,E-DR-1000,"E-APP-B01-5TH-1000, E-APP-B01-5TH-1000, E-SUB-B01-5TH-1010",0.0,0,1.0
The Big -P.01-UP-20-April-26,E-SUB-B01-5TH-1030,Submittal for Slabs Conc. Dim.  & RFT DWGs (B01) (5th),The Big - P.01 - UP-24-MAY-26.EN.2.S.P02.B01.SUP.5thF,04-Feb-26,24-Feb-26,20-May-26,14-Jun-26,,,18,101,0,No,No,"E-DR-1000, E-SUB-B01-5TH-1020","E-APP-B01-5TH-1030, E-APP-B01-5TH-1030",0.0,0,0.0
The Big -P.01-UP-20-April-26,E-SUB-B01-5TH-1020,Submittal for Beams Conc. Dim.  & RFT DWGs (B01) (5th),The Big - P.01 - UP-24-MAY-26.EN.2.S.P02.B01.SUP.5thF,01-Feb-26,21-Feb-26,17-May-26,10-Jun-26,,,18,101,0,No,No,"E-DR-1000, E-SUB-B01-5TH-1010","E-APP-B01-5TH-1020, E-APP-B01-5TH-1020, E-SUB-B01-5TH-1030",0.0,0,0.0
The Big -P.01-UP-20-April-26,E-SUB-B01-5TH-1010,Submittal for Stairs Conc. Dim.  & RFT DWGs (B01) (5th),The Big - P.01 - UP-24-MAY-26.EN.2.S.P02.B01.SUP.5thF,28-Jan-26,17-Feb-26,01-Nov-25,15-Nov-25,01-Nov-25,15-Nov-25,0,0,0,No,No,"E-DR-1000, E-SUB-B01-5TH-1000","E-APP-B01-5TH-1010, E-APP-B01-5TH-1010, E-SUB-B01-5TH-1020",0.0,0,1.0
The Big -P.01-UP-20-April-26,E-SUB-B01-6TH-1000,Submittal for Col. & Walls Conc. Dim.  & RFT DWGs (B01) (6th),The Big - P.01 - UP-24-MAY-26.EN.2.S.P02.B01.SUP.6thF,03-Feb-26,23-Feb-26,01-Feb-26,03-Feb-26,01-Feb-26,03-Feb-26,0,0,0,No,No,E-DR-1000,"E-APP-B01-6TH-1000, E-APP-B01-6TH-1000, E-SUB-B01-6TH-1010",0.0,0,1.0
The Big -P.01-UP-20-April-26,E-SUB-B01-6TH-1030,Submittal for Slabs Conc. Dim.  & RFT DWGs (B01) (6th),The Big - P.01 - UP-24-MAY-26.EN.2.S.P02.B01.SUP.6thF,14-Feb-26,05-Mar-26,20-May-26,14-Jun-26,,,18,131,0,No,No,"E-DR-1000, E-SUB-B01-6TH-1020","E-APP-B01-6TH-1030, E-APP-B01-6TH-1030",0.0,0,0.0
The Big -P.01-UP-20-April-26,E-SUB-B01-6TH-1020,Submittal for Beams Conc. Dim.  & RFT DWGs (B01) (6th),The Big - P.01 - UP-24-MAY-26.EN.2.S.P02.B01.SUP.6thF,10-Feb-26,02-Mar-26,17-May-26,10-Jun-26,,,18,131,0,No,No,"E-DR-1000, E-SUB-B01-6TH-1010","E-APP-B01-6TH-1020, E-APP-B01-6TH-1020, E-SUB-B01-6TH-1030",0.0,0,0.0
The Big -P.01-UP-20-April-26,E-SUB-B01-6TH-1010,Submittal for Stairs Conc. Dim.  & RFT DWGs (B01) (6th),The Big - P.01 - UP-24-MAY-26.EN.2.S.P02.B01.SUP.6thF,07-Feb-26,26-Feb-26,01-Nov-25,15-Nov-25,01-Nov-25,15-Nov-25,0,0,0,No,No,"E-DR-1000, E-SUB-B01-6TH-1000","E-APP-B01-6TH-1010, E-APP-B01-6TH-1010, E-SUB-B01-6TH-1020",0.0,0,1.0
The Big -P.01-UP-20-April-26,E-SUB-B01-7TH-1000,Submittal for Col. & Walls Conc. Dim.  & RFT DWGs (B01) (7th),The Big - P.01 - UP-24-MAY-26.EN.2.S.P02.B01.SUP.7thF,14-Feb-26,05-Mar-26,01-Feb-26,03-Feb-26,01-Feb-26,03-Feb-26,0,0,0,No,No,E-DR-1000,"E-APP-B01-7TH-1000, E-APP-B01-7TH-1000, E-SUB-B01-7TH-1010",0.0,0,1.0
The Big -P.01-UP-20-April-26,E-SUB-B01-7TH-1030,Submittal for Slabs Conc. Dim.  & RFT DWGs (B01) (7th),The Big - P.01 - UP-24-MAY-26.EN.2.S.P02.B01.SUP.7thF,24-Feb-26,21-Mar-26,20-May-26,14-Jun-26,,,18,159,0,No,No,"E-DR-1000, E-SUB-B01-7TH-1020","E-APP-B01-7TH-1030, E-APP-B01-7TH-1030",0.0,0,0.0
The Big -P.01-UP-20-April-26,E-SUB-B01-7TH-1020,Submittal for Beams Conc. Dim.  & RFT DWGs (B01) (7th),The Big - P.01 - UP-24-MAY-26.EN.2.S.P02.B01.SUP.7thF,21-Feb-26,12-Mar-26,17-May-26,10-Jun-26,,,18,159,0,No,No,"E-DR-1000, E-SUB-B01-7TH-1010","E-APP-B01-7TH-1020, E-APP-B01-7TH-1020, E-SUB-B01-7TH-1030",0.0,0,0.0
The Big -P.01-UP-20-April-26,E-SUB-B01-7TH-1010,Submittal for Stairs Conc. Dim.  & RFT DWGs (B01) (7th),The Big - P.01 - UP-24-MAY-26.EN.2.S.P02.B01.SUP.7thF,17-Feb-26,09-Mar-26,01-Nov-25,15-Nov-25,01-Nov-25,15-Nov-25,0,0,0,No,No,"E-DR-1000, E-SUB-B01-7TH-1000","E-APP-B01-7TH-1010, E-APP-B01-7TH-1010, E-SUB-B01-7TH-1020",0.0,0,1.0
The Big -P.01-UP-20-April-26,E-SUB-B01-8TH-1000,Submittal for Col. & Walls Conc. Dim.  & RFT DWGs (B01) (8th),The Big - P.01 - UP-24-MAY-26.EN.2.S.P02.B01.SUP.8thF,28-Feb-26,24-Mar-26,01-Feb-26,03-Feb-26,01-Feb-26,03-Feb-26,0,0,0,No,No,E-DR-1000,"E-APP-B01-8TH-1000, E-APP-B01-8TH-1000, E-SUB-B01-8TH-1010",0.0,0,1.0
The Big -P.01-UP-20-April-26,E-SUB-B01-8TH-1030,Submittal for Slabs Conc. Dim.  & RFT DWGs (B01) (8th),The Big - P.01 - UP-24-MAY-26.EN.2.S.P02.B01.SUP.8thF,10-Mar-26,04-Apr-26,20-May-26,14-Jun-26,,,18,185,0,No,No,"E-DR-1000, E-SUB-B01-8TH-1020","E-APP-B01-8TH-1030, E-APP-B01-8TH-1030",0.0,0,0.0
The Big -P.01-UP-20-April-26,E-SUB-B01-8TH-1020,Submittal for Beams Conc. Dim.  & RFT DWGs (B01) (8th),The Big - P.01 - UP-24-MAY-26.EN.2.S.P02.B01.SUP.8thF,07-Mar-26,31-Mar-26,17-May-26,10-Jun-26,,,18,185,0,No,No,"E-DR-1000, E-SUB-B01-8TH-1010","E-APP-B01-8TH-1020, E-APP-B01-8TH-1020, E-SUB-B01-8TH-1030",0.0,0,0.0
The Big -P.01-UP-20-April-26,E-SUB-B01-8TH-1010,Submittal for Stairs Conc. Dim.  & RFT DWGs (B01) (8th),The Big - P.01 - UP-24-MAY-26.EN.2.S.P02.B01.SUP.8thF,03-Mar-26,28-Mar-26,01-Nov-25,15-Nov-25,01-Nov-25,15-Nov-25,0,0,0,No,No,"E-DR-1000, E-SUB-B01-8TH-1000","E-APP-B01-8TH-1010, E-APP-B01-8TH-1010, E-SUB-B01-8TH-1020",0.0,0,1.0
The Big -P.01-UP-20-April-26,E-SUB-B01-RF-1000,Submittal for Col. & Walls Conc. Dim.  & RFT DWGs (B01) (RF),The Big - P.01 - UP-24-MAY-26.EN.2.S.P02.B01.SUP.RF,15-Mar-26,08-Apr-26,01-Feb-26,03-Apr-26,01-Feb-26,03-Apr-26,0,0,0,No,No,E-DR-1000,"E-APP-B01-RF-1000, E-APP-B01-RF-1000, E-SUB-B01-RF-1010",0.0,0,1.0
The Big -P.01-UP-20-April-26,E-SUB-B01-RF-1010,Submittal for Slabs Conc. Dim.  & RFT DWGs (B01) (RF),The Big - P.01 - UP-24-MAY-26.EN.2.S.P02.B01.SUP.RF,23-Mar-26,12-Apr-26,17-May-26,10-Jun-26,,,18,208,0,No,No,"E-DR-1000, E-SUB-B01-RF-1000","E-APP-B01-RF-1010, E-APP-B01-RF-1010",0.0,0,0.0
The Big -P.01-UP-20-April-26,E-SUB-B01-RF-1020,Submittal for Beams Conc. Dim.  & RFT DWGs (B01) (RF),The Big - P.01 - UP-24-MAY-26.EN.2.S.P02.B01.SUP.RF,26-Mar-26,16-Apr-26,01-Nov-25,15-Nov-25,01-Nov-25,15-Nov-25,0,0,0,No,No,E-DR-1000,"E-APP-B01-RF-1020, E-APP-B01-RF-1020",0.0,0,1.0
The Big -P.01-UP-20-April-26,E-SUB-B02-REP-1000,Submittal for General Replacement Plan & Typical Sections for Replacement / Backfilling DWGs (B02),The Big - P.01 - UP-24-MAY-26.EN.2.S.P02.B02.SUB.1,11-Sep-25,20-Sep-25,11-Sep-25,20-Sep-25,11-Sep-25,20-Sep-25,0,0,0,No,No,E-DR-1000,"E-APP-B02-REP-1000, E-APP-B02-REP-1000",0.0,0,1.0
The Big -P.01-UP-20-April-26,E-SUB-B02-FOOT-1000,Submittal for PC Raft Conc. Dim. DWGs (B02) (footing),The Big - P.01 - UP-24-MAY-26.EN.2.S.P02.B02.SUB.F,07-Oct-25,27-Oct-25,07-Oct-25,27-Oct-25,07-Oct-25,27-Oct-25,0,0,0,No,No,E-DR-1000,"E-APP-B02-FOOT-1000, E-APP-B02-FOOT-1000, E-SUB-B02-FOOT-1030",0.0,0,1.0
The Big -P.01-UP-20-April-26,E-SUB-B02-FOOT-1010,Submittal for RC Raft & Footings Conc. Dim. DWGs (B02) (footing),The Big - P.01 - UP-24-MAY-26.EN.2.S.P02.B02.SUB.F,11-Oct-25,30-Oct-25,11-Oct-25,30-Oct-25,11-Oct-25,30-Oct-25,0,0,0,No,No,"E-DR-1000, E-SUB-B02-FOOT-1030","E-APP-B02-FOOT-1010, E-APP-B02-FOOT-1010, E-SUB-B02-FOOT-1020",0.0,0,1.0
The Big -P.01-UP-20-April-26,E-SUB-B02-FOOT-1020,Submittal for RC Raft & Footings RFT DWGs (B02) (footing),The Big - P.01 - UP-24-MAY-26.EN.2.S.P02.B02.SUB.F,14-Oct-25,03-Nov-25,14-Oct-25,03-Nov-25,14-Oct-25,03-Nov-25,0,0,0,No,No,"E-DR-1000, E-SUB-B02-FOOT-1010","E-APP-B02-FOOT-1020, E-APP-B02-FOOT-1020",0.0,0,1.0
The Big -P.01-UP-20-April-26,E-SUB-B02-FOOT-1030,Submittal for  Waterproofing Layout Plan (B02),The Big - P.01 - UP-24-MAY-26.EN.2.S.P02.B02.SUB.F,08-Oct-25,28-Oct-25,08-Oct-25,28-Oct-25,08-Oct-25,28-Oct-25,0,0,0,No,No,"E-DR-1000, E-SUB-B02-FOOT-1000","E-APP-B02-FOOT-1030, E-APP-B02-FOOT-1030, E-SUB-B02-FOOT-1010",0.0,0,1.0
The Big -P.01-UP-20-April-26,E-SUB-B02-BAS02-1000,Submittal for Col. & Walls Conc. Dim.& RFT DWGs (B02) (Bas 02),The Big - P.01 - UP-24-MAY-26.EN.2.S.P02.B02.SUB.2ndB,10-Nov-25,30-Nov-25,15-Oct-25,05-Feb-26,15-Oct-25,05-Feb-26,0,0,0,No,No,E-DR-1000,"E-APP-B02-BAS02-1000, E-APP-B02-BAS02-1000, E-SUB-B02-BAS02-1010",0.0,0,1.0
The Big -P.01-UP-20-April-26,E-SUB-B02-BAS02-1030,Submittal for Slabs Conc. Dim.& RFT DWGs (B02) (Bas 02),The Big - P.01 - UP-24-MAY-26.EN.2.S.P02.B02.SUB.2ndB,20-Nov-25,10-Dec-25,26-Oct-25,22-Feb-26,26-Oct-25,22-Feb-26,0,0,0,No,No,"E-DR-1000, E-SUB-B02-BAS02-1020","E-APP-B02-BAS02-1030, E-APP-B02-BAS02-1030",0.0,0,1.0
The Big -P.01-UP-20-April-26,E-SUB-B02-BAS02-1020,Submittal for Beams Conc. Dim.& RFT DWGs (B02) (Bas 02),The Big - P.01 - UP-24-MAY-26.EN.2.S.P02.B02.SUB.2ndB,17-Nov-25,07-Dec-25,22-Oct-25,11-Nov-25,22-Oct-25,11-Nov-25,0,0,0,No,No,"E-DR-1000, E-SUB-B02-BAS02-1010","E-APP-B02-BAS02-1020, E-APP-B02-BAS02-1020, E-SUB-B02-BAS02-1030",0.0,0,1.0
The Big -P.01-UP-20-April-26,E-SUB-B02-BAS02-1010,Submittal for Stairs Conc. Dim.& RFT DWGs (B02) (Bas 02),The Big - P.01 - UP-24-MAY-26.EN.2.S.P02.B02.SUB.2ndB,13-Nov-25,03-Dec-25,19-Oct-25,08-Nov-25,19-Oct-25,08-Nov-25,0,0,0,No,No,"E-DR-1000, E-SUB-B02-BAS02-1000","E-APP-B02-BAS02-1010, E-APP-B02-BAS02-1010, E-SUB-B02-BAS02-1020",0.0,0,1.0
The Big -P.01-UP-20-April-26,E-SUB-B02-SOG-1000,Submittal for S.O.G Conc. Dim. DWGs (B02) (Sog),The Big - P.01 - UP-24-MAY-26.EN.2.S.P02.B02.SUB.2ndB.2,15-Mar-26,08-Apr-26,17-May-26,10-Jun-26,,,18,191,0,No,No,E-DR-1000,"E-APP-B02-SOG-1000, E-APP-B02-SOG-1000, E-SUB-B02-SOG-1010",0.0,0,0.0
The Big -P.01-UP-20-April-26,E-SUB-B02-SOG-1010,Submittal for S.O.G RFT DWGs (B02) (Sog),The Big - P.01 - UP-24-MAY-26.EN.2.S.P02.B02.SUB.2ndB.2,23-Mar-26,12-Apr-26,20-May-26,14-Jun-26,,,18,191,0,No,No,"E-DR-1000, E-SUB-B02-SOG-1000","E-APP-B02-SOG-1010, E-APP-B02-SOG-1010",0.0,0,0.0
The Big -P.01-UP-20-April-26,E-SUB-B02-BAS01-1000,Submittal for Col. & Walls Conc. Dim.  & RFT DWGs (B02) (Bas 01),The Big - P.01 - UP-24-MAY-26.EN.2.S.P02.B02.SUB.1stB,20-Nov-25,10-Dec-25,25-Oct-25,13-Nov-25,25-Oct-25,13-Nov-25,0,0,0,No,No,E-DR-1000,"E-APP-B02-BAS01-1000, E-APP-B02-BAS01-1000, E-SUB-B02-BAS01-1010",0.0,0,1.0
The Big -P.01-UP-20-April-26,E-SUB-B02-BAS01-1030,Submittal for Slabs Conc. Dim.  & RFT DWGs (B02) (Bas 01),The Big - P.01 - UP-24-MAY-26.EN.2.S.P02.B02.SUB.1stB,01-Dec-25,21-Dec-25,05-Nov-25,31-Mar-26,05-Nov-25,31-Mar-26,0,0,0,No,No,"E-DR-1000, E-SUB-B02-BAS01-1020","E-APP-B02-BAS01-1030, E-APP-B02-BAS01-1030",0.0,0,1.0
The Big -P.01-UP-20-April-26,E-SUB-B02-BAS01-1020,Submittal for Beams Conc. Dim.  & RFT DWGs (B02) (Bas 01),The Big - P.01 - UP-24-MAY-26.EN.2.S.P02.B02.SUB.1stB,27-Nov-25,17-Dec-25,02-Nov-25,23-Nov-25,02-Nov-25,23-Nov-25,0,0,0,No,No,"E-DR-1000, E-SUB-B02-BAS01-1010","E-APP-B02-BAS01-1020, E-APP-B02-BAS01-1020, E-SUB-B02-BAS01-1030",0.0,0,1.0
The Big -P.01-UP-20-April-26,E-SUB-B02-BAS01-1010,Submittal for Stairs Conc. Dim.  & RFT DWGs (B02) (Bas 01),The Big - P.01 - UP-24-MAY-26.EN.2.S.P02.B02.SUB.1stB,24-Nov-25,14-Dec-25,19-Oct-25,18-Nov-25,19-Oct-25,18-Nov-25,0,0,0,No,No,"E-DR-1000, E-SUB-B02-BAS01-1000","E-APP-B02-BAS01-1010, E-APP-B02-BAS01-1010, E-SUB-B02-BAS01-1020",0.0,0,1.0
The Big -P.01-UP-20-April-26,E-SUB-B02-GR-1000,Submittal for Col. & Walls Conc. Dim.  & RFT DWGs (B02) (GF),The Big - P.01 - UP-24-MAY-26.EN.2.S.P02.B02.SUP.GF,25-Nov-25,15-Dec-25,25-Oct-25,13-Nov-25,25-Oct-25,13-Nov-25,0,0,0,No,No,E-DR-1000,"E-APP-B02-GR-1000, E-APP-B02-GR-1000, E-SUB-B02-GR-1010",0.0,0,1.0
The Big -P.01-UP-20-April-26,E-SUB-B02-GR-1030,Submittal for Slabs Conc. Dim.  & RFT DWGs (B02) (GF),The Big - P.01 - UP-24-MAY-26.EN.2.S.P02.B02.SUP.GF,06-Dec-25,25-Dec-25,20-May-26,14-Jun-26,,,18,-51,0,Yes,No,"E-DR-1000, E-SUB-B02-GR-1020","E-APP-B02-GR-1030, E-APP-B02-GR-1030",0.0,0,0.0
The Big -P.01-UP-20-April-26,E-SUB-B02-GR-1020,Submittal for Beams Conc. Dim.  & RFT DWGs (B02) (GF),The Big - P.01 - UP-24-MAY-26.EN.2.S.P02.B02.SUP.GF,02-Dec-25,22-Dec-25,17-May-26,10-Jun-26,,,18,-51,0,Yes,No,"E-DR-1000, E-SUB-B02-GR-1010","E-APP-B02-GR-1020, E-APP-B02-GR-1020, E-SUB-B02-GR-1030",0.0,0,0.0
The Big -P.01-UP-20-April-26,E-SUB-B02-GR-1010,Submittal for Stairs Conc. Dim.  & RFT DWGs (B02) (GF),The Big - P.01 - UP-24-MAY-26.EN.2.S.P02.B02.SUP.GF,29-Nov-25,18-Dec-25,19-Oct-25,08-Nov-25,19-Oct-25,08-Nov-25,0,0,0,No,No,"E-DR-1000, E-SUB-B02-GR-1000","E-APP-B02-GR-1010, E-APP-B02-GR-1010, E-SUB-B02-GR-1020",0.0,0,1.0
The Big -P.01-UP-20-April-26,E-SUB-B02-1ST-1000,Submittal for Col. & Walls Conc. Dim.  & RFT DWGs (B02) (1st),The Big - P.01 - UP-24-MAY-26.EN.2.S.P02.B02.SUP.1stF,15-Dec-25,04-Jan-26,25-Oct-25,13-Nov-25,25-Oct-25,13-Nov-25,0,0,0,No,No,E-DR-1000,"E-APP-B02-1ST-1000, E-APP-B02-1ST-1000, E-SUB-B02-1ST-1010",0.0,0,1.0
The Big -P.01-UP-20-April-26,E-SUB-B02-1ST-1030,Submittal for Slabs Conc. Dim.  & RFT DWGs (B02) (1st),The Big - P.01 - UP-24-MAY-26.EN.2.S.P02.B02.SUP.1stF,25-Dec-25,15-Jan-26,20-May-26,14-Jun-26,,,18,6,0,No,No,"E-DR-1000, E-SUB-B02-1ST-1020","E-APP-B02-1ST-1030, E-APP-B02-1ST-1030",0.0,0,0.0
The Big -P.01-UP-20-April-26,E-SUB-B02-1ST-1020,Submittal for Beams Conc. Dim.  & RFT DWGs (B02) (1st),The Big - P.01 - UP-24-MAY-26.EN.2.S.P02.B02.SUP.1stF,22-Dec-25,12-Jan-26,17-May-26,10-Jun-26,,,18,6,0,No,No,"E-DR-1000, E-SUB-B02-1ST-1010","E-APP-B02-1ST-1020, E-APP-B02-1ST-1020, E-SUB-B02-1ST-1030",0.0,0,0.0
The Big -P.01-UP-20-April-26,E-SUB-B02-1ST-1010,Submittal for Stairs Conc. Dim.  & RFT DWGs (B02) (1st),The Big - P.01 - UP-24-MAY-26.EN.2.S.P02.B02.SUP.1stF,18-Dec-25,08-Jan-26,19-Oct-25,08-Nov-25,19-Oct-25,08-Nov-25,0,0,0,No,No,"E-DR-1000, E-SUB-B02-1ST-1000","E-APP-B02-1ST-1010, E-APP-B02-1ST-1010, E-SUB-B02-1ST-1020",0.0,0,1.0
The Big -P.01-UP-20-April-26,E-SUB-B02-2ND-1000,Submittal for Col. & Walls Conc. Dim.  & RFT DWGs (B02) (2nd),The Big - P.01 - UP-24-MAY-26.EN.2.S.P02.B02.SUP.2ndF,25-Dec-25,15-Jan-26,25-Oct-25,13-Nov-25,25-Oct-25,13-Nov-25,0,0,0,No,No,E-DR-1000,"E-APP-B02-2ND-1000, E-APP-B02-2ND-1000, E-SUB-B02-2ND-1010",0.0,0,1.0
The Big -P.01-UP-20-April-26,E-SUB-B02-2ND-1030,Submittal for Slabs Conc. Dim.  & RFT DWGs (B02) (2nd),The Big - P.01 - UP-24-MAY-26.EN.2.S.P02.B02.SUP.2ndF,05-Jan-26,27-Jan-26,20-May-26,14-Jun-26,,,18,55,0,No,No,"E-DR-1000, E-SUB-B02-2ND-1020","E-APP-B02-2ND-1030, E-APP-B02-2ND-1030",0.0,0,0.0
The Big -P.01-UP-20-April-26,E-SUB-B02-2ND-1020,Submittal for Beams Conc. Dim.  & RFT DWGs (B02) (2nd),The Big - P.01 - UP-24-MAY-26.EN.2.S.P02.B02.SUP.2ndF,01-Jan-26,22-Jan-26,17-May-26,10-Jun-26,,,18,55,0,No,No,"E-DR-1000, E-SUB-B02-2ND-1010","E-APP-B02-2ND-1020, E-APP-B02-2ND-1020, E-SUB-B02-2ND-1030",0.0,0,0.0
The Big -P.01-UP-20-April-26,E-SUB-B02-2ND-1010,Submittal for Stairs Conc. Dim.  & RFT DWGs (B02) (2nd),The Big - P.01 - UP-24-MAY-26.EN.2.S.P02.B02.SUP.2ndF,29-Dec-25,19-Jan-26,19-Oct-25,08-Nov-25,19-Oct-25,08-Nov-25,0,0,0,No,No,"E-DR-1000, E-SUB-B02-2ND-1000","E-APP-B02-2ND-1010, E-APP-B02-2ND-1010, E-SUB-B02-2ND-1020",0.0,0,1.0
The Big -P.01-UP-20-April-26,E-SUB-B02-3RD-1000,Submittal for Col. & Walls Conc. Dim.  & RFT DWGs (B02) (3rd),The Big - P.01 - UP-24-MAY-26.EN.2.S.P02.B02.SUP.3rdF,14-Jan-26,04-Feb-26,25-Oct-25,13-Nov-25,25-Oct-25,13-Nov-25,0,0,0,No,No,E-DR-1000,"E-APP-B02-3RD-1000, E-APP-B02-3RD-1000, E-SUB-B02-3RD-1010",0.0,0,1.0
The Big -P.01-UP-20-April-26,E-SUB-B02-3RD-1030,Submittal for Slabs Conc. Dim.  & RFT DWGs (B02) (3rd),The Big - P.01 - UP-24-MAY-26.EN.2.S.P02.B02.SUP.3rdF,26-Jan-26,15-Feb-26,20-May-26,14-Jun-26,,,18,106,0,No,No,"E-DR-1000, E-SUB-B02-3RD-1020","E-APP-B02-3RD-1030, E-APP-B02-3RD-1030",0.0,0,0.0
The Big -P.01-UP-20-April-26,E-SUB-B02-3RD-1020,Submittal for Beams Conc. Dim.  & RFT DWGs (B02) (3rd),The Big - P.01 - UP-24-MAY-26.EN.2.S.P02.B02.SUP.3rdF,21-Jan-26,11-Feb-26,17-May-26,10-Jun-26,,,18,106,0,No,No,"E-DR-1000, E-SUB-B02-3RD-1010","E-APP-B02-3RD-1020, E-APP-B02-3RD-1020, E-SUB-B02-3RD-1030",0.0,0,0.0
The Big -P.01-UP-20-April-26,E-SUB-B02-3RD-1010,Submittal for Stairs Conc. Dim.  & RFT DWGs (B02) (3rd),The Big - P.01 - UP-24-MAY-26.EN.2.S.P02.B02.SUP.3rdF,18-Jan-26,08-Feb-26,19-Oct-25,08-Nov-25,19-Oct-25,08-Nov-25,0,0,0,No,No,"E-DR-1000, E-SUB-B02-3RD-1000","E-APP-B02-3RD-1010, E-APP-B02-3RD-1010, E-SUB-B02-3RD-1020",0.0,0,1.0
The Big -P.01-UP-20-April-26,E-SUB-B02-4TH-1000,Submittal for Col. & Walls Conc. Dim.  & RFT DWGs (B02) (4th),The Big - P.01 - UP-24-MAY-26.EN.2.S.P02.B02.SUP.4thF,29-Jan-26,18-Feb-26,25-Oct-25,13-Nov-25,25-Oct-25,13-Nov-25,0,0,0,No,No,E-DR-1000,"E-APP-B02-4TH-1000, E-APP-B02-4TH-1000, E-SUB-B02-4TH-1010",0.0,0,1.0
The Big -P.01-UP-20-April-26,E-SUB-B02-4TH-1030,Submittal for Slabs Conc. Dim.  & RFT DWGs (B02) (4th),The Big - P.01 - UP-24-MAY-26.EN.2.S.P02.B02.SUP.4thF,09-Feb-26,01-Mar-26,20-May-26,14-Jun-26,,,18,158,0,No,No,"E-DR-1000, E-SUB-B02-4TH-1020","E-APP-B02-4TH-1030, E-APP-B02-4TH-1030",0.0,0,0.0
The Big -P.01-UP-20-April-26,E-SUB-B02-4TH-1020,Submittal for Beams Conc. Dim.  & RFT DWGs (B02) (4th),The Big - P.01 - UP-24-MAY-26.EN.2.S.P02.B02.SUP.4thF,05-Feb-26,25-Feb-26,17-May-26,10-Jun-26,,,18,158,0,No,No,"E-DR-1000, E-SUB-B02-4TH-1010","E-APP-B02-4TH-1020, E-APP-B02-4TH-1020, E-SUB-B02-4TH-1030",0.0,0,0.0
The Big -P.01-UP-20-April-26,E-SUB-B02-4TH-1010,Submittal for Stairs Conc. Dim.  & RFT DWGs (B02) (4th),The Big - P.01 - UP-24-MAY-26.EN.2.S.P02.B02.SUP.4thF,02-Feb-26,22-Feb-26,19-Oct-25,08-Nov-25,19-Oct-25,08-Nov-25,0,0,0,No,No,"E-DR-1000, E-SUB-B02-4TH-1000","E-APP-B02-4TH-1010, E-APP-B02-4TH-1010, E-SUB-B02-4TH-1020",0.0,0,1.0
The Big -P.01-UP-20-April-26,E-SUB-B02-RF-1000,Submittal for Col. & Walls Conc. Dim.  & RFT DWGs (B02) (RF),The Big - P.01 - UP-24-MAY-26.EN.2.S.P02.B02.SUP.RF,18-Feb-26,10-Mar-26,25-Oct-25,13-Nov-25,25-Oct-25,13-Nov-25,0,0,0,No,No,E-DR-1000,"E-APP-B02-RF-1000, E-APP-B02-RF-1000, E-SUB-B02-RF-1010",0.0,0,1.0
The Big -P.01-UP-20-April-26,E-SUB-B02-RF-1020,Submittal for Slabs Conc. Dim.  & RFT DWGs (B02) (RF),The Big - P.01 - UP-24-MAY-26.EN.2.S.P02.B02.SUP.RF,25-Feb-26,22-Mar-26,20-May-26,14-Jun-26,,,18,200,0,No,No,"E-DR-1000, E-SUB-B02-RF-1010","E-APP-B02-RF-1020, E-APP-B02-RF-1020",0.0,0,0.0
The Big -P.01-UP-20-April-26,E-SUB-B02-RF-1010,Submittal for Beams Conc. Dim.  & RFT DWGs (B02) (RF),The Big - P.01 - UP-24-MAY-26.EN.2.S.P02.B02.SUP.RF,22-Feb-26,14-Mar-26,17-May-26,10-Jun-26,,,18,200,0,No,No,"E-DR-1000, E-SUB-B02-RF-1000","E-APP-B02-RF-1010, E-APP-B02-RF-1010, E-SUB-B02-RF-1020",0.0,0,0.0
The Big -P.01-UP-20-April-26,E-SUB-B03-REP-1000,Submittal for General Replacement Plan & Typical Sections for Replacement / Backfilling DWGs (B03),The Big - P.01 - UP-24-MAY-26.EN.2.S.P01.B03.SUB.1,27-Sep-25,18-Oct-25,27-Sep-25,18-Oct-25,27-Sep-25,18-Oct-25,0,0,0,No,No,E-DR-1000,"E-APP-B03-REP-1000, E-APP-B03-REP-1000",0.0,0,1.0
The Big -P.01-UP-20-April-26,E-SUB-B03-FOOT-1010,Submittal for PC Raft Conc. Dim. DWGs (B03) (footing),The Big - P.01 - UP-24-MAY-26.EN.2.S.P01.B03.SUB.F,11-Oct-25,30-Oct-25,11-Oct-25,30-Oct-25,11-Oct-25,30-Oct-25,0,0,0,No,No,E-DR-1000,"E-APP-B03-FOOT-1010, E-APP-B03-FOOT-1010, E-SUB-B03-FOOT-1000",0.0,0,1.0
The Big -P.01-UP-20-April-26,E-SUB-B03-FOOT-1020,Submittal for RC Raft & Footings Conc. Dim. DWGs (B03) (footing),The Big - P.01 - UP-24-MAY-26.EN.2.S.P01.B03.SUB.F,14-Oct-25,03-Nov-25,14-Oct-25,03-Nov-25,14-Oct-25,03-Nov-25,0,0,0,No,No,"E-DR-1000, E-SUB-B03-FOOT-1000","E-APP-B03-FOOT-1020, E-APP-B03-FOOT-1020, E-SUB-B03-FOOT-1030",0.0,0,1.0
The Big -P.01-UP-20-April-26,E-SUB-B03-FOOT-1030,Submittal for RC Raft & Footings RFT DWGs (B03) (footing),The Big - P.01 - UP-24-MAY-26.EN.2.S.P01.B03.SUB.F,18-Oct-25,06-Nov-25,18-Oct-25,06-Nov-25,18-Oct-25,06-Nov-25,0,0,0,No,No,"E-DR-1000, E-SUB-B03-FOOT-1020","E-APP-B03-FOOT-1030, E-APP-B03-FOOT-1030",0.0,0,1.0
The Big -P.01-UP-20-April-26,E-SUB-B03-FOOT-1000,Submittal for  Waterproofing Layout Plan (B03),The Big - P.01 - UP-24-MAY-26.EN.2.S.P01.B03.SUB.F,12-Oct-25,01-Nov-25,12-Oct-25,01-Nov-25,12-Oct-25,01-Nov-25,0,0,0,No,No,"E-DR-1000, E-SUB-B03-FOOT-1010","E-APP-B03-FOOT-1000, E-APP-B03-FOOT-1000, E-SUB-B03-FOOT-1020",0.0,0,1.0
The Big -P.01-UP-20-April-26,E-SUB-B03-BAS02-1000,Submittal for Col. & Walls Conc. Dim.  & RFT DWGs (B03) (Bas 02),The Big - P.01 - UP-24-MAY-26.EN.2.S.P01.B03.SUB.2ndB,10-Nov-25,30-Nov-25,01-Jan-26,10-Feb-26,01-Jan-26,10-Feb-26,0,0,0,No,No,E-DR-1000,"E-APP-B03-BAS02-1000, E-APP-B03-BAS02-1000, E-SUB-B03-BAS02-1010",0.0,0,1.0
The Big -P.01-UP-20-April-26,E-SUB-B03-BAS02-1030,Submittal for Slabs Conc. Dim.  & RFT DWGs (B03) (Bas 02),The Big - P.01 - UP-24-MAY-26.EN.2.S.P01.B03.SUB.2ndB,20-Nov-25,10-Dec-25,01-Mar-26,10-Mar-26,01-Mar-26,10-Mar-26,0,0,0,No,No,"E-DR-1000, E-SUB-B03-BAS02-1020","E-APP-B03-BAS02-1030, E-APP-B03-BAS02-1030",0.0,0,1.0
The Big -P.01-UP-20-April-26,E-SUB-B03-BAS02-1020,Submittal for Beams Conc. Dim.  & RFT DWGs (B03) (Bas 02),The Big - P.01 - UP-24-MAY-26.EN.2.S.P01.B03.SUB.2ndB,17-Nov-25,07-Dec-25,01-Mar-26,10-Mar-26,01-Mar-26,10-Mar-26,0,0,0,No,No,"E-DR-1000, E-SUB-B03-BAS02-1010","E-APP-B03-BAS02-1020, E-APP-B03-BAS02-1020, E-SUB-B03-BAS02-1030",0.0,0,1.0
The Big -P.01-UP-20-April-26,E-SUB-B03-BAS02-1010,Submittal for Stairs Conc. Dim.  & RFT DWGs (B03) (Bas 02),The Big - P.01 - UP-24-MAY-26.EN.2.S.P01.B03.SUB.2ndB,13-Nov-25,03-Dec-25,01-Feb-26,10-Feb-26,01-Feb-26,10-Feb-26,0,0,0,No,No,"E-DR-1000, E-SUB-B03-BAS02-1000","E-APP-B03-BAS02-1010, E-APP-B03-BAS02-1010, E-SUB-B03-BAS02-1020",0.0,0,1.0
The Big -P.01-UP-20-April-26,E-SUB-B03-SOG-1000,Submittal for S.O.G Conc. Dim. DWGs (B03) (Sog),The Big - P.01 - UP-24-MAY-26.EN.2.S.P01.B03.SUB.2ndB.1,29-Jan-26,18-Feb-26,17-May-26,10-Jun-26,,,18,193,0,No,No,E-DR-1000,"E-APP-B03-SOG-1000, E-APP-B03-SOG-1000, E-SUB-B03-SOG-1010",0.0,0,0.0
The Big -P.01-UP-20-April-26,E-SUB-B03-SOG-1010,Submittal for S.O.G RFT DWGs (B03) (Sog),The Big - P.01 - UP-24-MAY-26.EN.2.S.P01.B03.SUB.2ndB.1,02-Feb-26,22-Feb-26,20-May-26,14-Jun-26,,,18,193,0,No,No,"E-DR-1000, E-SUB-B03-SOG-1000","E-APP-B03-SOG-1010, E-APP-B03-SOG-1010",0.0,0,0.0
The Big -P.01-UP-20-April-26,E-SUB-B03-BAS01-1000,Submittal for Col. & Walls Conc. Dim.  & RFT DWGs (B03) (Bas 01),The Big - P.01 - UP-24-MAY-26.EN.2.S.P01.B03.SUB.1stB,20-Nov-25,10-Dec-25,01-Jan-26,10-Feb-26,01-Jan-26,10-Feb-26,0,0,0,No,No,E-DR-1000,"E-APP-B03-BAS01-1000, E-APP-B03-BAS01-1000, E-SUB-B03-BAS01-1010",0.0,0,1.0
The Big -P.01-UP-20-April-26,E-SUB-B03-BAS01-1030,Submittal for Slabs Conc. Dim.  & RFT DWGs (B03) (Bas 01),The Big - P.01 - UP-24-MAY-26.EN.2.S.P01.B03.SUB.1stB,01-Dec-25,21-Dec-25,02-Mar-26,12-Mar-26,02-Mar-26,12-Mar-26,0,0,0,No,No,"E-DR-1000, E-SUB-B03-BAS01-1020","E-APP-B03-BAS01-1030, E-APP-B03-BAS01-1030",0.0,0,1.0
The Big -P.01-UP-20-April-26,E-SUB-B03-BAS01-1020,Submittal for Beams Conc. Dim.  & RFT DWGs (B03) (Bas 01),The Big - P.01 - UP-24-MAY-26.EN.2.S.P01.B03.SUB.1stB,27-Nov-25,17-Dec-25,01-Mar-26,10-Mar-26,01-Mar-26,10-Mar-26,0,0,0,No,No,"E-DR-1000, E-SUB-B03-BAS01-1010","E-APP-B03-BAS01-1020, E-APP-B03-BAS01-1020, E-SUB-B03-BAS01-1030",0.0,0,1.0
The Big -P.01-UP-20-April-26,E-SUB-B03-BAS01-1010,Submittal for Stairs Conc. Dim.  & RFT DWGs (B03) (Bas 01),The Big - P.01 - UP-24-MAY-26.EN.2.S.P01.B03.SUB.1stB,24-Nov-25,14-Dec-25,01-Feb-26,10-Feb-26,01-Feb-26,10-Feb-26,0,0,0,No,No,"E-DR-1000, E-SUB-B03-BAS01-1000","E-APP-B03-BAS01-1010, E-APP-B03-BAS01-1010, E-SUB-B03-BAS01-1020",0.0,0,1.0
The Big -P.01-UP-20-April-26,E-SUB-B03-GR-1000,Submittal for Col. & Walls Conc. Dim.  & RFT DWGs (B03) (GF),The Big - P.01 - UP-24-MAY-26.EN.2.S.P01.B03.SUP.GF,30-Nov-25,20-Dec-25,01-Jan-26,10-Feb-26,01-Jan-26,10-Feb-26,0,0,0,No,No,E-DR-1000,"E-APP-B03-GR-1000, E-APP-B03-GR-1000, E-SUB-B03-GR-1010",0.0,0,1.0
The Big -P.01-UP-20-April-26,E-SUB-B03-GR-1030,Submittal for Slabs Conc. Dim.  & RFT DWGs (B03) (GF),The Big - P.01 - UP-24-MAY-26.EN.2.S.P01.B03.SUP.GF,10-Dec-25,30-Dec-25,20-May-26,14-Jun-26,,,18,-47,0,Yes,No,"E-DR-1000, E-SUB-B03-GR-1020","E-APP-B03-GR-1030, E-APP-B03-GR-1030",0.0,0,0.0
The Big -P.01-UP-20-April-26,E-SUB-B03-GR-1020,Submittal for Beams Conc. Dim.  & RFT DWGs (B03) (GF),The Big - P.01 - UP-24-MAY-26.EN.2.S.P01.B03.SUP.GF,07-Dec-25,27-Dec-25,17-May-26,10-Jun-26,,,18,-47,0,Yes,No,"E-DR-1000, E-SUB-B03-GR-1010","E-APP-B03-GR-1020, E-APP-B03-GR-1020, E-SUB-B03-GR-1030",0.0,0,0.0
The Big -P.01-UP-20-April-26,E-SUB-B03-GR-1010,Submittal for Stairs Conc. Dim.  & RFT DWGs (B03) (GF),The Big - P.01 - UP-24-MAY-26.EN.2.S.P01.B03.SUP.GF,03-Dec-25,23-Dec-25,01-Feb-26,10-Feb-26,01-Feb-26,10-Feb-26,0,0,0,No,No,"E-DR-1000, E-SUB-B03-GR-1000","E-APP-B03-GR-1010, E-APP-B03-GR-1010, E-SUB-B03-GR-1020",0.0,0,1.0
The Big -P.01-UP-20-April-26,E-SUB-B03-1ST-1000,Submittal for Col. & Walls Conc. Dim.  & RFT DWGs (B03) (1st),The Big - P.01 - UP-24-MAY-26.EN.2.S.P01.B03.SUP.1stF,10-Dec-25,30-Dec-25,01-Jan-26,10-Feb-26,01-Jan-26,10-Feb-26,0,0,0,No,No,E-DR-1000,"E-APP-B03-1ST-1000, E-APP-B03-1ST-1000, E-SUB-B03-1ST-1010",0.0,0,1.0
The Big -P.01-UP-20-April-26,E-SUB-B03-1ST-1030,Submittal for Slabs Conc. Dim.  & RFT DWGs (B03) (1st),The Big - P.01 - UP-24-MAY-26.EN.2.S.P01.B03.SUP.1stF,21-Dec-25,11-Jan-26,20-May-26,14-Jun-26,,,18,0,0,Yes,No,"E-DR-1000, E-SUB-B03-1ST-1020","E-APP-B03-1ST-1030, E-APP-B03-1ST-1030",0.0,0,0.0
The Big -P.01-UP-20-April-26,E-SUB-B03-1ST-1020,Submittal for Beams Conc. Dim.  & RFT DWGs (B03) (1st),The Big - P.01 - UP-24-MAY-26.EN.2.S.P01.B03.SUP.1stF,17-Dec-25,06-Jan-26,17-May-26,10-Jun-26,,,18,0,0,Yes,No,"E-DR-1000, E-SUB-B03-1ST-1010","E-APP-B03-1ST-1020, E-APP-B03-1ST-1020, E-SUB-B03-1ST-1030",0.0,0,0.0
The Big -P.01-UP-20-April-26,E-SUB-B03-1ST-1010,Submittal for Stairs Conc. Dim.  & RFT DWGs (B03) (1st),The Big - P.01 - UP-24-MAY-26.EN.2.S.P01.B03.SUP.1stF,14-Dec-25,03-Jan-26,01-Feb-26,10-Feb-26,01-Feb-26,10-Feb-26,0,0,0,No,No,"E-DR-1000, E-SUB-B03-1ST-1000","E-APP-B03-1ST-1010, E-APP-B03-1ST-1010, E-SUB-B03-1ST-1020",0.0,0,1.0
The Big -P.01-UP-20-April-26,E-SUB-B03-2ND-1000,Submittal for Col. & Walls Conc. Dim.  & RFT DWGs (B03) (2nd),The Big - P.01 - UP-24-MAY-26.EN.2.S.P01.B03.SUP.2ndF,20-Dec-25,10-Jan-26,01-Jan-26,10-Feb-26,01-Jan-26,10-Feb-26,0,0,0,No,No,E-DR-1000,"E-APP-B03-2ND-1000, E-APP-B03-2ND-1000, E-SUB-B03-2ND-1010",0.0,0,1.0
The Big -P.01-UP-20-April-26,E-SUB-B03-2ND-1030,Submittal for Slabs Conc. Dim.  & RFT DWGs (B03) (2nd),The Big - P.01 - UP-24-MAY-26.EN.2.S.P01.B03.SUP.2ndF,30-Dec-25,20-Jan-26,20-May-26,14-Jun-26,,,18,55,0,No,No,"E-DR-1000, E-SUB-B03-2ND-1020","E-APP-B03-2ND-1030, E-APP-B03-2ND-1030",0.0,0,0.0
The Big -P.01-UP-20-April-26,E-SUB-B03-2ND-1020,Submittal for Beams Conc. Dim.  & RFT DWGs (B03) (2nd),The Big - P.01 - UP-24-MAY-26.EN.2.S.P01.B03.SUP.2ndF,27-Dec-25,17-Jan-26,17-May-26,10-Jun-26,,,18,55,0,No,No,"E-DR-1000, E-SUB-B03-2ND-1010","E-APP-B03-2ND-1020, E-APP-B03-2ND-1020, E-SUB-B03-2ND-1030",0.0,0,0.0
The Big -P.01-UP-20-April-26,E-SUB-B03-2ND-1010,Submittal for Stairs Conc. Dim.  & RFT DWGs (B03) (2nd),The Big - P.01 - UP-24-MAY-26.EN.2.S.P01.B03.SUP.2ndF,23-Dec-25,13-Jan-26,01-Feb-26,10-Feb-26,01-Feb-26,10-Feb-26,0,0,0,No,No,"E-DR-1000, E-SUB-B03-2ND-1000","E-APP-B03-2ND-1010, E-APP-B03-2ND-1010, E-SUB-B03-2ND-1020",0.0,0,1.0
The Big -P.01-UP-20-April-26,E-SUB-B03-3RD-1000,Submittal for Col. & Walls Conc. Dim.  & RFT DWGs (B03) (3rd),The Big - P.01 - UP-24-MAY-26.EN.2.S.P01.B03.SUP.3rdF,30-Dec-25,20-Jan-26,01-Jan-26,10-Feb-26,01-Jan-26,10-Feb-26,0,0,0,No,No,E-DR-1000,"E-APP-B03-3RD-1000, E-APP-B03-3RD-1000, E-SUB-B03-3RD-1010",0.0,0,1.0
The Big -P.01-UP-20-April-26,E-SUB-B03-3RD-1030,Submittal for Slabs Conc. Dim.  & RFT DWGs (B03) (3rd),The Big - P.01 - UP-24-MAY-26.EN.2.S.P01.B03.SUP.3rdF,11-Jan-26,01-Feb-26,20-May-26,14-Jun-26,,,18,108,0,No,No,"E-DR-1000, E-SUB-B03-3RD-1020","E-APP-B03-3RD-1030, E-APP-B03-3RD-1030",0.0,0,0.0
The Big -P.01-UP-20-April-26,E-SUB-B03-3RD-1020,Submittal for Beams Conc. Dim.  & RFT DWGs (B03) (3rd),The Big - P.01 - UP-24-MAY-26.EN.2.S.P01.B03.SUP.3rdF,06-Jan-26,28-Jan-26,17-May-26,10-Jun-26,,,18,108,0,No,No,"E-DR-1000, E-SUB-B03-3RD-1010","E-APP-B03-3RD-1020, E-APP-B03-3RD-1020, E-SUB-B03-3RD-1030",0.0,0,0.0
The Big -P.01-UP-20-April-26,E-SUB-B03-3RD-1010,Submittal for Stairs Conc. Dim.  & RFT DWGs (B03) (3rd),The Big - P.01 - UP-24-MAY-26.EN.2.S.P01.B03.SUP.3rdF,03-Jan-26,24-Jan-26,01-Feb-26,10-Feb-26,01-Feb-26,10-Feb-26,0,0,0,No,No,"E-DR-1000, E-SUB-B03-3RD-1000","E-APP-B03-3RD-1010, E-APP-B03-3RD-1010, E-SUB-B03-3RD-1020",0.0,0,1.0
The Big -P.01-UP-20-April-26,E-SUB-B03-4TH-1000,Submittal for Col. & Walls Conc. Dim.  & RFT DWGs (B03) (4th),The Big - P.01 - UP-24-MAY-26.EN.2.S.P01.B03.SUP.4thF,19-Jan-26,09-Feb-26,01-Jan-26,10-Feb-26,01-Jan-26,10-Feb-26,0,0,0,No,No,E-DR-1000,"E-APP-B03-4TH-1000, E-APP-B03-4TH-1000, E-SUB-B03-4TH-1010",0.0,0,1.0
The Big -P.01-UP-20-April-26,E-SUB-B03-4TH-1030,Submittal for Slabs Conc. Dim.  & RFT DWGs (B03) (4th),The Big - P.01 - UP-24-MAY-26.EN.2.S.P01.B03.SUP.4thF,31-Jan-26,19-Feb-26,20-May-26,14-Jun-26,,,18,162,0,No,No,"E-DR-1000, E-SUB-B03-4TH-1020","E-APP-B03-4TH-1030, E-APP-B03-4TH-1030",0.0,0,0.0
The Big -P.01-UP-20-April-26,E-SUB-B03-4TH-1020,Submittal for Beams Conc. Dim.  & RFT DWGs (B03) (4th),The Big - P.01 - UP-24-MAY-26.EN.2.S.P01.B03.SUP.4thF,27-Jan-26,16-Feb-26,17-May-26,10-Jun-26,,,18,162,0,No,No,"E-DR-1000, E-SUB-B03-4TH-1010","E-APP-B03-4TH-1020, E-APP-B03-4TH-1020, E-SUB-B03-4TH-1030",0.0,0,0.0
The Big -P.01-UP-20-April-26,E-SUB-B03-4TH-1010,Submittal for Stairs Conc. Dim.  & RFT DWGs (B03) (4th),The Big - P.01 - UP-24-MAY-26.EN.2.S.P01.B03.SUP.4thF,22-Jan-26,12-Feb-26,01-Feb-26,10-Feb-26,01-Feb-26,10-Feb-26,0,0,0,No,No,"E-DR-1000, E-SUB-B03-4TH-1000","E-APP-B03-4TH-1010, E-APP-B03-4TH-1010, E-SUB-B03-4TH-1020",0.0,0,1.0
The Big -P.01-UP-20-April-26,E-SUB-B03-RF-1000,Submittal for Col. & Walls Conc. Dim.  & RFT DWGs (B03) (RF),The Big - P.01 - UP-24-MAY-26.EN.2.S.P01.B03.SUP.RF,03-Feb-26,23-Feb-26,01-Jan-26,10-Feb-26,01-Jan-26,10-Feb-26,0,0,0,No,No,E-DR-1000,"E-APP-B03-RF-1000, E-APP-B03-RF-1000, E-SUB-B03-RF-1010",0.0,0,1.0
The Big -P.01-UP-20-April-26,E-SUB-B03-RF-1020,Submittal for Slabs Conc. Dim.  & RFT DWGs (B03) (RF),The Big - P.01 - UP-24-MAY-26.EN.2.S.P01.B03.SUP.RF,10-Feb-26,02-Mar-26,20-May-26,14-Jun-26,,,18,200,0,No,No,"E-DR-1000, E-SUB-B03-RF-1010","E-APP-B03-RF-1020, E-APP-B03-RF-1020",0.0,0,0.0
The Big -P.01-UP-20-April-26,E-SUB-B03-RF-1010,Submittal for Beams Conc. Dim.  & RFT DWGs (B03) (RF),The Big - P.01 - UP-24-MAY-26.EN.2.S.P01.B03.SUP.RF,07-Feb-26,26-Feb-26,17-May-26,10-Jun-26,,,18,200,0,No,No,"E-DR-1000, E-SUB-B03-RF-1000","E-APP-B03-RF-1010, E-APP-B03-RF-1010, E-SUB-B03-RF-1020",0.0,0,0.0
The Big -P.01-UP-20-April-26,E-SUB-B04-REP-1000,Submittal for General Replacement Plan & Typical Sections for Replacement / Backfilling DWGs (B04),The Big - P.01 - UP-24-MAY-26.EN.2.S.P01.B04.SUB.1,21-Oct-25,10-Nov-25,21-Oct-25,10-Nov-25,21-Oct-25,10-Nov-25,0,0,0,No,No,E-DR-1000,"E-APP-B04-REP-1000, E-APP-B04-REP-1000",0.0,0,1.0
The Big -P.01-UP-20-April-26,E-SUB-B04-FOOT-1010,Submittal for PC Raft Conc. Dim. DWGs (B04) (footing),The Big - P.01 - UP-24-MAY-26.EN.2.S.P01.B04.SUB.F,08-Oct-25,28-Oct-25,08-Oct-25,28-Oct-25,08-Oct-25,28-Oct-25,0,0,0,No,No,"E-DR-1000, E-SUB-B04-FOOT-1000","E-APP-B04-FOOT-1010, E-APP-B04-FOOT-1010, E-SUB-B04-FOOT-1020",0.0,0,1.0
The Big -P.01-UP-20-April-26,E-SUB-B04-FOOT-1020,Submittal for RC Raft & Footings Conc. Dim. DWGs (B04) (footing),The Big - P.01 - UP-24-MAY-26.EN.2.S.P01.B04.SUB.F,12-Oct-25,01-Nov-25,12-Oct-25,01-Nov-25,12-Oct-25,01-Nov-25,0,0,0,No,No,"E-DR-1000, E-SUB-B04-FOOT-1010","E-APP-B04-FOOT-1020, E-APP-B04-FOOT-1020, E-SUB-B04-FOOT-1030",0.0,0,1.0
The Big -P.01-UP-20-April-26,E-SUB-B04-FOOT-1030,Submittal for RC Raft & Footings RFT DWGs (B04) (footing),The Big - P.01 - UP-24-MAY-26.EN.2.S.P01.B04.SUB.F,16-Oct-25,05-Nov-25,16-Oct-25,05-Nov-25,16-Oct-25,05-Nov-25,0,0,0,No,No,"E-DR-1000, E-SUB-B04-FOOT-1020","E-APP-B04-FOOT-1030, E-APP-B04-FOOT-1030",0.0,0,1.0
The Big -P.01-UP-20-April-26,E-SUB-B04-FOOT-1000,Submittal for  Waterproofing Layout Plan (B04),The Big - P.01 - UP-24-MAY-26.EN.2.S.P01.B04.SUB.F,21-Sep-25,12-Oct-25,21-Sep-25,12-Oct-25,21-Sep-25,12-Oct-25,0,0,0,No,No,E-DR-1000,"E-APP-B04-FOOT-1000, E-APP-B04-FOOT-1000, E-SUB-B04-FOOT-1010",0.0,0,1.0
The Big -P.01-UP-20-April-26,E-SUB-B04-BAS02-1000,Submittal for Col. & Walls Conc. Dim.  & RFT DWGs (B04) (Bas 02),The Big - P.01 - UP-24-MAY-26.EN.2.S.P01.B04.SUB.2ndB,10-Nov-25,30-Nov-25,01-Jan-26,10-Feb-26,01-Jan-26,10-Feb-26,0,0,0,No,No,E-DR-1000,"E-APP-B04-BAS02-1000, E-APP-B04-BAS02-1000, E-SUB-B04-BAS02-1010",0.0,0,1.0
The Big -P.01-UP-20-April-26,E-SUB-B04-BAS02-1040,Submittal for Slabs Conc. Dim.  & RFT DWGs (B04) (Bas 02),The Big - P.01 - UP-24-MAY-26.EN.2.S.P01.B04.SUB.2ndB,24-Nov-25,14-Dec-25,09-Feb-26,26-Feb-26,09-Feb-26,26-Feb-26,0,0,0,No,No,"E-DR-1000, E-SUB-B04-BAS02-1030","E-APP-B04-BAS02-1040, E-APP-B04-BAS02-1040",0.0,0,1.0
The Big -P.01-UP-20-April-26,E-SUB-B04-BAS02-1030,Submittal for Beams Conc. Dim.  & RFT DWGs (B04) (Bas 02),The Big - P.01 - UP-24-MAY-26.EN.2.S.P01.B04.SUB.2ndB,20-Nov-25,10-Dec-25,01-Mar-26,10-Mar-26,01-Mar-26,10-Mar-26,0,0,0,No,No,"E-DR-1000, E-SUB-B04-BAS02-1020","E-APP-B04-BAS02-1030, E-APP-B04-BAS02-1030, E-SUB-B04-BAS02-1040",0.0,0,1.0
The Big -P.01-UP-20-April-26,E-SUB-B04-BAS02-1010,Submittal for Stairs Conc. Dim.  & RFT DWGs (B04) (Bas 02),The Big - P.01 - UP-24-MAY-26.EN.2.S.P01.B04.SUB.2ndB,13-Nov-25,03-Dec-25,01-Feb-26,14-Feb-26,01-Feb-26,14-Feb-26,0,0,0,No,No,"E-DR-1000, E-SUB-B04-BAS02-1000","E-APP-B04-BAS02-1010, E-APP-B04-BAS02-1010, E-SUB-B04-BAS02-1020",0.0,0,1.0
The Big -P.01-UP-20-April-26,E-SUB-B04-BAS02-1020,Submittal for Ramps Conc. Dim.  & RFT DWGs (B04) (Bas 02),The Big - P.01 - UP-24-MAY-26.EN.2.S.P01.B04.SUB.2ndB,17-Nov-25,07-Dec-25,16-Feb-26,26-Feb-26,16-Feb-26,26-Feb-26,0,0,0,No,No,"E-DR-1000, E-SUB-B04-BAS02-1010","E-APP-B04-BAS02-1020, E-APP-B04-BAS02-1020, E-SUB-B04-BAS02-1030",0.0,0,1.0
The Big -P.01-UP-20-April-26,E-SUB-B04-WT-1000,Submittal for PC Raft Conc. Dim. DWGs (B04) (Water Tank),The Big - P.01 - UP-24-MAY-26.EN.2.S.P01.B04.SUB.2ndB.1,13-Sep-25,02-Oct-25,01-Nov-25,20-Nov-25,01-Nov-25,20-Nov-25,0,0,0,No,No,E-DR-1000,"E-APP-B04-WT-1000, E-APP-B04-WT-1000, E-SUB-B04-WT-1010",0.0,0,1.0
The Big -P.01-UP-20-April-26,E-SUB-B04-WT-1010,Submittal for RC Raft Conc. Dim. DWGs (B04) (Water Tank),The Big - P.01 - UP-24-MAY-26.EN.2.S.P01.B04.SUB.2ndB.1,16-Sep-25,07-Oct-25,04-Nov-25,24-Nov-25,04-Nov-25,24-Nov-25,0,0,0,No,No,"E-DR-1000, E-SUB-B04-WT-1000","E-APP-B04-WT-1010, E-APP-B04-WT-1010, E-SUB-B04-WT-1020",0.0,0,1.0
The Big -P.01-UP-20-April-26,E-SUB-B04-WT-1030,Submittal for Col. & Walls DWGs (B04) (Water Tank),The Big - P.01 - UP-24-MAY-26.EN.2.S.P01.B04.SUB.2ndB.1,23-Sep-25,14-Oct-25,12-Nov-25,30-Nov-25,12-Nov-25,30-Nov-25,0,0,0,No,No,"E-DR-1000, E-SUB-B04-WT-1020","E-APP-B04-WT-1030, E-APP-B04-WT-1030, E-SUB-B04-WT-1040",0.0,0,1.0
The Big -P.01-UP-20-April-26,E-SUB-B04-WT-1040,Submittal for Slabs DWGs (B04) (Water Tank),The Big - P.01 - UP-24-MAY-26.EN.2.S.P01.B04.SUB.2ndB.1,27-Sep-25,18-Oct-25,14-Nov-25,30-Nov-25,14-Nov-25,30-Nov-25,0,0,0,No,No,"E-DR-1000, E-SUB-B04-WT-1030","E-APP-B04-WT-1040, E-APP-B04-WT-1040",0.0,0,1.0
The Big -P.01-UP-20-April-26,E-SUB-B04-WT-1020,Submittal for RC Raft RFT DWGs (B04) (Water Tank),The Big - P.01 - UP-24-MAY-26.EN.2.S.P01.B04.SUB.2ndB.1,20-Sep-25,11-Oct-25,08-Nov-25,27-Nov-25,08-Nov-25,27-Nov-25,0,0,0,No,No,"E-DR-1000, E-SUB-B04-WT-1010","E-APP-B04-WT-1020, E-APP-B04-WT-1020, E-SUB-B04-WT-1030",0.0,0,1.0
The Big -P.01-UP-20-April-26,E-SUB-B04-SOG-1000,Submittal for S.O.G Conc. Dim. DWGs (B04) (Sog),The Big - P.01 - UP-24-MAY-26.EN.2.S.P01.B04.SUB.2ndB.2,25-Mar-26,15-Apr-26,17-May-26,10-Jun-26,,,18,205,0,No,No,E-DR-1000,"E-APP-B04-SOG-1000, E-APP-B04-SOG-1000, E-SUB-B04-SOG-1010",0.0,0,0.0
The Big -P.01-UP-20-April-26,E-SUB-B04-SOG-1010,Submittal for S.O.G RFT DWGs (B04) (Sog),The Big - P.01 - UP-24-MAY-26.EN.2.S.P01.B04.SUB.2ndB.2,29-Mar-26,19-Apr-26,20-May-26,14-Jun-26,,,18,205,0,No,No,"E-DR-1000, E-SUB-B04-SOG-1000","E-APP-B04-SOG-1010, E-APP-B04-SOG-1010",0.0,0,0.0
The Big -P.01-UP-20-April-26,E-SUB-B04-BAS01-1000,Submittal for Col. & Walls Conc. Dim.  & RFT DWGs (B04) (Bas 01),The Big - P.01 - UP-24-MAY-26.EN.2.S.P01.B04.SUB.1stB,30-Nov-25,20-Dec-25,01-Jan-26,10-Feb-26,01-Jan-26,10-Feb-26,0,0,0,No,No,E-DR-1000,"E-APP-B04-BAS01-1000, E-APP-B04-BAS01-1000, E-SUB-B04-BAS01-1010",0.0,0,1.0
The Big -P.01-UP-20-April-26,E-SUB-B04-BAS01-1040,Submittal for Slabs Conc. Dim.  & RFT DWGs (B04) (Bas 01),The Big - P.01 - UP-24-MAY-26.EN.2.S.P01.B04.SUB.1stB,14-Dec-25,03-Jan-26,09-Feb-26,26-Feb-26,09-Feb-26,26-Feb-26,0,0,0,No,No,"E-DR-1000, E-SUB-B04-BAS01-1030","E-APP-B04-BAS01-1040, E-APP-B04-BAS01-1040",0.0,0,1.0
The Big -P.01-UP-20-April-26,E-SUB-B04-BAS01-1030,Submittal for Beams Conc. Dim.  & RFT DWGs (B04) (Bas 01),The Big - P.01 - UP-24-MAY-26.EN.2.S.P01.B04.SUB.1stB,10-Dec-25,30-Dec-25,01-Mar-26,10-Mar-26,01-Mar-26,10-Mar-26,0,0,0,No,No,"E-DR-1000, E-SUB-B04-BAS01-1020","E-APP-B04-BAS01-1030, E-APP-B04-BAS01-1030, E-SUB-B04-BAS01-1040",0.0,0,1.0
The Big -P.01-UP-20-April-26,E-SUB-B04-BAS01-1010,Submittal for Stairs Conc. Dim.  & RFT DWGs (B04) (Bas 01),The Big - P.01 - UP-24-MAY-26.EN.2.S.P01.B04.SUB.1stB,03-Dec-25,23-Dec-25,01-Feb-26,14-Feb-26,01-Feb-26,14-Feb-26,0,0,0,No,No,"E-DR-1000, E-SUB-B04-BAS01-1000","E-APP-B04-BAS01-1010, E-APP-B04-BAS01-1010, E-SUB-B04-BAS01-1020",0.0,0,1.0
The Big -P.01-UP-20-April-26,E-SUB-B04-BAS01-1020,Submittal for Ramps Conc. Dim.  & RFT DWGs (B04) (Bas 01),The Big - P.01 - UP-24-MAY-26.EN.2.S.P01.B04.SUB.1stB,07-Dec-25,27-Dec-25,16-Feb-26,26-Feb-26,16-Feb-26,26-Feb-26,0,0,0,No,No,"E-DR-1000, E-SUB-B04-BAS01-1010","E-APP-B04-BAS01-1020, E-APP-B04-BAS01-1020, E-SUB-B04-BAS01-1030",0.0,0,1.0
The Big -P.01-UP-20-April-26,E-SUB-B04-GR-1000,Submittal for Col. & Walls Conc. Dim.  & RFT DWGs (B04) (GF),The Big - P.01 - UP-24-MAY-26.EN.2.S.P01.B04.SUP.GF,15-Dec-25,04-Jan-26,01-Jan-26,10-Feb-26,01-Jan-26,10-Feb-26,0,0,0,No,No,E-DR-1000,"E-APP-B04-GR-1000, E-APP-B04-GR-1000, E-SUB-B04-GR-1010",0.0,0,1.0
The Big -P.01-UP-20-April-26,E-SUB-B04-GR-1030,Submittal for Slabs Conc. Dim.  & RFT DWGs (B04) (GF),The Big - P.01 - UP-24-MAY-26.EN.2.S.P01.B04.SUP.GF,25-Dec-25,15-Jan-26,20-May-26,14-Jun-26,,,18,-45,0,Yes,No,"E-DR-1000, E-SUB-B04-GR-1020","E-APP-B04-GR-1030, E-APP-B04-GR-1030",0.0,0,0.0
The Big -P.01-UP-20-April-26,E-SUB-B04-GR-1020,Submittal for Beams Conc. Dim.  & RFT DWGs (B04) (GF),The Big - P.01 - UP-24-MAY-26.EN.2.S.P01.B04.SUP.GF,22-Dec-25,12-Jan-26,17-May-26,10-Jun-26,,,18,-45,0,Yes,No,"E-DR-1000, E-SUB-B04-GR-1010","E-APP-B04-GR-1020, E-APP-B04-GR-1020, E-SUB-B04-GR-1030",0.0,0,0.0
The Big -P.01-UP-20-April-26,E-SUB-B04-GR-1010,Submittal for Stairs Conc. Dim.  & RFT DWGs (B04) (GF),The Big - P.01 - UP-24-MAY-26.EN.2.S.P01.B04.SUP.GF,18-Dec-25,08-Jan-26,01-Feb-26,21-Feb-26,01-Feb-26,21-Feb-26,0,0,0,No,No,"E-DR-1000, E-SUB-B04-GR-1000","E-APP-B04-GR-1010, E-APP-B04-GR-1010, E-SUB-B04-GR-1020",0.0,0,1.0
The Big -P.01-UP-20-April-26,E-SUB-B04-1ST-1000,Submittal for Col. & Walls Conc. Dim.  & RFT DWGs (B04) (1st),The Big - P.01 - UP-24-MAY-26.EN.2.S.P01.B04.SUP.1stF,25-Dec-25,15-Jan-26,01-Jan-26,10-Feb-26,01-Jan-26,10-Feb-26,0,0,0,No,No,E-DR-1000,"E-APP-B04-1ST-1000, E-APP-B04-1ST-1000, E-SUB-B04-1ST-1010",0.0,0,1.0
The Big -P.01-UP-20-April-26,E-SUB-B04-1ST-1030,Submittal for Slabs Conc. Dim.  & RFT DWGs (B04) (1st),The Big - P.01 - UP-24-MAY-26.EN.2.S.P01.B04.SUP.1stF,05-Jan-26,27-Jan-26,20-May-26,14-Jun-26,,,18,-19,0,Yes,No,"E-DR-1000, E-SUB-B04-1ST-1020","E-APP-B04-1ST-1030, E-APP-B04-1ST-1030",0.0,0,0.0
The Big -P.01-UP-20-April-26,E-SUB-B04-1ST-1020,Submittal for Beams Conc. Dim.  & RFT DWGs (B04) (1st),The Big - P.01 - UP-24-MAY-26.EN.2.S.P01.B04.SUP.1stF,01-Jan-26,22-Jan-26,17-May-26,10-Jun-26,,,18,-19,0,Yes,No,"E-DR-1000, E-SUB-B04-1ST-1010","E-APP-B04-1ST-1020, E-APP-B04-1ST-1020, E-SUB-B04-1ST-1030",0.0,0,0.0
The Big -P.01-UP-20-April-26,E-SUB-B04-1ST-1010,Submittal for Stairs Conc. Dim.  & RFT DWGs (B04) (1st),The Big - P.01 - UP-24-MAY-26.EN.2.S.P01.B04.SUP.1stF,29-Dec-25,19-Jan-26,01-Feb-26,21-Feb-26,01-Feb-26,21-Feb-26,0,0,0,No,No,"E-DR-1000, E-SUB-B04-1ST-1000","E-APP-B04-1ST-1010, E-APP-B04-1ST-1010, E-SUB-B04-1ST-1020",0.0,0,1.0
The Big -P.01-UP-20-April-26,E-SUB-B04-2ND-1000,Submittal for Col. & Walls Conc. Dim.  & RFT DWGs (B04) (2nd),The Big - P.01 - UP-24-MAY-26.EN.2.S.P01.B04.SUP.2ndF,10-Jan-26,31-Jan-26,01-Jan-26,10-Feb-26,01-Jan-26,10-Feb-26,0,0,0,No,No,E-DR-1000,"E-APP-B04-2ND-1000, E-APP-B04-2ND-1000, E-SUB-B04-2ND-1010",0.0,0,1.0
The Big -P.01-UP-20-April-26,E-SUB-B04-2ND-1030,Submittal for Slabs Conc. Dim.  & RFT DWGs (B04) (2nd),The Big - P.01 - UP-24-MAY-26.EN.2.S.P01.B04.SUP.2ndF,20-Jan-26,10-Feb-26,20-May-26,14-Jun-26,,,18,15,0,No,No,"E-DR-1000, E-SUB-B04-2ND-1020","E-APP-B04-2ND-1030, E-APP-B04-2ND-1030",0.0,0,0.0
The Big -P.01-UP-20-April-26,E-SUB-B04-2ND-1020,Submittal for Beams Conc. Dim.  & RFT DWGs (B04) (2nd),The Big - P.01 - UP-24-MAY-26.EN.2.S.P01.B04.SUP.2ndF,17-Jan-26,07-Feb-26,17-May-26,10-Jun-26,,,18,15,0,No,No,"E-DR-1000, E-SUB-B04-2ND-1010","E-APP-B04-2ND-1020, E-APP-B04-2ND-1020, E-SUB-B04-2ND-1030",0.0,0,0.0
The Big -P.01-UP-20-April-26,E-SUB-B04-2ND-1010,Submittal for Stairs Conc. Dim.  & RFT DWGs (B04) (2nd),The Big - P.01 - UP-24-MAY-26.EN.2.S.P01.B04.SUP.2ndF,13-Jan-26,03-Feb-26,01-Feb-26,21-Feb-26,01-Feb-26,21-Feb-26,0,0,0,No,No,"E-DR-1000, E-SUB-B04-2ND-1000","E-APP-B04-2ND-1010, E-APP-B04-2ND-1010, E-SUB-B04-2ND-1020",0.0,0,1.0
The Big -P.01-UP-20-April-26,E-SUB-B04-3RD-1000,Submittal for Col. & Walls Conc. Dim.  & RFT DWGs (B04) (3rd),The Big - P.01 - UP-24-MAY-26.EN.2.S.P01.B04.SUP.3rdF,24-Jan-26,14-Feb-26,01-Jan-26,10-Feb-26,01-Jan-26,10-Feb-26,0,0,0,No,No,E-DR-1000,"E-APP-B04-2RD-1000, E-APP-B04-2RD-1000, E-SUB-B04-3RD-1010",0.0,0,1.0
The Big -P.01-UP-20-April-26,E-SUB-B04-3RD-1030,Submittal for Slabs Conc. Dim.  & RFT DWGs (B04) (3rd),The Big - P.01 - UP-24-MAY-26.EN.2.S.P01.B04.SUP.3rdF,04-Feb-26,24-Feb-26,20-May-26,14-Jun-26,,,18,49,0,No,No,"E-DR-1000, E-SUB-B04-3RD-1020","E-APP-B04-2RD-1030, E-APP-B04-2RD-1030",0.0,0,0.0
The Big -P.01-UP-20-April-26,E-SUB-B04-3RD-1020,Submittal for Beams Conc. Dim.  & RFT DWGs (B04) (3rd),The Big - P.01 - UP-24-MAY-26.EN.2.S.P01.B04.SUP.3rdF,01-Feb-26,21-Feb-26,17-May-26,10-Jun-26,,,18,49,0,No,No,"E-DR-1000, E-SUB-B04-3RD-1010","E-APP-B04-2RD-1020, E-APP-B04-2RD-1020, E-SUB-B04-3RD-1030",0.0,0,0.0
The Big -P.01-UP-20-April-26,E-SUB-B04-3RD-1010,Submittal for Stairs Conc. Dim.  & RFT DWGs (B04) (3rd),The Big - P.01 - UP-24-MAY-26.EN.2.S.P01.B04.SUP.3rdF,28-Jan-26,17-Feb-26,01-Feb-26,21-Feb-26,01-Feb-26,21-Feb-26,0,0,0,No,No,"E-DR-1000, E-SUB-B04-3RD-1000","E-APP-B04-2RD-1010, E-APP-B04-2RD-1010, E-SUB-B04-3RD-1020",0.0,0,1.0
The Big -P.01-UP-20-April-26,E-SUB-B04-4TH-1000,Submittal for Col. & Walls Conc. Dim.  & RFT DWGs (B04) (4th),The Big - P.01 - UP-24-MAY-26.EN.2.S.P01.B04.SUP.4thF,08-Feb-26,28-Feb-26,01-Jan-26,10-Feb-26,01-Jan-26,10-Feb-26,0,0,0,No,No,E-DR-1000,"E-APP-B04-4TH-1000, E-APP-B04-4TH-1000, E-SUB-B04-4TH-1010",0.0,0,1.0
The Big -P.01-UP-20-April-26,E-SUB-B04-4TH-1030,Submittal for Slabs Conc. Dim.  & RFT DWGs (B04) (4th),The Big - P.01 - UP-24-MAY-26.EN.2.S.P01.B04.SUP.4thF,18-Feb-26,10-Mar-26,20-May-26,14-Jun-26,,,18,81,0,No,No,"E-DR-1000, E-SUB-B04-4TH-1020","E-APP-B04-4TH-1030, E-APP-B04-4TH-1030",0.0,0,0.0
The Big -P.01-UP-20-April-26,E-SUB-B04-4TH-1020,Submittal for Beams Conc. Dim.  & RFT DWGs (B04) (4th),The Big - P.01 - UP-24-MAY-26.EN.2.S.P01.B04.SUP.4thF,15-Feb-26,07-Mar-26,17-May-26,10-Jun-26,,,18,81,0,No,No,"E-DR-1000, E-SUB-B04-4TH-1010","E-APP-B04-4TH-1020, E-APP-B04-4TH-1020, E-SUB-B04-4TH-1030",0.0,0,0.0
The Big -P.01-UP-20-April-26,E-SUB-B04-4TH-1010,Submittal for Stairs Conc. Dim.  & RFT DWGs (B04) (4th),The Big - P.01 - UP-24-MAY-26.EN.2.S.P01.B04.SUP.4thF,11-Feb-26,03-Mar-26,01-Feb-26,21-Feb-26,01-Feb-26,21-Feb-26,0,0,0,No,No,"E-DR-1000, E-SUB-B04-4TH-1000","E-APP-B04-4TH-1010, E-APP-B04-4TH-1010, E-SUB-B04-4TH-1020",0.0,0,1.0
The Big -P.01-UP-20-April-26,E-SUB-B04-5TH-1000,Submittal for Col. & Walls Conc. Dim.  & RFT DWGs (B04) (5th),The Big - P.01 - UP-24-MAY-26.EN.2.S.P01.B04.SUP.5thF,28-Feb-26,24-Mar-26,01-Jan-26,10-Feb-26,01-Jan-26,10-Feb-26,0,0,0,No,No,E-DR-1000,"E-APP-B04-5TH-1000, E-APP-B04-5TH-1000, E-SUB-B04-5TH-1010",0.0,0,1.0
The Big -P.01-UP-20-April-26,E-SUB-B04-5TH-1030,Submittal for Slabs Conc. Dim.  & RFT DWGs (B04) (5th),The Big - P.01 - UP-24-MAY-26.EN.2.S.P01.B04.SUP.5thF,10-Mar-26,04-Apr-26,20-May-26,14-Jun-26,,,18,113,0,No,No,"E-DR-1000, E-SUB-B04-5TH-1020","E-APP-B04-5TH-1030, E-APP-B04-5TH-1030",0.0,0,0.0
The Big -P.01-UP-20-April-26,E-SUB-B04-5TH-1020,Submittal for Beams Conc. Dim.  & RFT DWGs (B04) (5th),The Big - P.01 - UP-24-MAY-26.EN.2.S.P01.B04.SUP.5thF,07-Mar-26,31-Mar-26,17-May-26,10-Jun-26,,,18,113,0,No,No,"E-DR-1000, E-SUB-B04-5TH-1010","E-APP-B04-5TH-1020, E-APP-B04-5TH-1020, E-SUB-B04-5TH-1030",0.0,0,0.0
The Big -P.01-UP-20-April-26,E-SUB-B04-5TH-1010,Submittal for Stairs Conc. Dim.  & RFT DWGs (B04) (5th),The Big - P.01 - UP-24-MAY-26.EN.2.S.P01.B04.SUP.5thF,03-Mar-26,28-Mar-26,01-Feb-26,21-Feb-26,01-Feb-26,21-Feb-26,0,0,0,No,No,"E-DR-1000, E-SUB-B04-5TH-1000","E-APP-B04-5TH-1010, E-APP-B04-5TH-1010, E-SUB-B04-5TH-1020",0.0,0,1.0
The Big -P.01-UP-20-April-26,E-SUB-B04-6TH-1000,Submittal for Col. & Walls Conc. Dim.  & RFT DWGs (B04) (6th),The Big - P.01 - UP-24-MAY-26.EN.2.S.P01.B04.SUP.6thF,15-Mar-26,08-Apr-26,01-Jan-26,10-Feb-26,01-Jan-26,10-Feb-26,0,0,0,No,No,E-DR-1000,"E-APP-B04-6TH-1000, E-APP-B04-6TH-1000, E-SUB-B04-6TH-1010",0.0,0,1.0
The Big -P.01-UP-20-April-26,E-SUB-B04-6TH-1030,Submittal for Slabs Conc. Dim.  & RFT DWGs (B04) (6th),The Big - P.01 - UP-24-MAY-26.EN.2.S.P01.B04.SUP.6thF,30-Mar-26,20-Apr-26,20-May-26,14-Jun-26,,,18,140,0,No,No,"E-DR-1000, E-SUB-B04-6TH-1020","E-APP-B04-6TH-1030, E-APP-B04-6TH-1030",0.0,0,0.0
The Big -P.01-UP-20-April-26,E-SUB-B04-6TH-1020,Submittal for Beams Conc. Dim.  & RFT DWGs (B04) (6th),The Big - P.01 - UP-24-MAY-26.EN.2.S.P01.B04.SUP.6thF,26-Mar-26,16-Apr-26,17-May-26,10-Jun-26,,,18,140,0,No,No,"E-DR-1000, E-SUB-B04-6TH-1010","E-APP-B04-6TH-1020, E-APP-B04-6TH-1020, E-SUB-B04-6TH-1030",0.0,0,0.0
The Big -P.01-UP-20-April-26,E-SUB-B04-6TH-1010,Submittal for Stairs Conc. Dim.  & RFT DWGs (B04) (6th),The Big - P.01 - UP-24-MAY-26.EN.2.S.P01.B04.SUP.6thF,23-Mar-26,12-Apr-26,01-Feb-26,21-Feb-26,01-Feb-26,21-Feb-26,0,0,0,No,No,"E-DR-1000, E-SUB-B04-6TH-1000","E-APP-B04-6TH-1010, E-APP-B04-6TH-1010, E-SUB-B04-6TH-1020",0.0,0,1.0
The Big -P.01-UP-20-April-26,E-SUB-B04-7TH-1000,Submittal for Col. & Walls Conc. Dim.  & RFT DWGs (B04) (7th),The Big - P.01 - UP-24-MAY-26.EN.2.S.P01.B04.SUP.7thF,04-Apr-26,25-Apr-26,01-Jan-26,10-Feb-26,01-Jan-26,10-Feb-26,0,0,0,No,No,E-DR-1000,"E-APP-B04-7TH-1000, E-APP-B04-7TH-1000, E-SUB-B04-7TH-1010",0.0,0,1.0
The Big -P.01-UP-20-April-26,E-SUB-B04-7TH-1030,Submittal for Slabs Conc. Dim.  & RFT DWGs  (B04) (7th),The Big - P.01 - UP-24-MAY-26.EN.2.S.P01.B04.SUP.7thF,15-Apr-26,05-May-26,20-May-26,14-Jun-26,,,18,165,0,No,No,"E-DR-1000, E-SUB-B04-7TH-1020","E-APP-B04-7TH-1030, E-APP-B04-7TH-1030",0.0,0,0.0
The Big -P.01-UP-20-April-26,E-SUB-B04-7TH-1020,Submittal for Beams Conc. Dim.  & RFT DWGs (B04) (7th),The Big - P.01 - UP-24-MAY-26.EN.2.S.P01.B04.SUP.7thF,11-Apr-26,02-May-26,17-May-26,10-Jun-26,,,18,165,0,No,No,"E-DR-1000, E-SUB-B04-7TH-1010","E-APP-B04-7TH-1020, E-APP-B04-7TH-1020, E-SUB-B04-7TH-1030",0.0,0,0.0
The Big -P.01-UP-20-April-26,E-SUB-B04-7TH-1010,Submittal for Stairs Conc. Dim.  & RFT DWGs (B04) (7th),The Big - P.01 - UP-24-MAY-26.EN.2.S.P01.B04.SUP.7thF,07-Apr-26,28-Apr-26,01-Feb-26,21-Feb-26,01-Feb-26,21-Feb-26,0,0,0,No,No,"E-DR-1000, E-SUB-B04-7TH-1000","E-APP-B04-7TH-1010, E-APP-B04-7TH-1010, E-SUB-B04-7TH-1020",0.0,0,1.0
The Big -P.01-UP-20-April-26,E-SUB-B04-8TH-1000,Submittal for Col. & Walls Conc. Dim.  & RFT DWGs (B04) (8th),The Big - P.01 - UP-24-MAY-26.EN.2.S.P01.B04.SUP.8thF,19-Apr-26,09-May-26,01-Jan-26,10-Feb-26,01-Jan-26,10-Feb-26,0,0,0,No,No,E-DR-1000,"E-APP-B04-8TH-1000, E-APP-B04-8TH-1000, E-SUB-B04-8TH-1010",0.0,0,1.0
The Big -P.01-UP-20-April-26,E-SUB-B04-8TH-1030,Submittal for Slabs Conc. Dim.  & RFT DWGs (B04) (8th),The Big - P.01 - UP-24-MAY-26.EN.2.S.P01.B04.SUP.8thF,29-Apr-26,19-May-26,20-May-26,14-Jun-26,,,18,189,0,No,No,"E-DR-1000, E-SUB-B04-8TH-1020","E-APP-B04-8TH-1030, E-APP-B04-8TH-1030",0.0,0,0.0
The Big -P.01-UP-20-April-26,E-SUB-B04-8TH-1020,Submittal for Beams Conc. Dim.  & RFT DWGs (B04) (8th),The Big - P.01 - UP-24-MAY-26.EN.2.S.P01.B04.SUP.8thF,26-Apr-26,16-May-26,17-May-26,10-Jun-26,,,18,189,0,No,No,"E-DR-1000, E-SUB-B04-8TH-1010","E-APP-B04-8TH-1020, E-APP-B04-8TH-1020, E-SUB-B04-8TH-1030",0.0,0,0.0
The Big -P.01-UP-20-April-26,E-SUB-B04-8TH-1010,Submittal for Stairs Conc. Dim.  & RFT DWGs (B04) (8th),The Big - P.01 - UP-24-MAY-26.EN.2.S.P01.B04.SUP.8thF,22-Apr-26,12-May-26,01-Feb-26,21-Feb-26,01-Feb-26,21-Feb-26,0,0,0,No,No,"E-DR-1000, E-SUB-B04-8TH-1000","E-APP-B04-8TH-1010, E-APP-B04-8TH-1010, E-SUB-B04-8TH-1020",0.0,0,1.0
The Big -P.01-UP-20-April-26,E-SUB-B04-RF-1000,Submittal for Col. & Walls Conc. Dim.  & RFT DWGs (B04) (RF),The Big - P.01 - UP-24-MAY-26.EN.2.S.P01.B04.SUP.RF,25-Apr-26,14-May-26,01-Jan-26,10-Feb-26,01-Jan-26,10-Feb-26,0,0,0,No,No,E-DR-1000,"E-APP-B04-RF-1000, E-APP-B04-RF-1000, E-SUB-B04-RF-1010",0.0,0,1.0
The Big -P.01-UP-20-April-26,E-SUB-B04-RF-1020,Submittal for Slabs Conc. Dim.  & RFT DWGs (B04) (RF),The Big - P.01 - UP-24-MAY-26.EN.2.S.P01.B04.SUP.RF,02-May-26,21-May-26,20-May-26,14-Jun-26,,,18,205,0,No,No,"E-DR-1000, E-SUB-B04-RF-1010","E-APP-B04-RF-1020, E-APP-B04-RF-1020",0.0,0,0.0
The Big -P.01-UP-20-April-26,E-SUB-B04-RF-1010,Submittal for Beams Conc. Dim.  & RFT DWGs (B04) (RF),The Big - P.01 - UP-24-MAY-26.EN.2.S.P01.B04.SUP.RF,28-Apr-26,18-May-26,17-May-26,10-Jun-26,,,18,205,0,No,No,"E-DR-1000, E-SUB-B04-RF-1000","E-APP-B04-RF-1010, E-APP-B04-RF-1010, E-SUB-B04-RF-1020",0.0,0,0.0
The Big -P.01-UP-20-April-26,E-APP-B01-REP-1000,Approval for General Replacement Plan & Typical Sections for Replacement / Backfilling DWGs (B01),The Big - P.01 - UP-24-MAY-26.EN.2.A.P02.B01.SUB.1,02-Oct-25,14-Oct-25,02-Oct-25,23-Nov-25,02-Oct-25,23-Nov-25,0,0,0,No,Yes,"E-SUB-B01-REP-1000, E-SUB-B01-REP-1000",CON-EW-B01-1000,0.0,0,1.0
The Big -P.01-UP-20-April-26,E-APP-B01-FOOT-1000,Approval for PC Raft Conc. Dim. DWGs (B01) (footing),The Big - P.01 - UP-24-MAY-26.EN.2.A.P02.B01.SUB.F,23-Oct-25,03-Nov-25,23-Sep-25,16-Oct-25,23-Sep-25,16-Oct-25,0,0,0,No,Yes,"E-SUB-B01-FOOT-1000, E-SUB-B01-FOOT-1000",CON-B01-FOOT-1000,0.0,0,1.0
The Big -P.01-UP-20-April-26,E-APP-B01-FOOT-1010,Approval for RC Raft & Footings Conc. Dim. DWGs (B01),The Big - P.01 - UP-24-MAY-26.EN.2.A.P02.B01.SUB.F,27-Oct-25,06-Nov-25,14-Oct-25,27-Oct-25,14-Oct-25,27-Oct-25,0,0,0,No,Yes,"E-SUB-B01-FOOT-1010, E-SUB-B01-FOOT-1010","CON-B01-FOOT-1040, CON-B01-FOOT-1060",0.0,0,1.0
The Big -P.01-UP-20-April-26,E-APP-B01-FOOT-1020,Approval for RC Raft & Footings RFT DWGs (B01),The Big - P.01 - UP-24-MAY-26.EN.2.A.P02.B01.SUB.F,03-Nov-25,13-Nov-25,23-Sep-25,20-Oct-25,23-Sep-25,20-Oct-25,0,0,0,No,Yes,"E-SUB-B01-FOOT-1020, E-SUB-B01-FOOT-1020","CON-B01-FOOT-1050, CON-B01-FOOT-1070",0.0,0,1.0
The Big -P.01-UP-20-April-26,E-APP-B01-FOOT-1030,Approval for  Waterproofing Layout Plan (B01),The Big - P.01 - UP-24-MAY-26.EN.2.A.P02.B01.SUB.F,30-Oct-25,10-Nov-25,06-Oct-25,21-Oct-25,06-Oct-25,21-Oct-25,0,0,0,No,Yes,"E-SUB-B01-FOOT-1030, E-SUB-B01-FOOT-1030","CON-B01-FOOT-1030, CON-B01-FOOT-1110, CON-B01-SOG-1020",0.0,0,1.0
The Big -P.01-UP-20-April-26,E-APP-B01-BAS02-1000,Approval for Col. & Walls Conc. Dim.  & RFT DWGs (B01) (Bas 02),The Big - P.01 - UP-24-MAY-26.EN.2.A.P02.B01.SUB.2ndB,01-Dec-25,11-Dec-25,01-Feb-26,11-Feb-26,01-Feb-26,11-Feb-26,0,0,0,No,No,"E-SUB-B01-BAS02-1000, E-SUB-B01-BAS02-1000","CON-B01-BAS02-1010, CON-B01-BAS02-1020",0.0,0,1.0
The Big -P.01-UP-20-April-26,E-APP-B01-BAS02-1040,Approval for Slabs Conc. Dim.  & RFT DWGs (B01) (Bas 02),The Big - P.01 - UP-24-MAY-26.EN.2.A.P02.B01.SUB.2ndB,15-Dec-25,25-Dec-25,01-Mar-26,02-Mar-26,01-Mar-26,02-Mar-26,0,0,0,No,No,"E-SUB-B01-BAS02-1040, E-SUB-B01-BAS02-1040","CON-B01-BAS02-1040, CON-B01-BAS02-1070",0.0,0,1.0
The Big -P.01-UP-20-April-26,E-APP-B01-BAS02-1030,Approval for Beams Conc. Dim.  & RFT DWGs (B01) (Bas 02),The Big - P.01 - UP-24-MAY-26.EN.2.A.P02.B01.SUB.2ndB,11-Dec-25,22-Dec-25,01-Feb-26,17-Feb-26,01-Feb-26,17-Feb-26,0,0,0,No,No,"E-SUB-B01-BAS02-1030, E-SUB-B01-BAS02-1030","CON-B01-BAS02-1040, CON-B01-BAS02-1070",0.0,0,1.0
The Big -P.01-UP-20-April-26,E-APP-B01-BAS02-1010,Approval for Stairs Conc. Dim.  & RFT DWGs (B01) (Bas 02),The Big - P.01 - UP-24-MAY-26.EN.2.A.P02.B01.SUB.2ndB,04-Dec-25,15-Dec-25,01-Feb-26,07-Feb-26,01-Feb-26,07-Feb-26,0,0,0,No,No,"E-SUB-B01-BAS02-1010, E-SUB-B01-BAS02-1010","CON-B01-BAS02-1050, CON-B01-BAS02-1080",0.0,0,1.0
The Big -P.01-UP-20-April-26,E-APP-B01-BAS02-1020,Approval for Ramps Conc. Dim.  & RFT DWGs (B01) (Bas 02),The Big - P.01 - UP-24-MAY-26.EN.2.A.P02.B01.SUB.2ndB,08-Dec-25,18-Dec-25,20-Feb-26,12-Mar-26,20-Feb-26,12-Mar-26,0,0,0,No,No,"E-SUB-B01-BAS02-1020, E-SUB-B01-BAS02-1020","CON-B01-BAS02-1060, CON-B01-BAS02-1090",0.0,0,1.0
The Big -P.01-UP-20-April-26,E-APP-B01-SOG-1000,Approval for S.O.G Conc. Dim.DWGs (B01) (Sog),The Big - P.01 - UP-24-MAY-26.EN.2.A.P02.B01.SUB.2ndB.1,05-Apr-26,16-Apr-26,17-May-26,01-Jun-26,,,10,197,103,No,No,"E-SUB-B01-SOG-1000, E-SUB-B01-SOG-1000",CON-B01-SOG-1040,0.0,0,0.0
The Big -P.01-UP-20-April-26,E-APP-B01-SOG-1010,Approval for S.O.G RFT DWGs (B01) (Sog),The Big - P.01 - UP-24-MAY-26.EN.2.A.P02.B01.SUB.2ndB.1,08-Apr-26,20-Apr-26,17-May-26,01-Jun-26,,,10,197,103,No,No,"E-SUB-B01-SOG-1010, E-SUB-B01-SOG-1010",CON-B01-SOG-1040,0.0,0,0.0
The Big -P.01-UP-20-April-26,E-APP-B01-BAS01-1000,Approval for Col. & Walls Conc. Dim.  & RFT DWGs (B01) (Bas 01),The Big - P.01 - UP-24-MAY-26.EN.2.A.P02.B01.SUB.1stB,08-Dec-25,18-Dec-25,01-Feb-26,11-Feb-26,01-Feb-26,11-Feb-26,0,0,0,No,No,"E-SUB-B01-BAS01-1000, E-SUB-B01-BAS01-1000","CON-B01-BAS01-1010, CON-B01-BAS01-1020",0.0,0,1.0
The Big -P.01-UP-20-April-26,E-APP-B01-BAS01-1040,Approval for Slabs Conc. Dim.  & RFT DWGs (B01) (Bas 01),The Big - P.01 - UP-24-MAY-26.EN.2.A.P02.B01.SUB.1stB,22-Dec-25,01-Jan-26,15-Mar-26,02-Apr-26,15-Mar-26,02-Apr-26,0,0,0,No,No,"E-SUB-B01-BAS01-1040, E-SUB-B01-BAS01-1040","CON-B01-BAS01-1040, CON-B01-BAS01-1060",0.0,0,1.0
The Big -P.01-UP-20-April-26,E-APP-B01-BAS01-1030,Approval for Beams Conc. Dim.  & RFT DWGs (B01) (Bas 01),The Big - P.01 - UP-24-MAY-26.EN.2.A.P02.B01.SUB.1stB,18-Dec-25,29-Dec-25,01-Mar-26,15-Mar-26,01-Mar-26,15-Mar-26,0,0,0,No,No,"E-SUB-B01-BAS01-1030, E-SUB-B01-BAS01-1030","CON-B01-BAS01-1040, CON-B01-BAS01-1060",0.0,0,1.0
The Big -P.01-UP-20-April-26,E-APP-B01-BAS01-1010,Approval for Stairs Conc. Dim.  & RFT DWGs (B01) (Bas 01),The Big - P.01 - UP-24-MAY-26.EN.2.A.P02.B01.SUB.1stB,11-Dec-25,22-Dec-25,01-Feb-26,07-Feb-26,01-Feb-26,07-Feb-26,0,0,0,No,No,"E-SUB-B01-BAS01-1010, E-SUB-B01-BAS01-1010","CON-B01-BAS01-1050, CON-B01-BAS01-1080",0.0,0,1.0
The Big -P.01-UP-20-April-26,E-APP-B01-BAS01-1020,Approval for Ramps Conc. Dim.  & RFT DWGs (B01) (Bas 01),The Big - P.01 - UP-24-MAY-26.EN.2.A.P02.B01.SUB.1stB,15-Dec-25,25-Dec-25,20-Feb-26,12-Mar-26,20-Feb-26,12-Mar-26,0,0,0,No,No,"E-SUB-B01-BAS01-1020, E-SUB-B01-BAS01-1020","CON-B01-BAS01-1090, CON-B01-BAS01-1070",0.0,0,1.0
The Big -P.01-UP-20-April-26,E-APP-B01-GR-1000,Approval for Col. & Walls Conc. Dim.  & RFT DWGs (B01)  (GF),The Big - P.01 - UP-24-MAY-26.EN.2.A.P02.B01.SUP.GF,11-Dec-25,22-Dec-25,01-Feb-26,11-Feb-26,01-Feb-26,11-Feb-26,0,0,0,No,No,"E-SUB-B01-GR-1000, E-SUB-B01-GR-1000","CON-B01-GR-1010, CON-B01-GR-1020",0.0,0,1.0
The Big -P.01-UP-20-April-26,E-APP-B01-GR-1030,Approval for Slabs Conc. Dim.  & RFT DWGs (B01)  (GF),The Big - P.01 - UP-24-MAY-26.EN.2.A.P02.B01.SUP.GF,22-Dec-25,01-Jan-26,15-Jun-26,25-Jun-26,,,10,-60,59,Yes,No,"E-SUB-B01-GR-1030, E-SUB-B01-GR-1030","CON-B01-GR-1040, CON-B01-GR-1060",0.0,0,0.0
The Big -P.01-UP-20-April-26,E-APP-B01-GR-1020,Approval for Beams Conc. Dim.  & RFT DWGs (B01)  (GF),The Big - P.01 - UP-24-MAY-26.EN.2.A.P02.B01.SUP.GF,18-Dec-25,29-Dec-25,11-Jun-26,22-Jun-26,,,10,-57,62,Yes,No,"E-SUB-B01-GR-1020, E-SUB-B01-GR-1020","CON-B01-GR-1040, CON-B01-GR-1060",0.0,0,0.0
The Big -P.01-UP-20-April-26,E-APP-B01-GR-1010,Approval for Stairs Conc. Dim.  & RFT DWGs (B01)  (GF),The Big - P.01 - UP-24-MAY-26.EN.2.A.P02.B01.SUP.GF,15-Dec-25,25-Dec-25,01-Feb-26,07-Feb-26,01-Feb-26,07-Feb-26,0,0,0,No,No,"E-SUB-B01-GR-1010, E-SUB-B01-GR-1010","CON-B01-GR-1050, CON-B01-GR-1070",0.0,0,1.0
The Big -P.01-UP-20-April-26,E-APP-B01-1ST-1000,Approval for Col. & Walls Conc. Dim.  & RFT DWGs (B01) (1st),The Big - P.01 - UP-24-MAY-26.EN.2.A.P02.B01.SUP.1stF,31-Dec-25,12-Jan-26,01-Feb-26,11-Feb-26,01-Feb-26,11-Feb-26,0,0,0,No,No,"E-SUB-B01-1ST-1000, E-SUB-B01-1ST-1000","CON-B01-1ST-1010, CON-B01-1ST-1020",0.0,0,1.0
The Big -P.01-UP-20-April-26,E-APP-B01-1ST-1030,Approval for Slabs Conc. Dim.  & RFT DWGs (B01) (1st),The Big - P.01 - UP-24-MAY-26.EN.2.A.P02.B01.SUP.1stF,11-Jan-26,21-Jan-26,14-Jun-26,24-Jun-26,,,10,-30,90,Yes,No,"E-SUB-B01-1ST-1030, E-SUB-B01-1ST-1030","CON-B01-1ST-1040, CON-B01-1ST-1050",0.0,0,0.0
The Big -P.01-UP-20-April-26,E-APP-B01-1ST-1020,Approval for Beams Conc. Dim.  & RFT DWGs (B01) (1st),The Big - P.01 - UP-24-MAY-26.EN.2.A.P02.B01.SUP.1stF,08-Jan-26,19-Jan-26,11-Jun-26,22-Jun-26,,,10,-28,92,Yes,No,"E-SUB-B01-1ST-1020, E-SUB-B01-1ST-1020","CON-B01-1ST-1040, CON-B01-1ST-1050",0.0,0,0.0
The Big -P.01-UP-20-April-26,E-APP-B01-1ST-1010,Approval for Stairs Conc. Dim.  & RFT DWGs (B01) (1st),The Big - P.01 - UP-24-MAY-26.EN.2.A.P02.B01.SUP.1stF,04-Jan-26,15-Jan-26,01-Feb-26,07-Feb-26,01-Feb-26,07-Feb-26,0,0,0,No,No,"E-SUB-B01-1ST-1010, E-SUB-B01-1ST-1010","CON-B01-1ST-1040, CON-B01-1ST-1050, CON-B01-1ST-1040",0.0,0,1.0
The Big -P.01-UP-20-April-26,E-APP-B01-2ND-1000,Approval for Col. & Walls Conc. Dim.  & RFT DWGs (B01) (2nd),The Big - P.01 - UP-24-MAY-26.EN.2.A.P02.B01.SUP.2ndF,11-Jan-26,21-Jan-26,01-Feb-26,11-Feb-26,01-Feb-26,11-Feb-26,0,0,0,No,No,"E-SUB-B01-2ND-1000, E-SUB-B01-2ND-1000","CON-B01-2ND-1010, CON-B01-2ND-1020",0.0,0,1.0
The Big -P.01-UP-20-April-26,E-APP-B01-2ND-1030,Approval for Slabs Conc. Dim.  & RFT DWGs (B01) (2nd),The Big - P.01 - UP-24-MAY-26.EN.2.A.P02.B01.SUP.2ndF,21-Jan-26,02-Feb-26,15-Jun-26,25-Jun-26,,,10,3,123,No,No,"E-SUB-B01-2ND-1030, E-SUB-B01-2ND-1030","CON-B01-2ND-1040, CON-B01-2ND-1050",0.0,0,0.0
The Big -P.01-UP-20-April-26,E-APP-B01-2ND-1020,Approval for Beams Conc. Dim.  & RFT DWGs (B01) (2nd),The Big - P.01 - UP-24-MAY-26.EN.2.A.P02.B01.SUP.2ndF,18-Jan-26,29-Jan-26,11-Jun-26,22-Jun-26,,,10,6,126,No,No,"E-SUB-B01-2ND-1020, E-SUB-B01-2ND-1020","CON-B01-2ND-1040, CON-B01-2ND-1050",0.0,0,0.0
The Big -P.01-UP-20-April-26,E-APP-B01-2ND-1010,Approval for Stairs Conc. Dim.  & RFT DWGs (B01) (2nd),The Big - P.01 - UP-24-MAY-26.EN.2.A.P02.B01.SUP.2ndF,14-Jan-26,26-Jan-26,01-Feb-26,07-Feb-26,01-Feb-26,07-Feb-26,0,0,0,No,No,"E-SUB-B01-2ND-1010, E-SUB-B01-2ND-1010","CON-B01-2ND-1040, CON-B01-2ND-1050",0.0,0,1.0
The Big -P.01-UP-20-April-26,E-APP-B01-3ED-1000,Approval for Col. & Walls Conc. Dim.  & RFT DWGs (B01) (3rd),The Big - P.01 - UP-24-MAY-26.EN.2.A.P02.B01.SUP.3rdF,21-Jan-26,02-Feb-26,01-Feb-26,11-Feb-26,01-Feb-26,11-Feb-26,0,0,0,No,No,"E-SUB-B01-3RD-1000, E-SUB-B01-3RD-1000","CON-B01-3RD-1010, CON-B01-3RD-1020",0.0,0,1.0
The Big -P.01-UP-20-April-26,E-APP-B01-3ED-1030,Approval for Slabs Conc. Dim.  & RFT DWGs (B01) (3rd),The Big - P.01 - UP-24-MAY-26.EN.2.A.P02.B01.SUP.3rdF,02-Feb-26,12-Feb-26,15-Jun-26,25-Jun-26,,,10,22,142,No,No,"E-SUB-B01-3RD-1030, E-SUB-B01-3RD-1030","CON-B01-3RD-1040, CON-B01-3RD-1010",0.0,0,0.0
The Big -P.01-UP-20-April-26,E-APP-B01-3ED-1020,Approval for Beams Conc. Dim.  & RFT DWGs (B01) (3rd),The Big - P.01 - UP-24-MAY-26.EN.2.A.P02.B01.SUP.3rdF,29-Jan-26,09-Feb-26,11-Jun-26,22-Jun-26,,,10,25,145,No,No,"E-SUB-B01-3RD-1020, E-SUB-B01-3RD-1020","CON-B01-3RD-1040, CON-B01-3RD-1010",0.0,0,0.0
The Big -P.01-UP-20-April-26,E-APP-B01-3ED-1010,Approval for Stairs Conc. Dim.  & RFT DWGs (B01) (3rd),The Big - P.01 - UP-24-MAY-26.EN.2.A.P02.B01.SUP.3rdF,26-Jan-26,05-Feb-26,01-Feb-26,07-Feb-26,01-Feb-26,07-Feb-26,0,0,0,No,No,"E-SUB-B01-3RD-1010, E-SUB-B01-3RD-1010","CON-B01-3RD-1040, CON-B01-3RD-1010",0.0,0,1.0
The Big -P.01-UP-20-April-26,E-APP-B01-4TH-1000,Approval for Col. & Walls Conc. Dim.  & RFT DWGs (B01) (4th),The Big - P.01 - UP-24-MAY-26.EN.2.A.P02.B01.SUP.4thF,05-Feb-26,16-Feb-26,01-Feb-26,11-Feb-26,01-Feb-26,11-Feb-26,0,0,0,No,No,"E-SUB-B01-4TH-1000, E-SUB-B01-4TH-1000","CON-B01-4TH-1010, CON-B01-4TH-1020",0.0,0,1.0
The Big -P.01-UP-20-April-26,E-APP-B01-4TH-1030,Approval for Slabs Conc. Dim.  & RFT DWGs (B01) (4th),The Big - P.01 - UP-24-MAY-26.EN.2.A.P02.B01.SUP.4thF,16-Feb-26,26-Feb-26,15-Jun-26,25-Jun-26,,,10,55,175,No,No,"E-SUB-B01-4TH-1030, E-SUB-B01-4TH-1030","CON-B01-4TH-1040, CON-B01-4TH-1010",0.0,0,0.0
The Big -P.01-UP-20-April-26,E-APP-B01-4TH-1020,Approval for Beams Conc. Dim.  & RFT DWGs (B01) (4th),The Big - P.01 - UP-24-MAY-26.EN.2.A.P02.B01.SUP.4thF,12-Feb-26,23-Feb-26,11-Jun-26,22-Jun-26,,,10,58,178,No,No,"E-SUB-B01-4TH-1020, E-SUB-B01-4TH-1020","CON-B01-4TH-1040, CON-B01-4TH-1010",0.0,0,0.0
The Big -P.01-UP-20-April-26,E-APP-B01-4TH-1010,Approval for Stairs Conc. Dim.  & RFT DWGs (B01) (4th),The Big - P.01 - UP-24-MAY-26.EN.2.A.P02.B01.SUP.4thF,09-Feb-26,19-Feb-26,01-Feb-26,07-Feb-26,01-Feb-26,07-Feb-26,0,0,0,No,No,"E-SUB-B01-4TH-1010, E-SUB-B01-4TH-1010","CON-B01-4TH-1040, CON-B01-4TH-1010",0.0,0,1.0
The Big -P.01-UP-20-April-26,E-APP-B01-5TH-1000,Approval for Col. & Walls Conc. Dim.  & RFT DWGs (B01) (5th),The Big - P.01 - UP-24-MAY-26.EN.2.A.P02.B01.SUP.5thF,15-Feb-26,25-Feb-26,01-Feb-26,11-Feb-26,01-Feb-26,11-Feb-26,0,0,0,No,No,"E-SUB-B01-5TH-1000, E-SUB-B01-5TH-1000","CON-B01-5TH-1010, CON-B01-5TH-1020",0.0,0,1.0
The Big -P.01-UP-20-April-26,E-APP-B01-5TH-1030,Approval for Slabs Conc. Dim.  & RFT DWGs (B01) (5th),The Big - P.01 - UP-24-MAY-26.EN.2.A.P02.B01.SUP.5thF,25-Feb-26,08-Mar-26,15-Jun-26,25-Jun-26,,,10,101,221,No,No,"E-SUB-B01-5TH-1030, E-SUB-B01-5TH-1030","CON-B01-5TH-1040, CON-B01-5TH-1050",0.0,0,0.0
The Big -P.01-UP-20-April-26,E-APP-B01-5TH-1020,Approval for Beams Conc. Dim.  & RFT DWGs (B01) (5th),The Big - P.01 - UP-24-MAY-26.EN.2.A.P02.B01.SUP.5thF,22-Feb-26,04-Mar-26,11-Jun-26,22-Jun-26,,,10,104,224,No,No,"E-SUB-B01-5TH-1020, E-SUB-B01-5TH-1020","CON-B01-5TH-1040, CON-B01-5TH-1050",0.0,0,0.0
The Big -P.01-UP-20-April-26,E-APP-B01-5TH-1010,Approval for Stairs Conc. Dim.  & RFT DWGs (B01) (5th),The Big - P.01 - UP-24-MAY-26.EN.2.A.P02.B01.SUP.5thF,18-Feb-26,01-Mar-26,01-Feb-26,07-Feb-26,01-Feb-26,07-Feb-26,0,0,0,No,No,"E-SUB-B01-5TH-1010, E-SUB-B01-5TH-1010","CON-B01-5TH-1040, CON-B01-5TH-1050",0.0,0,1.0
The Big -P.01-UP-20-April-26,E-APP-B01-6TH-1000,Approval for Col. & Walls Conc. Dim.  & RFT DWGs (B01) (6th),The Big - P.01 - UP-24-MAY-26.EN.2.A.P02.B01.SUP.6thF,24-Feb-26,07-Mar-26,01-Feb-26,11-Feb-26,01-Feb-26,11-Feb-26,0,0,0,No,No,"E-SUB-B01-6TH-1000, E-SUB-B01-6TH-1000","CON-B01-6TH-1010, CON-B01-6TH-1020",0.0,0,1.0
The Big -P.01-UP-20-April-26,E-APP-B01-6TH-1030,Approval for Slabs Conc. Dim.  & RFT DWGs (B01) (6th),The Big - P.01 - UP-24-MAY-26.EN.2.A.P02.B01.SUP.6thF,07-Mar-26,22-Mar-26,15-Jun-26,25-Jun-26,,,10,131,251,No,No,"E-SUB-B01-6TH-1030, E-SUB-B01-6TH-1030","CON-B01-6TH-1040, CON-B01-6TH-1050",0.0,0,0.0
The Big -P.01-UP-20-April-26,E-APP-B01-6TH-1020,Approval for Beams Conc. Dim.  & RFT DWGs (B01) (6th),The Big - P.01 - UP-24-MAY-26.EN.2.A.P02.B01.SUP.6thF,03-Mar-26,14-Mar-26,11-Jun-26,22-Jun-26,,,10,134,254,No,No,"E-SUB-B01-6TH-1020, E-SUB-B01-6TH-1020","CON-B01-6TH-1040, CON-B01-6TH-1050",0.0,0,0.0
The Big -P.01-UP-20-April-26,E-APP-B01-6TH-1010,Approval for Stairs Conc. Dim.  & RFT DWGs (B01) (6th),The Big - P.01 - UP-24-MAY-26.EN.2.A.P02.B01.SUP.6thF,28-Feb-26,10-Mar-26,01-Feb-26,07-Feb-26,01-Feb-26,07-Feb-26,0,0,0,No,No,"E-SUB-B01-6TH-1010, E-SUB-B01-6TH-1010","CON-B01-6TH-1040, CON-B01-6TH-1050",0.0,0,1.0
The Big -P.01-UP-20-April-26,E-APP-B01-7TH-1000,Approval for Col. & Walls Conc. Dim.  & RFT DWGs (B01) (7th),The Big - P.01 - UP-24-MAY-26.EN.2.A.P02.B01.SUP.7thF,07-Mar-26,22-Mar-26,01-Feb-26,11-Feb-26,01-Feb-26,11-Feb-26,0,0,0,No,No,"E-SUB-B01-7TH-1000, E-SUB-B01-7TH-1000","CON-B01-7TH-1010, CON-B01-7TH-1020",0.0,0,1.0
The Big -P.01-UP-20-April-26,E-APP-B01-7TH-1030,Approval for Slabs Conc. Dim.  & RFT DWGs (B01) (7th),The Big - P.01 - UP-24-MAY-26.EN.2.A.P02.B01.SUP.7thF,22-Mar-26,01-Apr-26,15-Jun-26,25-Jun-26,,,10,159,279,No,No,"E-SUB-B01-7TH-1030, E-SUB-B01-7TH-1030","CON-B01-7TH-1040, CON-B01-7TH-1050",0.0,0,0.0
The Big -P.01-UP-20-April-26,E-APP-B01-7TH-1020,Approval for Beams Conc. Dim.  & RFT DWGs (B01) (7th),The Big - P.01 - UP-24-MAY-26.EN.2.A.P02.B01.SUP.7thF,14-Mar-26,29-Mar-26,11-Jun-26,22-Jun-26,,,10,162,282,No,No,"E-SUB-B01-7TH-1020, E-SUB-B01-7TH-1020","CON-B01-7TH-1040, CON-B01-7TH-1050",0.0,0,0.0
The Big -P.01-UP-20-April-26,E-APP-B01-7TH-1010,Approval for Stairs Conc. Dim.  & RFT DWGs (B01) (7th),The Big - P.01 - UP-24-MAY-26.EN.2.A.P02.B01.SUP.7thF,10-Mar-26,25-Mar-26,01-Feb-26,07-Feb-26,01-Feb-26,07-Feb-26,0,0,0,No,No,"E-SUB-B01-7TH-1010, E-SUB-B01-7TH-1010","CON-B01-7TH-1040, CON-B01-7TH-1050",0.0,0,1.0
The Big -P.01-UP-20-April-26,E-APP-B01-8TH-1000,Approval for Col. & Walls Conc. Dim.  & RFT DWGs (B01) (8th),The Big - P.01 - UP-24-MAY-26.EN.2.A.P02.B01.SUP.8thF,25-Mar-26,05-Apr-26,01-Feb-26,11-Feb-26,01-Feb-26,11-Feb-26,0,0,0,No,No,"E-SUB-B01-8TH-1000, E-SUB-B01-8TH-1000","CON-B01-8TH-1010, CON-B01-8TH-1020",0.0,0,1.0
The Big -P.01-UP-20-April-26,E-APP-B01-8TH-1030,Approval for Slabs Conc. Dim.  & RFT DWGs (B01) (8th),The Big - P.01 - UP-24-MAY-26.EN.2.A.P02.B01.SUP.8thF,05-Apr-26,16-Apr-26,15-Jun-26,25-Jun-26,,,10,185,305,No,No,"E-SUB-B01-8TH-1030, E-SUB-B01-8TH-1030","CON-B01-8TH-1040, CON-B01-8TH-1050",0.0,0,0.0
The Big -P.01-UP-20-April-26,E-APP-B01-8TH-1020,Approval for Beams Conc. Dim.  & RFT DWGs (B01) (8th),The Big - P.01 - UP-24-MAY-26.EN.2.A.P02.B01.SUP.8thF,01-Apr-26,12-Apr-26,11-Jun-26,22-Jun-26,,,10,188,308,No,No,"E-SUB-B01-8TH-1020, E-SUB-B01-8TH-1020","CON-B01-8TH-1040, CON-B01-8TH-1050",0.0,0,0.0
The Big -P.01-UP-20-April-26,E-APP-B01-8TH-1010,Approval for Stairs Conc. Dim.  & RFT DWGs (B01) (8th),The Big - P.01 - UP-24-MAY-26.EN.2.A.P02.B01.SUP.8thF,29-Mar-26,08-Apr-26,01-Feb-26,07-Feb-26,01-Feb-26,07-Feb-26,0,0,0,No,No,"E-SUB-B01-8TH-1010, E-SUB-B01-8TH-1010","CON-B01-8TH-1040, CON-B01-8TH-1050",0.0,0,1.0
The Big -P.01-UP-20-April-26,E-APP-B01-RF-1000,Approval for Col. & Walls Conc. Dim.  & RFT DWGs (B01) (RF),The Big - P.01 - UP-24-MAY-26.EN.2.A.P02.B01.SUP.RF,09-Apr-26,21-Apr-26,01-Feb-26,11-Feb-26,01-Feb-26,11-Feb-26,0,0,0,No,No,"E-SUB-B01-RF-1000, E-SUB-B01-RF-1000","CON-B01-9TH-1010, CON-B01-9TH-1020",0.0,0,1.0
The Big -P.01-UP-20-April-26,E-APP-B01-RF-1010,Approval for Slabs Conc. Dim.  & RFT DWGs (B01) (RF),The Big - P.01 - UP-24-MAY-26.EN.2.A.P02.B01.SUP.RF,14-Apr-26,25-Apr-26,11-Jun-26,22-Jun-26,,,10,208,328,No,No,"E-SUB-B01-RF-1010, E-SUB-B01-RF-1010","CON-B01-9TH-1040, CON-B01-9TH-1050",0.0,0,0.0
The Big -P.01-UP-20-April-26,E-APP-B01-RF-1020,Approval for Beams Conc. Dim.  & RFT DWGs (B01) (RF),The Big - P.01 - UP-24-MAY-26.EN.2.A.P02.B01.SUP.RF,18-Apr-26,28-Apr-26,17-May-26,01-Jun-26,,,10,226,346,No,No,"E-SUB-B01-RF-1020, E-SUB-B01-RF-1020","CON-B01-9TH-1040, CON-B01-9TH-1050",0.0,0,0.0
The Big -P.01-UP-20-April-26,E-APP-B02-REP-1000,Approval for General Replacement Plan & Typical Sections for Replacement / Backfilling DWGs (B02),The Big - P.01 - UP-24-MAY-26.EN.2.A.P02.B02.SUB.1,25-Sep-25,07-Oct-25,25-Sep-25,07-Oct-25,25-Sep-25,07-Oct-25,0,0,0,No,No,"E-SUB-B02-REP-1000, E-SUB-B02-REP-1000",CON-EW-B02-1000,0.0,0,1.0
The Big -P.01-UP-20-April-26,E-APP-B02-FOOT-1000,Approval for PC Raft Conc. Dim. DWGs (B02) (footing),The Big - P.01 - UP-24-MAY-26.EN.2.A.P02.B02.SUB.F,28-Oct-25,08-Nov-25,01-Dec-25,11-Dec-25,01-Dec-25,11-Dec-25,0,0,0,No,No,"E-SUB-B02-FOOT-1000, E-SUB-B02-FOOT-1000",CON-B02-FOOT-1000,0.0,0,1.0
The Big -P.01-UP-20-April-26,E-APP-B02-FOOT-1010,Approval for RC Raft & Footings Conc. Dim. DWGs (B02) (footing),The Big - P.01 - UP-24-MAY-26.EN.2.A.P02.B02.SUB.F,01-Nov-25,11-Nov-25,01-Dec-25,04-Dec-25,01-Dec-25,04-Dec-25,0,0,0,No,No,"E-SUB-B02-FOOT-1010, E-SUB-B02-FOOT-1010","CON-B02-FOOT-1040, CON-B02-FOOT-1060",0.0,0,1.0
The Big -P.01-UP-20-April-26,E-APP-B02-FOOT-1020,Approval for RC Raft & Footings RFT DWGs (B02) (footing),The Big - P.01 - UP-24-MAY-26.EN.2.A.P02.B02.SUB.F,04-Nov-25,15-Nov-25,01-Dec-25,04-Dec-25,01-Dec-25,04-Dec-25,0,0,0,No,No,"E-SUB-B02-FOOT-1020, E-SUB-B02-FOOT-1020","CON-B02-FOOT-1050, CON-B02-FOOT-1070",0.0,0,1.0
The Big -P.01-UP-20-April-26,E-APP-B02-FOOT-1030,Approval for  Waterproofing Layout Plan (B02),The Big - P.01 - UP-24-MAY-26.EN.2.A.P02.B02.SUB.F,29-Oct-25,09-Nov-25,01-Dec-25,11-Dec-25,01-Dec-25,11-Dec-25,0,0,0,No,No,"E-SUB-B02-FOOT-1030, E-SUB-B02-FOOT-1030","CON-B02-FOOT-1030, CON-B02-FOOT-1110, CON-B02-SOG-1020",0.0,0,1.0
The Big -P.01-UP-20-April-26,E-APP-B02-BAS02-1000,Approval for Col. & Walls Conc. Dim.  & RFT DWGs (B02) (Bas 02),The Big - P.01 - UP-24-MAY-26.EN.2.A.P02.B02.SUB.2ndB,01-Dec-25,11-Dec-25,01-Feb-26,09-Feb-26,01-Feb-26,09-Feb-26,0,0,0,No,No,"E-SUB-B02-BAS02-1000, E-SUB-B02-BAS02-1000","CON-B02-BAS02-1010, CON-B02-BAS02-1020",0.0,0,1.0
The Big -P.01-UP-20-April-26,E-APP-B02-BAS02-1030,Approval for Slabs Conc. Dim.  & RFT DWGs (B02) (Bas 02),The Big - P.01 - UP-24-MAY-26.EN.2.A.P02.B02.SUB.2ndB,11-Dec-25,22-Dec-25,01-Feb-26,17-Feb-26,01-Feb-26,17-Feb-26,0,0,0,No,No,"E-SUB-B02-BAS02-1030, E-SUB-B02-BAS02-1030","CON-B02-BAS02-1040, CON-B02-BAS02-1060",0.0,0,1.0
The Big -P.01-UP-20-April-26,E-APP-B02-BAS02-1020,Approval for Beams Conc. Dim.  & RFT DWGs (B02) (Bas 02),The Big - P.01 - UP-24-MAY-26.EN.2.A.P02.B02.SUB.2ndB,08-Dec-25,18-Dec-25,01-Feb-26,17-Feb-26,01-Feb-26,17-Feb-26,0,0,0,No,No,"E-SUB-B02-BAS02-1020, E-SUB-B02-BAS02-1020","CON-B02-BAS02-1040, CON-B02-BAS02-1060",0.0,0,1.0
The Big -P.01-UP-20-April-26,E-APP-B02-BAS02-1010,Approval for Stairs Conc. Dim.  & RFT DWGs (B02) (Bas 02),The Big - P.01 - UP-24-MAY-26.EN.2.A.P02.B02.SUB.2ndB,04-Dec-25,15-Dec-25,01-Feb-26,15-Feb-26,01-Feb-26,15-Feb-26,0,0,0,No,No,"E-SUB-B02-BAS02-1010, E-SUB-B02-BAS02-1010","CON-B02-BAS02-1050, CON-B02-BAS02-1070",0.0,0,1.0
The Big -P.01-UP-20-April-26,E-APP-B02-SOG-1000,Approval for S.O.G Conc. Dim. DWGs (B02) (Sog),The Big - P.01 - UP-24-MAY-26.EN.2.A.P02.B02.SUB.2ndB.SOG,09-Apr-26,21-Apr-26,11-Jun-26,22-Jun-26,,,10,194,100,No,No,"E-SUB-B02-SOG-1000, E-SUB-B02-SOG-1000",CON-B02-SOG-1040,0.0,0,0.0
The Big -P.01-UP-20-April-26,E-APP-B02-SOG-1010,Approval for S.O.G RFT DWGs (B02) (Sog),The Big - P.01 - UP-24-MAY-26.EN.2.A.P02.B02.SUB.2ndB.SOG,14-Apr-26,25-Apr-26,15-Jun-26,25-Jun-26,,,10,191,97,No,No,"E-SUB-B02-SOG-1010, E-SUB-B02-SOG-1010","CON-B02-SOG-1040, CON-B02-SOG-1040",0.0,0,0.0
The Big -P.01-UP-20-April-26,E-APP-B02-BAS01-1000,Approval for Col. & Walls Conc. Dim.  & RFT DWGs (B02) (Bas 01),The Big - P.01 - UP-24-MAY-26.EN.2.A.P02.B02.SUB.1stB,11-Dec-25,22-Dec-25,01-Feb-26,09-Feb-26,01-Feb-26,09-Feb-26,0,0,0,No,No,"E-SUB-B02-BAS01-1000, E-SUB-B02-BAS01-1000","CON-B02-BAS01-1010, CON-B02-BAS01-1020",0.0,0,1.0
The Big -P.01-UP-20-April-26,E-APP-B02-BAS01-1030,Approval for Slabs Conc. Dim.  & RFT DWGs (B02) (Bas 01),The Big - P.01 - UP-24-MAY-26.EN.2.A.P02.B02.SUB.1stB,22-Dec-25,01-Jan-26,01-Feb-26,17-Feb-26,01-Feb-26,17-Feb-26,0,0,0,No,No,"E-SUB-B02-BAS01-1030, E-SUB-B02-BAS01-1030","CON-B02-BAS01-1040, CON-B02-BAS01-1060",0.0,0,1.0
The Big -P.01-UP-20-April-26,E-APP-B02-BAS01-1020,Approval for Beams Conc. Dim.  & RFT DWGs (B02) (Bas 01),The Big - P.01 - UP-24-MAY-26.EN.2.A.P02.B02.SUB.1stB,18-Dec-25,29-Dec-25,01-Feb-26,17-Feb-26,01-Feb-26,17-Feb-26,0,0,0,No,No,"E-SUB-B02-BAS01-1020, E-SUB-B02-BAS01-1020","CON-B02-BAS01-1040, CON-B02-BAS01-1060",0.0,0,1.0
The Big -P.01-UP-20-April-26,E-APP-B02-BAS01-1010,Approval for Stairs Conc. Dim.  & RFT DWGs (B02) (Bas 01),The Big - P.01 - UP-24-MAY-26.EN.2.A.P02.B02.SUB.1stB,15-Dec-25,25-Dec-25,01-Feb-26,15-Feb-26,01-Feb-26,15-Feb-26,0,0,0,No,No,"E-SUB-B02-BAS01-1010, E-SUB-B02-BAS01-1010","CON-B02-BAS01-1050, CON-B02-BAS01-1070",0.0,0,1.0
The Big -P.01-UP-20-April-26,E-APP-B02-GR-1000,Approval for Col. & Walls Conc. Dim.  & RFT DWGs (B02) (GF),The Big - P.01 - UP-24-MAY-26.EN.2.A.P02.B02.SUP.GF,16-Dec-25,27-Dec-25,01-Feb-26,09-Feb-26,01-Feb-26,09-Feb-26,0,0,0,No,No,"E-SUB-B02-GR-1000, E-SUB-B02-GR-1000","CON-B02-GR-1010, CON-B02-GR-1020",0.0,0,1.0
The Big -P.01-UP-20-April-26,E-APP-B02-GR-1030,Approval for Slabs Conc. Dim.  & RFT DWGs (B02) (GF),The Big - P.01 - UP-24-MAY-26.EN.2.A.P02.B02.SUP.GF,27-Dec-25,06-Jan-26,15-Jun-26,25-Jun-26,,,10,-51,36,Yes,No,"E-SUB-B02-GR-1030, E-SUB-B02-GR-1030","CON-B02-GR-1040, CON-B02-GR-1060",0.0,0,0.0
The Big -P.01-UP-20-April-26,E-APP-B02-GR-1020,Approval for Beams Conc. Dim.  & RFT DWGs (B02) (GF),The Big - P.01 - UP-24-MAY-26.EN.2.A.P02.B02.SUP.GF,23-Dec-25,03-Jan-26,11-Jun-26,22-Jun-26,,,10,-48,39,Yes,No,"E-SUB-B02-GR-1020, E-SUB-B02-GR-1020","CON-B02-GR-1060, CON-B02-GR-1040",0.0,0,0.0
The Big -P.01-UP-20-April-26,E-APP-B02-GR-1010,Approval for Stairs Conc. Dim.  & RFT DWGs (B02) (GF),The Big - P.01 - UP-24-MAY-26.EN.2.A.P02.B02.SUP.GF,20-Dec-25,30-Dec-25,01-Feb-26,15-Feb-26,01-Feb-26,15-Feb-26,0,0,0,No,No,"E-SUB-B02-GR-1010, E-SUB-B02-GR-1010","CON-B02-GR-1070, CON-B02-GR-1050",0.0,0,1.0
The Big -P.01-UP-20-April-26,E-APP-B02-1ST-1000,Approval for Col. & Walls Conc. Dim.  & RFT DWGs (B02) (1st),The Big - P.01 - UP-24-MAY-26.EN.2.A.P02.B02.SUP.1stF,05-Jan-26,17-Jan-26,01-Feb-26,09-Feb-26,01-Feb-26,09-Feb-26,0,0,0,No,No,"E-SUB-B02-1ST-1000, E-SUB-B02-1ST-1000","CON-B02-1ST-1010, CON-B02-1ST-1020",0.0,0,1.0
The Big -P.01-UP-20-April-26,E-APP-B02-1ST-1030,Approval for Slabs Conc. Dim.  & RFT DWGs (B02) (1st),The Big - P.01 - UP-24-MAY-26.EN.2.A.P02.B02.SUP.1stF,17-Jan-26,28-Jan-26,15-Jun-26,25-Jun-26,,,10,6,83,No,No,"E-SUB-B02-1ST-1030, E-SUB-B02-1ST-1030","CON-B02-1ST-1040, CON-B02-1ST-1050",0.0,0,0.0
The Big -P.01-UP-20-April-26,E-APP-B02-1ST-1020,Approval for Beams Conc. Dim.  & RFT DWGs (B02) (1st),The Big - P.01 - UP-24-MAY-26.EN.2.A.P02.B02.SUP.1stF,13-Jan-26,24-Jan-26,11-Jun-26,22-Jun-26,,,10,9,86,No,No,"E-SUB-B02-1ST-1020, E-SUB-B02-1ST-1020","CON-B02-1ST-1040, CON-B02-1ST-1050",0.0,0,0.0
The Big -P.01-UP-20-April-26,E-APP-B02-1ST-1010,Approval for Stairs Conc. Dim.  & RFT DWGs (B02) (1st),The Big - P.01 - UP-24-MAY-26.EN.2.A.P02.B02.SUP.1stF,10-Jan-26,20-Jan-26,01-Feb-26,15-Feb-26,01-Feb-26,15-Feb-26,0,0,0,No,No,"E-SUB-B02-1ST-1010, E-SUB-B02-1ST-1010","CON-B02-1ST-1040, CON-B02-1ST-1050",0.0,0,1.0
The Big -P.01-UP-20-April-26,E-APP-B02-2ND-1000,Approval for Col. & Walls Conc. Dim.  & RFT DWGs (B02) (2nd),The Big - P.01 - UP-24-MAY-26.EN.2.A.P02.B02.SUP.2ndF,17-Jan-26,28-Jan-26,01-Feb-26,09-Feb-26,01-Feb-26,09-Feb-26,0,0,0,No,No,"E-SUB-B02-2ND-1000, E-SUB-B02-2ND-1000","CON-B02-2ND-1010, CON-B02-2ND-1020",0.0,0,1.0
The Big -P.01-UP-20-April-26,E-APP-B02-2ND-1030,Approval for Slabs Conc. Dim.  & RFT DWGs (B02) (2nd),The Big - P.01 - UP-24-MAY-26.EN.2.A.P02.B02.SUP.2ndF,28-Jan-26,08-Feb-26,15-Jun-26,25-Jun-26,,,10,55,132,No,No,"E-SUB-B02-2ND-1030, E-SUB-B02-2ND-1030","CON-B02-2ND-1040, CON-B02-2ND-1050",0.0,0,0.0
The Big -P.01-UP-20-April-26,E-APP-B02-2ND-1020,Approval for Beams Conc. Dim.  & RFT DWGs (B02) (2nd),The Big - P.01 - UP-24-MAY-26.EN.2.A.P02.B02.SUP.2ndF,24-Jan-26,04-Feb-26,11-Jun-26,22-Jun-26,,,10,58,135,No,No,"E-SUB-B02-2ND-1020, E-SUB-B02-2ND-1020","CON-B02-2ND-1040, CON-B02-2ND-1050",0.0,0,0.0
The Big -P.01-UP-20-April-26,E-APP-B02-2ND-1010,Approval for Stairs Conc. Dim.  & RFT DWGs (B02) (2nd),The Big - P.01 - UP-24-MAY-26.EN.2.A.P02.B02.SUP.2ndF,20-Jan-26,01-Feb-26,01-Feb-26,15-Feb-26,01-Feb-26,15-Feb-26,0,0,0,No,No,"E-SUB-B02-2ND-1010, E-SUB-B02-2ND-1010","CON-B02-2ND-1040, CON-B02-2ND-1050",0.0,0,1.0
The Big -P.01-UP-20-April-26,E-APP-B02-3RD-1000,Approval for Col. & Walls Conc. Dim.  & RFT DWGs (B02) (3rd),The Big - P.01 - UP-24-MAY-26.EN.2.A.P02.B02.SUP.3rdF,05-Feb-26,16-Feb-26,01-Feb-26,09-Feb-26,01-Feb-26,09-Feb-26,0,0,0,No,No,"E-SUB-B02-3RD-1000, E-SUB-B02-3RD-1000","CON-B02-3RD-1010, CON-B02-3RD-1020",0.0,0,1.0
The Big -P.01-UP-20-April-26,E-APP-B02-3RD-1030,Approval for Slabs Conc. Dim.  & RFT DWGs (B02) (3rd),The Big - P.01 - UP-24-MAY-26.EN.2.A.P02.B02.SUP.3rdF,16-Feb-26,26-Feb-26,15-Jun-26,25-Jun-26,,,10,106,183,No,No,"E-SUB-B02-3RD-1030, E-SUB-B02-3RD-1030","CON-B02-3RD-1040, CON-B02-3RD-1050",0.0,0,0.0
The Big -P.01-UP-20-April-26,E-APP-B02-3RD-1020,Approval for Beams Conc. Dim.  & RFT DWGs (B02) (3rd),The Big - P.01 - UP-24-MAY-26.EN.2.A.P02.B02.SUP.3rdF,12-Feb-26,23-Feb-26,11-Jun-26,22-Jun-26,,,10,109,186,No,No,"E-SUB-B02-3RD-1020, E-SUB-B02-3RD-1020","CON-B02-3RD-1040, CON-B02-3RD-1050",0.0,0,0.0
The Big -P.01-UP-20-April-26,E-APP-B02-3RD-1010,Approval for Stairs Conc. Dim.  & RFT DWGs (B02) (3rd),The Big - P.01 - UP-24-MAY-26.EN.2.A.P02.B02.SUP.3rdF,09-Feb-26,19-Feb-26,01-Feb-26,15-Feb-26,01-Feb-26,15-Feb-26,0,0,0,No,No,"E-SUB-B02-3RD-1010, E-SUB-B02-3RD-1010","CON-B02-3RD-1040, CON-B02-3RD-1050",0.0,0,1.0
The Big -P.01-UP-20-April-26,E-APP-B02-4TH-1000,Approval for Col. & Walls Conc. Dim.  & RFT DWGs (B02) (4th),The Big - P.01 - UP-24-MAY-26.EN.2.A.P02.B02.SUP.4thF,19-Feb-26,02-Mar-26,01-Feb-26,09-Feb-26,01-Feb-26,09-Feb-26,0,0,0,No,No,"E-SUB-B02-4TH-1000, E-SUB-B02-4TH-1000","CON-B02-4TH-1010, CON-B02-4TH-1020",0.0,0,1.0
The Big -P.01-UP-20-April-26,E-APP-B02-4TH-1030,Approval for Slabs Conc. Dim.  & RFT DWGs (B02) (4th),The Big - P.01 - UP-24-MAY-26.EN.2.A.P02.B02.SUP.4thF,02-Mar-26,12-Mar-26,15-Jun-26,25-Jun-26,,,10,158,232,No,No,"E-SUB-B02-4TH-1030, E-SUB-B02-4TH-1030","CON-B02-4TH-1040, CON-B02-4TH-1050",0.0,0,0.0
The Big -P.01-UP-20-April-26,E-APP-B02-4TH-1020,Approval for Beams Conc. Dim.  & RFT DWGs (B02) (4th),The Big - P.01 - UP-24-MAY-26.EN.2.A.P02.B02.SUP.4thF,26-Feb-26,09-Mar-26,11-Jun-26,22-Jun-26,,,10,161,235,No,No,"E-SUB-B02-4TH-1020, E-SUB-B02-4TH-1020","CON-B02-4TH-1040, CON-B02-4TH-1050",0.0,0,0.0
The Big -P.01-UP-20-April-26,E-APP-B02-4TH-1010,Approval for Stairs Conc. Dim.  & RFT DWGs (B02) (4th),The Big - P.01 - UP-24-MAY-26.EN.2.A.P02.B02.SUP.4thF,23-Feb-26,05-Mar-26,01-Feb-26,15-Feb-26,01-Feb-26,15-Feb-26,0,0,0,No,No,"E-SUB-B02-4TH-1010, E-SUB-B02-4TH-1010","CON-B02-4TH-1040, CON-B02-4TH-1050",0.0,0,1.0
The Big -P.01-UP-20-April-26,E-APP-B02-RF-1000,Approval for Col. & Walls Conc. Dim.  & RFT DWGs (B02) (RF),The Big - P.01 - UP-24-MAY-26.EN.2.A.P02.B02.SUP.RF,11-Mar-26,26-Mar-26,01-Feb-26,09-Feb-26,01-Feb-26,09-Feb-26,0,0,0,No,No,"E-SUB-B02-RF-1000, E-SUB-B02-RF-1000","CON-B02-RF-1020, CON-B02-RF-1010",0.0,0,1.0
The Big -P.01-UP-20-April-26,E-APP-B02-RF-1020,Approval for Slabs Conc. Dim.  & RFT DWGs (B02) (RF),The Big - P.01 - UP-24-MAY-26.EN.2.A.P02.B02.SUP.RF,23-Mar-26,02-Apr-26,15-Jun-26,25-Jun-26,,,10,200,274,No,No,"E-SUB-B02-RF-1020, E-SUB-B02-RF-1020","CON-B02-RF-1040, CON-B02-RF-1050",0.0,0,0.0
The Big -P.01-UP-20-April-26,E-APP-B02-RF-1010,Approval for Beams Conc. Dim.  & RFT DWGs (B02) (RF),The Big - P.01 - UP-24-MAY-26.EN.2.A.P02.B02.SUP.RF,15-Mar-26,30-Mar-26,11-Jun-26,22-Jun-26,,,10,203,277,No,No,"E-SUB-B02-RF-1010, E-SUB-B02-RF-1010","CON-B02-RF-1040, CON-B02-RF-1050",0.0,0,0.0
The Big -P.01-UP-20-April-26,E-APP-B03-REP-1000,Approval for General Replacement Plan & Typical Sections for Replacement / Backfilling DWGs (B03),The Big - P.01 - UP-24-MAY-26.EN.2.A.P01.B03.SUB.4,07-Oct-25,18-Oct-25,07-Oct-25,18-Oct-25,07-Oct-25,18-Oct-25,0,0,0,No,No,"E-SUB-B03-REP-1000, E-SUB-B03-REP-1000",CON-EW-B03-1000,0.0,0,1.0
The Big -P.01-UP-20-April-26,E-APP-B03-FOOT-1010,Approval for PC Raft Conc. Dim. DWGs (B03) (footing),The Big - P.01 - UP-24-MAY-26.EN.2.A.P01.B03.SUB.1,01-Nov-25,11-Nov-25,30-Nov-25,10-Dec-25,30-Nov-25,10-Dec-25,0,0,0,No,No,"E-SUB-B03-FOOT-1010, E-SUB-B03-FOOT-1010",CON-B03-FOOT-1000,0.0,0,1.0
The Big -P.01-UP-20-April-26,E-APP-B03-FOOT-1020,Approval for RC Raft & Footings Conc. Dim. DWGs  (B03) (footing),The Big - P.01 - UP-24-MAY-26.EN.2.A.P01.B03.SUB.1,04-Nov-25,15-Nov-25,30-Nov-25,10-Dec-25,30-Nov-25,10-Dec-25,0,0,0,No,No,"E-SUB-B03-FOOT-1020, E-SUB-B03-FOOT-1020","CON-B03-FOOT-1040, CON-B03-FOOT-1060",0.0,0,1.0
The Big -P.01-UP-20-April-26,E-APP-B03-FOOT-1030,Approval for RC Raft & Footings RFT DWGs  (B03) (footing),The Big - P.01 - UP-24-MAY-26.EN.2.A.P01.B03.SUB.1,08-Nov-25,18-Nov-25,30-Nov-25,10-Dec-25,30-Nov-25,10-Dec-25,0,0,0,No,No,"E-SUB-B03-FOOT-1030, E-SUB-B03-FOOT-1030","CON-B03-FOOT-1050, CON-B03-FOOT-1070",0.0,0,1.0
The Big -P.01-UP-20-April-26,E-APP-B03-FOOT-1000,Approval for  Waterproofing Layout Plan (B03),The Big - P.01 - UP-24-MAY-26.EN.2.A.P01.B03.SUB.1,02-Nov-25,12-Nov-25,30-Nov-25,10-Dec-25,30-Nov-25,10-Dec-25,0,0,0,No,No,"E-SUB-B03-FOOT-1000, E-SUB-B03-FOOT-1000","CON-B03-FOOT-1030, CON-B03-FOOT-1110, CON-B03-SOG-1020",0.0,0,1.0
The Big -P.01-UP-20-April-26,E-APP-B03-BAS02-1000,Approval for Col. & Walls Conc. Dim.  & RFT DWGs  (B03) (Bas 02),The Big - P.01 - UP-24-MAY-26.EN.2.A.P01.B03.SUB.3,01-Dec-25,11-Dec-25,07-Jan-26,12-Feb-26,07-Jan-26,12-Feb-26,0,0,0,No,No,"E-SUB-B03-BAS02-1000, E-SUB-B03-BAS02-1000","CON-B03-BAS02-1010, CON-B03-BAS02-1020",0.0,0,1.0
The Big -P.01-UP-20-April-26,E-APP-B03-BAS02-1030,Approval for Slabs Conc. Dim.  & RFT DWGs  (B03) (Bas 02),The Big - P.01 - UP-24-MAY-26.EN.2.A.P01.B03.SUB.3,11-Dec-25,22-Dec-25,01-Feb-26,25-Mar-26,01-Feb-26,25-Mar-26,0,0,0,No,No,"E-SUB-B03-BAS02-1030, E-SUB-B03-BAS02-1030","CON-B03-BAS02-1040, CON-B03-BAS02-1060",0.0,0,1.0
The Big -P.01-UP-20-April-26,E-APP-B03-BAS02-1020,Approval for Beams Conc. Dim.  & RFT DWGs  (B03) (Bas 02),The Big - P.01 - UP-24-MAY-26.EN.2.A.P01.B03.SUB.3,08-Dec-25,18-Dec-25,01-Feb-26,25-Mar-26,01-Feb-26,25-Mar-26,0,0,0,No,No,"E-SUB-B03-BAS02-1020, E-SUB-B03-BAS02-1020","CON-B03-BAS02-1040, CON-B03-BAS02-1060",0.0,0,1.0
The Big -P.01-UP-20-April-26,E-APP-B03-BAS02-1010,Approval for Stairs Conc. Dim.  & RFT DWGs  (B03) (Bas 02),The Big - P.01 - UP-24-MAY-26.EN.2.A.P01.B03.SUB.3,04-Dec-25,15-Dec-25,01-Feb-26,25-Mar-26,01-Feb-26,25-Mar-26,0,0,0,No,No,"E-SUB-B03-BAS02-1010, E-SUB-B03-BAS02-1010","CON-B03-BAS02-1050, CON-B03-BAS02-1070",0.0,0,1.0
The Big -P.01-UP-20-April-26,E-APP-B03-SOG-1000,Approval for S.O.G Conc. Dim. DWGs  (B03) (Sog),The Big - P.01 - UP-24-MAY-26.EN.2.A.P01.B03.SUB.3.2,19-Feb-26,02-Mar-26,11-Jun-26,22-Jun-26,,,10,196,35,No,No,"E-SUB-B03-SOG-1000, E-SUB-B03-SOG-1000",CON-B03-SOG-1040,0.0,0,0.0
The Big -P.01-UP-20-April-26,E-APP-B03-SOG-1010,Approval for S.O.G RFT DWGs  (B03) (Sog),The Big - P.01 - UP-24-MAY-26.EN.2.A.P01.B03.SUB.3.2,23-Feb-26,05-Mar-26,15-Jun-26,25-Jun-26,,,10,193,32,No,No,"E-SUB-B03-SOG-1010, E-SUB-B03-SOG-1010",CON-B03-SOG-1040,0.0,0,0.0
The Big -P.01-UP-20-April-26,E-APP-B03-BAS01-1000,Approval for Col. & Walls Conc. Dim.  & RFT DWGs  (B03) (Bas 01),The Big - P.01 - UP-24-MAY-26.EN.2.A.P01.B03.SUB.2,11-Dec-25,22-Dec-25,07-Jan-26,12-Feb-26,07-Jan-26,12-Feb-26,0,0,0,No,No,"E-SUB-B03-BAS01-1000, E-SUB-B03-BAS01-1000","CON-B03-BAS01-1010, CON-B03-BAS01-1020",0.0,0,1.0
The Big -P.01-UP-20-April-26,E-APP-B03-BAS01-1030,Approval for Slabs Conc. Dim.  & RFT DWGs  (B03) (Bas 01),The Big - P.01 - UP-24-MAY-26.EN.2.A.P01.B03.SUB.2,22-Dec-25,01-Jan-26,01-Feb-26,25-Mar-26,01-Feb-26,25-Mar-26,0,0,0,No,No,"E-SUB-B03-BAS01-1030, E-SUB-B03-BAS01-1030","CON-B03-BAS01-1040, CON-B03-BAS01-1050",0.0,0,1.0
The Big -P.01-UP-20-April-26,E-APP-B03-BAS01-1020,Approval for Beams Conc. Dim.  & RFT DWGs  (B03) (Bas 01),The Big - P.01 - UP-24-MAY-26.EN.2.A.P01.B03.SUB.2,18-Dec-25,29-Dec-25,01-Jan-26,25-Mar-26,01-Jan-26,25-Mar-26,0,0,0,No,No,"E-SUB-B03-BAS01-1020, E-SUB-B03-BAS01-1020","CON-B03-BAS01-1040, CON-B03-BAS01-1050",0.0,0,1.0
The Big -P.01-UP-20-April-26,E-APP-B03-BAS01-1010,Approval for Stairs Conc. Dim.  & RFT DWGs  (B03) (Bas 01),The Big - P.01 - UP-24-MAY-26.EN.2.A.P01.B03.SUB.2,15-Dec-25,25-Dec-25,01-Feb-26,25-Mar-26,01-Feb-26,25-Mar-26,0,0,0,No,No,"E-SUB-B03-BAS01-1010, E-SUB-B03-BAS01-1010","CON-B03-BAS01-1060, CON-B03-BAS01-1070",0.0,0,1.0
The Big -P.01-UP-20-April-26,E-APP-B03-GR-1000,Approval for Col. & Walls Conc. Dim.  & RFT DWGs  (B03) (GF),The Big - P.01 - UP-24-MAY-26.EN.2.A.P01.B03.SUP.GF,21-Dec-25,31-Dec-25,07-Jan-26,12-Feb-26,07-Jan-26,12-Feb-26,0,0,0,No,No,"E-SUB-B03-GR-1000, E-SUB-B03-GR-1000","CON-B03-GR-1010, CON-B03-GR-1020",0.0,0,1.0
The Big -P.01-UP-20-April-26,E-APP-B03-GR-1030,Approval for Slabs Conc. Dim.  & RFT DWGs  (B03) (GF),The Big - P.01 - UP-24-MAY-26.EN.2.A.P01.B03.SUP.GF,31-Dec-25,12-Jan-26,15-Jun-26,25-Jun-26,,,10,-47,41,Yes,No,"E-SUB-B03-GR-1030, E-SUB-B03-GR-1030","CON-B03-GR-1040, CON-B03-GR-1060",0.0,0,0.0
The Big -P.01-UP-20-April-26,E-APP-B03-GR-1020,Approval for Beams Conc. Dim.  & RFT DWGs  (B03) (GF),The Big - P.01 - UP-24-MAY-26.EN.2.A.P01.B03.SUP.GF,28-Dec-25,08-Jan-26,11-Jun-26,22-Jun-26,,,10,-44,44,Yes,No,"E-SUB-B03-GR-1020, E-SUB-B03-GR-1020","CON-B03-GR-1040, CON-B03-GR-1060",0.0,0,0.0
The Big -P.01-UP-20-April-26,E-APP-B03-GR-1010,Approval for Stairs Conc. Dim.  & RFT DWGs  (B03) (GF),The Big - P.01 - UP-24-MAY-26.EN.2.A.P01.B03.SUP.GF,24-Dec-25,04-Jan-26,01-Feb-26,25-Mar-26,01-Feb-26,25-Mar-26,0,0,0,No,No,"E-SUB-B03-GR-1010, E-SUB-B03-GR-1010","CON-B03-GR-1050, CON-B03-GR-1070",0.0,0,1.0
The Big -P.01-UP-20-April-26,E-APP-B03-1ST-1000,Approval for Col. & Walls Conc. Dim.  & RFT DWGs  (B03) (1st),The Big - P.01 - UP-24-MAY-26.EN.2.A.P01.B03.SUP.1stF,31-Dec-25,12-Jan-26,07-Jan-26,12-Feb-26,07-Jan-26,12-Feb-26,0,0,0,No,No,"E-SUB-B03-1ST-1000, E-SUB-B03-1ST-1000","CON-B03-1ST-1010, CON-B03-1ST-1020",0.0,0,1.0
The Big -P.01-UP-20-April-26,E-APP-B03-1ST-1030,Approval for Slabs Conc. Dim.  & RFT DWGs  (B03) (1st),The Big - P.01 - UP-24-MAY-26.EN.2.A.P01.B03.SUP.1stF,12-Jan-26,22-Jan-26,15-Jun-26,25-Jun-26,,,10,0,90,Yes,No,"E-SUB-B03-1ST-1030, E-SUB-B03-1ST-1030","CON-B03-1ST-1040, CON-B03-1ST-1050",0.0,0,0.0
The Big -P.01-UP-20-April-26,E-APP-B03-1ST-1020,Approval for Beams Conc. Dim.  & RFT DWGs  (B03) (1st),The Big - P.01 - UP-24-MAY-26.EN.2.A.P01.B03.SUP.1stF,08-Jan-26,19-Jan-26,11-Jun-26,22-Jun-26,,,10,3,93,No,No,"E-SUB-B03-1ST-1020, E-SUB-B03-1ST-1020","CON-B03-1ST-1040, CON-B03-1ST-1050",0.0,0,0.0
The Big -P.01-UP-20-April-26,E-APP-B03-1ST-1010,Approval for Stairs Conc. Dim.  & RFT DWGs  (B03) (1st),The Big - P.01 - UP-24-MAY-26.EN.2.A.P01.B03.SUP.1stF,04-Jan-26,15-Jan-26,01-Feb-26,25-Mar-26,01-Feb-26,25-Mar-26,0,0,0,No,No,"E-SUB-B03-1ST-1010, E-SUB-B03-1ST-1010","CON-B03-1ST-1040, CON-B03-1ST-1050",0.0,0,1.0
The Big -P.01-UP-20-April-26,E-APP-B03-2ND-1000,Approval for Col. & Walls Conc. Dim.  & RFT DWGs  (B03) (2nd),The Big - P.01 - UP-24-MAY-26.EN.2.A.P01.B03.SUP.2ndF,11-Jan-26,21-Jan-26,07-Jan-26,12-Feb-26,07-Jan-26,12-Feb-26,0,0,0,No,No,"E-SUB-B03-2ND-1000, E-SUB-B03-2ND-1000","CON-B03-2ND-1010, CON-B03-2ND-1020",0.0,0,1.0
The Big -P.01-UP-20-April-26,E-APP-B03-2ND-1030,Approval for Slabs Conc. Dim.  & RFT DWGs  (B03) (2nd),The Big - P.01 - UP-24-MAY-26.EN.2.A.P01.B03.SUP.2ndF,21-Jan-26,02-Feb-26,15-Jun-26,25-Jun-26,,,10,55,146,No,No,"E-SUB-B03-2ND-1030, E-SUB-B03-2ND-1030","CON-B03-2ND-1040, CON-B03-2ND-1050",0.0,0,0.0
The Big -P.01-UP-20-April-26,E-APP-B03-2ND-1020,Approval for Beams Conc. Dim.  & RFT DWGs  (B03) (2nd),The Big - P.01 - UP-24-MAY-26.EN.2.A.P01.B03.SUP.2ndF,18-Jan-26,29-Jan-26,11-Jun-26,22-Jun-26,,,10,58,149,No,No,"E-SUB-B03-2ND-1020, E-SUB-B03-2ND-1020","CON-B03-2ND-1040, CON-B03-2ND-1050",0.0,0,0.0
The Big -P.01-UP-20-April-26,E-APP-B03-2ND-1010,Approval for Stairs Conc. Dim.  & RFT DWGs  (B03) (2nd),The Big - P.01 - UP-24-MAY-26.EN.2.A.P01.B03.SUP.2ndF,14-Jan-26,26-Jan-26,01-Feb-26,25-Mar-26,01-Feb-26,25-Mar-26,0,0,0,No,No,"E-SUB-B03-2ND-1010, E-SUB-B03-2ND-1010","CON-B03-2ND-1040, CON-B03-2ND-1050",0.0,0,1.0
The Big -P.01-UP-20-April-26,E-APP-B03-3RD-1000,Approval for Col. & Walls Conc. Dim.  & RFT DWGs  (B03) (3rd),The Big - P.01 - UP-24-MAY-26.EN.2.A.P01.B03.SUP.3rdF,21-Jan-26,02-Feb-26,07-Jan-26,12-Feb-26,07-Jan-26,12-Feb-26,0,0,0,No,No,"E-SUB-B03-3RD-1000, E-SUB-B03-3RD-1000","CON-B03-3RD-1010, CON-B03-3RD-1020",0.0,0,1.0
The Big -P.01-UP-20-April-26,E-APP-B03-3RD-1030,Approval for Slabs Conc. Dim.  & RFT DWGs  (B03) (3rd),The Big - P.01 - UP-24-MAY-26.EN.2.A.P01.B03.SUP.3rdF,02-Feb-26,12-Feb-26,15-Jun-26,25-Jun-26,,,10,108,199,No,No,"E-SUB-B03-3RD-1030, E-SUB-B03-3RD-1030","CON-B03-3RD-1040, CON-B03-3RD-1050",0.0,0,0.0
The Big -P.01-UP-20-April-26,E-APP-B03-3RD-1020,Approval for Beams Conc. Dim.  & RFT DWGs  (B03) (3rd),The Big - P.01 - UP-24-MAY-26.EN.2.A.P01.B03.SUP.3rdF,29-Jan-26,09-Feb-26,11-Jun-26,22-Jun-26,,,10,111,202,No,No,"E-SUB-B03-3RD-1020, E-SUB-B03-3RD-1020","CON-B03-3RD-1040, CON-B03-3RD-1050",0.0,0,0.0
The Big -P.01-UP-20-April-26,E-APP-B03-3RD-1010,Approval for Stairs Conc. Dim.  & RFT DWGs  (B03) (3rd),The Big - P.01 - UP-24-MAY-26.EN.2.A.P01.B03.SUP.3rdF,26-Jan-26,05-Feb-26,01-Feb-26,25-Mar-26,01-Feb-26,25-Mar-26,0,0,0,No,No,"E-SUB-B03-3RD-1010, E-SUB-B03-3RD-1010","CON-B03-3RD-1040, CON-B03-3RD-1050",0.0,0,1.0
The Big -P.01-UP-20-April-26,E-APP-B03-4TH-1000,Approval for Col. & Walls Conc. Dim.  & RFT DWGs  (B03) (4th),The Big - P.01 - UP-24-MAY-26.EN.2.A.P01.B03.SUP.4thF,10-Feb-26,21-Feb-26,07-Jan-26,12-Feb-26,07-Jan-26,12-Feb-26,0,0,0,No,No,"E-SUB-B03-4TH-1000, E-SUB-B03-4TH-1000","CON-B03-4TH-1010, CON-B03-4TH-1020",0.0,0,1.0
The Big -P.01-UP-20-April-26,E-APP-B03-4TH-1030,Approval for Slabs Conc. Dim.  & RFT DWGs  (B03) (4th),The Big - P.01 - UP-24-MAY-26.EN.2.A.P01.B03.SUP.4thF,21-Feb-26,03-Mar-26,15-Jun-26,25-Jun-26,,,10,162,253,No,No,"E-SUB-B03-4TH-1030, E-SUB-B03-4TH-1030","CON-B03-4TH-1040, CON-B03-4TH-1050",0.0,0,0.0
The Big -P.01-UP-20-April-26,E-APP-B03-4TH-1020,Approval for Beams Conc. Dim.  & RFT DWGs  (B03) (4th),The Big - P.01 - UP-24-MAY-26.EN.2.A.P01.B03.SUP.4thF,17-Feb-26,28-Feb-26,11-Jun-26,22-Jun-26,,,10,165,256,No,No,"E-SUB-B03-4TH-1020, E-SUB-B03-4TH-1020","CON-B03-4TH-1040, CON-B03-4TH-1050",0.0,0,0.0
The Big -P.01-UP-20-April-26,E-APP-B03-4TH-1010,Approval for Stairs Conc. Dim.  & RFT DWGs  (B03) (4th),The Big - P.01 - UP-24-MAY-26.EN.2.A.P01.B03.SUP.4thF,14-Feb-26,24-Feb-26,01-Feb-26,25-Mar-26,01-Feb-26,25-Mar-26,0,0,0,No,No,"E-SUB-B03-4TH-1010, E-SUB-B03-4TH-1010","CON-B03-4TH-1040, CON-B03-4TH-1050",0.0,0,1.0
The Big -P.01-UP-20-April-26,E-APP-B03-RF-1000,Approval for Col. & Walls Conc. Dim.  & RFT DWGs  (B03) (RF),The Big - P.01 - UP-24-MAY-26.EN.2.A.P01.B03.SUP.RF,24-Feb-26,07-Mar-26,07-Jan-26,12-Feb-26,07-Jan-26,12-Feb-26,0,0,0,No,No,"E-SUB-B03-RF-1000, E-SUB-B03-RF-1000","CON-B03-RF-1020, CON-B03-RF-1010",0.0,0,1.0
The Big -P.01-UP-20-April-26,E-APP-B03-RF-1020,Approval for Slabs Conc. Dim.  & RFT DWGs  (B03) (RF),The Big - P.01 - UP-24-MAY-26.EN.2.A.P01.B03.SUP.RF,03-Mar-26,14-Mar-26,15-Jun-26,25-Jun-26,,,10,200,291,No,No,"E-SUB-B03-RF-1020, E-SUB-B03-RF-1020","CON-B03-RF-1040, CON-B03-RF-1050",0.0,0,0.0
The Big -P.01-UP-20-April-26,E-APP-B03-RF-1010,Approval for Beams Conc. Dim.  & RFT DWGs  (B03) (RF),The Big - P.01 - UP-24-MAY-26.EN.2.A.P01.B03.SUP.RF,28-Feb-26,10-Mar-26,11-Jun-26,22-Jun-26,,,10,203,294,No,No,"E-SUB-B03-RF-1010, E-SUB-B03-RF-1010","CON-B03-RF-1040, CON-B03-RF-1050",0.0,0,0.0
The Big -P.01-UP-20-April-26,E-APP-B04-REP-1000,Approval for General Replacement Plan & Typical Sections for Replacement / Backfilling DWGs (B04),The Big - P.01 - UP-24-MAY-26.EN.2.A.P01.B04.SUB.1,11-Nov-25,22-Nov-25,11-Nov-25,22-Nov-25,11-Nov-25,22-Nov-25,0,0,0,No,No,"E-SUB-B04-REP-1000, E-SUB-B04-REP-1000",CON-EW-B04-1000,0.0,0,1.0
The Big -P.01-UP-20-April-26,E-APP-B04-FOOT-1010,Approval for PC Raft Conc. Dim. DWGs (B04) (footing),The Big - P.01 - UP-24-MAY-26.EN.2.A.P01.B04.SUB.F,29-Oct-25,09-Nov-25,30-Nov-25,10-Dec-25,30-Nov-25,10-Dec-25,0,0,0,No,No,"E-SUB-B04-FOOT-1010, E-SUB-B04-FOOT-1010",CON-B04-FOOT-1000,0.0,0,1.0
The Big -P.01-UP-20-April-26,E-APP-B04-FOOT-1020,Approval for RC Raft & Footings Conc. Dim. DWGs (B04) (footing),The Big - P.01 - UP-24-MAY-26.EN.2.A.P01.B04.SUB.F,02-Nov-25,12-Nov-25,30-Nov-25,10-Dec-25,30-Nov-25,10-Dec-25,0,0,0,No,No,"E-SUB-B04-FOOT-1020, E-SUB-B04-FOOT-1020","CON-B04-FOOT-1040, CON-B04-FOOT-1060",0.0,0,1.0
The Big -P.01-UP-20-April-26,E-APP-B04-FOOT-1030,Approval for RC Raft & Footings RFT DWGs (B04) (footing),The Big - P.01 - UP-24-MAY-26.EN.2.A.P01.B04.SUB.F,06-Nov-25,17-Nov-25,30-Nov-25,10-Dec-25,30-Nov-25,10-Dec-25,0,0,0,No,No,"E-SUB-B04-FOOT-1030, E-SUB-B04-FOOT-1030","CON-B04-FOOT-1050, CON-B04-FOOT-1070",0.0,0,1.0
The Big -P.01-UP-20-April-26,E-APP-B04-FOOT-1000,Approval for  Waterproofing Layout Plan (B04),The Big - P.01 - UP-24-MAY-26.EN.2.A.P01.B04.SUB.F,13-Oct-25,23-Oct-25,30-Nov-25,10-Dec-25,30-Nov-25,10-Dec-25,0,0,0,No,No,"E-SUB-B04-FOOT-1000, E-SUB-B04-FOOT-1000","CON-B04-FOOT-1030, CON-B04-WT-1050, CON-B04-FOOT-1110, CON-B04-SOG-1020, CON-B04-WT-1200",0.0,0,1.0
The Big -P.01-UP-20-April-26,E-APP-B04-BAS02-1000,Approval for Col. & Walls Conc. Dim.  & RFT DWGs (B04) (Bas 02),The Big - P.01 - UP-24-MAY-26.EN.2.A.P01.B04.SUB.2ndF,01-Dec-25,11-Dec-25,01-Feb-26,12-Feb-26,01-Feb-26,12-Feb-26,0,0,0,No,No,"E-SUB-B04-BAS02-1000, E-SUB-B04-BAS02-1000","CON-B04-BAS02-1010, CON-B04-BAS02-1020",0.0,0,1.0
The Big -P.01-UP-20-April-26,E-APP-B04-BAS02-1040,Approval for Slabs Conc. Dim.  & RFT DWGs (B04) (Bas 02),The Big - P.01 - UP-24-MAY-26.EN.2.A.P01.B04.SUB.2ndF,15-Dec-25,25-Dec-25,01-Mar-26,05-Mar-26,01-Mar-26,05-Mar-26,0,0,0,No,No,"E-SUB-B04-BAS02-1040, E-SUB-B04-BAS02-1040","CON-B04-BAS02-1040, CON-B04-BAS02-1060",0.0,0,1.0
The Big -P.01-UP-20-April-26,E-APP-B04-BAS02-1030,Approval for Beams Conc. Dim.  & RFT DWGs (B04) (Bas 02),The Big - P.01 - UP-24-MAY-26.EN.2.A.P01.B04.SUB.2ndF,11-Dec-25,22-Dec-25,24-Feb-26,02-Mar-26,24-Feb-26,02-Mar-26,0,0,0,No,No,"E-SUB-B04-BAS02-1030, E-SUB-B04-BAS02-1030","CON-B04-BAS02-1040, CON-B04-BAS02-1060",0.0,0,1.0
The Big -P.01-UP-20-April-26,E-APP-B04-BAS02-1010,Approval for Stairs Conc. Dim.  & RFT DWGs (B04) (Bas 02),The Big - P.01 - UP-24-MAY-26.EN.2.A.P01.B04.SUB.2ndF,04-Dec-25,15-Dec-25,08-Feb-26,18-Feb-26,08-Feb-26,18-Feb-26,0,0,0,No,No,"E-SUB-B04-BAS02-1010, E-SUB-B04-BAS02-1010","CON-B04-BAS02-1050, CON-B04-BAS02-1080",0.0,0,1.0
The Big -P.01-UP-20-April-26,E-APP-B04-BAS02-1020,Approval for Ramps Conc. Dim.  & RFT DWGs (B04) (Bas 02),The Big - P.01 - UP-24-MAY-26.EN.2.A.P01.B04.SUB.2ndF,08-Dec-25,18-Dec-25,01-Mar-26,02-Mar-26,01-Mar-26,02-Mar-26,0,0,0,No,No,"E-SUB-B04-BAS02-1020, E-SUB-B04-BAS02-1020","CON-B04-BAS02-1050, CON-B04-BAS02-1090",0.0,0,1.0
The Big -P.01-UP-20-April-26,E-APP-B04-WT-1000,Approval for PC Raft Conc. Dim. DWGs (B04) (Water Tank),The Big - P.01 - UP-24-MAY-26.EN.2.A.P01.B04.SUB.2ndF.WT,04-Oct-25,15-Oct-25,07-Oct-25,17-Dec-25,07-Oct-25,17-Dec-25,0,0,0,No,No,"E-SUB-B04-WT-1000, E-SUB-B04-WT-1000",CON-B04-WT-1020,0.0,0,1.0
The Big -P.01-UP-20-April-26,E-APP-B04-WT-1010,Approval for RC Raft Conc. Dim. DWGs (B04) (Water Tank),The Big - P.01 - UP-24-MAY-26.EN.2.A.P01.B04.SUB.2ndF.WT,08-Oct-25,19-Oct-25,18-Nov-25,29-Nov-25,18-Nov-25,29-Nov-25,0,0,0,No,No,"E-SUB-B04-WT-1010, E-SUB-B04-WT-1010",CON-B04-WT-1060,0.0,0,1.0
The Big -P.01-UP-20-April-26,E-APP-B04-WT-1030,Approval for Col. & Walls DWGs (B04) (Water Tank),The Big - P.01 - UP-24-MAY-26.EN.2.A.P01.B04.SUB.2ndF.WT,15-Oct-25,26-Oct-25,01-Dec-25,11-Dec-25,01-Dec-25,11-Dec-25,0,0,0,No,No,"E-SUB-B04-WT-1030, E-SUB-B04-WT-1030","CON-B04-WT-1100, CON-B04-WT-1110",0.0,0,1.0
The Big -P.01-UP-20-April-26,E-APP-B04-WT-1040,Approval for Slabs DWGs (B04) (Water Tank),The Big - P.01 - UP-24-MAY-26.EN.2.A.P01.B04.SUB.2ndF.WT,19-Oct-25,29-Oct-25,01-Dec-25,11-Dec-25,01-Dec-25,11-Dec-25,0,0,0,No,No,"E-SUB-B04-WT-1040, E-SUB-B04-WT-1040","CON-B04-WT-1150, CON-B04-WT-1160",0.0,0,1.0
The Big -P.01-UP-20-April-26,E-APP-B04-WT-1020,Approval for RC Raft RFT DWGs (B04) (Water Tank),The Big - P.01 - UP-24-MAY-26.EN.2.A.P01.B04.SUB.2ndF.WT,12-Oct-25,22-Oct-25,22-Nov-25,02-Dec-25,22-Nov-25,02-Dec-25,0,0,0,No,No,"E-SUB-B04-WT-1020, E-SUB-B04-WT-1020",CON-B04-WT-1070,0.0,0,1.0
The Big -P.01-UP-20-April-26,E-APP-B04-SOG-1000,Approval for S.O.G Conc. Dim. DWGs (B04) (Sog),The Big - P.01 - UP-24-MAY-26.EN.2.A.P01.B04.SUB.2ndF.SOG,04-Apr-26,15-Apr-26,26-May-26,10-Jun-26,,,10,208,55,No,No,"E-SUB-B04-SOG-1000, E-SUB-B04-SOG-1000",CON-B04-SOG-1040,0.0,0,0.0
The Big -P.01-UP-20-April-26,E-APP-B04-SOG-1010,Approval for S.O.G RFT DWGs (B04) (Sog),The Big - P.01 - UP-24-MAY-26.EN.2.A.P01.B04.SUB.2ndF.SOG,07-Apr-26,19-Apr-26,03-Jun-26,14-Jun-26,,,10,205,52,No,No,"E-SUB-B04-SOG-1010, E-SUB-B04-SOG-1010",CON-B04-SOG-1040,0.0,0,0.0
The Big -P.01-UP-20-April-26,E-APP-B04-BAS01-1000,Approval for Col. & Walls Conc. Dim.  & RFT DWGs (B04) (Bas 01),The Big - P.01 - UP-24-MAY-26.EN.2.A.P01.B04.SUB.1stB,21-Dec-25,31-Dec-25,01-Feb-26,12-Feb-26,01-Feb-26,12-Feb-26,0,0,0,No,No,"E-SUB-B04-BAS01-1000, E-SUB-B04-BAS01-1000","CON-B04-BAS01-1010, CON-B04-BAS01-1020",0.0,0,1.0
The Big -P.01-UP-20-April-26,E-APP-B04-BAS01-1040,Approval for Slabs Conc. Dim.  & RFT DWGs (B04) (Bas 01),The Big - P.01 - UP-24-MAY-26.EN.2.A.P01.B04.SUB.1stB,04-Jan-26,15-Jan-26,01-Mar-26,05-Mar-26,01-Mar-26,05-Mar-26,0,0,0,No,No,"E-SUB-B04-BAS01-1040, E-SUB-B04-BAS01-1040","CON-B04-BAS01-1040, CON-B04-BAS01-1070",0.0,0,1.0
The Big -P.01-UP-20-April-26,E-APP-B04-BAS01-1030,Approval for Beams Conc. Dim.  & RFT DWGs (B04) (Bas 01),The Big - P.01 - UP-24-MAY-26.EN.2.A.P01.B04.SUB.1stB,31-Dec-25,12-Jan-26,24-Feb-26,02-Mar-26,24-Feb-26,02-Mar-26,0,0,0,No,No,"E-SUB-B04-BAS01-1030, E-SUB-B04-BAS01-1030","CON-B04-BAS01-1040, CON-B04-BAS01-1070",0.0,0,1.0
The Big -P.01-UP-20-April-26,E-APP-B04-BAS01-1010,Approval for Stairs Conc. Dim.  & RFT DWGs (B04) (Bas 01),The Big - P.01 - UP-24-MAY-26.EN.2.A.P01.B04.SUB.1stB,24-Dec-25,04-Jan-26,08-Feb-26,18-Feb-26,08-Feb-26,18-Feb-26,0,0,0,No,No,"E-SUB-B04-BAS01-1010, E-SUB-B04-BAS01-1010","CON-B04-BAS01-1060, CON-B04-BAS01-1090",0.0,0,1.0
The Big -P.01-UP-20-April-26,E-APP-B04-BAS01-1020,Approval for Ramps Conc. Dim.  & RFT DWGs (B04) (Bas 01),The Big - P.01 - UP-24-MAY-26.EN.2.A.P01.B04.SUB.1stB,28-Dec-25,08-Jan-26,01-Mar-26,02-Mar-26,01-Mar-26,02-Mar-26,0,0,0,No,No,"E-SUB-B04-BAS01-1020, E-SUB-B04-BAS01-1020","CON-B04-BAS01-1080, CON-B04-BAS01-1050",0.0,0,1.0
The Big -P.01-UP-20-April-26,E-APP-B04-GR-1000,Approval for Col. & Walls Conc. Dim.  & RFT DWGs (B04) (GF),The Big - P.01 - UP-24-MAY-26.EN.2.A.P01.B04.SUP.GF,05-Jan-26,17-Jan-26,01-Feb-26,12-Feb-26,01-Feb-26,12-Feb-26,0,0,0,No,No,"E-SUB-B04-GR-1000, E-SUB-B04-GR-1000","CON-B04-GR-1010, CON-B04-GR-1020",0.0,0,1.0
The Big -P.01-UP-20-April-26,E-APP-B04-GR-1030,Approval for Slabs Conc. Dim.  & RFT DWGs (B04) (GF),The Big - P.01 - UP-24-MAY-26.EN.2.A.P01.B04.SUP.GF,17-Jan-26,28-Jan-26,15-Jun-26,25-Jun-26,,,10,-45,45,Yes,No,"E-SUB-B04-GR-1030, E-SUB-B04-GR-1030","CON-B04-GR-1040, CON-B04-GR-1060",0.0,0,0.0
The Big -P.01-UP-20-April-26,E-APP-B04-GR-1020,Approval for Beams Conc. Dim.  & RFT DWGs (B04) (GF),The Big - P.01 - UP-24-MAY-26.EN.2.A.P01.B04.SUP.GF,13-Jan-26,24-Jan-26,11-Jun-26,22-Jun-26,,,10,-42,48,Yes,No,"E-SUB-B04-GR-1020, E-SUB-B04-GR-1020","CON-B04-GR-1040, CON-B04-GR-1060",0.0,0,0.0
The Big -P.01-UP-20-April-26,E-APP-B04-GR-1010,Approval for Stairs Conc. Dim.  & RFT DWGs (B04) (GF),The Big - P.01 - UP-24-MAY-26.EN.2.A.P01.B04.SUP.GF,10-Jan-26,20-Jan-26,08-Feb-26,18-Feb-26,08-Feb-26,18-Feb-26,0,0,0,No,No,"E-SUB-B04-GR-1010, E-SUB-B04-GR-1010","CON-B04-GR-1050, CON-B04-GR-1070",0.0,0,1.0
The Big -P.01-UP-20-April-26,E-APP-B04-1ST-1000,Approval for Col. & Walls Conc. Dim.  & RFT DWGs (B04) (1st),The Big - P.01 - UP-24-MAY-26.EN.2.A.P01.B04.SUP.1stF,17-Jan-26,28-Jan-26,01-Feb-26,12-Feb-26,01-Feb-26,12-Feb-26,0,0,0,No,No,"E-SUB-B04-1ST-1000, E-SUB-B04-1ST-1000","CON-B04-1ST-1010, CON-B04-1ST-1020",0.0,0,1.0
The Big -P.01-UP-20-April-26,E-APP-B04-1ST-1030,Approval for Slabs Conc. Dim.  & RFT DWGs (B04) (1st),The Big - P.01 - UP-24-MAY-26.EN.2.A.P01.B04.SUP.1stF,28-Jan-26,08-Feb-26,15-Jun-26,25-Jun-26,,,10,-19,86,Yes,No,"E-SUB-B04-1ST-1030, E-SUB-B04-1ST-1030","CON-B04-1ST-1040, CON-B04-1ST-1050",0.0,0,0.0
The Big -P.01-UP-20-April-26,E-APP-B04-1ST-1020,Approval for Beams Conc. Dim.  & RFT DWGs (B04) (1st),The Big - P.01 - UP-24-MAY-26.EN.2.A.P01.B04.SUP.1stF,24-Jan-26,04-Feb-26,11-Jun-26,22-Jun-26,,,10,-16,89,Yes,No,"E-SUB-B04-1ST-1020, E-SUB-B04-1ST-1020","CON-B04-1ST-1040, CON-B04-1ST-1050",0.0,0,0.0
The Big -P.01-UP-20-April-26,E-APP-B04-1ST-1010,Approval for Stairs Conc. Dim.  & RFT DWGs (B04) (1st),The Big - P.01 - UP-24-MAY-26.EN.2.A.P01.B04.SUP.1stF,20-Jan-26,01-Feb-26,08-Feb-26,18-Feb-26,08-Feb-26,18-Feb-26,0,0,0,No,No,"E-SUB-B04-1ST-1010, E-SUB-B04-1ST-1010","CON-B04-1ST-1040, CON-B04-1ST-1050",0.0,0,1.0
The Big -P.01-UP-20-April-26,E-APP-B04-2ND-1000,Approval for Col. & Walls Conc. Dim.  & RFT DWGs (B04) (2nd),The Big - P.01 - UP-24-MAY-26.EN.2.A.P01.B04.SUP.2ndF,01-Feb-26,11-Feb-26,01-Feb-26,12-Feb-26,01-Feb-26,12-Feb-26,0,0,0,No,No,"E-SUB-B04-2ND-1000, E-SUB-B04-2ND-1000","CON-B04-2ND-1010, CON-B04-2ND-1020",0.0,0,1.0
The Big -P.01-UP-20-April-26,E-APP-B04-2ND-1030,Approval for Slabs Conc. Dim.  & RFT DWGs (B04) (2nd),The Big - P.01 - UP-24-MAY-26.EN.2.A.P01.B04.SUP.2ndF,11-Feb-26,22-Feb-26,15-Jun-26,25-Jun-26,,,10,15,120,No,No,"E-SUB-B04-2ND-1030, E-SUB-B04-2ND-1030","CON-B04-2ND-1040, CON-B04-2ND-1050",0.0,0,0.0
The Big -P.01-UP-20-April-26,E-APP-B04-2ND-1020,Approval for Beams Conc. Dim.  & RFT DWGs (B04) (2nd),The Big - P.01 - UP-24-MAY-26.EN.2.A.P01.B04.SUP.2ndF,08-Feb-26,18-Feb-26,11-Jun-26,22-Jun-26,,,10,18,123,No,No,"E-SUB-B04-2ND-1020, E-SUB-B04-2ND-1020","CON-B04-2ND-1040, CON-B04-2ND-1050",0.0,0,0.0
The Big -P.01-UP-20-April-26,E-APP-B04-2ND-1010,Approval for Stairs Conc. Dim.  & RFT DWGs (B04) (2nd),The Big - P.01 - UP-24-MAY-26.EN.2.A.P01.B04.SUP.2ndF,04-Feb-26,15-Feb-26,08-Feb-26,18-Feb-26,08-Feb-26,18-Feb-26,0,0,0,No,No,"E-SUB-B04-2ND-1010, E-SUB-B04-2ND-1010","CON-B04-2ND-1040, CON-B04-2ND-1050",0.0,0,1.0
The Big -P.01-UP-20-April-26,E-APP-B04-2RD-1000,Approval for Col. & Walls Conc. Dim.  & RFT DWGs (B04) (3rd),The Big - P.01 - UP-24-MAY-26.EN.2.A.P01.B04.SUP.3rdF,15-Feb-26,25-Feb-26,01-Feb-26,12-Feb-26,01-Feb-26,12-Feb-26,0,0,0,No,No,"E-SUB-B04-3RD-1000, E-SUB-B04-3RD-1000","CON-B04-3RD-1010, CON-B04-3RD-1020",0.0,0,1.0
The Big -P.01-UP-20-April-26,E-APP-B04-2RD-1030,Approval for Slabs Conc. Dim.  & RFT DWGs (B04) (3rd),The Big - P.01 - UP-24-MAY-26.EN.2.A.P01.B04.SUP.3rdF,25-Feb-26,08-Mar-26,15-Jun-26,25-Jun-26,,,10,49,155,No,No,"E-SUB-B04-3RD-1030, E-SUB-B04-3RD-1030","CON-B04-3RD-1040, CON-B04-3RD-1050",0.0,0,0.0
The Big -P.01-UP-20-April-26,E-APP-B04-2RD-1020,Approval for Beams Conc. Dim.  & RFT DWGs (B04) (3rd),The Big - P.01 - UP-24-MAY-26.EN.2.A.P01.B04.SUP.3rdF,22-Feb-26,04-Mar-26,11-Jun-26,22-Jun-26,,,10,52,158,No,No,"E-SUB-B04-3RD-1020, E-SUB-B04-3RD-1020","CON-B04-3RD-1040, CON-B04-3RD-1050",0.0,0,0.0
The Big -P.01-UP-20-April-26,E-APP-B04-2RD-1010,Approval for Stairs Conc. Dim.  & RFT DWGs (B04) (3rd),The Big - P.01 - UP-24-MAY-26.EN.2.A.P01.B04.SUP.3rdF,18-Feb-26,01-Mar-26,08-Feb-26,18-Feb-26,08-Feb-26,18-Feb-26,0,0,0,No,No,"E-SUB-B04-3RD-1010, E-SUB-B04-3RD-1010","CON-B04-3RD-1040, CON-B04-3RD-1050",0.0,0,1.0
The Big -P.01-UP-20-April-26,E-APP-B04-4TH-1000,Approval for Col. & Walls Conc. Dim.  & RFT DWGs (B04) (4th),The Big - P.01 - UP-24-MAY-26.EN.2.A.P01.B04.SUP.4thF,01-Mar-26,11-Mar-26,01-Feb-26,12-Feb-26,01-Feb-26,12-Feb-26,0,0,0,No,No,"E-SUB-B04-4TH-1000, E-SUB-B04-4TH-1000","CON-B04-4TH-1010, CON-B04-4TH-1020",0.0,0,1.0
The Big -P.01-UP-20-April-26,E-APP-B04-4TH-1030,Approval for Slabs Conc. Dim.  & RFT DWGs (B04) (4th),The Big - P.01 - UP-24-MAY-26.EN.2.A.P01.B04.SUP.4thF,11-Mar-26,26-Mar-26,15-Jun-26,25-Jun-26,,,10,81,187,No,No,"E-SUB-B04-4TH-1030, E-SUB-B04-4TH-1030","CON-B04-4TH-1040, CON-B04-4TH-1050",0.0,0,0.0
The Big -P.01-UP-20-April-26,E-APP-B04-4TH-1020,Approval for Beams Conc. Dim.  & RFT DWGs (B04) (4th),The Big - P.01 - UP-24-MAY-26.EN.2.A.P01.B04.SUP.4thF,08-Mar-26,23-Mar-26,11-Jun-26,22-Jun-26,,,10,84,190,No,No,"E-SUB-B04-4TH-1020, E-SUB-B04-4TH-1020","CON-B04-4TH-1040, CON-B04-4TH-1050",0.0,0,0.0
The Big -P.01-UP-20-April-26,E-APP-B04-4TH-1010,Approval for Stairs Conc. Dim.  & RFT DWGs (B04) (4th),The Big - P.01 - UP-24-MAY-26.EN.2.A.P01.B04.SUP.4thF,04-Mar-26,15-Mar-26,08-Feb-26,18-Feb-26,08-Feb-26,18-Feb-26,0,0,0,No,No,"E-SUB-B04-4TH-1010, E-SUB-B04-4TH-1010","CON-B04-4TH-1040, CON-B04-4TH-1050",0.0,0,1.0
The Big -P.01-UP-20-April-26,E-APP-B04-5TH-1000,Approval for Col. & Walls Conc. Dim.  & RFT DWGs (B04) (5th),The Big - P.01 - UP-24-MAY-26.EN.2.A.P01.B04.SUP.5thF,25-Mar-26,05-Apr-26,01-Feb-26,12-Feb-26,01-Feb-26,12-Feb-26,0,0,0,No,No,"E-SUB-B04-5TH-1000, E-SUB-B04-5TH-1000","CON-B04-5TH-1010, CON-B04-5TH-1020",0.0,0,1.0
The Big -P.01-UP-20-April-26,E-APP-B04-5TH-1030,Approval for Slabs Conc. Dim.  & RFT DWGs (B04) (5th),The Big - P.01 - UP-24-MAY-26.EN.2.A.P01.B04.SUP.5thF,05-Apr-26,16-Apr-26,15-Jun-26,25-Jun-26,,,10,113,219,No,No,"E-SUB-B04-5TH-1030, E-SUB-B04-5TH-1030","CON-B04-5TH-1040, CON-B04-5TH-1050",0.0,0,0.0
The Big -P.01-UP-20-April-26,E-APP-B04-5TH-1020,Approval for Beams Conc. Dim.  & RFT DWGs (B04) (5th),The Big - P.01 - UP-24-MAY-26.EN.2.A.P01.B04.SUP.5thF,01-Apr-26,12-Apr-26,11-Jun-26,22-Jun-26,,,10,116,222,No,No,"E-SUB-B04-5TH-1020, E-SUB-B04-5TH-1020","CON-B04-5TH-1040, CON-B04-5TH-1050",0.0,0,0.0
The Big -P.01-UP-20-April-26,E-APP-B04-5TH-1010,Approval for Stairs Conc. Dim.  & RFT DWGs (B04) (5th),The Big - P.01 - UP-24-MAY-26.EN.2.A.P01.B04.SUP.5thF,29-Mar-26,08-Apr-26,08-Feb-26,18-Feb-26,08-Feb-26,18-Feb-26,0,0,0,No,No,"E-SUB-B04-5TH-1010, E-SUB-B04-5TH-1010","CON-B04-5TH-1040, CON-B04-5TH-1050",0.0,0,1.0
The Big -P.01-UP-20-April-26,E-APP-B04-6TH-1000,Approval for Col. & Walls Conc. Dim.  & RFT DWGs (B04) (6th),The Big - P.01 - UP-24-MAY-26.EN.2.A.P01.B04.SUP.6thF,09-Apr-26,21-Apr-26,01-Feb-26,12-Feb-26,01-Feb-26,12-Feb-26,0,0,0,No,No,"E-SUB-B04-6TH-1000, E-SUB-B04-6TH-1000","CON-B04-6TH-1020, CON-B04-6TH-1010",0.0,0,1.0
The Big -P.01-UP-20-April-26,E-APP-B04-6TH-1030,Approval for Slabs Conc. Dim.  & RFT DWGs (B04) (6th),The Big - P.01 - UP-24-MAY-26.EN.2.A.P01.B04.SUP.6thF,21-Apr-26,02-May-26,15-Jun-26,25-Jun-26,,,10,140,247,No,No,"E-SUB-B04-6TH-1030, E-SUB-B04-6TH-1030","CON-B04-6TH-1040, CON-B04-6TH-1050",0.0,0,0.0
The Big -P.01-UP-20-April-26,E-APP-B04-6TH-1020,Approval for Beams Conc. Dim.  & RFT DWGs (B04) (6th),The Big - P.01 - UP-24-MAY-26.EN.2.A.P01.B04.SUP.6thF,18-Apr-26,28-Apr-26,11-Jun-26,22-Jun-26,,,10,143,250,No,No,"E-SUB-B04-6TH-1020, E-SUB-B04-6TH-1020","CON-B04-6TH-1040, CON-B04-6TH-1050",0.0,0,0.0
The Big -P.01-UP-20-April-26,E-APP-B04-6TH-1010,Approval for Stairs Conc. Dim.  & RFT DWGs (B04) (6th),The Big - P.01 - UP-24-MAY-26.EN.2.A.P01.B04.SUP.6thF,14-Apr-26,25-Apr-26,08-Feb-26,18-Feb-26,08-Feb-26,18-Feb-26,0,0,0,No,No,"E-SUB-B04-6TH-1010, E-SUB-B04-6TH-1010","CON-B04-6TH-1040, CON-B04-6TH-1050",0.0,0,1.0
The Big -P.01-UP-20-April-26,E-APP-B04-7TH-1000,Approval for Col. & Walls Conc. Dim.  & RFT DWGs (B04) (7th),The Big - P.01 - UP-24-MAY-26.EN.2.A.P01.B04.SUP.7thF,26-Apr-26,06-May-26,01-Feb-26,12-Feb-26,01-Feb-26,12-Feb-26,0,0,0,No,No,"E-SUB-B04-7TH-1000, E-SUB-B04-7TH-1000","CON-B04-7TH-1010, CON-B04-7TH-1020",0.0,0,1.0
The Big -P.01-UP-20-April-26,E-APP-B04-7TH-1030,Approval for Slabs Conc. Dim.  & RFT DWGs (B04) (7th),The Big - P.01 - UP-24-MAY-26.EN.2.A.P01.B04.SUP.7thF,06-May-26,17-May-26,15-Jun-26,25-Jun-26,,,10,165,272,No,No,"E-SUB-B04-7TH-1030, E-SUB-B04-7TH-1030","CON-B04-7TH-1040, CON-B04-7TH-1050",0.0,0,0.0
The Big -P.01-UP-20-April-26,E-APP-B04-7TH-1020,Approval for Beams Conc. Dim.  & RFT DWGs (B04) (7th),The Big - P.01 - UP-24-MAY-26.EN.2.A.P01.B04.SUP.7thF,03-May-26,13-May-26,11-Jun-26,22-Jun-26,,,10,168,275,No,No,"E-SUB-B04-7TH-1020, E-SUB-B04-7TH-1020","CON-B04-7TH-1040, CON-B04-7TH-1050",0.0,0,0.0
The Big -P.01-UP-20-April-26,E-APP-B04-7TH-1010,Approval for Stairs Conc. Dim.  & RFT DWGs (B04) (7th),The Big - P.01 - UP-24-MAY-26.EN.2.A.P01.B04.SUP.7thF,29-Apr-26,10-May-26,08-Feb-26,18-Feb-26,08-Feb-26,18-Feb-26,0,0,0,No,No,"E-SUB-B04-7TH-1010, E-SUB-B04-7TH-1010","CON-B04-7TH-1040, CON-B04-7TH-1050",0.0,0,1.0
The Big -P.01-UP-20-April-26,E-APP-B04-8TH-1000,Approval for Col. & Walls Conc. Dim.  & RFT DWGs (B04) (8th),The Big - P.01 - UP-24-MAY-26.EN.2.A.P01.B04.SUP.8thF,10-May-26,20-May-26,01-Feb-26,12-Feb-26,01-Feb-26,12-Feb-26,0,0,0,No,No,"E-SUB-B04-8TH-1000, E-SUB-B04-8TH-1000","CON-B04-8TH-1010, CON-B04-8TH-1020",0.0,0,1.0
The Big -P.01-UP-20-April-26,E-APP-B04-8TH-1030,Approval for Slabs Conc. Dim.  & RFT DWGs (B04) (8th),The Big - P.01 - UP-24-MAY-26.EN.2.A.P01.B04.SUP.8thF,20-May-26,04-Jun-26,15-Jun-26,25-Jun-26,,,10,189,296,No,No,"E-SUB-B04-8TH-1030, E-SUB-B04-8TH-1030","CON-B04-8TH-1040, CON-B04-8TH-1050",0.0,0,0.0
The Big -P.01-UP-20-April-26,E-APP-B04-8TH-1020,Approval for Beams Conc. Dim.  & RFT DWGs (B04) (8th),The Big - P.01 - UP-24-MAY-26.EN.2.A.P01.B04.SUP.8thF,17-May-26,01-Jun-26,11-Jun-26,22-Jun-26,,,10,192,299,No,No,"E-SUB-B04-8TH-1020, E-SUB-B04-8TH-1020","CON-B04-8TH-1040, CON-B04-8TH-1050",0.0,0,0.0
The Big -P.01-UP-20-April-26,E-APP-B04-8TH-1010,Approval for Stairs Conc. Dim.  & RFT DWGs (B04) (8th),The Big - P.01 - UP-24-MAY-26.EN.2.A.P01.B04.SUP.8thF,13-May-26,24-May-26,08-Feb-26,18-Feb-26,08-Feb-26,18-Feb-26,0,0,0,No,No,"E-SUB-B04-8TH-1010, E-SUB-B04-8TH-1010","CON-B04-8TH-1040, CON-B04-8TH-1050",0.0,0,1.0
The Big -P.01-UP-20-April-26,E-APP-B04-RF-1000,Approval for Col. & Walls Conc. Dim.  & RFT DWGs (B04) (RF),The Big - P.01 - UP-24-MAY-26.EN.2.A.P01.B04.SUP.RF,16-May-26,26-May-26,01-Feb-26,12-Feb-26,01-Feb-26,12-Feb-26,0,0,0,No,No,"E-SUB-B04-RF-1000, E-SUB-B04-RF-1000","CON-B04-RF-1010, CON-B04-RF-1020",0.0,0,1.0
The Big -P.01-UP-20-April-26,E-APP-B04-RF-1020,Approval for Slabs Conc. Dim.  & RFT DWGs (B04) (RF),The Big - P.01 - UP-24-MAY-26.EN.2.A.P01.B04.SUP.RF,23-May-26,07-Jun-26,15-Jun-26,25-Jun-26,,,10,205,312,No,No,"E-SUB-B04-RF-1020, E-SUB-B04-RF-1020","CON-B04-RF-1040, CON-B04-RF-1050",0.0,0,0.0
The Big -P.01-UP-20-April-26,E-APP-B04-RF-1010,Approval for  Beams Conc. Dim.  & RFT DWGs (B04) (RF),The Big - P.01 - UP-24-MAY-26.EN.2.A.P01.B04.SUP.RF,19-May-26,03-Jun-26,11-Jun-26,22-Jun-26,,,10,208,315,No,No,"E-SUB-B04-RF-1010, E-SUB-B04-RF-1010","CON-B04-RF-1040, CON-B04-RF-1050",0.0,0,0.0
The Big -P.01-UP-20-April-26,P-MS-1000,Submittal for RFT Rebar,The Big - P.01 - UP-24-MAY-26.P.MS.SS,11-Sep-25,01-Oct-25,11-Sep-25,01-Oct-25,11-Sep-25,01-Oct-25,0,0,0,No,Yes,KD-MS-1000,"P-MA-1000, P-MA-1000",0.0,0,1.0
The Big -P.01-UP-20-April-26,P-MS-1020,Submittal for Soil Replacement,The Big - P.01 - UP-24-MAY-26.P.MS.SS,14-Sep-25,04-Oct-25,14-Sep-25,04-Oct-25,14-Sep-25,04-Oct-25,0,0,0,No,Yes,KD-MS-1000,"P-MA-1010, P-MA-1010",0.0,0,1.0
The Big -P.01-UP-20-April-26,P-MS-1010,Submittal for Plain Concrete,The Big - P.01 - UP-24-MAY-26.P.MS.SS,14-Sep-25,04-Oct-25,14-Sep-25,04-Oct-25,14-Sep-25,04-Oct-25,0,0,0,No,Yes,KD-MS-1000,"P-MA-1020, P-MA-1020",0.0,0,1.0
The Big -P.01-UP-20-April-26,P-MS-1030,Submittal for Rc Concrete,The Big - P.01 - UP-24-MAY-26.P.MS.SS,21-Sep-25,12-Oct-25,21-Sep-25,12-Oct-25,21-Sep-25,12-Oct-25,0,0,0,No,No,KD-MS-1000,"P-MA-1030, P-MA-1030",0.0,0,1.0
The Big -P.01-UP-20-April-26,P-MS-1040,Submittal for Waterproofing,The Big - P.01 - UP-24-MAY-26.P.MS.SS,23-Sep-25,14-Oct-25,23-Sep-25,14-Oct-25,23-Sep-25,14-Oct-25,0,0,0,No,Yes,KD-MS-1000,"P-MA-1040, P-MA-1040",0.0,0,1.0
The Big -P.01-UP-20-April-26,P-MS-1050,Submittal for cold applied damp-proofing,The Big - P.01 - UP-24-MAY-26.P.MS.SS,23-Sep-25,14-Oct-25,23-Sep-25,14-Oct-25,23-Sep-25,14-Oct-25,0,0,0,No,No,KD-MS-1000,"P-MA-1050, P-MA-1050",0.0,0,1.0
The Big -P.01-UP-20-April-26,P-MS-1060,Submittal for cold Crystalline waterproofing for Water tank,The Big - P.01 - UP-24-MAY-26.P.MS.SS,23-Sep-25,14-Oct-25,23-Sep-25,14-Oct-25,23-Sep-25,14-Oct-25,0,0,0,No,No,KD-MS-1000,"P-MA-1060, P-MA-1060",0.0,0,1.0
The Big -P.01-UP-20-April-26,P-MA-1000,Approval for RFT Rebar,The Big - P.01 - UP-24-MAY-26.P.MS.SA,02-Oct-25,14-Oct-25,02-Oct-25,14-Oct-25,02-Oct-25,14-Oct-25,0,0,0,No,Yes,"P-MS-1000, P-MS-1000","P-MPOS-1000, P-MPOS-1070, P-MPOS-1080, P-MPOS-1090, P-MPOS-1100, P-MPOS-1110, P-MPOS-1120, P-MPOS-1130, P-MPOS-1140, P-MPOS-1150, P-MPOS-1160, P-MPOS-1170, P-MPOS-1180, P-MPOS-1190",0.0,0,1.0
The Big -P.01-UP-20-April-26,P-MA-1010,Approval for Soil Replacement,The Big - P.01 - UP-24-MAY-26.P.MS.SA,05-Oct-25,16-Oct-25,05-Oct-25,16-Oct-25,05-Oct-25,16-Oct-25,0,0,0,No,Yes,"P-MS-1020, P-MS-1020",P-MPOS-1010,0.0,0,1.0
The Big -P.01-UP-20-April-26,P-MA-1020,Approval for Plain Concrete,The Big - P.01 - UP-24-MAY-26.P.MS.SA,05-Oct-25,16-Oct-25,05-Oct-25,16-Oct-25,05-Oct-25,16-Oct-25,0,0,0,No,Yes,"P-MS-1010, P-MS-1010",P-MPOS-1020,0.0,0,1.0
The Big -P.01-UP-20-April-26,P-MA-1030,Approval for Rc Concrete,The Big - P.01 - UP-24-MAY-26.P.MS.SA,13-Oct-25,23-Oct-25,13-Oct-25,23-Oct-25,13-Oct-25,23-Oct-25,0,0,0,No,No,"P-MS-1030, P-MS-1030",P-MPOS-1030,0.0,0,1.0
The Big -P.01-UP-20-April-26,P-MA-1040,Approval for Waterproofing,The Big - P.01 - UP-24-MAY-26.P.MS.SA,15-Oct-25,26-Oct-25,15-Oct-25,26-Oct-25,15-Oct-25,26-Oct-25,0,0,0,No,Yes,"P-MS-1040, P-MS-1040",P-MPOS-1040,0.0,0,1.0
The Big -P.01-UP-20-April-26,P-MA-1050,Approval for cold applied damp-proofing,The Big - P.01 - UP-24-MAY-26.P.MS.SA,15-Oct-25,26-Oct-25,15-Oct-25,26-Oct-25,15-Oct-25,26-Oct-25,0,0,0,No,No,"P-MS-1050, P-MS-1050",P-MPOS-1050,0.0,0,1.0
The Big -P.01-UP-20-April-26,P-MA-1060,Approval for cold Crystalline waterproofing for Water tank,The Big - P.01 - UP-24-MAY-26.P.MS.SA,15-Oct-25,26-Oct-25,15-Oct-25,26-Oct-25,15-Oct-25,26-Oct-25,0,0,0,No,No,"P-MS-1060, P-MS-1060",P-MPOS-1060,0.0,0,1.0
The Big -P.01-UP-20-April-26,P-MPOS-1010,P.O for  Soil Replacement,The Big - P.01 - UP-24-MAY-26.P.PC.PO,18-Oct-25,19-Oct-25,18-Oct-25,19-Oct-25,18-Oct-25,19-Oct-25,0,0,0,No,Yes,P-MA-1010,P-MDEL-1010,0.0,0,1.0
The Big -P.01-UP-20-April-26,P-MPOS-1020,P.O for  Plain Concrete,The Big - P.01 - UP-24-MAY-26.P.PC.PO,18-Oct-25,19-Oct-25,18-Oct-25,19-Oct-25,18-Oct-25,19-Oct-25,0,0,0,No,Yes,P-MA-1020,P-MDEL-1020,0.0,0,1.0
The Big -P.01-UP-20-April-26,P-MPOS-1030,P.O for  Rc Concrete,The Big - P.01 - UP-24-MAY-26.P.PC.PO,25-Oct-25,26-Oct-25,25-Oct-25,26-Oct-25,25-Oct-25,26-Oct-25,0,0,0,No,No,P-MA-1030,P-MDEL-1030,0.0,0,1.0
The Big -P.01-UP-20-April-26,P-MPOS-1040,P.O for  Waterproofing,The Big - P.01 - UP-24-MAY-26.P.PC.PO,27-Oct-25,28-Oct-25,27-Oct-25,28-Oct-25,27-Oct-25,28-Oct-25,0,0,0,No,Yes,P-MA-1040,P-MDEL-1040,0.0,0,1.0
The Big -P.01-UP-20-April-26,P-MPOS-1050,P.O for cold applied damp-proofing,The Big - P.01 - UP-24-MAY-26.P.PC.PO,27-Oct-25,28-Oct-25,27-Oct-25,28-Oct-25,27-Oct-25,28-Oct-25,0,0,0,No,No,P-MA-1050,P-MDEL-1050,0.0,0,1.0
The Big -P.01-UP-20-April-26,P-MPOS-1060,P.O for cold Crystalline waterproofing for Water tank,The Big - P.01 - UP-24-MAY-26.P.PC.PO,27-Oct-25,28-Oct-25,17-May-26,18-May-26,,,2,303,0,No,No,P-MA-1060,P-MDEL-1060,0.0,0,0.0
The Big -P.01-UP-20-April-26,P-MPOS-1000,P.O for Rebar Patch#1 (Footing & Water tank),The Big - P.01 - UP-24-MAY-26.P.PC.PO.1,19-Oct-25,20-Oct-25,27-Sep-25,29-Sep-25,27-Sep-25,29-Sep-25,0,0,0,No,Yes,P-MA-1000,P-MDEL-1000,0.0,0,1.0
The Big -P.01-UP-20-April-26,P-MPOS-1070,P.O for Rebar Patch#2  (Basement 2),The Big - P.01 - UP-24-MAY-26.P.PC.PO.1,24-Nov-25,25-Nov-25,26-Nov-25,28-Nov-25,26-Nov-25,28-Nov-25,0,0,0,No,No,P-MA-1000,P-MDEL-1170,0.0,0,1.0
The Big -P.01-UP-20-April-26,P-MPOS-1080,P.O for Rebar Patch#3  (Basement 1),The Big - P.01 - UP-24-MAY-26.P.PC.PO.1,05-Jan-26,06-Jan-26,26-Nov-25,28-Nov-25,26-Nov-25,28-Nov-25,0,0,0,No,No,P-MA-1000,P-MDEL-1160,0.0,0,1.0
The Big -P.01-UP-20-April-26,P-MPOS-1090,P.O for Rebar Patch#4  (SOG),The Big - P.01 - UP-24-MAY-26.P.PC.PO.1,23-Feb-26,24-Feb-26,17-May-26,18-May-26,,,2,204,0,No,No,P-MA-1000,P-MDEL-1150,0.0,0,0.0
The Big -P.01-UP-20-April-26,P-MPOS-1100,P.O for Rebar Patch#5  (Ground floor),The Big - P.01 - UP-24-MAY-26.P.PC.PO.1,07-Mar-26,08-Mar-26,17-May-26,18-May-26,,,2,-50,0,Yes,No,P-MA-1000,P-MDEL-1130,0.0,0,0.0
The Big -P.01-UP-20-April-26,P-MPOS-1110,P.O for Rebar Patch#6  (1st floor),The Big - P.01 - UP-24-MAY-26.P.PC.PO.1,04-Apr-26,05-Apr-26,17-May-26,18-May-26,,,2,-15,0,Yes,No,P-MA-1000,P-MDEL-1120,0.0,0,0.0
The Big -P.01-UP-20-April-26,P-MPOS-1120,P.O for Rebar Patch#7  (2nd floor),The Big - P.01 - UP-24-MAY-26.P.PC.PO.1,10-May-26,11-May-26,17-May-26,18-May-26,,,2,11,0,No,No,P-MA-1000,P-MDEL-1110,0.0,0,0.0
The Big -P.01-UP-20-April-26,P-MPOS-1130,P.O for Rebar Patch#8  (3rd floor),The Big - P.01 - UP-24-MAY-26.P.PC.PO.1,07-Jun-26,08-Jun-26,07-Jun-26,08-Jun-26,,,2,21,0,No,No,P-MA-1000,P-MDEL-1100,0.0,0,0.0
The Big -P.01-UP-20-April-26,P-MPOS-1140,P.O for Rebar Patch#9  (4th floor),The Big - P.01 - UP-24-MAY-26.P.PC.PO.1,04-Jul-26,05-Jul-26,04-Jul-26,05-Jul-26,,,2,21,0,No,No,P-MA-1000,P-MDEL-1090,0.0,0,0.0
The Big -P.01-UP-20-April-26,P-MPOS-1150,P.O for Rebar Patch#10  (5th floor),The Big - P.01 - UP-24-MAY-26.P.PC.PO.1,06-Aug-26,08-Aug-26,06-Aug-26,08-Aug-26,,,2,21,0,No,No,P-MA-1000,P-MDEL-1080,0.0,0,0.0
The Big -P.01-UP-20-April-26,P-MPOS-1160,P.O for Rebar Patch#11  (6th floor),The Big - P.01 - UP-24-MAY-26.P.PC.PO.1,02-Sep-26,03-Sep-26,02-Sep-26,03-Sep-26,,,2,22,0,No,No,P-MA-1000,P-MDEL-1070,0.0,0,0.0
The Big -P.01-UP-20-April-26,P-MPOS-1170,P.O for Rebar Patch#12  (7th floor),The Big - P.01 - UP-24-MAY-26.P.PC.PO.1,05-Oct-26,07-Oct-26,05-Oct-26,07-Oct-26,,,2,22,0,No,No,P-MA-1000,P-MDEL-1190,0.0,0,0.0
The Big -P.01-UP-20-April-26,P-MPOS-1180,P.O for Rebar Patch#13  (8th floor),The Big - P.01 - UP-24-MAY-26.P.PC.PO.1,29-Oct-26,31-Oct-26,29-Oct-26,31-Oct-26,,,2,21,0,No,No,P-MA-1000,P-MDEL-1180,0.0,0,0.0
The Big -P.01-UP-20-April-26,P-MPOS-1190,P.O for Rebar Patch#14  (Roof floor),The Big - P.01 - UP-24-MAY-26.P.PC.PO.1,28-Nov-26,29-Nov-26,28-Nov-26,29-Nov-26,,,2,22,0,No,No,P-MA-1000,P-MDEL-1200,0.0,0,0.0
The Big -P.01-UP-20-April-26,P-MDEL-1010,Delivery for Soil Replacement,The Big - P.01 - UP-24-MAY-26.P.PC.DS,27-Oct-25,28-Oct-25,17-Oct-25,19-Oct-25,17-Oct-25,19-Oct-25,0,0,0,No,Yes,P-MPOS-1010,"CON-EW-B01-1000, CON-EW-B02-1000, CON-EW-B03-1000, CON-EW-B04-1000",0.0,0,1.0
The Big -P.01-UP-20-April-26,P-MDEL-1020,Delivery for Plain Concrete,The Big - P.01 - UP-24-MAY-26.P.PC.DS,21-Oct-25,22-Oct-25,16-Oct-25,16-Oct-25,16-Oct-25,16-Oct-25,0,0,0,No,Yes,P-MPOS-1020,"CON-B02-FOOT-1000, CON-B04-FOOT-1000, CON-B04-WT-1020, CON-B03-FOOT-1000, CON-B01-FOOT-1010, CON-B04-WT-1030",0.0,0,1.0
The Big -P.01-UP-20-April-26,P-MDEL-1030,Delivery for Rc Concrete,The Big - P.01 - UP-24-MAY-26.P.PC.DS,27-Oct-25,12-Nov-25,30-Nov-25,30-Nov-25,30-Nov-25,30-Nov-25,0,0,0,No,No,P-MPOS-1030,"CON-B01-FOOT-1090, CON-B02-FOOT-1010, CON-B02-FOOT-1090, CON-B04-FOOT-1010, CON-B04-FOOT-1080, CON-B03-FOOT-1010, CON-B03-FOOT-1080, CON-B01-BAS02-1030, CON-B01-BAS02-1130, CON-B01-BAS02-1100, CON-B04-WT-1080, CON-B04-WT-1130, CON-B04-WT-1170, CON-B02-BAS02-1030, CON-B02-BAS02-1100, CON-B02-BAS02-1080, CON-B03-BAS02-1030, CON-B03-BAS02-1100, CON-B03-BAS02-1080, CON-B02-SOG-1050, CON-B01-SOG-1050, CON-B01-BAS01-1030, CON-B01-BAS01-1110, CON-B01-BAS01-1100, CON-B02-BAS01-1030, CON-B02-BAS01-1090, CON-B02-BAS01-1080, CON-B04-BAS01-1030, CON-B04-BAS01-1120, CON-B04-BAS01-1100, CON-B03-BAS01-1030, CON-B03-BAS01-1090, CON-B03-BAS01-1080, CON-B04-SOG-1050, CON-B03-SOG-1050, CON-B01-GR-1030, CON-B01-GR-1090, CON-B01-GR-1080, CON-B02-GR-1030, CON-B02-GR-1100, CON-B02-GR-1080, CON-B04-GR-1030, CON-B04-GR-1080, CON-B04-GR-1090, CON-B03-GR-1030, CON-B03-GR-1080, CON-B03-GR-1090, CON-B01-6TH-1030, CON-B01-6TH-1060, CON-B01-7TH-1030, CON-B01-7TH-1060, CON-B01-8TH-1030, CON-B01-8TH-1060, CON-B01-1ST-1030, CON-B01-1ST-1060, CON-B01-2ND-1030, CON-B01-2ND-1060, CON-B01-3RD-1030, CON-B01-3RD-1060, CON-B01-4TH-1030, CON-B01-4TH-1060, CON-B01-5TH-1030, CON-B01-5TH-1060, CON-B01-9TH-1030, CON-B01-9TH-1060, CON-B02-1ST-1030, CON-B02-1ST-1060, CON-B02-2ND-1030, CON-B02-2ND-1060, CON-B02-3RD-1030, CON-B02-3RD-1060, CON-B02-4TH-1030, CON-B02-4TH-1060, CON-B02-RF-1030, CON-B02-RF-1060, CON-B03-1ST-1030, CON-B03-1ST-1060, CON-B03-2ND-1030, CON-B03-2ND-1060, CON-B03-3RD-1030, CON-B03-3RD-1060, CON-B03-4TH-1030, CON-B03-4TH-1060, CON-B04-1ST-1030, CON-B04-1ST-1060, CON-B04-2ND-1030, CON-B04-2ND-1060, CON-B04-3RD-1030, CON-B04-3RD-1060, CON-B04-4TH-1030, CON-B04-4TH-1060, CON-B04-5TH-1030, CON-B04-5TH-1060, CON-B04-6TH-1030, CON-B04-6TH-1060, CON-B04-7TH-1030, CON-B04-7TH-1060, CON-B04-8TH-1030, CON-B04-8TH-1060, CON-B04-RF-1030, CON-B04-RF-1060, CON-B03-RF-1030, CON-B03-RF-1060, CON-B04-BAS02-1030, CON-B04-BAS02-1130, CON-B04-BAS02-1100, CON-B04-BAS02-1110, CON-B04-BAS01-1110, CON-B01-BAS02-1110, CON-B01-BAS01-1130",0.0,0,1.0
The Big -P.01-UP-20-April-26,P-MDEL-1040,Delivery for Waterproofing,The Big - P.01 - UP-24-MAY-26.P.PC.DS,29-Oct-25,25-Nov-25,30-Nov-25,10-Dec-25,30-Nov-25,10-Dec-25,0,0,0,No,Yes,P-MPOS-1040,"CON-B01-FOOT-1030, CON-B02-FOOT-1030, CON-B04-FOOT-1030, CON-B03-FOOT-1030, CON-B04-WT-1050, CON-B02-SOG-1020, CON-B01-SOG-1020, CON-B04-SOG-1020, CON-B03-SOG-1020",0.0,0,1.0
The Big -P.01-UP-20-April-26,P-MDEL-1050,Delivery for cold applied damp-proofing,The Big - P.01 - UP-24-MAY-26.P.PC.DS,29-Oct-25,16-Dec-25,17-May-26,04-Jul-26,,,49,174,0,No,No,P-MPOS-1050,"CON-B01-FOOT-1110, CON-B02-FOOT-1110, CON-B04-FOOT-1110, CON-B03-FOOT-1110",0.0,0,0.0
The Big -P.01-UP-20-April-26,P-MDEL-1060,Delivery for cold Crystalline waterproofing for Water tank,The Big - P.01 - UP-24-MAY-26.P.PC.DS,03-Dec-25,07-Feb-26,28-Jun-26,02-Sep-26,,,67,364,364,No,No,P-MPOS-1060,,0.0,0,0.0
The Big -P.01-UP-20-April-26,P-MDEL-1000,Delivery for Rebar Patch#1 (Footing & Water tank),The Big - P.01 - UP-24-MAY-26.P.PC.DS.DR,02-Nov-25,03-Nov-25,28-Oct-25,14-Feb-26,28-Oct-25,14-Feb-26,0,0,0,No,Yes,P-MPOS-1000,"CON-B01-FOOT-1050, CON-B01-FOOT-1070, CON-B02-FOOT-1050, CON-B02-FOOT-1070, CON-B04-FOOT-1050, CON-B04-FOOT-1070, CON-B04-WT-1070, CON-B04-WT-1110, CON-B04-WT-1160, CON-B03-FOOT-1050, CON-B03-FOOT-1070",0.0,0,1.0
The Big -P.01-UP-20-April-26,P-MDEL-1070,Delivery for Rebar Patch#11  (6th floor),The Big - P.01 - UP-24-MAY-26.P.PC.DS.DR,20-Oct-26,21-Oct-26,20-Oct-26,21-Oct-26,,,2,26,172,No,No,P-MPOS-1160,"CON-B01-6TH-1010, CON-B01-6TH-1050, CON-B04-6TH-1010, CON-B04-6TH-1050",0.0,0,0.0
The Big -P.01-UP-20-April-26,P-MDEL-1080,Delivery for Rebar Patch#10  (5th floor),The Big - P.01 - UP-24-MAY-26.P.PC.DS.DR,16-Sep-26,17-Sep-26,16-Sep-26,17-Sep-26,,,2,26,166,No,No,P-MPOS-1150,"CON-B01-5TH-1010, CON-B01-5TH-1050, CON-B04-5TH-1010, CON-B04-5TH-1050",0.0,0,0.0
The Big -P.01-UP-20-April-26,P-MDEL-1090,Delivery for Rebar Patch#9  (4th floor),The Big - P.01 - UP-24-MAY-26.P.PC.DS.DR,05-Aug-26,06-Aug-26,05-Aug-26,06-Aug-26,,,2,26,169,No,No,P-MPOS-1140,"CON-B01-4TH-1010, CON-B01-4TH-1050, CON-B02-4TH-1010, CON-B02-4TH-1050, CON-B03-4TH-1010, CON-B03-4TH-1050, CON-B04-4TH-1010, CON-B04-4TH-1050",0.0,0,0.0
The Big -P.01-UP-20-April-26,P-MDEL-1100,Delivery for Rebar Patch#8  (3rd floor),The Big - P.01 - UP-24-MAY-26.P.PC.DS.DR,28-Jun-26,29-Jun-26,28-Jun-26,29-Jun-26,,,2,25,167,No,No,P-MPOS-1130,"CON-B01-3RD-1010, CON-B01-3RD-1050, CON-B02-3RD-1010, CON-B02-3RD-1050, CON-B03-3RD-1010, CON-B03-3RD-1050, CON-B04-3RD-1010, CON-B04-3RD-1050",0.0,0,0.0
The Big -P.01-UP-20-April-26,P-MDEL-1110,Delivery for Rebar Patch#7  (2nd floor),The Big - P.01 - UP-24-MAY-26.P.PC.DS.DR,20-May-26,21-May-26,27-May-26,28-May-26,,,2,18,159,No,No,P-MPOS-1120,"CON-B01-2ND-1010, CON-B01-2ND-1050, CON-B02-2ND-1010, CON-B02-2ND-1050, CON-B03-2ND-1010, CON-B03-2ND-1050, CON-B04-2ND-1010, CON-B04-2ND-1050",0.0,0,0.0
The Big -P.01-UP-20-April-26,P-MDEL-1120,Delivery for Rebar Patch#6  (1st floor),The Big - P.01 - UP-24-MAY-26.P.PC.DS.DR,06-Apr-26,07-Apr-26,19-May-26,20-May-26,,,2,-18,119,Yes,No,P-MPOS-1110,"CON-B01-1ST-1010, CON-B01-1ST-1050, CON-B02-1ST-1010, CON-B02-1ST-1050, CON-B03-1ST-1010, CON-B03-1ST-1050, CON-B04-1ST-1010, CON-B04-1ST-1050",0.0,0,0.0
The Big -P.01-UP-20-April-26,P-MDEL-1130,Delivery for Rebar Patch#5  (Ground floor),The Big - P.01 - UP-24-MAY-26.P.PC.DS.DR,09-Mar-26,10-Mar-26,19-May-26,20-May-26,,,2,-60,56,Yes,No,P-MPOS-1100,"CON-B01-GR-1010, CON-B01-GR-1060, CON-B01-GR-1070, CON-B02-GR-1010, CON-B02-GR-1060, CON-B02-GR-1070, CON-B04-GR-1010, CON-B04-GR-1060, CON-B04-GR-1070, CON-B03-GR-1010, CON-B03-GR-1060, CON-B03-GR-1070",0.0,0,0.0
The Big -P.01-UP-20-April-26,P-MDEL-1150,Delivery for Rebar Patch#4  (SOG),The Big - P.01 - UP-24-MAY-26.P.PC.DS.DR,25-Feb-26,26-Feb-26,19-May-26,20-May-26,,,2,248,76,No,No,P-MPOS-1090,"CON-B02-SOG-1040, CON-B01-SOG-1040, CON-B04-SOG-1040, CON-B03-SOG-1040",0.0,0,0.0
The Big -P.01-UP-20-April-26,P-MDEL-1160,Delivery for Rebar Patch#3  (Basement 1),The Big - P.01 - UP-24-MAY-26.P.PC.DS.DR,12-Jan-26,13-Jan-26,05-May-26,17-May-26,05-May-26,,0,-97,21,Yes,No,P-MPOS-1080,"CON-B01-BAS01-1010, CON-B01-BAS01-1060, CON-B01-BAS01-1080, CON-B02-BAS01-1010, CON-B02-BAS01-1060, CON-B02-BAS01-1070, CON-B04-BAS01-1010, CON-B04-BAS01-1070, CON-B04-BAS01-1090, CON-B03-BAS01-1010, CON-B03-BAS01-1050, CON-B03-BAS01-1070, CON-B01-BAS01-1090, CON-B04-BAS01-1080",0.0,0,0.78
The Big -P.01-UP-20-April-26,P-MDEL-1170,Delivery for Rebar Patch#2  (Basement 2),The Big - P.01 - UP-24-MAY-26.P.PC.DS.DR,26-Nov-25,27-Nov-25,14-Feb-26,20-Apr-26,14-Feb-26,20-Apr-26,0,0,0,No,No,P-MPOS-1070,"CON-B01-BAS02-1010, CON-B01-BAS02-1070, CON-B01-BAS02-1080, CON-B02-BAS02-1010, CON-B02-BAS02-1060, CON-B02-BAS02-1070, CON-B03-BAS02-1010, CON-B03-BAS02-1060, CON-B03-BAS02-1070, CON-B04-BAS02-1010, CON-B04-BAS02-1060, CON-B04-BAS02-1080, CON-B01-BAS02-1090, CON-B04-BAS02-1090",0.0,0,1.0
The Big -P.01-UP-20-April-26,P-MDEL-1180,Delivery for Rebar Patch#13  (8th floor),The Big - P.01 - UP-24-MAY-26.P.PC.DS.DR,27-Dec-26,28-Dec-26,27-Dec-26,28-Dec-26,,,2,25,160,No,No,P-MPOS-1180,"CON-B01-8TH-1010, CON-B01-8TH-1050, CON-B04-8TH-1010, CON-B04-8TH-1050",0.0,0,0.0
The Big -P.01-UP-20-April-26,P-MDEL-1190,Delivery for Rebar Patch#12  (7th floor),The Big - P.01 - UP-24-MAY-26.P.PC.DS.DR,23-Nov-26,24-Nov-26,23-Nov-26,24-Nov-26,,,2,26,167,No,No,P-MPOS-1170,"CON-B01-7TH-1010, CON-B01-7TH-1050, CON-B04-7TH-1010, CON-B04-7TH-1050",0.0,0,0.0
The Big -P.01-UP-20-April-26,P-MDEL-1200,Delivery for Rebar Patch#14  (Roof floor),The Big - P.01 - UP-24-MAY-26.P.PC.DS.DR,15-Jan-27,16-Jan-27,15-Jan-27,16-Jan-27,,,2,27,116,No,No,P-MPOS-1190,"CON-B01-9TH-1010, CON-B01-9TH-1050, CON-B02-RF-1010, CON-B02-RF-1050, CON-B04-RF-1010, CON-B04-RF-1050, CON-B03-RF-1010, CON-B03-RF-1050",0.0,0,0.0
The Big -P.01-UP-20-April-26,CON-EW-B01-1000,Soil Replacement & Leveling & Compaction (B01),The Big - P.01 - UP-24-MAY-26.CON.EW.B01,03-Nov-25,19-Nov-25,30-Oct-25,14-Nov-25,30-Oct-25,14-Nov-25,0,0,0,No,Yes,"KD-MOB-1020, E-APP-B01-REP-1000, P-MDEL-1010","CON-EW-B01-1010, CON-EW-B01-1010, AB-SUB-B01-REP-1000, CON-EW-B02-1000",0.0,140,1.0
The Big -P.01-UP-20-April-26,CON-EW-B01-1010,Soil Compaction Test (B01),The Big - P.01 - UP-24-MAY-26.CON.EW.B01,06-Nov-25,23-Nov-25,15-Nov-25,29-Nov-25,15-Nov-25,29-Nov-25,0,0,0,No,Yes,"CON-EW-B01-1000, CON-EW-B01-1000","CON-B01-FOOT-1000, AB-SUB-B01-REP-1000",0.0,20,1.0
The Big -P.01-UP-20-April-26,CON-EW-B02-1000,Soil Replacement & Leveling & Compaction (B02),The Big - P.01 - UP-24-MAY-26.CON.EW.B02,12-Nov-25,04-Dec-25,30-Oct-25,10-Nov-25,30-Oct-25,10-Nov-25,0,0,0,No,No,"E-APP-B02-REP-1000, P-MDEL-1010, CON-EW-B01-1000","CON-EW-B02-1010, CON-EW-B02-1010, AB-SUB-B02-REP-1000, CON-EW-B03-1000",0.0,140,1.0
The Big -P.01-UP-20-April-26,CON-EW-B02-1010,Soil Compaction Test (B02),The Big - P.01 - UP-24-MAY-26.CON.EW.B02,16-Nov-25,08-Dec-25,15-Nov-25,29-Nov-25,15-Nov-25,29-Nov-25,0,0,0,No,No,"CON-EW-B02-1000, CON-EW-B02-1000","CON-B02-FOOT-1000, AB-SUB-B02-REP-1000",0.0,20,1.0
The Big -P.01-UP-20-April-26,CON-EW-B03-1000,Soil Replacement & Leveling & Compaction (B03),The Big - P.01 - UP-24-MAY-26.CON.EW.B03,29-Nov-25,21-Dec-25,10-Oct-25,01-Nov-25,10-Oct-25,01-Nov-25,0,0,0,No,No,"E-APP-B03-REP-1000, P-MDEL-1010, CON-EW-B02-1000","CON-EW-B03-1010, CON-EW-B03-1010, AB-SUB-B03-REP-1000",0.0,140,1.0
The Big -P.01-UP-20-April-26,CON-EW-B03-1010,Soil Compaction Test (B03),The Big - P.01 - UP-24-MAY-26.CON.EW.B03,02-Dec-25,24-Dec-25,20-Nov-25,03-Dec-25,20-Nov-25,03-Dec-25,0,0,0,No,No,"CON-EW-B03-1000, CON-EW-B03-1000","CON-B03-FOOT-1000, AB-SUB-B03-REP-1000",0.0,20,1.0
The Big -P.01-UP-20-April-26,CON-EW-B04-1000,Soil Replacement & Leveling & Compaction (B04),The Big - P.01 - UP-24-MAY-26.CON.EW.B04,27-Dec-25,03-Jan-26,10-Oct-25,01-Nov-25,10-Oct-25,01-Nov-25,0,0,0,No,No,"E-APP-B04-REP-1000, P-MDEL-1010","CON-EW-B04-1010, CON-EW-B04-1010, AB-SUB-B04-REP-1000",0.0,84,1.0
The Big -P.01-UP-20-April-26,CON-EW-B04-1010,Soil Compaction Test (B04),The Big - P.01 - UP-24-MAY-26.CON.EW.B04,29-Dec-25,05-Jan-26,20-Nov-25,03-Dec-25,20-Nov-25,03-Dec-25,0,0,0,No,No,"CON-EW-B04-1000, CON-EW-B04-1000","CON-B04-FOOT-1000, AB-SUB-B04-REP-1000",0.0,12,1.0
The Big -P.01-UP-20-April-26,CON-B01-FOOT-1000,Shuttering for PC Raft (B01) (footing),The Big - P.01 - UP-24-MAY-26.CON.P02.B01.SUB.F,26-Nov-25,26-Nov-25,26-Nov-25,30-Nov-25,26-Nov-25,30-Nov-25,0,0,0,No,Yes,"CON-EW-B01-1010, E-APP-B01-FOOT-1000",CON-B01-FOOT-1010,0.0,0,1.0
The Big -P.01-UP-20-April-26,CON-B01-FOOT-1010,Pouring for PC Raft (B01) (footing),The Big - P.01 - UP-24-MAY-26.CON.P02.B01.SUB.F,27-Nov-25,27-Nov-25,30-Nov-25,01-Dec-25,30-Nov-25,01-Dec-25,0,0,0,No,Yes,"CON-B01-FOOT-1000, P-MDEL-1020","CON-B01-FOOT-1020, AB-SUB-B01-FOOT-1000",0.0,0,1.0
The Big -P.01-UP-20-April-26,CON-B01-FOOT-1020,Curing for PC Raft (B01) (footing),The Big - P.01 - UP-24-MAY-26.CON.P02.B01.SUB.F,28-Nov-25,30-Nov-25,02-Dec-25,10-Dec-25,02-Dec-25,10-Dec-25,0,0,0,No,Yes,CON-B01-FOOT-1010,"CON-B01-FOOT-1030, CON-B01-FOOT-1030",0.0,0,1.0
The Big -P.01-UP-20-April-26,CON-B01-FOOT-1030,Waterproofing & Ins. Protection works (B01) (footing),The Big - P.01 - UP-24-MAY-26.CON.P02.B01.SUB.F,01-Dec-25,02-Dec-25,12-Dec-25,21-Dec-25,12-Dec-25,21-Dec-25,0,0,0,No,Yes,"CON-B01-FOOT-1020, P-MDEL-1040, E-APP-B01-FOOT-1030, CON-B01-FOOT-1020","AB-SUB-B01-FOOT-1010, CON-B01-FOOT-1040",0.0,0,1.0
The Big -P.01-UP-20-April-26,CON-B01-FOOT-1040,Shuttering for RC Raft & Footings (B01) (footing),The Big - P.01 - UP-24-MAY-26.CON.P02.B01.SUB.F,03-Dec-25,16-Dec-25,05-Feb-26,17-Feb-26,05-Feb-26,17-Feb-26,0,0,0,No,Yes,"E-APP-B01-FOOT-1010, CON-B01-FOOT-1030","CON-B01-FOOT-1050, CON-B01-FOOT-1050, CON-B01-FOOT-1060",0.0,0,1.0
The Big -P.01-UP-20-April-26,CON-B01-FOOT-1050,RFT for RC Raft & Footings (B01) (footing),The Big - P.01 - UP-24-MAY-26.CON.P02.B01.SUB.F,06-Dec-25,18-Dec-25,05-Feb-26,17-Feb-26,05-Feb-26,17-Feb-26,0,0,0,No,No,"CON-B01-FOOT-1040, E-APP-B01-FOOT-1020, CON-B01-FOOT-1040, P-MDEL-1000",CON-B01-FOOT-1090,0.0,12,1.0
The Big -P.01-UP-20-April-26,CON-B01-FOOT-1090,Pouring for RC Raft & Footings (B01) (footing),The Big - P.01 - UP-24-MAY-26.CON.P02.B01.SUB.F,20-Dec-25,21-Dec-25,07-Mar-26,30-Apr-26,07-Mar-26,30-Apr-26,0,0,0,No,No,"CON-B01-FOOT-1050, P-MDEL-1030","CON-B01-FOOT-1100, AB-SUB-B01-FOOT-1020, AB-SUB-B01-FOOT-1030",0.0,0,1.0
The Big -P.01-UP-20-April-26,CON-B01-FOOT-1100,Curing & Deshuttering for RC Raft & Footings (B01) (footing),The Big - P.01 - UP-24-MAY-26.CON.P02.B01.SUB.F,22-Dec-25,24-Dec-25,17-May-26,20-May-26,,,3,-146,0,Yes,Yes,"CON-B01-FOOT-1090, CON-B01-FOOT-1080","CON-B01-FOOT-1110, CON-B01-BAS02-1000",0.0,0,0.0
The Big -P.01-UP-20-April-26,CON-B01-FOOT-1110,Bitumen Ins. for RC Raft & Footings (B01) (footing),The Big - P.01 - UP-24-MAY-26.CON.P02.B01.SUB.F,25-Dec-25,28-Dec-25,05-Jul-26,07-Jul-26,,,3,146,0,No,No,"P-MDEL-1050, E-APP-B01-FOOT-1030, CON-B01-FOOT-1100",CON-B01-FOOT-1120,0.0,0,0.0
The Big -P.01-UP-20-April-26,CON-B01-FOOT-1120,Soil Backfilling (B01) (footing),The Big - P.01 - UP-24-MAY-26.CON.P02.B01.SUB.F,29-Dec-25,30-Dec-25,08-Jul-26,09-Jul-26,,,2,146,52,No,No,CON-B01-FOOT-1110,CON-B01-SOG-1000,42.0,42,0.0
The Big -P.01-UP-20-April-26,CON-B01-FOOT-1060,Shuttering for Columns & Walls Below SOG (B01) (footing),The Big - P.01 - UP-24-MAY-26.CON.P02.B01.SUB.F,08-Dec-25,16-Dec-25,26-Feb-26,18-May-26,26-Feb-26,,1,-118,0,Yes,Yes,"CON-B01-FOOT-1040, E-APP-B01-FOOT-1010","CON-B01-FOOT-1070, CON-B01-FOOT-1070",0.0,0,0.85
The Big -P.01-UP-20-April-26,CON-B01-FOOT-1070,RFT for Columns & Walls Below SOG (B01) (footing),The Big - P.01 - UP-24-MAY-26.CON.P02.B01.SUB.F,09-Dec-25,17-Dec-25,28-Feb-26,18-May-26,28-Feb-26,,1,-118,0,Yes,Yes,"CON-B01-FOOT-1060, CON-B01-FOOT-1060, E-APP-B01-FOOT-1020, P-MDEL-1000",CON-B01-FOOT-1080,1.2,8,0.85
The Big -P.01-UP-20-April-26,CON-B01-FOOT-1080,Pouring Columns & Walls Below SOG (B01) (footing),The Big - P.01 - UP-24-MAY-26.CON.P02.B01.SUB.F,18-Dec-25,18-Dec-25,02-May-26,17-May-26,02-May-26,,0,-118,0,Yes,Yes,CON-B01-FOOT-1070,CON-B01-FOOT-1100,0.0,0,0.6
The Big -P.01-UP-20-April-26,CON-B01-BAS02-1000,"Scaffolding works for Walls, Col. & Cores (B01) (Bas 02)",The Big - P.01 - UP-24-MAY-26.CON.P02.B01.SUB.2ndB,25-Dec-25,01-Jan-26,20-May-26,02-Jun-26,,,7,-118,0,Yes,Yes,CON-B01-FOOT-1100,"CON-B01-BAS02-1010, CON-B01-BAS02-1010",0.0,0,0.0
The Big -P.01-UP-20-April-26,CON-B01-BAS02-1010,"RFT for Walls, Col. & Cores (B01) (Bas 02)",The Big - P.01 - UP-24-MAY-26.CON.P02.B01.SUB.2ndB,25-Dec-25,12-Jan-26,20-May-26,11-Jun-26,,,15,-118,0,Yes,Yes,"CON-B01-BAS02-1000, CON-B01-BAS02-1000, E-APP-B01-BAS02-1000, P-MDEL-1170","CON-B01-BAS02-1020, CON-B01-BAS02-1020",1.0,1,0.0
The Big -P.01-UP-20-April-26,CON-B01-BAS02-1020,"Shuttering for Walls, Col. & Cores (B01) (Bas 02)",The Big - P.01 - UP-24-MAY-26.CON.P02.B01.SUB.2ndB,29-Dec-25,15-Jan-26,24-May-26,15-Jun-26,,,15,-118,0,Yes,Yes,"CON-B01-BAS02-1010, CON-B01-BAS02-1010, E-APP-B01-BAS02-1000",CON-B01-BAS02-1030,0.0,0,0.0
The Big -P.01-UP-20-April-26,CON-B01-BAS02-1030,"Pouring for Walls, Col. & Cores (B01) (Bas 02)",The Big - P.01 - UP-24-MAY-26.CON.P02.B01.SUB.2ndB,17-Jan-26,18-Jan-26,15-Jun-26,17-Jun-26,,,2,-118,0,Yes,Yes,"CON-B01-BAS02-1020, P-MDEL-1030","CON-B01-BAS02-1040, AB-SUB-B01-BAS2-1000, CON-B01-BAS02-1060",0.0,0,0.0
The Big -P.01-UP-20-April-26,CON-B01-BAS02-1040,Shuttering for Slabs & Beams (B01) (Bas 02),The Big - P.01 - UP-24-MAY-26.CON.P02.B01.SUB.2ndB,19-Jan-26,31-Jan-26,17-Jun-26,29-Jun-26,,,10,-118,0,Yes,Yes,"E-APP-B01-BAS02-1040, E-APP-B01-BAS02-1030, CON-B01-BAS02-1030","CON-B01-BAS02-1070, CON-B01-BAS02-1050, CON-B01-BAS02-1070",0.0,0,0.0
The Big -P.01-UP-20-April-26,CON-B01-BAS02-1050,Shuttering for Stairs  (B01) (Bas 02),The Big - P.01 - UP-24-MAY-26.CON.P02.B01.SUB.2ndB,21-Jan-26,31-Jan-26,20-Jun-26,29-Jun-26,,,8,-115,0,Yes,No,"E-APP-B01-BAS02-1010, CON-B01-BAS02-1040","CON-B01-BAS02-1080, CON-B01-BAS02-1080",0.0,0,0.0
The Big -P.01-UP-20-April-26,CON-B01-BAS02-1070,RFT for Slabs & Beams (B01) (Bas 02),The Big - P.01 - UP-24-MAY-26.CON.P02.B01.SUB.2ndB,22-Jan-26,03-Feb-26,21-Jun-26,04-Jul-26,,,10,-118,0,Yes,Yes,"CON-B01-BAS02-1040, CON-B01-BAS02-1040, E-APP-B01-BAS02-1030, E-APP-B01-BAS02-1040, P-MDEL-1170",CON-B01-BAS02-1130,0.0,0,0.0
The Big -P.01-UP-20-April-26,CON-B01-BAS02-1080,RFT for Stairs (B01) (Bas 02),The Big - P.01 - UP-24-MAY-26.CON.P02.B01.SUB.2ndB,24-Jan-26,31-Jan-26,22-Jun-26,29-Jun-26,,,6,-115,0,Yes,No,"CON-B01-BAS02-1050, CON-B01-BAS02-1050, E-APP-B01-BAS02-1010, P-MDEL-1170",CON-B01-BAS02-1100,0.0,0,0.0
The Big -P.01-UP-20-April-26,CON-B01-BAS02-1130,Pouring for Slabs & Beams (B01) (Bas 02),The Big - P.01 - UP-24-MAY-26.CON.P02.B01.SUB.2ndB,04-Feb-26,05-Feb-26,04-Jul-26,06-Jul-26,,,2,-118,0,Yes,Yes,"CON-B01-BAS02-1070, P-MDEL-1030","CON-B01-BAS02-1140, AB-SUB-B01-BAS2-1040, AB-SUB-B01-BAS2-1030, CON-B01-BAS02-1120",0.0,0,0.0
The Big -P.01-UP-20-April-26,CON-B01-BAS02-1100,Pouring for Stairs (B01) (Bas 02),The Big - P.01 - UP-24-MAY-26.CON.P02.B01.SUB.2ndB,01-Feb-26,02-Feb-26,29-Jun-26,02-Jul-26,,,2,-115,0,Yes,No,"CON-B01-BAS02-1080, P-MDEL-1030","AB-SUB-B01-BAS2-1010, 123456",0.0,0,0.0
The Big -P.01-UP-20-April-26,CON-B01-BAS02-1120,"Curing for Slabs, Beams, Ramps & Stairs (B01) (Bas 02)",The Big - P.01 - UP-24-MAY-26.CON.P02.B01.SUB.2ndB,06-Feb-26,08-Feb-26,06-Jul-26,09-Jul-26,,,3,-150,0,Yes,Yes,CON-B01-BAS02-1130,CON-B01-BAS01-1000,0.0,0,0.0
The Big -P.01-UP-20-April-26,CON-B01-BAS02-1140,Dismantling Formwork (B01) (Bas 02),The Big - P.01 - UP-24-MAY-26.CON.P02.B01.SUB.2ndB,23-Feb-26,23-Feb-26,22-Jul-26,23-Jul-26,,,1,-142,1,Yes,No,CON-B01-BAS02-1130,"CON-B01-BAS01-1060, CON-B01-SOG-1000",0.0,0,0.0
The Big -P.01-UP-20-April-26,CON-B01-BAS02-1060,Shuttering for  Ramps (B01) (Bas 02),The Big - P.01 - UP-24-MAY-26.CON.P02.B01.SUB.2ndB,21-Jan-26,02-Feb-26,20-Jun-26,02-Jul-26,,,10,-117,0,Yes,No,"E-APP-B01-BAS02-1020, CON-B01-BAS02-1030","CON-B01-BAS02-1090, CON-B01-BAS02-1090",0.0,0,0.0
The Big -P.01-UP-20-April-26,CON-B01-BAS02-1090,RFT for Ramps (B01) (Bas 02),The Big - P.01 - UP-24-MAY-26.CON.P02.B01.SUB.2ndB,24-Jan-26,02-Feb-26,22-Jun-26,02-Jul-26,,,8,-117,0,Yes,No,"CON-B01-BAS02-1060, CON-B01-BAS02-1060, E-APP-B01-BAS02-1020, P-MDEL-1170",CON-B01-BAS02-1110,0.0,0,0.0
The Big -P.01-UP-20-April-26,CON-B01-BAS02-1110,Pouring for  Ramps (B01) (Bas 02),The Big - P.01 - UP-24-MAY-26.CON.P02.B01.SUB.2ndB,03-Feb-26,04-Feb-26,02-Jul-26,05-Jul-26,,,2,-117,0,Yes,No,"CON-B01-BAS02-1090, P-MDEL-1030","AB-SUB-B01-BAS2-1020, 123456",0.0,0,0.0
The Big -P.01-UP-20-April-26,123456,Curing for Ramps & Stairs (B01) (Bas 02),The Big - P.01 - UP-24-MAY-26.CON.P02.B01.SUB.2ndB,05-Feb-26,07-Feb-26,05-Jul-26,08-Jul-26,,,3,-149,1,Yes,No,"CON-B01-BAS02-1100, CON-B01-BAS02-1110",CON-B01-BAS01-1000,0.0,0,0.0
The Big -P.01-UP-20-April-26,CON-B01-SOG-1000,Soil Backfilling & Compaction (B01) (Sog),The Big - P.01 - UP-24-MAY-26.CON.P02.B01.SUB.2ndB.SOG,15-Apr-26,22-Apr-26,12-Sep-26,19-Sep-26,,,7,94,0,No,No,"CON-B01-BAS02-1140, CON-B01-FOOT-1120","CON-B01-SOG-1010, CON-B02-SOG-1000, CON-B01-SOG-1010",49.0,49,0.0
The Big -P.01-UP-20-April-26,CON-B01-SOG-1010,Soil Compaction Test (B01) (Sog),The Big - P.01 - UP-24-MAY-26.CON.P02.B01.SUB.2ndB.SOG,18-Apr-26,25-Apr-26,14-Sep-26,21-Sep-26,,,7,94,0,No,No,"CON-B01-SOG-1000, CON-B01-SOG-1000","CON-B01-SOG-1020, CON-B02-SOG-1010, CON-B01-SOG-1020",7.0,7,0.0
The Big -P.01-UP-20-April-26,CON-B01-SOG-1020,DPM Layer works (B01) (Sog),The Big - P.01 - UP-24-MAY-26.CON.P02.B01.SUB.2ndB.SOG,26-Apr-26,12-May-26,22-Sep-26,10-Oct-26,,,15,94,0,No,No,"CON-B01-SOG-1010, P-MDEL-1040, E-APP-B01-FOOT-1030, CON-B01-SOG-1010","CON-B01-SOG-1030, CON-B01-SOG-1030",0.0,0,0.0
The Big -P.01-UP-20-April-26,CON-B01-SOG-1030,Blinding Concrete works (B01) (Sog),The Big - P.01 - UP-24-MAY-26.CON.P02.B01.SUB.2ndB.SOG,02-May-26,14-May-26,28-Sep-26,12-Oct-26,,,12,94,0,No,No,"CON-B01-SOG-1020, CON-B01-SOG-1020","CON-B01-SOG-1040, CON-B01-SOG-1040, CON-B02-SOG-1030",0.0,0,0.0
The Big -P.01-UP-20-April-26,CON-B01-SOG-1040,Shuttering & RFT for S.O.G (B01) (Sog),The Big - P.01 - UP-24-MAY-26.CON.P02.B01.SUB.2ndB.SOG,07-May-26,24-May-26,04-Oct-26,21-Oct-26,,,15,94,0,No,No,"CON-B01-SOG-1030, CON-B01-SOG-1030, E-APP-B01-SOG-1010, E-APP-B01-SOG-1000, P-MDEL-1150","CON-B01-SOG-1050, CON-B01-SOG-1050, CON-B02-SOG-1040, AB-SUB-B01-SOG-1000",0.0,0,0.0
The Big -P.01-UP-20-April-26,CON-B01-SOG-1050,Pouring for S.O.G (B01) (Sog),The Big - P.01 - UP-24-MAY-26.CON.P02.B01.SUB.2ndB.SOG,16-May-26,02-Jun-26,13-Oct-26,26-Oct-26,,,12,97,0,No,No,"CON-B01-SOG-1040, CON-B01-SOG-1040, P-MDEL-1030","CON-B01-SOG-1060, CON-B01-SOG-1060, CON-B02-SOG-1050, AB-SUB-B01-SOG-1010",0.0,0,0.0
The Big -P.01-UP-20-April-26,CON-B01-SOG-1060,Curing & Smoothing Surface for S.O.G (B01) (Sog),The Big - P.01 - UP-24-MAY-26.CON.P02.B01.SUB.2ndB.SOG,22-May-26,02-Jun-26,16-Oct-26,27-Oct-26,,,12,151,295,No,No,"CON-B01-SOG-1050, CON-B01-SOG-1050",HO-1010,0.0,0,0.0
The Big -P.01-UP-20-April-26,CON-B01-BAS01-1000,"Scaffolding works for Walls, Col. & Cores (B01) (Bas 01)",The Big - P.01 - UP-24-MAY-26.CON.P02.B01.SUB.1stB,09-Feb-26,16-Feb-26,09-Jul-26,18-Jul-26,,,7,-119,0,Yes,Yes,"CON-B01-BAS02-1120, 123456","CON-B01-BAS01-1010, CON-B01-BAS01-1010",0.0,0,0.0
The Big -P.01-UP-20-April-26,CON-B01-BAS01-1010,"RFT for Walls, Col. & Cores (B01) (Bas 01)",The Big - P.01 - UP-24-MAY-26.CON.P02.B01.SUB.1stB,09-Feb-26,22-Feb-26,09-Jul-26,25-Jul-26,,,12,-119,0,Yes,Yes,"CON-B01-BAS01-1000, CON-B01-BAS01-1000, E-APP-B01-BAS01-1000, P-MDEL-1160","CON-B01-BAS01-1020, CON-B01-BAS01-1030, CON-B01-BAS01-1020",1.0,1,0.0
The Big -P.01-UP-20-April-26,CON-B01-BAS01-1020,"Shuttering for Walls, Col. & Cores (B01) (Bas 01)",The Big - P.01 - UP-24-MAY-26.CON.P02.B01.SUB.1stB,12-Feb-26,25-Feb-26,13-Jul-26,28-Jul-26,,,12,-119,0,Yes,Yes,"CON-B01-BAS01-1010, CON-B01-BAS01-1010, E-APP-B01-BAS01-1000",CON-B01-BAS01-1030,0.0,0,0.0
The Big -P.01-UP-20-April-26,CON-B01-BAS01-1030,"Pouring for Walls, Col. & Cores (B01) (Bas 01)",The Big - P.01 - UP-24-MAY-26.CON.P02.B01.SUB.1stB,26-Feb-26,28-Feb-26,28-Jul-26,30-Jul-26,,,2,-119,0,Yes,Yes,"CON-B01-BAS01-1020, CON-B01-BAS01-1010, P-MDEL-1030","CON-B01-BAS01-1040, AB-SUB-B01-BAS1-1000",0.0,0,0.0
The Big -P.01-UP-20-April-26,CON-B01-BAS01-1040,Shuttering for Slabs & Beams (B01) (Bas 01),The Big - P.01 - UP-24-MAY-26.CON.P02.B01.SUB.1stB,01-Mar-26,09-Mar-26,30-Jul-26,09-Aug-26,,,8,-119,0,Yes,Yes,"E-APP-B01-BAS01-1040, E-APP-B01-BAS01-1030, CON-B01-BAS01-1030","CON-B01-BAS01-1050, CON-B01-BAS01-1060, CON-B01-BAS01-1060",0.0,0,0.0
The Big -P.01-UP-20-April-26,CON-B01-BAS01-1050,Shuttering for Stairs  (B01) (Bas 01),The Big - P.01 - UP-24-MAY-26.CON.P02.B01.SUB.1stB,03-Mar-26,11-Mar-26,02-Aug-26,11-Aug-26,,,8,-109,0,Yes,No,"CON-B01-BAS01-1040, E-APP-B01-BAS01-1010","CON-B01-BAS01-1080, CON-B01-BAS01-1070, CON-B01-BAS01-1080",0.0,0,0.0
The Big -P.01-UP-20-April-26,CON-B01-BAS01-1060,RFT for Slabs & Beams (B01) (Bas 01),The Big - P.01 - UP-24-MAY-26.CON.P02.B01.SUB.1stB,03-Mar-26,14-Mar-26,02-Aug-26,13-Aug-26,,,10,-119,0,Yes,Yes,"CON-B01-BAS01-1040, CON-B01-BAS01-1040, CON-B01-BAS02-1140, E-APP-B01-BAS01-1030, E-APP-B01-BAS01-1040, P-MDEL-1160",CON-B01-BAS01-1110,0.0,0,0.0
The Big -P.01-UP-20-April-26,CON-B01-BAS01-1080,RFT for Stairs  (B01) (Bas 01),The Big - P.01 - UP-24-MAY-26.CON.P02.B01.SUB.1stB,07-Mar-26,12-Mar-26,05-Aug-26,12-Aug-26,,,6,-107,0,Yes,No,"CON-B01-BAS01-1050, CON-B01-BAS01-1050, E-APP-B01-BAS01-1010, P-MDEL-1160",CON-B01-BAS01-1100,0.0,0,0.0
The Big -P.01-UP-20-April-26,CON-B01-BAS01-1110,Pouring for Slabs & Beams (B01) (Bas 01),The Big - P.01 - UP-24-MAY-26.CON.P02.B01.SUB.1stB,15-Mar-26,21-Mar-26,13-Aug-26,16-Aug-26,,,2,-119,0,Yes,Yes,"CON-B01-BAS01-1060, P-MDEL-1030","CON-B01-BAS01-1140, AB-SUB-B01-BAS1-1030, AB-SUB-B01-BAS1-1020, CON-B01-GR-1000",0.0,0,0.0
The Big -P.01-UP-20-April-26,CON-B01-BAS01-1100,Pouring for Stairs  (B01) (Bas 01),The Big - P.01 - UP-24-MAY-26.CON.P02.B01.SUB.1stB,14-Mar-26,15-Mar-26,12-Aug-26,15-Aug-26,,,2,-107,0,Yes,No,"CON-B01-BAS01-1080, P-MDEL-1030","CON-B01-BAS01-1120, AB-SUB-B01-BAS1-1010, CON-B01-BAS01-1150",0.0,0,0.0
The Big -P.01-UP-20-April-26,CON-B01-BAS01-1120,"Curing for Slabs, Beams (B01) (Bas 01)",The Big - P.01 - UP-24-MAY-26.CON.P02.B01.SUB.1stB,16-Mar-26,18-Mar-26,15-Aug-26,18-Aug-26,,,3,-133,15,Yes,No,CON-B01-BAS01-1100,CON-B01-BAS01-1140,0.0,0,0.0
The Big -P.01-UP-20-April-26,CON-B01-BAS01-1140,Dismantling Formwork (B01) (Bas 01),The Big - P.01 - UP-24-MAY-26.CON.P02.B01.SUB.1stB,07-Apr-26,07-Apr-26,02-Sep-26,03-Sep-26,,,1,-148,0,Yes,No,"CON-B01-BAS01-1110, CON-B01-BAS01-1120, CON-B01-BAS01-1130, CON-B01-BAS01-1150",CON-B01-GR-1040,0.0,0,0.0
The Big -P.01-UP-20-April-26,CON-B01-BAS01-1070,Shuttering for  Ramps (B01) (Bas 01),The Big - P.01 - UP-24-MAY-26.CON.P02.B01.SUB.1stB,04-Mar-26,12-Mar-26,03-Aug-26,12-Aug-26,,,8,-109,0,Yes,No,"CON-B01-BAS01-1050, E-APP-B01-BAS01-1020","CON-B01-BAS01-1090, CON-B01-BAS01-1090",0.0,0,0.0
The Big -P.01-UP-20-April-26,CON-B01-BAS01-1090,RFT for  Ramps (B01) (Bas 01),The Big - P.01 - UP-24-MAY-26.CON.P02.B01.SUB.1stB,07-Mar-26,15-Mar-26,05-Aug-26,15-Aug-26,,,8,-109,0,Yes,No,"CON-B01-BAS01-1070, CON-B01-BAS01-1070, E-APP-B01-BAS01-1020, P-MDEL-1160",CON-B01-BAS01-1130,0.0,0,0.0
The Big -P.01-UP-20-April-26,CON-B01-BAS01-1130,Pouring for  Ramps (B01) (Bas 01),The Big - P.01 - UP-24-MAY-26.CON.P02.B01.SUB.1stB,21-Mar-26,22-Mar-26,15-Aug-26,17-Aug-26,,,2,-109,0,Yes,No,"CON-B01-BAS01-1090, P-MDEL-1030","AB-SUB-B01-BAS1-1040, CON-B01-BAS01-1140, CON-B01-BAS01-1150",0.0,0,0.0
The Big -P.01-UP-20-April-26,CON-B01-BAS01-1150,Curing for  Ramps & Stairs (B01) (Bas 01),The Big - P.01 - UP-24-MAY-26.CON.P02.B01.SUB.1stB,23-Mar-26,25-Mar-26,17-Aug-26,20-Aug-26,,,3,-135,13,Yes,No,"CON-B01-BAS01-1100, CON-B01-BAS01-1130",CON-B01-BAS01-1140,0.0,0,0.0
The Big -P.01-UP-20-April-26,CON-B01-GR-1000,"Scaffolding works for Walls, Col. & Cores (B01) (GR)",The Big - P.01 - UP-24-MAY-26.CON.P02.B01.SUP.GF,22-Mar-26,29-Mar-26,16-Aug-26,24-Aug-26,,,7,-119,0,Yes,Yes,CON-B01-BAS01-1110,"CON-B01-GR-1010, CON-B01-GR-1010",0.0,0,0.0
The Big -P.01-UP-20-April-26,CON-B01-GR-1010,"RFT for Walls, Col. & Cores (B01) (GR)",The Big - P.01 - UP-24-MAY-26.CON.P02.B01.SUP.GF,22-Mar-26,01-Apr-26,16-Aug-26,29-Aug-26,,,10,-119,0,Yes,Yes,"CON-B01-GR-1000, CON-B01-GR-1000, E-APP-B01-GR-1000, P-MDEL-1130","CON-B01-GR-1020, CON-B01-GR-1020",1.0,1,0.0
The Big -P.01-UP-20-April-26,CON-B01-GR-1020,"Shuttering for Walls, Col. & Cores (B01) (GR)",The Big - P.01 - UP-24-MAY-26.CON.P02.B01.SUP.GF,24-Mar-26,04-Apr-26,18-Aug-26,31-Aug-26,,,10,-119,0,Yes,Yes,"CON-B01-GR-1010, CON-B01-GR-1010, E-APP-B01-GR-1000",CON-B01-GR-1030,0.0,0,0.0
The Big -P.01-UP-20-April-26,CON-B01-GR-1030,"Pouring for Walls, Col. & Cores (B01) (GR)",The Big - P.01 - UP-24-MAY-26.CON.P02.B01.SUP.GF,05-Apr-26,06-Apr-26,31-Aug-26,02-Sep-26,,,2,-119,0,Yes,Yes,"CON-B01-GR-1020, P-MDEL-1030","AB-SUB-B01-GR-1000, CON-B01-GR-1040, CON-B01-GR-1050",0.0,0,0.0
The Big -P.01-UP-20-April-26,CON-B01-GR-1050,Shuttering for Stairs  (B01) (GR),The Big - P.01 - UP-24-MAY-26.CON.P02.B01.SUP.GF,09-Apr-26,19-Apr-26,05-Sep-26,14-Sep-26,,,8,-119,0,Yes,Yes,"E-APP-B01-GR-1010, CON-B01-GR-1030","CON-B01-GR-1070, CON-B01-GR-1070",0.0,0,0.0
The Big -P.01-UP-20-April-26,CON-B01-GR-1060,RFT for Slabs & Beams (B01) (GR),The Big - P.01 - UP-24-MAY-26.CON.P02.B01.SUP.GF,15-Apr-26,26-Apr-26,09-Sep-26,21-Sep-26,,,10,-119,0,Yes,No,"CON-B01-GR-1040, CON-B01-GR-1040, E-APP-B01-GR-1020, E-APP-B01-GR-1030, P-MDEL-1130",CON-B01-GR-1090,0.0,0,0.0
The Big -P.01-UP-20-April-26,CON-B01-GR-1070,RFT for Stairs  (B01) (GR),The Big - P.01 - UP-24-MAY-26.CON.P02.B01.SUP.GF,12-Apr-26,21-Apr-26,07-Sep-26,16-Sep-26,,,8,-119,0,Yes,Yes,"CON-B01-GR-1050, CON-B01-GR-1050, E-APP-B01-GR-1010, P-MDEL-1130",CON-B01-GR-1080,0.0,0,0.0
The Big -P.01-UP-20-April-26,CON-B01-GR-1090,Pouring for Slabs & Beams (B01) (GR),The Big - P.01 - UP-24-MAY-26.CON.P02.B01.SUP.GF,27-Apr-26,28-Apr-26,21-Sep-26,23-Sep-26,,,2,-119,0,Yes,No,"CON-B01-GR-1060, P-MDEL-1030","CON-B01-GR-1110, KD-MS-1040, AB-SUB-B01-GR-1030, AB-SUB-B01-GR-1020",0.0,0,0.0
The Big -P.01-UP-20-April-26,CON-B01-GR-1080,Pouring for Stairs  (B01) (GR),The Big - P.01 - UP-24-MAY-26.CON.P02.B01.SUP.GF,22-Apr-26,23-Apr-26,16-Sep-26,19-Sep-26,,,2,-119,0,Yes,Yes,"CON-B01-GR-1070, P-MDEL-1030","CON-B01-GR-1100, AB-SUB-B01-GR-1010",0.0,0,0.0
The Big -P.01-UP-20-April-26,CON-B01-GR-1100,"Curing for Slabs, Beams & Stairs (B01) (GR)",The Big - P.01 - UP-24-MAY-26.CON.P02.B01.SUP.GF,24-Apr-26,28-Apr-26,19-Sep-26,24-Sep-26,,,5,-148,0,Yes,Yes,CON-B01-GR-1080,CON-B01-1ST-1000,0.0,0,0.0
The Big -P.01-UP-20-April-26,CON-B01-GR-1110,Dismantling Formwork (B01) (GR),The Big - P.01 - UP-24-MAY-26.CON.P02.B01.SUP.GF,15-May-26,15-May-26,11-Oct-26,12-Oct-26,,,1,-148,1,Yes,No,CON-B01-GR-1090,CON-B01-1ST-1040,0.0,0,0.0
The Big -P.01-UP-20-April-26,CON-B01-GR-1040,Shuttering for Slabs & Beams (B01) (GR),The Big - P.01 - UP-24-MAY-26.CON.P02.B01.SUP.GF,12-Apr-26,21-Apr-26,07-Sep-26,16-Sep-26,,,8,-119,0,Yes,No,"E-APP-B01-GR-1030, E-APP-B01-GR-1020, CON-B01-GR-1030, CON-B01-BAS01-1140","CON-B01-GR-1060, CON-B01-GR-1060",0.0,0,0.0
The Big -P.01-UP-20-April-26,CON-B01-1ST-1000,"Scaffolding works for Walls, Col. & Cores (B01) (1st)",The Big - P.01 - UP-24-MAY-26.CON.P02.B01.SUP.1stF,29-Apr-26,04-May-26,24-Sep-26,30-Sep-26,,,5,-120,0,Yes,Yes,CON-B01-GR-1100,"CON-B01-1ST-1010, CON-B01-1ST-1010",0.0,0,0.0
The Big -P.01-UP-20-April-26,CON-B01-1ST-1010,"RFT for Walls, Col. & Cores (B01) (1st)",The Big - P.01 - UP-24-MAY-26.CON.P02.B01.SUP.1stF,03-May-26,10-May-26,28-Sep-26,07-Oct-26,,,7,-120,0,Yes,Yes,"CON-B01-1ST-1000, CON-B01-1ST-1000, E-APP-B01-1ST-1000, P-MDEL-1120","CON-B01-1ST-1020, CON-B01-1ST-1020",1.0,1,0.0
The Big -P.01-UP-20-April-26,CON-B01-1ST-1020,"Shuttering for Walls, Col. & Cores (B01) (1st)",The Big - P.01 - UP-24-MAY-26.CON.P02.B01.SUP.1stF,06-May-26,13-May-26,01-Oct-26,11-Oct-26,,,7,-120,0,Yes,Yes,"CON-B01-1ST-1010, CON-B01-1ST-1010, E-APP-B01-1ST-1000",CON-B01-1ST-1030,0.0,0,0.0
The Big -P.01-UP-20-April-26,CON-B01-1ST-1030,"Pouring for Walls, Col. & Cores (B01) (1st)",The Big - P.01 - UP-24-MAY-26.CON.P02.B01.SUP.1stF,14-May-26,16-May-26,11-Oct-26,13-Oct-26,,,2,-120,0,Yes,Yes,"CON-B01-1ST-1020, P-MDEL-1030","CON-B01-1ST-1040, AB-SUB-B01-1ST-1000",0.0,0,0.0
The Big -P.01-UP-20-April-26,CON-B01-1ST-1040,"Shuttering for Slabs, Beams & Stairs (B01) (1st)",The Big - P.01 - UP-24-MAY-26.CON.P02.B01.SUP.1stF,17-May-26,03-Jun-26,13-Oct-26,27-Oct-26,,,12,-120,0,Yes,Yes,"E-APP-B01-1ST-1030, E-APP-B01-1ST-1020, E-APP-B01-1ST-1010, CON-B01-1ST-1030, CON-B01-GR-1110, E-APP-B01-1ST-1010","CON-B01-1ST-1050, CON-B01-1ST-1050",0.0,0,0.0
The Big -P.01-UP-20-April-26,CON-B01-1ST-1050,"RFT for Slabs, Beams & Stairs(B01) (1st)",The Big - P.01 - UP-24-MAY-26.CON.P02.B01.SUP.1stF,21-May-26,08-Jun-26,18-Oct-26,01-Nov-26,,,12,-120,0,Yes,Yes,"CON-B01-1ST-1040, CON-B01-1ST-1040, E-APP-B01-1ST-1010, E-APP-B01-1ST-1020, E-APP-B01-1ST-1030, P-MDEL-1120",CON-B01-1ST-1060,0.0,0,0.0
The Big -P.01-UP-20-April-26,CON-B01-1ST-1060,"Pouring for Slabs, Beams & Stairs (B01) (1st)",The Big - P.01 - UP-24-MAY-26.CON.P02.B01.SUP.1stF,09-Jun-26,11-Jun-26,01-Nov-26,04-Nov-26,,,3,-120,0,Yes,Yes,"CON-B01-1ST-1050, P-MDEL-1030","CON-B01-1ST-1070, AB-SUB-B01-1ST-1030, AB-SUB-B01-1ST-1020, AB-SUB-B01-1ST-1010, CON-B01-2ND-1000",0.0,0,0.0
The Big -P.01-UP-20-April-26,CON-B01-1ST-1070,"Curing for Slabs, Beams & Stairs (B01) (1st)",The Big - P.01 - UP-24-MAY-26.CON.P02.B01.SUP.1stF,12-Jun-26,14-Jun-26,04-Nov-26,07-Nov-26,,,3,-140,0,Yes,No,CON-B01-1ST-1060,CON-B01-1ST-1080,0.0,0,0.0
The Big -P.01-UP-20-April-26,CON-B01-1ST-1080,Dismantling Formwork (B01) (1st),The Big - P.01 - UP-24-MAY-26.CON.P02.B01.SUP.1stF,25-Jun-26,25-Jun-26,17-Nov-26,18-Nov-26,,,1,-140,4,Yes,No,CON-B01-1ST-1070,CON-B01-2ND-1040,0.0,0,0.0
The Big -P.01-UP-20-April-26,CON-B01-2ND-1000,"Scaffolding works for Walls, Col. & Cores (B01) (2nd)",The Big - P.01 - UP-24-MAY-26.CON.P02.B01.SUP.2ndF,14-Jun-26,18-Jun-26,05-Nov-26,11-Nov-26,,,5,-120,0,Yes,Yes,CON-B01-1ST-1060,"CON-B01-2ND-1010, CON-B01-2ND-1010",0.0,0,0.0
The Big -P.01-UP-20-April-26,CON-B01-2ND-1010,"RFT for Walls, Col. & Cores (B01) (2nd)",The Big - P.01 - UP-24-MAY-26.CON.P02.B01.SUP.2ndF,16-Jun-26,23-Jun-26,08-Nov-26,16-Nov-26,,,7,-120,0,Yes,Yes,"CON-B01-2ND-1000, CON-B01-2ND-1000, E-APP-B01-2ND-1000, P-MDEL-1110","CON-B01-2ND-1020, CON-B01-2ND-1020",1.0,1,0.0
The Big -P.01-UP-20-April-26,CON-B01-2ND-1020,"Shuttering for Walls, Col. & Cores (B01) (2nd)",The Big - P.01 - UP-24-MAY-26.CON.P02.B01.SUP.2ndF,20-Jun-26,27-Jun-26,11-Nov-26,19-Nov-26,,,7,-120,0,Yes,Yes,"CON-B01-2ND-1010, CON-B01-2ND-1010, E-APP-B01-2ND-1000",CON-B01-2ND-1030,0.0,0,0.0
The Big -P.01-UP-20-April-26,CON-B01-2ND-1030,"Pouring for Walls, Col. & Cores (B01) (2nd)",The Big - P.01 - UP-24-MAY-26.CON.P02.B01.SUP.2ndF,28-Jun-26,29-Jun-26,19-Nov-26,22-Nov-26,,,2,-120,0,Yes,Yes,"CON-B01-2ND-1020, P-MDEL-1030","CON-B01-2ND-1040, AB-SUB-B01-2ND-1000",0.0,0,0.0
The Big -P.01-UP-20-April-26,CON-B01-2ND-1040,"Shuttering for Slabs, Beams & Stairs (B01) (2nd)",The Big - P.01 - UP-24-MAY-26.CON.P02.B01.SUP.2ndF,01-Jul-26,09-Jul-26,22-Nov-26,01-Dec-26,,,8,-120,0,Yes,Yes,"E-APP-B01-2ND-1030, E-APP-B01-2ND-1020, E-APP-B01-2ND-1010, CON-B01-2ND-1030, CON-B01-1ST-1080","CON-B01-2ND-1050, CON-B01-2ND-1050",0.0,0,0.0
The Big -P.01-UP-20-April-26,CON-B01-2ND-1050,"RFT for Slabs, Beams & Stairs (B01) (2nd)",The Big - P.01 - UP-24-MAY-26.CON.P02.B01.SUP.2ndF,06-Jul-26,14-Jul-26,26-Nov-26,06-Dec-26,,,8,-120,0,Yes,Yes,"CON-B01-2ND-1040, CON-B01-2ND-1040, E-APP-B01-2ND-1010, E-APP-B01-2ND-1020, E-APP-B01-2ND-1030, P-MDEL-1110",CON-B01-2ND-1060,0.0,0,0.0
The Big -P.01-UP-20-April-26,CON-B01-2ND-1060,"Pouring for Slabs, Beams & Stairs (B01) (2nd)",The Big - P.01 - UP-24-MAY-26.CON.P02.B01.SUP.2ndF,15-Jul-26,18-Jul-26,06-Dec-26,09-Dec-26,,,3,-120,0,Yes,Yes,"CON-B01-2ND-1050, P-MDEL-1030","CON-B01-2ND-1070, CON-B01-2ND-1080, AB-SUB-B01-2ND-1030, AB-SUB-B01-2ND-1020, AB-SUB-B01-2ND-1010, CON-B01-3RD-1000",0.0,0,0.0
The Big -P.01-UP-20-April-26,CON-B01-2ND-1070,"Curing for Slabs, Beams & Stairs (B01) (2nd)",The Big - P.01 - UP-24-MAY-26.CON.P02.B01.SUP.2ndF,19-Jul-26,21-Jul-26,09-Dec-26,12-Dec-26,,,3,-127,9,Yes,No,CON-B01-2ND-1060,CON-B01-2ND-1080,0.0,0,0.0
The Big -P.01-UP-20-April-26,CON-B01-2ND-1080,Dismantling Formwork (B01) (2nd),The Big - P.01 - UP-24-MAY-26.CON.P02.B01.SUP.2ndF,31-Jul-26,31-Jul-26,21-Dec-26,22-Dec-26,,,1,-136,6,Yes,No,"CON-B01-2ND-1060, CON-B01-2ND-1070",CON-B01-3RD-1040,0.0,0,0.0
The Big -P.01-UP-20-April-26,CON-B01-3RD-1000,"Scaffolding works for Walls, Col. & Cores (B01) (3rd)",The Big - P.01 - UP-24-MAY-26.CON.P02.B01.SUP.3rdF,20-Jul-26,26-Jul-26,10-Dec-26,16-Dec-26,,,5,-120,0,Yes,Yes,CON-B01-2ND-1060,"CON-B01-3RD-1010, CON-B01-3RD-1010",0.0,0,0.0
The Big -P.01-UP-20-April-26,CON-B01-3RD-1010,"RFT for Walls, Col. & Cores (B01) (3rd)",The Big - P.01 - UP-24-MAY-26.CON.P02.B01.SUP.3rdF,25-Jul-26,01-Aug-26,14-Dec-26,22-Dec-26,,,7,-120,0,Yes,Yes,"CON-B01-3RD-1000, CON-B01-3RD-1000, E-APP-B01-3ED-1000, E-APP-B01-3ED-1010, E-APP-B01-3ED-1020, E-APP-B01-3ED-1030, P-MDEL-1100","CON-B01-3RD-1020, CON-B01-3RD-1020",1.0,1,0.0
The Big -P.01-UP-20-April-26,CON-B01-3RD-1020,"Shuttering for Walls, Col. & Cores (B01) (3rd)",The Big - P.01 - UP-24-MAY-26.CON.P02.B01.SUP.3rdF,28-Jul-26,04-Aug-26,17-Dec-26,26-Dec-26,,,7,-120,0,Yes,Yes,"CON-B01-3RD-1010, CON-B01-3RD-1010, E-APP-B01-3ED-1000",CON-B01-3RD-1030,0.0,0,0.0
The Big -P.01-UP-20-April-26,CON-B01-3RD-1030,"Pouring for Walls, Col. & Cores (B01) (3rd)",The Big - P.01 - UP-24-MAY-26.CON.P02.B01.SUP.3rdF,05-Aug-26,06-Aug-26,26-Dec-26,28-Dec-26,,,2,-120,0,Yes,Yes,"CON-B01-3RD-1020, P-MDEL-1030","CON-B01-3RD-1040, AB-SUB-B01-3RD-1000",0.0,0,0.0
The Big -P.01-UP-20-April-26,CON-B01-3RD-1040,"Shuttering for Slabs, Beams & Stairs (B01) (3rd)",The Big - P.01 - UP-24-MAY-26.CON.P02.B01.SUP.3rdF,08-Aug-26,18-Aug-26,28-Dec-26,10-Jan-27,,,10,-120,0,Yes,Yes,"E-APP-B01-3ED-1030, E-APP-B01-3ED-1020, E-APP-B01-3ED-1010, CON-B01-3RD-1030, CON-B01-2ND-1080","CON-B01-3RD-1050, CON-B01-3RD-1050",0.0,0,0.0
The Big -P.01-UP-20-April-26,CON-B01-3RD-1050,"RFT for Slabs, Beams & Stairs (B01) (3rd)",The Big - P.01 - UP-24-MAY-26.CON.P02.B01.SUP.3rdF,12-Aug-26,23-Aug-26,02-Jan-27,14-Jan-27,,,10,-120,0,Yes,Yes,"CON-B01-3RD-1040, CON-B01-3RD-1040, P-MDEL-1100",CON-B01-3RD-1060,0.0,0,0.0
The Big -P.01-UP-20-April-26,CON-B01-3RD-1060,"Pouring for Slabs, Beams & Stairs (B01) (3rd)",The Big - P.01 - UP-24-MAY-26.CON.P02.B01.SUP.3rdF,24-Aug-26,26-Aug-26,14-Jan-27,18-Jan-27,,,3,-120,0,Yes,Yes,"CON-B01-3RD-1050, P-MDEL-1030","CON-B01-3RD-1070, AB-SUB-B01-3RD-1030, AB-SUB-B01-3RD-1010, AB-SUB-B01-3RD-1020, CON-B01-4TH-1000",0.0,0,0.0
The Big -P.01-UP-20-April-26,CON-B01-3RD-1070,"Curing for Slabs, Beams & Stairs(B01) (3rd)",The Big - P.01 - UP-24-MAY-26.CON.P02.B01.SUP.3rdF,27-Aug-26,29-Aug-26,18-Jan-27,21-Jan-27,,,3,-138,0,Yes,No,CON-B01-3RD-1060,CON-B01-3RD-1080,0.0,0,0.0
The Big -P.01-UP-20-April-26,CON-B01-3RD-1080,Dismantling Formwork (B01) (3rd),The Big - P.01 - UP-24-MAY-26.CON.P02.B01.SUP.3rdF,09-Sep-26,09-Sep-26,31-Jan-27,01-Feb-27,,,1,-138,6,Yes,No,CON-B01-3RD-1070,CON-B01-4TH-1040,0.0,0,0.0
The Big -P.01-UP-20-April-26,CON-B01-4TH-1000,"Scaffolding works for Walls, Col. & Cores (B01) (4th)",The Big - P.01 - UP-24-MAY-26.CON.P02.B01.SUP.4thF,30-Aug-26,03-Sep-26,19-Jan-27,26-Jan-27,,,5,-120,0,Yes,Yes,CON-B01-3RD-1060,"CON-B01-4TH-1010, CON-B01-4TH-1010",0.0,0,0.0
The Big -P.01-UP-20-April-26,CON-B01-4TH-1010,"RFT for Walls, Col. & Cores (B01) (4th)",The Big - P.01 - UP-24-MAY-26.CON.P02.B01.SUP.4thF,02-Sep-26,09-Sep-26,23-Jan-27,01-Feb-27,,,7,-120,0,Yes,Yes,"CON-B01-4TH-1000, CON-B01-4TH-1000, E-APP-B01-4TH-1000, E-APP-B01-4TH-1010, E-APP-B01-4TH-1020, E-APP-B01-4TH-1030, P-MDEL-1090","CON-B01-4TH-1020, CON-B01-4TH-1020",1.0,1,0.0
The Big -P.01-UP-20-April-26,CON-B01-4TH-1020,"Shuttering for Walls, Col. & Cores (B01) (4th)",The Big - P.01 - UP-24-MAY-26.CON.P02.B01.SUP.4thF,06-Sep-26,13-Sep-26,27-Jan-27,04-Feb-27,,,7,-120,0,Yes,Yes,"CON-B01-4TH-1010, CON-B01-4TH-1010, E-APP-B01-4TH-1000",CON-B01-4TH-1030,0.0,0,0.0
The Big -P.01-UP-20-April-26,CON-B01-4TH-1030,"Pouring for Walls, Col. & Cores (B01) (4th)",The Big - P.01 - UP-24-MAY-26.CON.P02.B01.SUP.4thF,14-Sep-26,15-Sep-26,04-Feb-27,07-Feb-27,,,2,-120,0,Yes,Yes,"CON-B01-4TH-1020, P-MDEL-1030","CON-B01-4TH-1040, AB-SUB-B01-4TH-1000",0.0,0,0.0
The Big -P.01-UP-20-April-26,CON-B01-4TH-1040,"Shuttering for Slabs, Beams & Stairs (B01) (4th)",The Big - P.01 - UP-24-MAY-26.CON.P02.B01.SUP.4thF,16-Sep-26,29-Sep-26,07-Feb-27,21-Feb-27,,,12,-120,0,Yes,Yes,"E-APP-B01-4TH-1030, E-APP-B01-4TH-1020, E-APP-B01-4TH-1010, CON-B01-4TH-1030, CON-B01-3RD-1080","CON-B01-4TH-1050, CON-B01-4TH-1050",0.0,0,0.0
The Big -P.01-UP-20-April-26,CON-B01-4TH-1050,"RFT for Slabs, Beams & Stairs (B01) (4th)",The Big - P.01 - UP-24-MAY-26.CON.P02.B01.SUP.4thF,21-Sep-26,04-Oct-26,11-Feb-27,25-Feb-27,,,12,-120,0,Yes,Yes,"CON-B01-4TH-1040, CON-B01-4TH-1040, P-MDEL-1090",CON-B01-4TH-1060,0.0,0,0.0
The Big -P.01-UP-20-April-26,CON-B01-4TH-1060,"Pouring for Slabs, Beams & Stairs (B01) (4th)",The Big - P.01 - UP-24-MAY-26.CON.P02.B01.SUP.4thF,05-Oct-26,08-Oct-26,25-Feb-27,01-Mar-27,,,3,-120,0,Yes,Yes,"CON-B01-4TH-1050, P-MDEL-1030","CON-B01-4TH-1070, AB-SUB-B01-4TH-1010, AB-SUB-B01-4TH-1020, AB-SUB-B01-4TH-1030, CON-B01-5TH-1000",0.0,0,0.0
The Big -P.01-UP-20-April-26,CON-B01-4TH-1070,"Curing for Slabs, Beams & Stairs (B01) (4th)",The Big - P.01 - UP-24-MAY-26.CON.P02.B01.SUP.4thF,09-Oct-26,11-Oct-26,01-Mar-27,04-Mar-27,,,3,-139,0,Yes,No,CON-B01-4TH-1060,CON-B01-4TH-1080,0.0,0,0.0
The Big -P.01-UP-20-April-26,CON-B01-4TH-1080,Dismantling Formwork (B01) (4th),The Big - P.01 - UP-24-MAY-26.CON.P02.B01.SUP.4thF,22-Oct-26,22-Oct-26,14-Mar-27,15-Mar-27,,,1,-139,7,Yes,No,CON-B01-4TH-1070,CON-B01-5TH-1040,0.0,0,0.0
The Big -P.01-UP-20-April-26,CON-B01-5TH-1000,"Scaffolding works for Walls, Col. & Cores (B01) (5th)",The Big - P.01 - UP-24-MAY-26.CON.P02.B01.SUP.5thF,11-Oct-26,13-Oct-26,02-Mar-27,06-Mar-27,,,3,-120,0,Yes,Yes,CON-B01-4TH-1060,"CON-B01-5TH-1010, CON-B01-5TH-1010",0.0,0,0.0
The Big -P.01-UP-20-April-26,CON-B01-5TH-1010,"RFT for Walls, Col. & Cores (B01) (5th)",The Big - P.01 - UP-24-MAY-26.CON.P02.B01.SUP.5thF,14-Oct-26,20-Oct-26,06-Mar-27,16-Mar-27,,,6,-120,0,Yes,Yes,"CON-B01-5TH-1000, CON-B01-5TH-1000, E-APP-B01-5TH-1000, P-MDEL-1080","CON-B01-5TH-1020, CON-B01-5TH-1020",1.0,1,0.0
The Big -P.01-UP-20-April-26,CON-B01-5TH-1020,"Shuttering for Walls, Col. & Cores (B01) (5th)",The Big - P.01 - UP-24-MAY-26.CON.P02.B01.SUP.5thF,18-Oct-26,24-Oct-26,13-Mar-27,20-Mar-27,,,6,-120,0,Yes,Yes,"CON-B01-5TH-1010, CON-B01-5TH-1010, E-APP-B01-5TH-1000",CON-B01-5TH-1030,0.0,0,0.0
The Big -P.01-UP-20-April-26,CON-B01-5TH-1030,"Pouring for Walls, Col. & Cores (B01) (5th)",The Big - P.01 - UP-24-MAY-26.CON.P02.B01.SUP.5thF,25-Oct-26,26-Oct-26,20-Mar-27,22-Mar-27,,,2,-120,0,Yes,Yes,"CON-B01-5TH-1020, P-MDEL-1030","CON-B01-5TH-1040, AB-SUB-B01-5TH-1000",0.0,0,0.0
The Big -P.01-UP-20-April-26,CON-B01-5TH-1040,"Shuttering for Slabs, Beams & Stairs (B01) (5th)",The Big - P.01 - UP-24-MAY-26.CON.P02.B01.SUP.5thF,27-Oct-26,05-Nov-26,22-Mar-27,01-Apr-27,,,9,-120,0,Yes,Yes,"E-APP-B01-5TH-1030, CON-B01-5TH-1030, CON-B01-4TH-1080, E-APP-B01-5TH-1010, E-APP-B01-5TH-1020","CON-B01-5TH-1050, CON-B01-5TH-1050",0.0,0,0.0
The Big -P.01-UP-20-April-26,CON-B01-5TH-1050,"RFT for Slabs, Beams & Stairs (B01) (5th)",The Big - P.01 - UP-24-MAY-26.CON.P02.B01.SUP.5thF,01-Nov-26,10-Nov-26,27-Mar-27,06-Apr-27,,,9,-120,0,Yes,Yes,"CON-B01-5TH-1040, CON-B01-5TH-1040, E-APP-B01-5TH-1010, E-APP-B01-5TH-1020, E-APP-B01-5TH-1030, P-MDEL-1080",CON-B01-5TH-1060,0.0,0,0.0
The Big -P.01-UP-20-April-26,CON-B01-5TH-1060,"Pouring for Slabs, Beams & Stairs (B01) (5th)",The Big - P.01 - UP-24-MAY-26.CON.P02.B01.SUP.5thF,11-Nov-26,12-Nov-26,06-Apr-27,08-Apr-27,,,2,-120,0,Yes,Yes,"CON-B01-5TH-1050, P-MDEL-1030","CON-B01-5TH-1070, AB-SUB-B01-5TH-1010, AB-SUB-B01-5TH-1020, AB-SUB-B01-5TH-1030, CON-B01-6TH-1000",0.0,0,0.0
The Big -P.01-UP-20-April-26,CON-B01-5TH-1070,"Curing for Slabs, Beams & Stairs (B01) (5th)",The Big - P.01 - UP-24-MAY-26.CON.P02.B01.SUP.5thF,13-Nov-26,15-Nov-26,08-Apr-27,11-Apr-27,,,3,-142,0,Yes,No,CON-B01-5TH-1060,CON-B01-5TH-1080,0.0,0,0.0
The Big -P.01-UP-20-April-26,CON-B01-5TH-1080,Dismantling Formwork (B01) (5th),The Big - P.01 - UP-24-MAY-26.CON.P02.B01.SUP.5thF,26-Nov-26,26-Nov-26,21-Apr-27,22-Apr-27,,,1,-142,4,Yes,No,CON-B01-5TH-1070,CON-B01-6TH-1040,0.0,0,0.0
The Big -P.01-UP-20-April-26,CON-B01-6TH-1000,"Scaffolding works for Walls, Col. & Cores (B01) (6th)",The Big - P.01 - UP-24-MAY-26.CON.P02.B01.SUP.6thF,14-Nov-26,17-Nov-26,08-Apr-27,13-Apr-27,,,4,-120,0,Yes,Yes,CON-B01-5TH-1060,"CON-B01-6TH-1010, CON-B01-6TH-1010",0.0,0,0.0
The Big -P.01-UP-20-April-26,CON-B01-6TH-1010,"RFT for Walls, Col. & Cores (B01) (6th)",The Big - P.01 - UP-24-MAY-26.CON.P02.B01.SUP.6thF,17-Nov-26,23-Nov-26,12-Apr-27,19-Apr-27,,,6,-120,0,Yes,Yes,"CON-B01-6TH-1000, CON-B01-6TH-1000, E-APP-B01-6TH-1000, P-MDEL-1070","CON-B01-6TH-1020, CON-B01-6TH-1020",1.0,1,0.0
The Big -P.01-UP-20-April-26,CON-B01-6TH-1020,"Shuttering for Walls, Col. & Cores (B01) (6th)",The Big - P.01 - UP-24-MAY-26.CON.P02.B01.SUP.6thF,21-Nov-26,26-Nov-26,15-Apr-27,22-Apr-27,,,6,-120,0,Yes,Yes,"CON-B01-6TH-1010, CON-B01-6TH-1010, E-APP-B01-6TH-1000",CON-B01-6TH-1030,0.0,0,0.0
The Big -P.01-UP-20-April-26,CON-B01-6TH-1030,"Pouring for Walls, Col. & Cores (B01) (6th)",The Big - P.01 - UP-24-MAY-26.CON.P02.B01.SUP.6thF,29-Nov-26,30-Nov-26,24-Apr-27,26-Apr-27,,,2,-120,0,Yes,Yes,"CON-B01-6TH-1020, P-MDEL-1030","CON-B01-6TH-1040, AB-SUB-B01-6TH-1000",0.0,0,0.0
The Big -P.01-UP-20-April-26,CON-B01-6TH-1040,"Shuttering for Slabs, Beams & Stairs (B01) (6th)",The Big - P.01 - UP-24-MAY-26.CON.P02.B01.SUP.6thF,01-Dec-26,10-Dec-26,26-Apr-27,06-May-27,,,9,-120,0,Yes,Yes,"E-APP-B01-6TH-1030, E-APP-B01-6TH-1020, E-APP-B01-6TH-1010, CON-B01-6TH-1030, CON-B01-5TH-1080","CON-B01-6TH-1050, CON-B01-6TH-1050",0.0,0,0.0
The Big -P.01-UP-20-April-26,CON-B01-6TH-1050,"RFT for Slabs, Beams & Stairs (B01) (6th)",The Big - P.01 - UP-24-MAY-26.CON.P02.B01.SUP.6thF,06-Dec-26,15-Dec-26,01-May-27,11-May-27,,,9,-120,0,Yes,Yes,"CON-B01-6TH-1040, CON-B01-6TH-1040, E-APP-B01-6TH-1010, E-APP-B01-6TH-1020, E-APP-B01-6TH-1030, P-MDEL-1070",CON-B01-6TH-1060,0.0,0,0.0
The Big -P.01-UP-20-April-26,CON-B01-6TH-1060,"Pouring for Slabs, Beams & Stairs (B01) (6th)",The Big - P.01 - UP-24-MAY-26.CON.P02.B01.SUP.6thF,16-Dec-26,17-Dec-26,11-May-27,13-May-27,,,2,-120,0,Yes,Yes,"CON-B01-6TH-1050, P-MDEL-1030","CON-B01-6TH-1070, AB-SUB-B01-6TH-1010, AB-SUB-B01-6TH-1020, AB-SUB-B01-6TH-1030, CON-B01-7TH-1000",0.0,0,0.0
The Big -P.01-UP-20-April-26,CON-B01-6TH-1070,"Curing for Slabs, Beams & Stairs (B01) (6th)",The Big - P.01 - UP-24-MAY-26.CON.P02.B01.SUP.6thF,18-Dec-26,20-Dec-26,13-May-27,16-May-27,,,3,-144,0,Yes,No,CON-B01-6TH-1060,CON-B01-6TH-1080,0.0,0,0.0
The Big -P.01-UP-20-April-26,CON-B01-6TH-1080,Dismantling Formwork (B01) (6th),The Big - P.01 - UP-24-MAY-26.CON.P02.B01.SUP.6thF,31-Dec-26,31-Dec-26,26-May-27,27-May-27,,,1,-144,2,Yes,No,CON-B01-6TH-1070,CON-B01-7TH-1040,0.0,0,0.0
The Big -P.01-UP-20-April-26,CON-B01-7TH-1000,"Scaffolding works for Walls, Col. & Cores (B01) (7th)",The Big - P.01 - UP-24-MAY-26.CON.P02.B01.SUP.7thF,19-Dec-26,21-Dec-26,13-May-27,17-May-27,,,3,-120,0,Yes,Yes,CON-B01-6TH-1060,"CON-B01-7TH-1010, CON-B01-7TH-1010",0.0,0,0.0
The Big -P.01-UP-20-April-26,CON-B01-7TH-1010,"RFT for Walls, Col. & Cores (B01) (7th)",The Big - P.01 - UP-24-MAY-26.CON.P02.B01.SUP.7thF,21-Dec-26,26-Dec-26,16-May-27,22-May-27,,,5,-120,0,Yes,Yes,"CON-B01-7TH-1000, CON-B01-7TH-1000, E-APP-B01-7TH-1000, P-MDEL-1190","CON-B01-7TH-1020, CON-B01-7TH-1020",0.0,0,0.0
The Big -P.01-UP-20-April-26,CON-B01-7TH-1020,"Shuttering for Walls, Col. & Cores (B01) (7th)",The Big - P.01 - UP-24-MAY-26.CON.P02.B01.SUP.7thF,24-Dec-26,29-Dec-26,19-May-27,25-May-27,,,5,-120,0,Yes,Yes,"CON-B01-7TH-1010, CON-B01-7TH-1010, E-APP-B01-7TH-1000",CON-B01-7TH-1030,0.0,0,0.0
The Big -P.01-UP-20-April-26,CON-B01-7TH-1030,"Pouring for Walls, Col. & Cores (B01) (7th)",The Big - P.01 - UP-24-MAY-26.CON.P02.B01.SUP.7thF,31-Dec-26,02-Jan-27,26-May-27,29-May-27,,,2,-120,0,Yes,Yes,"CON-B01-7TH-1020, P-MDEL-1030","CON-B01-7TH-1040, AB-SUB-B01-7TH-1000",0.0,0,0.0
The Big -P.01-UP-20-April-26,CON-B01-7TH-1040,"Shuttering for Slabs, Beams & Stairs (B01) (7th)",The Big - P.01 - UP-24-MAY-26.CON.P02.B01.SUP.7thF,03-Jan-27,13-Jan-27,29-May-27,08-Jun-27,,,9,-120,0,Yes,Yes,"E-APP-B01-7TH-1030, E-APP-B01-7TH-1020, E-APP-B01-7TH-1010, CON-B01-7TH-1030, CON-B01-6TH-1080","CON-B01-7TH-1050, CON-B01-7TH-1050",0.0,0,0.0
The Big -P.01-UP-20-April-26,CON-B01-7TH-1050,"RFT for Slabs, Beams & Stairs (B01) (7th)",The Big - P.01 - UP-24-MAY-26.CON.P02.B01.SUP.7thF,06-Jan-27,17-Jan-27,01-Jun-27,12-Jun-27,,,9,-120,0,Yes,Yes,"CON-B01-7TH-1040, CON-B01-7TH-1040, E-APP-B01-7TH-1010, E-APP-B01-7TH-1020, E-APP-B01-7TH-1030, P-MDEL-1190",CON-B01-7TH-1060,0.0,0,0.0
The Big -P.01-UP-20-April-26,CON-B01-7TH-1060,"Pouring for Slabs, Beams & Stairs (B01) (7th)",The Big - P.01 - UP-24-MAY-26.CON.P02.B01.SUP.7thF,18-Jan-27,19-Jan-27,12-Jun-27,14-Jun-27,,,2,-120,0,Yes,Yes,"CON-B01-7TH-1050, P-MDEL-1030","CON-B01-7TH-1070, AB-SUB-B01-7TH-1010, AB-SUB-B01-7TH-1020, AB-SUB-B01-7TH-1030, CON-B01-8TH-1000",0.0,0,0.0
The Big -P.01-UP-20-April-26,CON-B01-7TH-1070,"Curing for Slabs, Beams & Stairs (B01) (7th)",The Big - P.01 - UP-24-MAY-26.CON.P02.B01.SUP.7thF,20-Jan-27,22-Jan-27,14-Jun-27,17-Jun-27,,,3,-144,0,Yes,Yes,CON-B01-7TH-1060,CON-B01-7TH-1080,0.0,0,0.0
The Big -P.01-UP-20-April-26,CON-B01-7TH-1080,Dismantling Formwork (B01) (7th),The Big - P.01 - UP-24-MAY-26.CON.P02.B01.SUP.7thF,02-Feb-27,02-Feb-27,27-Jun-27,28-Jun-27,,,1,-144,0,Yes,Yes,CON-B01-7TH-1070,CON-B01-8TH-1040,0.0,0,0.0
The Big -P.01-UP-20-April-26,CON-B01-8TH-1000,"Scaffolding works for Walls, Col. & Cores (B01) (8th)",The Big - P.01 - UP-24-MAY-26.CON.P02.B01.SUP.8thF,20-Jan-27,23-Jan-27,14-Jun-27,17-Jun-27,,,3,-120,0,Yes,Yes,CON-B01-7TH-1060,"CON-B01-8TH-1010, CON-B01-8TH-1010",0.0,0,0.0
The Big -P.01-UP-20-April-26,CON-B01-8TH-1010,"RFT for Walls, Col. & Cores (B01) (8th)",The Big - P.01 - UP-24-MAY-26.CON.P02.B01.SUP.8thF,23-Jan-27,28-Jan-27,16-Jun-27,22-Jun-27,,,5,-120,0,Yes,Yes,"CON-B01-8TH-1000, CON-B01-8TH-1000, E-APP-B01-8TH-1000, P-MDEL-1180","CON-B01-8TH-1020, CON-B01-8TH-1020",1.0,1,0.0
The Big -P.01-UP-20-April-26,CON-B01-8TH-1020,"Shuttering for Walls, Col. & Cores (B01) (8th)",The Big - P.01 - UP-24-MAY-26.CON.P02.B01.SUP.8thF,26-Jan-27,31-Jan-27,19-Jun-27,24-Jun-27,,,5,-120,0,Yes,Yes,"CON-B01-8TH-1010, CON-B01-8TH-1010, E-APP-B01-8TH-1000",CON-B01-8TH-1030,0.0,0,0.0
The Big -P.01-UP-20-April-26,CON-B01-8TH-1030,"Pouring for Walls, Col. & Cores (B01) (8th)",The Big - P.01 - UP-24-MAY-26.CON.P02.B01.SUP.8thF,02-Feb-27,03-Feb-27,26-Jun-27,28-Jun-27,,,2,-120,0,Yes,Yes,"CON-B01-8TH-1020, P-MDEL-1030","CON-B01-8TH-1040, AB-SUB-B01-8TH-1000",0.0,0,0.0
The Big -P.01-UP-20-April-26,CON-B01-8TH-1040,"Shuttering for Slabs, Beams & Stairs (B01) (8th)",The Big - P.01 - UP-24-MAY-26.CON.P02.B01.SUP.8thF,04-Feb-27,13-Feb-27,28-Jun-27,07-Jul-27,,,8,-120,0,Yes,Yes,"E-APP-B01-8TH-1030, E-APP-B01-8TH-1020, E-APP-B01-8TH-1010, CON-B01-8TH-1030, CON-B01-7TH-1080","CON-B01-8TH-1050, CON-B01-8TH-1050",0.0,0,0.0
The Big -P.01-UP-20-April-26,CON-B01-8TH-1050,"RFT for Slabs, Beams & Stairs (B01) (8th)",The Big - P.01 - UP-24-MAY-26.CON.P02.B01.SUP.8thF,07-Feb-27,15-Feb-27,30-Jun-27,10-Jul-27,,,8,-120,0,Yes,Yes,"CON-B01-8TH-1040, CON-B01-8TH-1040, E-APP-B01-8TH-1010, E-APP-B01-8TH-1020, E-APP-B01-8TH-1030, P-MDEL-1180",CON-B01-8TH-1060,0.0,0,0.0
The Big -P.01-UP-20-April-26,CON-B01-8TH-1060,"Pouring for Slabs, Beams & Stairs (B01) (8th)",The Big - P.01 - UP-24-MAY-26.CON.P02.B01.SUP.8thF,16-Feb-27,17-Feb-27,10-Jul-27,12-Jul-27,,,2,-120,0,Yes,Yes,"CON-B01-8TH-1050, P-MDEL-1030","CON-B01-8TH-1070, AB-SUB-B01-8TH-1010, AB-SUB-B01-8TH-1020, AB-SUB-B01-8TH-1030",0.0,0,0.0
The Big -P.01-UP-20-April-26,CON-B01-8TH-1070,"Curing for Slabs, Beams & Stairs (B01) (8th)",The Big - P.01 - UP-24-MAY-26.CON.P02.B01.SUP.8thF,18-Feb-27,20-Feb-27,12-Jul-27,15-Jul-27,,,3,-144,0,Yes,Yes,CON-B01-8TH-1060,"CON-B01-8TH-1080, CON-B01-9TH-1000",0.0,0,0.0
The Big -P.01-UP-20-April-26,CON-B01-8TH-1080,Dismantling Formwork (B01) (8th),The Big - P.01 - UP-24-MAY-26.CON.P02.B01.SUP.8thF,03-Mar-27,03-Mar-27,25-Jul-27,26-Jul-27,,,1,-144,0,Yes,Yes,CON-B01-8TH-1070,CON-B01-9TH-1060,0.0,0,0.0
The Big -P.01-UP-20-April-26,CON-B01-9TH-1000,"Scaffolding works for Walls, Col. & Cores (B01) (RF)",The Big - P.01 - UP-24-MAY-26.CON.P02.B01.SUP.RF,21-Feb-27,21-Feb-27,15-Jul-27,17-Jul-27,,,1,-120,0,Yes,Yes,CON-B01-8TH-1070,CON-B01-9TH-1010,0.0,0,0.0
The Big -P.01-UP-20-April-26,CON-B01-9TH-1010,"RFT for Walls, Col. & Cores (B01) (RF)",The Big - P.01 - UP-24-MAY-26.CON.P02.B01.SUP.RF,22-Feb-27,23-Feb-27,17-Jul-27,19-Jul-27,,,2,-120,0,Yes,Yes,"CON-B01-9TH-1000, E-APP-B01-RF-1000, P-MDEL-1200",CON-B01-9TH-1020,1.0,1,0.0
The Big -P.01-UP-20-April-26,CON-B01-9TH-1020,"Shuttering for Walls, Col. & Cores (B01) (RF)",The Big - P.01 - UP-24-MAY-26.CON.P02.B01.SUP.RF,24-Feb-27,24-Feb-27,19-Jul-27,20-Jul-27,,,1,-120,0,Yes,Yes,"CON-B01-9TH-1010, E-APP-B01-RF-1000",CON-B01-9TH-1030,0.0,0,0.0
The Big -P.01-UP-20-April-26,CON-B01-9TH-1030,"Pouring for Walls, Col. & Cores (B01) (RF)",The Big - P.01 - UP-24-MAY-26.CON.P02.B01.SUP.RF,25-Feb-27,25-Feb-27,20-Jul-27,21-Jul-27,,,1,-120,0,Yes,Yes,"CON-B01-9TH-1020, P-MDEL-1030","CON-B01-9TH-1040, AB-SUB-B01-RF-1000",0.0,0,0.0
The Big -P.01-UP-20-April-26,CON-B01-9TH-1040,"Shuttering for Slabs, Beams  (B01) (RF)",The Big - P.01 - UP-24-MAY-26.CON.P02.B01.SUP.RF,27-Feb-27,28-Feb-27,21-Jul-27,24-Jul-27,,,2,-120,0,Yes,Yes,"E-APP-B01-RF-1010, E-APP-B01-RF-1020, CON-B01-9TH-1030","CON-B01-9TH-1050, CON-B01-9TH-1050",0.0,0,0.0
The Big -P.01-UP-20-April-26,CON-B01-9TH-1050,"RFT for Slabs, Beams  (B01) (RF)",The Big - P.01 - UP-24-MAY-26.CON.P02.B01.SUP.RF,28-Feb-27,02-Mar-27,22-Jul-27,26-Jul-27,,,3,-120,0,Yes,Yes,"CON-B01-9TH-1040, CON-B01-9TH-1040, E-APP-B01-RF-1010, E-APP-B01-RF-1020, P-MDEL-1200",CON-B01-9TH-1060,0.0,0,0.0
The Big -P.01-UP-20-April-26,CON-B01-9TH-1060,"Pouring for Slabs, Beams  (B01) (RF)",The Big - P.01 - UP-24-MAY-26.CON.P02.B01.SUP.RF,04-Mar-27,04-Mar-27,26-Jul-27,27-Jul-27,,,1,-120,0,Yes,Yes,"CON-B01-9TH-1050, P-MDEL-1030, CON-B01-8TH-1080","CON-B01-9TH-1070, AB-SUB-B01-RF-1010, AB-SUB-B01-RF-1020",0.0,0,0.0
The Big -P.01-UP-20-April-26,CON-B01-9TH-1070,"Curing for Slabs, Beams  (B01) (RF)",The Big - P.01 - UP-24-MAY-26.CON.P02.B01.SUP.RF,05-Mar-27,07-Mar-27,27-Jul-27,30-Jul-27,,,3,-144,0,Yes,Yes,CON-B01-9TH-1060,CON-B01-9TH-1080,0.0,0,0.0
The Big -P.01-UP-20-April-26,CON-B01-9TH-1080,Dismantling Formwork (B01) (RF),The Big - P.01 - UP-24-MAY-26.CON.P02.B01.SUP.RF,13-Mar-27,13-Mar-27,04-Aug-27,05-Aug-27,,,1,-144,0,Yes,Yes,CON-B01-9TH-1070,HO-1010,0.0,0,0.0
The Big -P.01-UP-20-April-26,CON-B02-FOOT-1000,Shuttering for PC Raft (B02) (footing),The Big - P.01 - UP-24-MAY-26.CON.P02.B02.SUB.F,09-Dec-25,09-Dec-25,27-Nov-25,30-Nov-25,27-Nov-25,30-Nov-25,0,0,0,No,No,"E-APP-B02-FOOT-1000, CON-EW-B02-1010, P-MDEL-1020","CON-B02-FOOT-1010, AB-SUB-B02-FOOT-1000",0.0,0,1.0
The Big -P.01-UP-20-April-26,CON-B02-FOOT-1010,Pouring for PC Raft (B02) (footing),The Big - P.01 - UP-24-MAY-26.CON.P02.B02.SUB.F,10-Dec-25,10-Dec-25,30-Nov-25,01-Dec-25,30-Nov-25,01-Dec-25,0,0,0,No,No,"CON-B02-FOOT-1000, P-MDEL-1030","CON-B02-FOOT-1020, AB-SUB-B02-FOOT-1000",0.0,0,1.0
The Big -P.01-UP-20-April-26,CON-B02-FOOT-1020,Curing for PC Raft (B02) (footing),The Big - P.01 - UP-24-MAY-26.CON.P02.B02.SUB.F,11-Dec-25,13-Dec-25,02-Dec-25,06-Dec-25,02-Dec-25,06-Dec-25,0,0,0,No,No,CON-B02-FOOT-1010,"CON-B02-FOOT-1030, CON-B02-FOOT-1030",0.0,0,1.0
The Big -P.01-UP-20-April-26,CON-B02-FOOT-1030,Waterproofing & Ins. Protection works (B02) (footing),The Big - P.01 - UP-24-MAY-26.CON.P02.B02.SUB.F,14-Dec-25,15-Dec-25,18-Dec-25,21-Dec-25,18-Dec-25,21-Dec-25,0,0,0,No,No,"CON-B02-FOOT-1020, P-MDEL-1040, E-APP-B02-FOOT-1030, CON-B02-FOOT-1020","CON-B02-FOOT-1040, CON-B02-FOOT-1040",0.0,0,1.0
The Big -P.01-UP-20-April-26,CON-B02-FOOT-1040,Shuttering for RC Raft & Footings (B02) (footing),The Big - P.01 - UP-24-MAY-26.CON.P02.B02.SUB.F,17-Dec-25,28-Dec-25,10-Jan-26,20-Jan-26,10-Jan-26,20-Jan-26,0,0,0,No,No,"CON-B02-FOOT-1030, E-APP-B02-FOOT-1010, CON-B02-FOOT-1030","CON-B02-FOOT-1050, AB-SUB-B02-FOOT-1010, CON-B02-FOOT-1050, CON-B02-FOOT-1060",0.0,0,1.0
The Big -P.01-UP-20-April-26,CON-B02-FOOT-1050,RFT for RC Raft & Footings (B02) (footing),The Big - P.01 - UP-24-MAY-26.CON.P02.B02.SUB.F,20-Dec-25,30-Dec-25,17-Jan-26,21-Jan-26,17-Jan-26,21-Jan-26,0,0,0,No,No,"CON-B02-FOOT-1040, E-APP-B02-FOOT-1020, CON-B02-FOOT-1040, P-MDEL-1000","CON-B02-FOOT-1090, AB-SUB-B02-FOOT-1020",0.0,1,1.0
The Big -P.01-UP-20-April-26,CON-B02-FOOT-1090,Pouring for RC Raft & Footings (B02) (footing),The Big - P.01 - UP-24-MAY-26.CON.P02.B02.SUB.F,31-Dec-25,01-Jan-26,22-Jan-26,22-Jan-26,22-Jan-26,22-Jan-26,0,0,0,No,No,"CON-B02-FOOT-1050, P-MDEL-1030","CON-B02-FOOT-1100, AB-SUB-B02-FOOT-1020",0.0,0,1.0
The Big -P.01-UP-20-April-26,CON-B02-FOOT-1100,Curing & Deshuttering for RC Raft & Footings (B02) (footing),The Big - P.01 - UP-24-MAY-26.CON.P02.B02.SUB.F,02-Jan-26,04-Jan-26,05-Mar-26,08-Mar-26,05-Mar-26,08-Mar-26,0,0,0,No,No,CON-B02-FOOT-1090,"CON-B02-BAS02-1000, CON-B02-FOOT-1110",0.0,0,1.0
The Big -P.01-UP-20-April-26,CON-B02-FOOT-1110,Bitumen Ins. for RC Raft & Footings (B02) (footing),The Big - P.01 - UP-24-MAY-26.CON.P02.B02.SUB.F,05-Jan-26,08-Jan-26,05-Jul-26,07-Jul-26,,,3,161,0,No,No,"P-MDEL-1050, E-APP-B02-FOOT-1030, CON-B02-FOOT-1100","AB-SUB-B02-FOOT-1030, CON-B02-FOOT-1120",0.0,0,0.0
The Big -P.01-UP-20-April-26,CON-B02-FOOT-1120,Soil Backfilling (B02) (footing),The Big - P.01 - UP-24-MAY-26.CON.P02.B02.SUB.F,10-Jan-26,11-Jan-26,08-Jul-26,09-Jul-26,,,2,161,59,No,No,CON-B02-FOOT-1110,CON-B02-SOG-1000,28.0,28,0.0
The Big -P.01-UP-20-April-26,CON-B02-FOOT-1060,Shuttering for Columns & Walls Below SOG (B01) (footing),The Big - P.01 - UP-24-MAY-26.CON.P02.B02.SUB.F,22-Dec-25,28-Dec-25,27-Jan-26,03-Mar-26,27-Jan-26,03-Mar-26,0,0,0,No,No,"CON-B02-FOOT-1040, E-APP-B02-FOOT-1010","CON-B02-FOOT-1070, CON-B02-FOOT-1070",0.0,0,1.0
The Big -P.01-UP-20-April-26,CON-B02-FOOT-1070,RFT for Columns & Walls Below SOG (B02) (footing),The Big - P.01 - UP-24-MAY-26.CON.P02.B02.SUB.F,23-Dec-25,29-Dec-25,28-Jan-26,04-Mar-26,28-Jan-26,04-Mar-26,0,0,0,No,No,"CON-B02-FOOT-1060, CON-B02-FOOT-1060, E-APP-B02-FOOT-1020, P-MDEL-1000",CON-B02-FOOT-1080,0.0,6,1.0
The Big -P.01-UP-20-April-26,CON-B02-FOOT-1080,Pouring Columns & Walls Below SOG (B01) (footing),The Big - P.01 - UP-24-MAY-26.CON.P02.B02.SUB.F,30-Dec-25,30-Dec-25,05-Feb-26,04-Mar-26,05-Feb-26,04-Mar-26,0,0,0,No,No,CON-B02-FOOT-1070,,0.0,0,1.0
The Big -P.01-UP-20-April-26,CON-B02-BAS02-1000,"Scaffolding works for Walls, Col. & Cores (B02) (Bas 02)",The Big - P.01 - UP-24-MAY-26.CON.P02.B02.SUB.2ndB,05-Jan-26,13-Jan-26,19-Apr-26,27-Apr-26,19-Apr-26,27-Apr-26,0,0,0,No,No,CON-B02-FOOT-1100,"CON-B02-BAS02-1010, CON-B03-BAS02-1000, CON-B02-BAS02-1010",0.0,0,1.0
The Big -P.01-UP-20-April-26,CON-B02-BAS02-1010,"RFT for Walls, Col. & Cores (B02) (Bas 02)",The Big - P.01 - UP-24-MAY-26.CON.P02.B02.SUB.2ndB,05-Jan-26,19-Jan-26,21-Apr-26,04-May-26,21-Apr-26,04-May-26,0,0,0,No,No,"CON-B02-BAS02-1000, CON-B02-BAS02-1000, E-APP-B02-BAS02-1000, P-MDEL-1170","CON-B02-BAS02-1020, CON-B03-BAS02-1010, CON-B02-BAS02-1020",0.0,1,1.0
The Big -P.01-UP-20-April-26,CON-B02-BAS02-1020,"Shuttering for Walls, Col. & Cores (B02) (Bas 02)",The Big - P.01 - UP-24-MAY-26.CON.P02.B02.SUB.2ndB,10-Jan-26,22-Jan-26,25-Apr-26,07-May-26,25-Apr-26,07-May-26,0,0,0,No,No,"CON-B02-BAS02-1010, CON-B02-BAS02-1010, E-APP-B02-BAS02-1000","CON-B02-BAS02-1030, CON-B03-BAS02-1020",0.0,0,1.0
The Big -P.01-UP-20-April-26,CON-B02-BAS02-1030,"Pouring for Walls, Col. & Cores (B02) (Bas 02)",The Big - P.01 - UP-24-MAY-26.CON.P02.B02.SUB.2ndB,24-Jan-26,26-Jan-26,09-May-26,10-May-26,09-May-26,10-May-26,0,0,0,No,No,"CON-B02-BAS02-1020, P-MDEL-1030","CON-B03-BAS02-1030, CON-B02-BAS02-1040, AB-SUB-B02-BAS2-1000",0.0,0,1.0
The Big -P.01-UP-20-April-26,CON-B02-BAS02-1040,Shuttering for Slabs & Beams (B02) (Bas 02),The Big - P.01 - UP-24-MAY-26.CON.P02.B02.SUB.2ndB,27-Jan-26,04-Feb-26,05-May-26,24-May-26,05-May-26,,6,-87,0,Yes,No,"E-APP-B02-BAS02-1030, E-APP-B02-BAS02-1020, CON-B02-BAS02-1030","CON-B02-BAS02-1050, CON-B02-BAS02-1060, CON-B03-BAS02-1040, CON-B02-BAS02-1060",0.0,0,0.2
The Big -P.01-UP-20-April-26,CON-B02-BAS02-1050,Shuttering for Stairs (B02) (Bas 02),The Big - P.01 - UP-24-MAY-26.CON.P02.B02.SUB.2ndB,29-Jan-26,04-Feb-26,17-May-26,23-May-26,,,6,-87,0,Yes,No,"CON-B02-BAS02-1040, E-APP-B02-BAS02-1010","CON-B02-BAS02-1070, CON-B03-BAS02-1050, CON-B02-BAS02-1070",0.0,0,0.0
The Big -P.01-UP-20-April-26,CON-B02-BAS02-1060,RFT for Slabs & Beams (B02) (Bas 02),The Big - P.01 - UP-24-MAY-26.CON.P02.B02.SUB.2ndB,29-Jan-26,09-Feb-26,17-May-26,01-Jun-26,,,10,-84,0,Yes,No,"CON-B02-BAS02-1040, CON-B02-BAS02-1040, E-APP-B02-BAS02-1020, E-APP-B02-BAS02-1030, P-MDEL-1170","CON-B03-BAS02-1060, CON-B02-BAS02-1100",0.0,0,0.0
The Big -P.01-UP-20-April-26,CON-B02-BAS02-1070,RFT for Stairs  (B02) (Bas 02),The Big - P.01 - UP-24-MAY-26.CON.P02.B02.SUB.2ndB,01-Feb-26,07-Feb-26,19-May-26,25-May-26,,,6,-87,0,Yes,No,"CON-B02-BAS02-1050, CON-B02-BAS02-1050, E-APP-B02-BAS02-1010, P-MDEL-1170","CON-B03-BAS02-1070, CON-B02-BAS02-1080, AB-SUB-B02-BAS2-1010",0.0,0,0.0
The Big -P.01-UP-20-April-26,CON-B02-BAS02-1100,Pouring for Slabs & Beams (B02) (Bas 02),The Big - P.01 - UP-24-MAY-26.CON.P02.B02.SUB.2ndB,10-Feb-26,11-Feb-26,02-Jun-26,03-Jun-26,,,2,-84,0,Yes,No,"CON-B02-BAS02-1060, P-MDEL-1030","CON-B03-BAS02-1100, CON-B02-BAS02-1110, AB-SUB-B02-BAS2-1020, AB-SUB-B02-BAS2-1030",0.0,0,0.0
The Big -P.01-UP-20-April-26,CON-B02-BAS02-1080,Pouring for Stairs  (B02) (Bas 02),The Big - P.01 - UP-24-MAY-26.CON.P02.B02.SUB.2ndB,08-Feb-26,09-Feb-26,26-May-26,01-Jun-26,,,2,-87,0,Yes,No,"CON-B02-BAS02-1070, P-MDEL-1030","CON-B03-BAS02-1080, CON-B02-BAS02-1090",0.0,0,0.0
The Big -P.01-UP-20-April-26,CON-B02-BAS02-1090,"Curing for Slabs, Beams & Stairs (B02) (Bas 02)",The Big - P.01 - UP-24-MAY-26.CON.P02.B02.SUB.2ndB,10-Feb-26,14-Feb-26,02-Jun-26,06-Jun-26,,,5,-112,0,Yes,No,CON-B02-BAS02-1080,"CON-B03-BAS02-1090, CON-B02-BAS02-1110, CON-B02-BAS01-1000",0.0,0,0.0
The Big -P.01-UP-20-April-26,CON-B02-BAS02-1110,Dismantling Formwork (B02) (Bas 02),The Big - P.01 - UP-24-MAY-26.CON.P02.B02.SUB.2ndB,01-Mar-26,01-Mar-26,21-Jun-26,21-Jun-26,,,1,-109,1,Yes,No,"CON-B02-BAS02-1100, CON-B02-BAS02-1090","CON-B03-BAS02-1110, CON-B02-SOG-1000, CON-B02-BAS01-1040",0.0,0,0.0
The Big -P.01-UP-20-April-26,CON-B02-SOG-1000,Soil Backfilling & Compaction (B02) (Sog),The Big - P.01 - UP-24-MAY-26.CON.P02.B02.SUB.2ndB.1,23-Apr-26,30-Apr-26,20-Sep-26,27-Sep-26,,,7,102,0,No,No,"CON-B01-SOG-1000, CON-B02-BAS02-1110, CON-B02-FOOT-1120",CON-B02-SOG-1010,49.0,49,0.0
The Big -P.01-UP-20-April-26,CON-B02-SOG-1010,Soil Compaction Test (B02) (Sog),The Big - P.01 - UP-24-MAY-26.CON.P02.B02.SUB.2ndB.1,02-May-26,03-May-26,28-Sep-26,29-Sep-26,,,2,102,0,No,No,"CON-B02-SOG-1000, CON-B01-SOG-1010",CON-B02-SOG-1020,2.0,2,0.0
The Big -P.01-UP-20-April-26,CON-B02-SOG-1020,DPM Layer works (B02) (Sog),The Big - P.01 - UP-24-MAY-26.CON.P02.B02.SUB.2ndB.1,04-May-26,20-May-26,30-Sep-26,18-Oct-26,,,15,102,5,No,No,"CON-B02-SOG-1010, P-MDEL-1040, E-APP-B02-FOOT-1030","CON-B02-SOG-1030, CON-B02-SOG-1030",0.0,0,0.0
The Big -P.01-UP-20-April-26,CON-B02-SOG-1030,Blinding Concrete works (B02) (Sog),The Big - P.01 - UP-24-MAY-26.CON.P02.B02.SUB.2ndB.1,16-May-26,02-Jun-26,13-Oct-26,26-Oct-26,,,12,97,3,No,No,"CON-B02-SOG-1020, CON-B02-SOG-1020, CON-B01-SOG-1030","CON-B02-SOG-1040, CON-B02-SOG-1040",0.0,0,0.0
The Big -P.01-UP-20-April-26,CON-B02-SOG-1040,Shuttering & RFT for S.O.G (B02) (Sog),The Big - P.01 - UP-24-MAY-26.CON.P02.B02.SUB.2ndB.1,25-May-26,15-Jun-26,22-Oct-26,08-Nov-26,,,15,94,0,No,No,"CON-B02-SOG-1030, CON-B02-SOG-1030, CON-B01-SOG-1040, E-APP-B02-SOG-1010, E-APP-B02-SOG-1000, E-APP-B02-SOG-1010, P-MDEL-1150","CON-B02-SOG-1050, CON-B02-SOG-1050, AB-SUB-B02-SOG-1000, AB-SUB-B02-SOG-1010",0.0,0,0.0
The Big -P.01-UP-20-April-26,CON-B02-SOG-1050,Pouring for S.O.G (B02) (Sog),The Big - P.01 - UP-24-MAY-26.CON.P02.B02.SUB.2ndB.1,07-Jun-26,20-Jun-26,31-Oct-26,12-Nov-26,,,12,94,0,No,No,"CON-B02-SOG-1040, CON-B02-SOG-1040, CON-B01-SOG-1050, P-MDEL-1030","CON-B02-SOG-1060, CON-B02-SOG-1060, AB-SUB-B02-SOG-1010, AB-SUB-B02-SOG-1000",0.0,0,0.0
The Big -P.01-UP-20-April-26,CON-B02-SOG-1060,Curing & Smoothing Surface for S.O.G (B02) (Sog),The Big - P.01 - UP-24-MAY-26.CON.P02.B02.SUB.2ndB.1,11-Jun-26,20-Jun-26,03-Nov-26,12-Nov-26,,,10,135,215,No,No,"CON-B02-SOG-1050, CON-B02-SOG-1050",HO-1020,0.0,0,0.0
The Big -P.01-UP-20-April-26,CON-B02-BAS01-1000,"Scaffolding works for Walls, Col. & Cores (B02) (Bas 01)",The Big - P.01 - UP-24-MAY-26.CON.P02.B02.SUB.1stB,15-Feb-26,22-Feb-26,07-Jun-26,14-Jun-26,,,7,-87,0,Yes,No,CON-B02-BAS02-1090,"CON-B02-BAS01-1010, CON-B03-BAS01-1000, CON-B02-BAS01-1010",0.0,0,0.0
The Big -P.01-UP-20-April-26,CON-B02-BAS01-1010,"RFT for Walls, Col. & Cores (B02) (Bas 01)",The Big - P.01 - UP-24-MAY-26.CON.P02.B02.SUB.1stB,15-Feb-26,28-Feb-26,07-Jun-26,20-Jun-26,,,12,-87,0,Yes,No,"CON-B02-BAS01-1000, CON-B02-BAS01-1000, E-APP-B02-BAS01-1000, P-MDEL-1160","CON-B02-BAS01-1020, CON-B03-BAS01-1010, CON-B02-BAS01-1020",1.0,1,0.0
The Big -P.01-UP-20-April-26,CON-B02-BAS01-1020,"Shuttering for Walls, Col. & Cores (B02) (Bas 01)",The Big - P.01 - UP-24-MAY-26.CON.P02.B02.SUB.1stB,17-Feb-26,02-Mar-26,09-Jun-26,22-Jun-26,,,12,-87,0,Yes,No,"CON-B02-BAS01-1010, CON-B02-BAS01-1010, E-APP-B02-BAS01-1000","CON-B02-BAS01-1030, CON-B03-BAS01-1020",0.0,0,0.0
The Big -P.01-UP-20-April-26,CON-B02-BAS01-1030,"Pouring for Walls, Col. & Cores (B02) (Bas 01)",The Big - P.01 - UP-24-MAY-26.CON.P02.B02.SUB.1stB,03-Mar-26,04-Mar-26,23-Jun-26,24-Jun-26,,,2,-87,0,Yes,No,"CON-B02-BAS01-1020, P-MDEL-1030","CON-B03-BAS01-1030, CON-B02-BAS01-1040, AB-SUB-B02-BAS1-1000",0.0,0,0.0
The Big -P.01-UP-20-April-26,CON-B02-BAS01-1040,Shuttering for Slabs & Beams (B02) (Bas 01),The Big - P.01 - UP-24-MAY-26.CON.P02.B02.SUB.1stB,05-Mar-26,14-Mar-26,25-Jun-26,05-Jul-26,,,8,-87,0,Yes,No,"E-APP-B02-BAS01-1030, E-APP-B02-BAS01-1020, CON-B02-BAS01-1030, CON-B02-BAS02-1110","CON-B02-BAS01-1050, CON-B02-BAS01-1060, CON-B03-BAS01-1040, CON-B02-BAS01-1060",0.0,0,0.0
The Big -P.01-UP-20-April-26,CON-B02-BAS01-1050,Shuttering for Stairs (B02) (Bas 01),The Big - P.01 - UP-24-MAY-26.CON.P02.B02.SUB.1stB,08-Mar-26,14-Mar-26,28-Jun-26,05-Jul-26,,,6,-84,0,Yes,No,"CON-B02-BAS01-1040, E-APP-B02-BAS01-1010","CON-B02-BAS01-1070, CON-B03-BAS01-1060, CON-B02-BAS01-1070",0.0,0,0.0
The Big -P.01-UP-20-April-26,CON-B02-BAS01-1060,RFT for Slabs & Beams (B02) (Bas 01),The Big - P.01 - UP-24-MAY-26.CON.P02.B02.SUB.1stB,08-Mar-26,23-Mar-26,28-Jun-26,09-Jul-26,,,10,-87,0,Yes,No,"CON-B02-BAS01-1040, CON-B02-BAS01-1040, E-APP-B02-BAS01-1020, E-APP-B02-BAS01-1030, P-MDEL-1160","CON-B03-BAS01-1050, CON-B02-BAS01-1090",0.0,0,0.0
The Big -P.01-UP-20-April-26,CON-B02-BAS01-1070,RFT for Stairs  (B02) (Bas 01),The Big - P.01 - UP-24-MAY-26.CON.P02.B02.SUB.1stB,10-Mar-26,21-Mar-26,01-Jul-26,07-Jul-26,,,6,-84,0,Yes,No,"CON-B02-BAS01-1050, CON-B02-BAS01-1050, E-APP-B02-BAS01-1010, P-MDEL-1160","CON-B03-BAS01-1070, CON-B02-BAS01-1080",0.0,0,0.0
The Big -P.01-UP-20-April-26,CON-B02-BAS01-1090,Pouring for Slabs & Beams (B02) (Bas 01),The Big - P.01 - UP-24-MAY-26.CON.P02.B02.SUB.1stB,24-Mar-26,25-Mar-26,11-Jul-26,12-Jul-26,,,2,-87,0,Yes,No,"CON-B02-BAS01-1060, P-MDEL-1030","CON-B02-BAS01-1110, AB-SUB-B02-BAS1-1020, AB-SUB-B02-BAS1-1030, CON-B02-GR-1000",0.0,0,0.0
The Big -P.01-UP-20-April-26,CON-B02-BAS01-1080,Pouring for Stairs  (B02) (Bas 01),The Big - P.01 - UP-24-MAY-26.CON.P02.B02.SUB.1stB,22-Mar-26,23-Mar-26,08-Jul-26,09-Jul-26,,,2,-84,0,Yes,No,"CON-B02-BAS01-1070, P-MDEL-1030","CON-B03-BAS01-1080, CON-B02-BAS01-1100, AB-SUB-B02-BAS1-1010",0.0,0,0.0
The Big -P.01-UP-20-April-26,CON-B02-BAS01-1100,"Curing for Slabs, Beams Stairs (B02) (Bas 01)",The Big - P.01 - UP-24-MAY-26.CON.P02.B02.SUB.1stB,24-Mar-26,28-Mar-26,10-Jul-26,14-Jul-26,,,5,-104,5,Yes,No,CON-B02-BAS01-1080,"CON-B03-BAS01-1100, CON-B02-BAS01-1110",0.0,0,0.0
The Big -P.01-UP-20-April-26,CON-B02-BAS01-1110,Dismantling Formwork (B02) (Bas 01),The Big - P.01 - UP-24-MAY-26.CON.P02.B02.SUB.1stB,12-Apr-26,12-Apr-26,30-Jul-26,30-Jul-26,,,1,-109,0,Yes,No,"CON-B02-BAS01-1090, CON-B02-BAS01-1100",CON-B02-GR-1040,0.0,0,0.0
The Big -P.01-UP-20-April-26,CON-B02-GR-1000,"Scaffolding works for Walls, Col. & Cores (B02) (GR)",The Big - P.01 - UP-24-MAY-26.CON.P02.B02.SUP.GF,30-Mar-26,06-Apr-26,16-Jul-26,25-Jul-26,,,7,-83,0,Yes,No,CON-B02-BAS01-1090,"CON-B02-GR-1010, CON-B02-GR-1010",0.0,0,0.0
The Big -P.01-UP-20-April-26,CON-B02-GR-1010,"RFT for Walls, Col. & Cores (B02) (GR)",The Big - P.01 - UP-24-MAY-26.CON.P02.B02.SUP.GF,30-Mar-26,12-Apr-26,16-Jul-26,30-Jul-26,,,12,-83,0,Yes,No,"CON-B02-GR-1000, CON-B02-GR-1000, E-APP-B02-GR-1000, P-MDEL-1130","CON-B02-GR-1020, CON-B02-GR-1020",1.0,1,0.0
The Big -P.01-UP-20-April-26,CON-B02-GR-1020,"Shuttering for Walls, Col. & Cores (B02) (GR)",The Big - P.01 - UP-24-MAY-26.CON.P02.B02.SUP.GF,01-Apr-26,15-Apr-26,19-Jul-26,02-Aug-26,,,12,-83,0,Yes,No,"CON-B02-GR-1010, CON-B02-GR-1010, E-APP-B02-GR-1000",CON-B02-GR-1030,0.0,0,0.0
The Big -P.01-UP-20-April-26,CON-B02-GR-1030,"Pouring for Walls, Col. & Cores (B02) (GR)",The Big - P.01 - UP-24-MAY-26.CON.P02.B02.SUP.GF,16-Apr-26,18-Apr-26,03-Aug-26,04-Aug-26,,,2,-83,0,Yes,No,"CON-B02-GR-1020, P-MDEL-1030","CON-B02-GR-1040, AB-SUB-B02-GR-1000, CON-B02-GR-1050",0.0,0,0.0
The Big -P.01-UP-20-April-26,CON-B02-GR-1040,Shuttering for Slabs & Beams (B02) (GR),The Big - P.01 - UP-24-MAY-26.CON.P02.B02.SUP.GF,23-Apr-26,04-May-26,10-Aug-26,20-Aug-26,,,10,-87,0,Yes,No,"CON-B02-GR-1030, CON-B02-BAS01-1110, E-APP-B02-GR-1020, E-APP-B02-GR-1030","CON-B02-GR-1060, CON-B02-GR-1060",0.0,0,0.0
The Big -P.01-UP-20-April-26,CON-B02-GR-1050,Shuttering for Stairs  (B02) (GR),The Big - P.01 - UP-24-MAY-26.CON.P02.B02.SUP.GF,20-Apr-26,28-Apr-26,06-Aug-26,15-Aug-26,,,8,-74,0,Yes,No,"CON-B02-GR-1030, E-APP-B02-GR-1010","CON-B02-GR-1070, CON-B02-GR-1070",0.0,0,0.0
The Big -P.01-UP-20-April-26,CON-B02-GR-1060,RFT for Slabs & Beams (B02) (GR),The Big - P.01 - UP-24-MAY-26.CON.P02.B02.SUP.GF,26-Apr-26,09-May-26,12-Aug-26,25-Aug-26,,,12,-87,0,Yes,No,"CON-B02-GR-1040, CON-B02-GR-1040, E-APP-B02-GR-1020, E-APP-B02-GR-1030, P-MDEL-1130",CON-B02-GR-1100,0.0,0,0.0
The Big -P.01-UP-20-April-26,CON-B02-GR-1070,RFT for Stairs  (B02) (GR),The Big - P.01 - UP-24-MAY-26.CON.P02.B02.SUP.GF,22-Apr-26,30-Apr-26,09-Aug-26,17-Aug-26,,,8,-74,0,Yes,No,"CON-B02-GR-1050, CON-B02-GR-1050, E-APP-B02-GR-1010, P-MDEL-1130",CON-B02-GR-1080,0.0,0,0.0
The Big -P.01-UP-20-April-26,CON-B02-GR-1100,Pouring for Slabs & Beams (B02) (GR),The Big - P.01 - UP-24-MAY-26.CON.P02.B02.SUP.GF,10-May-26,11-May-26,26-Aug-26,29-Aug-26,,,2,-87,0,Yes,No,"CON-B02-GR-1060, P-MDEL-1030","CON-B02-GR-1110, KD-MS-1040, AB-SUB-B02-GR-1020, AB-SUB-B02-GR-1030",0.0,0,0.0
The Big -P.01-UP-20-April-26,CON-B02-GR-1080,Pouring for Stairs  (B02) (GR),The Big - P.01 - UP-24-MAY-26.CON.P02.B02.SUP.GF,02-May-26,03-May-26,18-Aug-26,19-Aug-26,,,2,-74,0,Yes,No,"CON-B02-GR-1070, P-MDEL-1030","CON-B02-GR-1090, AB-SUB-B02-GR-1010",0.0,0,0.0
The Big -P.01-UP-20-April-26,CON-B02-GR-1090,"Curing for Slabs, Beams Stairs (B02) (GR)",The Big - P.01 - UP-24-MAY-26.CON.P02.B02.SUP.GF,04-May-26,08-May-26,20-Aug-26,24-Aug-26,,,5,-93,0,Yes,No,CON-B02-GR-1080,CON-B02-1ST-1000,0.0,0,0.0
The Big -P.01-UP-20-April-26,CON-B02-GR-1110,Dismantling Formwork (B02) (GR),The Big - P.01 - UP-24-MAY-26.CON.P02.B02.SUP.GF,02-Jun-26,02-Jun-26,15-Sep-26,15-Sep-26,,,1,-73,19,Yes,No,CON-B02-GR-1100,CON-B02-1ST-1040,0.0,0,0.0
The Big -P.01-UP-20-April-26,CON-B02-1ST-1000,"Scaffolding works for Walls, Col. & Cores (B02) (1st)",The Big - P.01 - UP-24-MAY-26.CON.P02.B02.SUP.1stF,01-Jun-26,07-Jun-26,14-Sep-26,20-Sep-26,,,6,-77,0,Yes,No,CON-B02-GR-1090,"CON-B02-1ST-1010, CON-B02-1ST-1010",0.0,0,0.0
The Big -P.01-UP-20-April-26,CON-B02-1ST-1010,"RFT for Walls, Col. & Cores (B02) (1st)",The Big - P.01 - UP-24-MAY-26.CON.P02.B02.SUP.1stF,04-Jun-26,15-Jun-26,17-Sep-26,28-Sep-26,,,10,-77,0,Yes,No,"CON-B02-1ST-1000, CON-B02-1ST-1000, E-APP-B02-1ST-1000, P-MDEL-1120","CON-B02-1ST-1020, CON-B02-1ST-1020",10.0,10,0.0
The Big -P.01-UP-20-April-26,CON-B02-1ST-1020,"Shuttering for Walls, Col. & Cores (B02) (1st)",The Big - P.01 - UP-24-MAY-26.CON.P02.B02.SUP.1stF,08-Jun-26,18-Jun-26,21-Sep-26,01-Oct-26,,,10,-77,0,Yes,No,"CON-B02-1ST-1010, CON-B02-1ST-1010, E-APP-B02-1ST-1000",CON-B02-1ST-1030,0.0,0,0.0
The Big -P.01-UP-20-April-26,CON-B02-1ST-1030,"Pouring for Walls, Col. & Cores (B02) (1st)",The Big - P.01 - UP-24-MAY-26.CON.P02.B02.SUP.1stF,20-Jun-26,21-Jun-26,03-Oct-26,04-Oct-26,,,2,-77,0,Yes,No,"CON-B02-1ST-1020, P-MDEL-1030","CON-B02-1ST-1040, AB-SUB-B02-1ST-1000",0.0,0,0.0
The Big -P.01-UP-20-April-26,CON-B02-1ST-1040,"Shuttering for Slabs, Beams & Stairs (B02) (1st)",The Big - P.01 - UP-24-MAY-26.CON.P02.B02.SUP.1stF,22-Jun-26,06-Jul-26,05-Oct-26,19-Oct-26,,,12,-77,0,Yes,No,"E-APP-B02-1ST-1030, E-APP-B02-1ST-1020, E-APP-B02-1ST-1010, CON-B02-1ST-1030, CON-B02-GR-1110","CON-B02-1ST-1050, CON-B02-1ST-1050",0.0,0,0.0
The Big -P.01-UP-20-April-26,CON-B02-1ST-1050,"RFT for Slabs, Beams & Stairs (B02) (1st)",The Big - P.01 - UP-24-MAY-26.CON.P02.B02.SUP.1stF,27-Jun-26,11-Jul-26,11-Oct-26,24-Oct-26,,,12,-77,0,Yes,No,"CON-B02-1ST-1040, CON-B02-1ST-1040, E-APP-B02-1ST-1010, E-APP-B02-1ST-1020, E-APP-B02-1ST-1030, P-MDEL-1120",CON-B02-1ST-1060,0.0,0,0.0
The Big -P.01-UP-20-April-26,CON-B02-1ST-1060,"Pouring for Slabs, Beams & Stairs (B02) (1st)",The Big - P.01 - UP-24-MAY-26.CON.P02.B02.SUP.1stF,12-Jul-26,14-Jul-26,25-Oct-26,27-Oct-26,,,3,-77,0,Yes,No,"CON-B02-1ST-1050, P-MDEL-1030","CON-B02-1ST-1070, CON-B02-1ST-1080, AB-SUB-B02-1ST-1010, AB-SUB-B02-1ST-1020, AB-SUB-B02-1ST-1030",0.0,0,0.0
The Big -P.01-UP-20-April-26,CON-B02-1ST-1070,"Curing for Slabs, Beams & Stairs (B02) (1st)",The Big - P.01 - UP-24-MAY-26.CON.P02.B02.SUP.1stF,15-Jul-26,19-Jul-26,28-Oct-26,01-Nov-26,,,5,-92,0,Yes,No,CON-B02-1ST-1060,CON-B02-2ND-1000,0.0,0,0.0
The Big -P.01-UP-20-April-26,CON-B02-1ST-1080,Dismantling Formwork (B02) (1st),The Big - P.01 - UP-24-MAY-26.CON.P02.B02.SUP.1stF,28-Jul-26,28-Jul-26,09-Nov-26,09-Nov-26,,,1,-69,22,Yes,No,CON-B02-1ST-1060,CON-B02-2ND-1040,0.0,0,0.0
The Big -P.01-UP-20-April-26,CON-B02-2ND-1000,"Scaffolding works for Walls, Col. & Cores (B02) (2nd)",The Big - P.01 - UP-24-MAY-26.CON.P02.B02.SUP.2ndF,28-Jul-26,02-Aug-26,10-Nov-26,15-Nov-26,,,5,-77,0,Yes,No,CON-B02-1ST-1070,"CON-B02-2ND-1010, CON-B02-2ND-1010",0.0,0,0.0
The Big -P.01-UP-20-April-26,CON-B02-2ND-1010,"RFT for Walls, Col. & Cores (B02) (2nd)",The Big - P.01 - UP-24-MAY-26.CON.P02.B02.SUP.2ndF,30-Jul-26,12-Aug-26,12-Nov-26,25-Nov-26,,,12,-77,0,Yes,No,"CON-B02-2ND-1000, CON-B02-2ND-1000, E-APP-B02-2ND-1000, P-MDEL-1110","CON-B02-2ND-1020, CON-B02-2ND-1020",1.0,1,0.0
The Big -P.01-UP-20-April-26,CON-B02-2ND-1020,"Shuttering for Walls, Col. & Cores (B02) (2nd)",The Big - P.01 - UP-24-MAY-26.CON.P02.B02.SUP.2ndF,03-Aug-26,16-Aug-26,16-Nov-26,29-Nov-26,,,12,-77,0,Yes,No,"CON-B02-2ND-1010, CON-B02-2ND-1010, E-APP-B02-2ND-1000",CON-B02-2ND-1030,0.0,0,0.0
The Big -P.01-UP-20-April-26,CON-B02-2ND-1030,"Pouring for Walls, Col. & Cores (B02) (2nd)",The Big - P.01 - UP-24-MAY-26.CON.P02.B02.SUP.2ndF,17-Aug-26,18-Aug-26,30-Nov-26,01-Dec-26,,,2,-77,0,Yes,No,"CON-B02-2ND-1020, P-MDEL-1030","CON-B02-2ND-1040, AB-SUB-B02-2ND-1000",0.0,0,0.0
The Big -P.01-UP-20-April-26,CON-B02-2ND-1040,"Shuttering for Slabs, Beams & Stairs (B02) (2nd)",The Big - P.01 - UP-24-MAY-26.CON.P02.B02.SUP.2ndF,19-Aug-26,06-Sep-26,02-Dec-26,19-Dec-26,,,15,-77,0,Yes,No,"E-APP-B02-2ND-1030, E-APP-B02-2ND-1020, E-APP-B02-2ND-1010, CON-B02-2ND-1030, CON-B02-1ST-1080","CON-B02-2ND-1050, CON-B02-2ND-1050",0.0,0,0.0
The Big -P.01-UP-20-April-26,CON-B02-2ND-1050,"RFT for Slabs, Beams & Stairs (B02) (2nd)",The Big - P.01 - UP-24-MAY-26.CON.P02.B02.SUP.2ndF,24-Aug-26,10-Sep-26,07-Dec-26,23-Dec-26,,,15,-77,0,Yes,No,"CON-B02-2ND-1040, CON-B02-2ND-1040, E-APP-B02-2ND-1010, E-APP-B02-2ND-1020, E-APP-B02-2ND-1030, P-MDEL-1110",CON-B02-2ND-1060,0.0,0,0.0
The Big -P.01-UP-20-April-26,CON-B02-2ND-1060,"Pouring for Slabs, Beams & Stairs (B02) (2nd)",The Big - P.01 - UP-24-MAY-26.CON.P02.B02.SUP.2ndF,12-Sep-26,14-Sep-26,24-Dec-26,27-Dec-26,,,3,-77,0,Yes,No,"CON-B02-2ND-1050, P-MDEL-1030","CON-B02-2ND-1070, CON-B02-2ND-1080, AB-SUB-B02-2ND-1010, AB-SUB-B02-2ND-1020, AB-SUB-B02-2ND-1030",0.0,0,0.0
The Big -P.01-UP-20-April-26,CON-B02-2ND-1070,"Curing for Slabs, Beams & Stairs (B02) (2nd)",The Big - P.01 - UP-24-MAY-26.CON.P02.B02.SUP.2ndF,15-Sep-26,19-Sep-26,28-Dec-26,01-Jan-27,,,5,-91,0,Yes,No,CON-B02-2ND-1060,CON-B02-3RD-1000,0.0,0,0.0
The Big -P.01-UP-20-April-26,CON-B02-2ND-1080,Dismantling Formwork (B02) (2nd),The Big - P.01 - UP-24-MAY-26.CON.P02.B02.SUP.2ndF,27-Sep-26,27-Sep-26,10-Jan-27,10-Jan-27,,,1,-70,22,Yes,No,CON-B02-2ND-1060,CON-B02-3RD-1040,0.0,0,0.0
The Big -P.01-UP-20-April-26,CON-B02-3RD-1000,"Scaffolding works for Walls, Col. & Cores (B02) (3rd)",The Big - P.01 - UP-24-MAY-26.CON.P02.B02.SUP.3rdF,28-Sep-26,03-Oct-26,10-Jan-27,14-Jan-27,,,5,-77,0,Yes,No,CON-B02-2ND-1070,"CON-B02-3RD-1010, CON-B02-3RD-1010",0.0,0,0.0
The Big -P.01-UP-20-April-26,CON-B02-3RD-1010,"RFT for Walls, Col. & Cores (B02) (3rd)",The Big - P.01 - UP-24-MAY-26.CON.P02.B02.SUP.3rdF,30-Sep-26,14-Oct-26,12-Jan-27,26-Jan-27,,,12,-77,0,Yes,No,"CON-B02-3RD-1000, CON-B02-3RD-1000, E-APP-B02-3RD-1000, P-MDEL-1100","CON-B02-3RD-1020, CON-B02-3RD-1020",1.0,1,0.0
The Big -P.01-UP-20-April-26,CON-B02-3RD-1020,"Shuttering for Walls, Col. & Cores (B02) (3rd)",The Big - P.01 - UP-24-MAY-26.CON.P02.B02.SUP.3rdF,04-Oct-26,18-Oct-26,16-Jan-27,30-Jan-27,,,12,-77,0,Yes,No,"CON-B02-3RD-1010, CON-B02-3RD-1010, E-APP-B02-3RD-1000",CON-B02-3RD-1030,0.0,0,0.0
The Big -P.01-UP-20-April-26,CON-B02-3RD-1030,"Pouring for Walls, Col. & Cores (B02) (3rd)",The Big - P.01 - UP-24-MAY-26.CON.P02.B02.SUP.3rdF,19-Oct-26,20-Oct-26,31-Jan-27,01-Feb-27,,,2,-77,0,Yes,No,"CON-B02-3RD-1020, P-MDEL-1030","CON-B02-3RD-1040, AB-SUB-B02-3RD-1000",0.0,0,0.0
The Big -P.01-UP-20-April-26,CON-B02-3RD-1040,"Shuttering for Slabs, Beams & Stairs(B02) (3rd)",The Big - P.01 - UP-24-MAY-26.CON.P02.B02.SUP.3rdF,21-Oct-26,07-Nov-26,02-Feb-27,18-Feb-27,,,15,-77,0,Yes,No,"E-APP-B02-3RD-1030, E-APP-B02-3RD-1020, E-APP-B02-3RD-1010, CON-B02-3RD-1030, CON-B02-2ND-1080","CON-B02-3RD-1050, CON-B02-3RD-1050",0.0,0,0.0
The Big -P.01-UP-20-April-26,CON-B02-3RD-1050,"RFT for Slabs, Beams & Stairs (B02) (3rd)",The Big - P.01 - UP-24-MAY-26.CON.P02.B02.SUP.3rdF,26-Oct-26,11-Nov-26,07-Feb-27,23-Feb-27,,,15,-77,0,Yes,No,"CON-B02-3RD-1040, CON-B02-3RD-1040, E-APP-B02-3RD-1010, E-APP-B02-3RD-1020, E-APP-B02-3RD-1030, P-MDEL-1100",CON-B02-3RD-1060,0.0,0,0.0
The Big -P.01-UP-20-April-26,CON-B02-3RD-1060,"Pouring for Slabs, Beams & Stairs (B02) (3rd)",The Big - P.01 - UP-24-MAY-26.CON.P02.B02.SUP.3rdF,12-Nov-26,15-Nov-26,24-Feb-27,27-Feb-27,,,3,-77,0,Yes,No,"CON-B02-3RD-1050, P-MDEL-1030","CON-B02-3RD-1070, CON-B02-3RD-1080, AB-SUB-B02-3RD-1010, AB-SUB-B02-3RD-1020, AB-SUB-B02-3RD-1030",0.0,0,0.0
The Big -P.01-UP-20-April-26,CON-B02-3RD-1070,"Curing for Slabs, Beams & Stairs (B02) (3rd)",The Big - P.01 - UP-24-MAY-26.CON.P02.B02.SUP.3rdF,16-Nov-26,20-Nov-26,28-Feb-27,04-Mar-27,,,5,-93,0,Yes,No,CON-B02-3RD-1060,CON-B02-4TH-1000,0.0,0,0.0
The Big -P.01-UP-20-April-26,CON-B02-3RD-1080,Dismantling Formwork (B02) (3rd),The Big - P.01 - UP-24-MAY-26.CON.P02.B02.SUP.3rdF,27-Nov-26,27-Nov-26,15-Mar-27,15-Mar-27,,,1,-73,19,Yes,No,CON-B02-3RD-1060,CON-B02-4TH-1040,0.0,0,0.0
The Big -P.01-UP-20-April-26,CON-B02-4TH-1000,"Scaffolding works for Walls, Col. & Cores (B02) (4th)",The Big - P.01 - UP-24-MAY-26.CON.P02.B02.SUP.4thF,29-Nov-26,03-Dec-26,13-Mar-27,17-Mar-27,,,5,-74,0,Yes,No,CON-B02-3RD-1070,"CON-B02-4TH-1010, CON-B02-4TH-1010",0.0,0,0.0
The Big -P.01-UP-20-April-26,CON-B02-4TH-1010,"RFT for Walls, Col. & Cores (B02) (4th)",The Big - P.01 - UP-24-MAY-26.CON.P02.B02.SUP.4thF,01-Dec-26,14-Dec-26,15-Mar-27,28-Mar-27,,,12,-74,0,Yes,No,"CON-B02-4TH-1000, CON-B02-4TH-1000, E-APP-B02-4TH-1000, P-MDEL-1090","CON-B02-4TH-1020, CON-B02-4TH-1020",1.0,1,0.0
The Big -P.01-UP-20-April-26,CON-B02-4TH-1020,"Shuttering for Walls, Col. & Cores (B02) (4th)",The Big - P.01 - UP-24-MAY-26.CON.P02.B02.SUP.4thF,05-Dec-26,17-Dec-26,18-Mar-27,31-Mar-27,,,12,-74,0,Yes,No,"CON-B02-4TH-1010, CON-B02-4TH-1010, E-APP-B02-4TH-1000",CON-B02-4TH-1030,0.0,0,0.0
The Big -P.01-UP-20-April-26,CON-B02-4TH-1030,"Pouring for Walls, Col. & Cores (B02) (4th)",The Big - P.01 - UP-24-MAY-26.CON.P02.B02.SUP.4thF,19-Dec-26,20-Dec-26,01-Apr-27,03-Apr-27,,,2,-74,0,Yes,No,"CON-B02-4TH-1020, P-MDEL-1030","CON-B02-4TH-1040, AB-SUB-B02-4TH-1000",0.0,0,0.0
The Big -P.01-UP-20-April-26,CON-B02-4TH-1040,"Shuttering for Slabs, Beams & Stairs (B02) (4th)",The Big - P.01 - UP-24-MAY-26.CON.P02.B02.SUP.4thF,21-Dec-26,06-Jan-27,04-Apr-27,20-Apr-27,,,15,-74,0,Yes,No,"E-APP-B02-4TH-1030, E-APP-B02-4TH-1020, E-APP-B02-4TH-1010, CON-B02-4TH-1030, CON-B02-3RD-1080","CON-B02-4TH-1050, CON-B02-4TH-1050",0.0,0,0.0
The Big -P.01-UP-20-April-26,CON-B02-4TH-1050,"RFT for Slabs, Beams & Stairs (B02) (4th)",The Big - P.01 - UP-24-MAY-26.CON.P02.B02.SUP.4thF,24-Dec-26,11-Jan-27,07-Apr-27,24-Apr-27,,,15,-74,0,Yes,No,"CON-B02-4TH-1040, CON-B02-4TH-1040, E-APP-B02-4TH-1010, E-APP-B02-4TH-1020, E-APP-B02-4TH-1030, P-MDEL-1090",CON-B02-4TH-1060,0.0,0,0.0
The Big -P.01-UP-20-April-26,CON-B02-4TH-1060,"Pouring for Slabs, Beams & Stairs (B02) (4th)",The Big - P.01 - UP-24-MAY-26.CON.P02.B02.SUP.4thF,12-Jan-27,14-Jan-27,25-Apr-27,27-Apr-27,,,3,-74,0,Yes,No,"CON-B02-4TH-1050, P-MDEL-1030","CON-B02-4TH-1070, CON-B02-4TH-1080, AB-SUB-B02-4TH-1010, AB-SUB-B02-4TH-1020, AB-SUB-B02-4TH-1030",0.0,0,0.0
The Big -P.01-UP-20-April-26,CON-B02-4TH-1070,"Curing for Slabs, Beams & Stairs (B02) (4th)",The Big - P.01 - UP-24-MAY-26.CON.P02.B02.SUP.4thF,15-Jan-27,19-Jan-27,28-Apr-27,02-May-27,,,5,-90,0,Yes,No,CON-B02-4TH-1060,CON-B02-RF-1000,0.0,0,0.0
The Big -P.01-UP-20-April-26,CON-B02-4TH-1080,Dismantling Formwork (B02) (4th),The Big - P.01 - UP-24-MAY-26.CON.P02.B02.SUP.4thF,28-Jan-27,28-Jan-27,10-May-27,10-May-27,,,1,-69,21,Yes,No,CON-B02-4TH-1060,CON-B02-RF-1060,0.0,0,0.0
The Big -P.01-UP-20-April-26,CON-B02-RF-1000,"Scaffolding works for Walls, Col. & Cores (B02) (RF)",The Big - P.01 - UP-24-MAY-26.CON.P02.B02.SUP.RF,28-Jan-27,30-Jan-27,11-May-27,12-May-27,,,2,-74,0,Yes,No,CON-B02-4TH-1070,CON-B02-RF-1010,0.0,0,0.0
The Big -P.01-UP-20-April-26,CON-B02-RF-1010,"RFT for Walls, Col. & Cores (B02) (RF)",The Big - P.01 - UP-24-MAY-26.CON.P02.B02.SUP.RF,31-Jan-27,02-Feb-27,13-May-27,16-May-27,,,3,-74,0,Yes,No,"CON-B02-RF-1000, E-APP-B02-RF-1000, P-MDEL-1200",CON-B02-RF-1020,0.0,0,0.0
The Big -P.01-UP-20-April-26,CON-B02-RF-1020,"Shuttering for Walls, Col. & Cores (B02) (RF)",The Big - P.01 - UP-24-MAY-26.CON.P02.B02.SUP.RF,03-Feb-27,06-Feb-27,17-May-27,19-May-27,,,3,-74,0,Yes,No,"CON-B02-RF-1010, E-APP-B02-RF-1000",CON-B02-RF-1030,0.0,0,0.0
The Big -P.01-UP-20-April-26,CON-B02-RF-1030,"Pouring for Walls, Col. & Cores (B02) (RF)",The Big - P.01 - UP-24-MAY-26.CON.P02.B02.SUP.RF,07-Feb-27,08-Feb-27,20-May-27,22-May-27,,,2,-74,0,Yes,No,"CON-B02-RF-1020, P-MDEL-1030","CON-B02-RF-1040, AB-SUB-B02-RF-1000",0.0,0,0.0
The Big -P.01-UP-20-April-26,CON-B02-RF-1040,"Shuttering for Slabs, Beams  (B02) (RF)",The Big - P.01 - UP-24-MAY-26.CON.P02.B02.SUP.RF,09-Feb-27,13-Feb-27,23-May-27,26-May-27,,,4,-74,0,Yes,No,"E-APP-B02-RF-1020, E-APP-B02-RF-1010, CON-B02-RF-1030",CON-B02-RF-1050,0.0,0,0.0
The Big -P.01-UP-20-April-26,CON-B02-RF-1050,"RFT for Slabs, Beams  (B02) (RF)",The Big - P.01 - UP-24-MAY-26.CON.P02.B02.SUP.RF,14-Feb-27,17-Feb-27,27-May-27,31-May-27,,,4,-74,0,Yes,No,"CON-B02-RF-1040, E-APP-B02-RF-1010, E-APP-B02-RF-1020, P-MDEL-1200",CON-B02-RF-1060,0.0,0,0.0
The Big -P.01-UP-20-April-26,CON-B02-RF-1060,"Pouring for Slabs, Beams  (B02) (RF)",The Big - P.01 - UP-24-MAY-26.CON.P02.B02.SUP.RF,18-Feb-27,20-Feb-27,01-Jun-27,02-Jun-27,,,2,-74,0,Yes,No,"CON-B02-RF-1050, P-MDEL-1030, CON-B02-4TH-1080","CON-B02-RF-1070, CON-B02-RF-1080, AB-SUB-B02-RF-1010, AB-SUB-B02-RF-1020",0.0,0,0.0
The Big -P.01-UP-20-April-26,CON-B02-RF-1070,"Curing for Slabs, Beams  (B02) (RF)",The Big - P.01 - UP-24-MAY-26.CON.P02.B02.SUP.RF,21-Feb-27,25-Feb-27,03-Jun-27,07-Jun-27,,,5,-73,7,Yes,No,CON-B02-RF-1060,CON-B02-RF-1080,0.0,0,0.0
The Big -P.01-UP-20-April-26,CON-B02-RF-1080,Dismantling Formwork (B02) (RF),The Big - P.01 - UP-24-MAY-26.CON.P02.B02.SUP.RF,04-Mar-27,04-Mar-27,15-Jun-27,15-Jun-27,,,1,-80,0,Yes,No,"CON-B02-RF-1060, CON-B02-RF-1070",HO-1020,0.0,0,0.0
The Big -P.01-UP-20-April-26,CON-B04-FOOT-1000,Shuttering for PC Raft (B04) (footing),The Big - P.01 - UP-24-MAY-26.CON.P01.B04.SUB.1,06-Jan-26,06-Jan-26,01-Dec-25,03-Dec-25,01-Dec-25,03-Dec-25,0,0,0,No,No,"E-APP-B04-FOOT-1010, CON-EW-B04-1010, P-MDEL-1020","CON-B04-FOOT-1010, AB-SUB-B04-FOOT-1000",0.0,0,1.0
The Big -P.01-UP-20-April-26,CON-B04-FOOT-1010,Pouring for PC Raft (B04) (footing),The Big - P.01 - UP-24-MAY-26.CON.P01.B04.SUB.1,08-Jan-26,08-Jan-26,22-Dec-25,23-Dec-25,22-Dec-25,23-Dec-25,0,0,0,No,No,"CON-B04-FOOT-1000, P-MDEL-1030","CON-B04-FOOT-1020, AB-SUB-B04-FOOT-1000",0.0,0,1.0
The Big -P.01-UP-20-April-26,CON-B04-FOOT-1020,Curing for PC Raft (B04) (footing),The Big - P.01 - UP-24-MAY-26.CON.P01.B04.SUB.1,09-Jan-26,11-Jan-26,23-Dec-25,23-Dec-25,23-Dec-25,23-Dec-25,0,0,0,No,No,CON-B04-FOOT-1010,"CON-B04-FOOT-1030, CON-B04-FOOT-1030",0.0,0,1.0
The Big -P.01-UP-20-April-26,CON-B04-FOOT-1030,Waterproofing & Ins. Protection works (B04) (footing),The Big - P.01 - UP-24-MAY-26.CON.P01.B04.SUB.1,12-Jan-26,13-Jan-26,24-Dec-25,24-Dec-25,24-Dec-25,24-Dec-25,0,0,0,No,No,"CON-B04-FOOT-1020, P-MDEL-1040, E-APP-B04-FOOT-1000, CON-B04-FOOT-1020","CON-B04-FOOT-1040, AB-SUB-B04-FOOT-1030",0.0,0,1.0
The Big -P.01-UP-20-April-26,CON-B04-FOOT-1040,Shuttering for RC Raft & Footings (B04) (footing),The Big - P.01 - UP-24-MAY-26.CON.P01.B04.SUB.1,14-Jan-26,22-Jan-26,10-Mar-26,19-May-26,10-Mar-26,,3,-90,0,Yes,No,"CON-B04-FOOT-1030, E-APP-B04-FOOT-1020","CON-B04-FOOT-1050, AB-SUB-B04-FOOT-1010, CON-B04-FOOT-1050, CON-B04-FOOT-1060",0.0,0,0.65
The Big -P.01-UP-20-April-26,CON-B04-FOOT-1050,RFT for RC Raft & Footings (B04) (footing),The Big - P.01 - UP-24-MAY-26.CON.P01.B04.SUB.1,15-Jan-26,24-Jan-26,10-Mar-26,19-May-26,10-Mar-26,,3,-88,0,Yes,No,"CON-B04-FOOT-1040, E-APP-B04-FOOT-1030, CON-B04-FOOT-1040, P-MDEL-1000","CON-B04-FOOT-1080, AB-SUB-B04-FOOT-1020",0.35,1,0.65
The Big -P.01-UP-20-April-26,CON-B04-FOOT-1080,Pouring for RC Raft & Footings (B04) (footing),The Big - P.01 - UP-24-MAY-26.CON.P01.B04.SUB.1,26-Jan-26,27-Jan-26,12-Mar-26,17-May-26,12-Mar-26,,1,-88,2,Yes,No,"CON-B04-FOOT-1050, P-MDEL-1030","CON-B04-FOOT-1100, AB-SUB-B04-FOOT-1020",0.0,0,0.65
The Big -P.01-UP-20-April-26,CON-B04-FOOT-1100,Curing & Deshuttering for RC Raft & Footings (B04) (footing),The Big - P.01 - UP-24-MAY-26.CON.P01.B04.SUB.1,29-Jan-26,31-Jan-26,19-May-26,22-May-26,,,3,-111,0,Yes,No,"CON-B04-FOOT-1080, CON-B04-FOOT-1090","CON-B04-FOOT-1110, CON-B04-BAS02-1000",0.0,0,0.0
The Big -P.01-UP-20-April-26,CON-B04-FOOT-1110,Bitumen Ins. for RC Raft & Footings (B04) (footing),The Big - P.01 - UP-24-MAY-26.CON.P01.B04.SUB.1,01-Feb-26,03-Feb-26,05-Jul-26,07-Jul-26,,,3,164,0,No,No,"CON-B04-FOOT-1100, P-MDEL-1050, E-APP-B04-FOOT-1000","CON-B04-FOOT-1120, AB-SUB-B04-FOOT-1030",0.0,0,0.0
The Big -P.01-UP-20-April-26,CON-B04-FOOT-1120,Soil Backfilling (B04) (footing),The Big - P.01 - UP-24-MAY-26.CON.P01.B04.SUB.1,04-Feb-26,07-Feb-26,08-Jul-26,11-Jul-26,,,3,164,11,No,No,CON-B04-FOOT-1110,CON-B04-SOG-1000,42.0,42,0.0
The Big -P.01-UP-20-April-26,CON-B04-FOOT-1060,Shuttering for Columns & Walls Below SOG (B01) (footing),The Big - P.01 - UP-24-MAY-26.CON.P01.B04.SUB.1,20-Jan-26,26-Jan-26,10-Mar-26,18-May-26,10-Mar-26,,2,-90,0,Yes,No,"CON-B04-FOOT-1040, E-APP-B04-FOOT-1020","CON-B04-FOOT-1070, CON-B04-FOOT-1070",0.0,0,0.65
The Big -P.01-UP-20-April-26,CON-B04-FOOT-1070,RFT for Columns & Walls Below SOG (B04) (footing),The Big - P.01 - UP-24-MAY-26.CON.P01.B04.SUB.1,21-Jan-26,27-Jan-26,10-Mar-26,18-May-26,10-Mar-26,,2,-90,0,Yes,No,"CON-B04-FOOT-1060, CON-B04-FOOT-1060, E-APP-B04-FOOT-1030, P-MDEL-1000",CON-B04-FOOT-1090,0.0,0,0.65
The Big -P.01-UP-20-April-26,CON-B04-FOOT-1090,Pouring Columns & Walls Below SOG (B01) (footing),The Big - P.01 - UP-24-MAY-26.CON.P01.B04.SUB.1,28-Jan-26,28-Jan-26,18-May-26,19-May-26,,,1,-90,0,Yes,No,CON-B04-FOOT-1070,CON-B04-FOOT-1100,0.0,0,0.0
The Big -P.01-UP-20-April-26,CON-B04-BAS02-1000,"Scaffolding works for Walls, Col. & Cores (B04) (Bas 02)",The Big - P.01 - UP-24-MAY-26.CON.P01.B04.SUB.3,01-Feb-26,08-Feb-26,23-May-26,03-Jun-26,,,7,-90,0,Yes,No,CON-B04-FOOT-1100,"CON-B04-BAS02-1010, CON-B04-BAS02-1010",0.0,0,0.0
The Big -P.01-UP-20-April-26,CON-B04-BAS02-1010,"RFT for Walls, Col. & Cores (B04) (Bas 02)",The Big - P.01 - UP-24-MAY-26.CON.P01.B04.SUB.3,01-Feb-26,11-Feb-26,23-May-26,07-Jun-26,,,10,-90,0,Yes,No,"CON-B04-BAS02-1000, CON-B04-BAS02-1000, E-APP-B04-BAS02-1000, P-MDEL-1170","CON-B04-BAS02-1020, AB-SUB-B04-BAS2-1000, CON-B04-BAS02-1020",1.0,1,0.0
The Big -P.01-UP-20-April-26,CON-B04-BAS02-1020,"Shuttering for Walls, Col. & Cores (B04) (Bas 02)",The Big - P.01 - UP-24-MAY-26.CON.P01.B04.SUB.3,08-Feb-26,18-Feb-26,03-Jun-26,14-Jun-26,,,10,-90,0,Yes,No,"CON-B04-BAS02-1010, CON-B04-BAS02-1010, E-APP-B04-BAS02-1000",CON-B04-BAS02-1030,0.0,0,0.0
The Big -P.01-UP-20-April-26,CON-B04-BAS02-1030,"Pouring for Walls, Col. & Cores (B04) (Bas 02)",The Big - P.01 - UP-24-MAY-26.CON.P01.B04.SUB.3,19-Feb-26,21-Feb-26,15-Jun-26,16-Jun-26,,,2,-90,0,Yes,No,"CON-B04-BAS02-1020, P-MDEL-1030","CON-B04-BAS02-1040, CON-B04-BAS02-1070, CON-B04-BAS02-1050",0.0,0,0.0
The Big -P.01-UP-20-April-26,CON-B04-BAS02-1040,Shuttering for Slabs & Beams (B04) (Bas 02),The Big - P.01 - UP-24-MAY-26.CON.P01.B04.SUB.3,22-Feb-26,02-Mar-26,17-Jun-26,25-Jun-26,,,8,-90,0,Yes,No,"E-APP-B04-BAS02-1040, E-APP-B04-BAS02-1030, CON-B04-BAS02-1030","CON-B04-BAS02-1060, CON-B04-BAS02-1060",0.0,0,0.0
The Big -P.01-UP-20-April-26,CON-B04-BAS02-1050,Shuttering for Stairs  (B04) (Bas 02),The Big - P.01 - UP-24-MAY-26.CON.P01.B04.SUB.3,23-Feb-26,01-Mar-26,18-Jun-26,24-Jun-26,,,6,-77,0,Yes,No,"E-APP-B04-BAS02-1010, E-APP-B04-BAS02-1020, CON-B04-BAS02-1030","CON-B04-BAS02-1080, CON-B04-BAS02-1080",0.0,0,0.0
The Big -P.01-UP-20-April-26,CON-B04-BAS02-1060,RFT for Slabs & Beams (B04) (Bas 02),The Big - P.01 - UP-24-MAY-26.CON.P01.B04.SUB.3,24-Feb-26,07-Mar-26,20-Jun-26,01-Jul-26,,,10,-90,0,Yes,No,"CON-B04-BAS02-1040, CON-B04-BAS02-1040, E-APP-B04-BAS02-1030, E-APP-B04-BAS02-1040, P-MDEL-1170",CON-B04-BAS02-1130,0.0,0,0.0
The Big -P.01-UP-20-April-26,CON-B04-BAS02-1080,RFT for Stairs  (B04) (Bas 02),The Big - P.01 - UP-24-MAY-26.CON.P01.B04.SUB.3,25-Feb-26,02-Mar-26,21-Jun-26,25-Jun-26,,,5,-77,0,Yes,No,"CON-B04-BAS02-1050, CON-B04-BAS02-1050, E-APP-B04-BAS02-1010, P-MDEL-1170",CON-B04-BAS02-1100,0.0,0,0.0
The Big -P.01-UP-20-April-26,CON-B04-BAS02-1130,Pouring for Slabs & Beams (B04) (Bas 02),The Big - P.01 - UP-24-MAY-26.CON.P01.B04.SUB.3,08-Mar-26,09-Mar-26,02-Jul-26,04-Jul-26,,,2,-90,0,Yes,No,"CON-B04-BAS02-1060, P-MDEL-1030, CON-B04-WT-1210","CON-B04-BAS02-1140, AB-SUB-B04-BAS2-1030, AB-SUB-B04-BAS2-1040, CON-B04-BAS01-1000, CON-B04-BAS02-1120",0.0,0,0.0
The Big -P.01-UP-20-April-26,CON-B04-BAS02-1100,Pouring for Stairs  (B04) (Bas 02),The Big - P.01 - UP-24-MAY-26.CON.P01.B04.SUB.3,03-Mar-26,04-Mar-26,27-Jun-26,28-Jun-26,,,2,-77,0,Yes,No,"CON-B04-BAS02-1080, P-MDEL-1030","CON-B04-BAS02-1120, AB-SUB-B04-BAS2-1010, CON-B04-BAS02-1150",0.0,0,0.0
The Big -P.01-UP-20-April-26,CON-B04-BAS02-1120,"Curing for Slabs, Beams (B04) (Bas 02)",The Big - P.01 - UP-24-MAY-26.CON.P01.B04.SUB.3,10-Mar-26,12-Mar-26,05-Jul-26,07-Jul-26,,,3,-102,8,Yes,No,"CON-B04-BAS02-1100, CON-B04-BAS02-1110, CON-B04-BAS02-1130",CON-B04-BAS02-1140,0.0,0,0.0
The Big -P.01-UP-20-April-26,CON-B04-BAS02-1140,Dismantling Formwork (B04) (Bas 02),The Big - P.01 - UP-24-MAY-26.CON.P01.B04.SUB.3,26-Mar-26,26-Mar-26,16-Jul-26,16-Jul-26,,,1,-110,2,Yes,No,"CON-B04-BAS02-1130, CON-B04-BAS02-1120, CON-B04-BAS02-1150","CON-B04-SOG-1000, CON-B04-BAS01-1040",0.0,0,0.0
The Big -P.01-UP-20-April-26,CON-B04-BAS02-1070,Shuttering for  Ramps (B04) (Bas 02),The Big - P.01 - UP-24-MAY-26.CON.P01.B04.SUB.3,24-Feb-26,02-Mar-26,20-Jun-26,25-Jun-26,,,6,-78,0,Yes,No,CON-B04-BAS02-1030,"CON-B04-BAS02-1090, CON-B04-BAS02-1090",0.0,0,0.0
The Big -P.01-UP-20-April-26,CON-B04-BAS02-1090,RFT for Ramps (B04) (Bas 02),The Big - P.01 - UP-24-MAY-26.CON.P01.B04.SUB.3,26-Feb-26,03-Mar-26,22-Jun-26,27-Jun-26,,,5,-78,0,Yes,No,"CON-B04-BAS02-1070, CON-B04-BAS02-1070, E-APP-B04-BAS02-1020, P-MDEL-1170",CON-B04-BAS02-1110,0.0,0,0.0
The Big -P.01-UP-20-April-26,CON-B04-BAS02-1110,Pouring for Ramps (B04) (Bas 02),The Big - P.01 - UP-24-MAY-26.CON.P01.B04.SUB.3,04-Mar-26,05-Mar-26,28-Jun-26,29-Jun-26,,,2,-78,0,Yes,No,"CON-B04-BAS02-1090, P-MDEL-1030","CON-B04-BAS02-1120, AB-SUB-B04-BAS2-1020, CON-B04-BAS02-1150",0.0,0,0.0
The Big -P.01-UP-20-April-26,CON-B04-BAS02-1150,Curing for  Ramps & Stairs (B04) (Bas 02),The Big - P.01 - UP-24-MAY-26.CON.P01.B04.SUB.3,06-Mar-26,08-Mar-26,30-Jun-26,02-Jul-26,,,3,-97,13,Yes,No,"CON-B04-BAS02-1100, CON-B04-BAS02-1110",CON-B04-BAS02-1140,0.0,0,0.0
The Big -P.01-UP-20-April-26,CON-B04-WT-1000,Excavation for Water Tank (+198.15) (B04) (Water Tank),The Big - P.01 - UP-24-MAY-26.CON.P01.B04.SUB.3.2,25-Oct-25,04-Nov-25,05-Oct-25,10-Nov-25,05-Oct-25,10-Nov-25,0,0,0,No,No,"KD-MOB-1000, KD-MOB-1010, KD-MOB-1020",CON-B04-WT-1010,0.0,40,1.0
The Big -P.01-UP-20-April-26,CON-B04-WT-1010,Compaction of Soil (B04) (Water Tank),The Big - P.01 - UP-24-MAY-26.CON.P01.B04.SUB.3.2,05-Nov-25,08-Nov-25,10-Oct-25,11-Oct-25,10-Oct-25,11-Oct-25,0,0,0,No,No,CON-B04-WT-1000,CON-B04-WT-1020,0.0,3,1.0
The Big -P.01-UP-20-April-26,CON-B04-WT-1020,Shuttering for PC Raft (B04) (Water Tank),The Big - P.01 - UP-24-MAY-26.CON.P01.B04.SUB.3.2,09-Nov-25,10-Nov-25,12-Oct-25,18-Oct-25,12-Oct-25,18-Oct-25,0,0,0,No,No,"CON-B04-WT-1010, E-APP-B04-WT-1000, P-MDEL-1020",CON-B04-WT-1030,0.0,0,1.0
The Big -P.01-UP-20-April-26,CON-B04-WT-1030,Pouring for PC Raft (B04) (Water Tank),The Big - P.01 - UP-24-MAY-26.CON.P01.B04.SUB.3.2,13-Nov-25,13-Nov-25,15-Oct-25,16-Oct-25,15-Oct-25,16-Oct-25,0,0,0,No,No,"CON-B04-WT-1020, P-MDEL-1020","CON-B04-WT-1040, AB-SUB-B04-WT-1000",0.0,0,1.0
The Big -P.01-UP-20-April-26,CON-B04-WT-1040,Curing for PC Raft (B04) (Water Tank),The Big - P.01 - UP-24-MAY-26.CON.P01.B04.SUB.3.2,14-Nov-25,16-Nov-25,18-Oct-25,21-Oct-25,18-Oct-25,21-Oct-25,0,0,0,No,No,CON-B04-WT-1030,CON-B04-WT-1050,0.0,0,1.0
The Big -P.01-UP-20-April-26,CON-B04-WT-1050,Waterproofing & Ins. Protection works (B04) (Water Tank),The Big - P.01 - UP-24-MAY-26.CON.P01.B04.SUB.3.2,26-Nov-25,27-Nov-25,12-Dec-25,16-Dec-25,12-Dec-25,16-Dec-25,0,0,0,No,No,"P-MDEL-1040, E-APP-B04-FOOT-1000, CON-B04-WT-1040",CON-B04-WT-1060,0.0,0,1.0
The Big -P.01-UP-20-April-26,CON-B04-WT-1060,Shuttering for RC Raft (B04) (Water Tank),The Big - P.01 - UP-24-MAY-26.CON.P01.B04.SUB.3.2,29-Nov-25,02-Dec-25,01-Jan-26,04-Jan-26,01-Jan-26,04-Jan-26,0,0,0,No,No,"CON-B04-WT-1050, E-APP-B04-WT-1010","CON-B04-WT-1070, AB-SUB-B04-WT-1010, CON-B04-WT-1070",0.0,0,1.0
The Big -P.01-UP-20-April-26,CON-B04-WT-1070,RFT for RC Raft (B04) (Water Tank),The Big - P.01 - UP-24-MAY-26.CON.P01.B04.SUB.3.2,03-Dec-25,08-Dec-25,10-Jan-26,17-Jan-26,10-Jan-26,17-Jan-26,0,0,0,No,No,"CON-B04-WT-1060, E-APP-B04-WT-1020, CON-B04-WT-1060, P-MDEL-1000","CON-B04-WT-1080, AB-SUB-B04-WT-1020",0.0,0,1.0
The Big -P.01-UP-20-April-26,CON-B04-WT-1080,Pouring for RC Raft (B04) (Water Tank),The Big - P.01 - UP-24-MAY-26.CON.P01.B04.SUB.3.2,09-Dec-25,10-Dec-25,28-Feb-26,28-Feb-26,28-Feb-26,28-Feb-26,0,0,0,No,No,"CON-B04-WT-1070, P-MDEL-1030",CON-B04-WT-1090,0.0,0,1.0
The Big -P.01-UP-20-April-26,CON-B04-WT-1090,Curing & Deshuttering for RC Raft (B04) (Water Tank),The Big - P.01 - UP-24-MAY-26.CON.P01.B04.SUB.3.2,11-Dec-25,13-Dec-25,01-Mar-26,04-Mar-26,01-Mar-26,04-Mar-26,0,0,0,No,No,CON-B04-WT-1080,CON-B04-WT-1100,0.0,0,1.0
The Big -P.01-UP-20-April-26,CON-B04-WT-1100,Shuttering for Walls (B04) (Water Tank),The Big - P.01 - UP-24-MAY-26.CON.P01.B04.SUB.3.2,13-Dec-25,21-Dec-25,07-Mar-26,14-Apr-26,07-Mar-26,14-Apr-26,0,0,0,No,No,"CON-B04-WT-1090, E-APP-B04-WT-1030","CON-B04-WT-1110, AB-SUB-B04-WT-1030, CON-B04-WT-1110",0.0,0,1.0
The Big -P.01-UP-20-April-26,CON-B04-WT-1110,RFT for Walls (B04) (Water Tank),The Big - P.01 - UP-24-MAY-26.CON.P01.B04.SUB.3.2,13-Dec-25,21-Dec-25,08-Mar-26,14-Apr-26,08-Mar-26,14-Apr-26,0,0,0,No,No,"CON-B04-WT-1100, CON-B04-WT-1100, E-APP-B04-WT-1030, P-MDEL-1000","CON-B04-WT-1120, CON-B04-WT-1130, AB-SUB-B04-WT-1030",0.0,0,1.0
The Big -P.01-UP-20-April-26,CON-B04-WT-1120,Installation for Waterstop Insulation (B04) (Water Tank),The Big - P.01 - UP-24-MAY-26.CON.P01.B04.SUB.3.2,17-Dec-25,21-Dec-25,15-Apr-26,17-Apr-26,15-Apr-26,17-Apr-26,0,0,0,No,No,CON-B04-WT-1110,CON-B04-WT-1130,0.0,0,1.0
The Big -P.01-UP-20-April-26,CON-B04-WT-1130,Pouring for Walls (B04) (Water Tank),The Big - P.01 - UP-24-MAY-26.CON.P01.B04.SUB.3.2,22-Dec-25,23-Dec-25,18-Apr-26,20-Apr-26,18-Apr-26,20-Apr-26,0,0,0,No,No,"CON-B04-WT-1110, P-MDEL-1030, CON-B04-WT-1120","CON-B04-WT-1140, AB-SUB-B04-WT-1030, CON-B04-WT-1140",0.0,0,1.0
The Big -P.01-UP-20-April-26,CON-B04-WT-1140,Curing & Deshuttering for Walls (B04) (Water Tank),The Big - P.01 - UP-24-MAY-26.CON.P01.B04.SUB.3.2,22-Dec-25,26-Dec-25,17-May-26,21-May-26,,,5,-99,0,Yes,No,"CON-B04-WT-1130, CON-B04-WT-1130","CON-B04-WT-1150, CON-B04-WT-1200",0.0,0,0.0
The Big -P.01-UP-20-April-26,CON-B04-WT-1150,Formwork for Top Slab (B04) (Water Tank),The Big - P.01 - UP-24-MAY-26.CON.P01.B04.SUB.3.2,25-Dec-25,31-Dec-25,20-May-26,26-May-26,,,6,-80,0,Yes,No,"CON-B04-WT-1140, E-APP-B04-WT-1040","CON-B04-WT-1160, AB-SUB-B04-WT-1040, CON-B04-WT-1160",48.0,48,0.0
The Big -P.01-UP-20-April-26,CON-B04-WT-1160,RFT for Top Slab (B04) (Water Tank),The Big - P.01 - UP-24-MAY-26.CON.P01.B04.SUB.3.2,27-Dec-25,01-Jan-26,21-May-26,01-Jun-26,,,6,-80,0,Yes,No,"CON-B04-WT-1150, CON-B04-WT-1150, E-APP-B04-WT-1040, P-MDEL-1000","CON-B04-WT-1170, AB-SUB-B04-WT-1040",0.0,0,0.0
The Big -P.01-UP-20-April-26,CON-B04-WT-1170,Pouring for Top Slab (B04) (Water Tank),The Big - P.01 - UP-24-MAY-26.CON.P01.B04.SUB.3.2,03-Jan-26,03-Jan-26,02-Jun-26,02-Jun-26,,,1,-80,0,Yes,No,"CON-B04-WT-1160, P-MDEL-1030","CON-B04-WT-1180, AB-SUB-B04-WT-1040",0.0,0,0.0
The Big -P.01-UP-20-April-26,CON-B04-WT-1180,Curing & Desmantling Formwork for Top Slab (B04) (Water Tank),The Big - P.01 - UP-24-MAY-26.CON.P01.B04.SUB.3.2,04-Jan-26,08-Jan-26,03-Jun-26,07-Jun-26,,,5,-104,0,Yes,No,CON-B04-WT-1170,CON-B04-WT-1190,0.0,0,0.0
The Big -P.01-UP-20-April-26,CON-B04-WT-1190,Clearing Surface & Insulation for Inner Side (B04) (Water Tank),The Big - P.01 - UP-24-MAY-26.CON.P01.B04.SUB.3.2,11-Jan-26,15-Jan-26,10-Jun-26,15-Jun-26,,,5,-80,0,Yes,No,CON-B04-WT-1180,CON-B04-WT-1200,0.0,0,0.0
The Big -P.01-UP-20-April-26,CON-B04-WT-1200,Insulation for Outer Side (B04) (Water Tank),The Big - P.01 - UP-24-MAY-26.CON.P01.B04.SUB.3.2,08-Feb-26,12-Feb-26,10-Jun-26,15-Jun-26,,,5,-80,0,Yes,No,"CON-B04-WT-1140, CON-B04-WT-1190, E-APP-B04-FOOT-1000",CON-B04-WT-1210,0.0,0,0.0
The Big -P.01-UP-20-April-26,CON-B04-WT-1210,Backfilling works (B04) (Water Tank),The Big - P.01 - UP-24-MAY-26.CON.P01.B04.SUB.3.2,14-Feb-26,16-Feb-26,16-Jun-26,18-Jun-26,,,3,-80,10,Yes,No,CON-B04-WT-1200,CON-B04-BAS02-1130,7.0,7,0.0
The Big -P.01-UP-20-April-26,CON-B04-SOG-1000,Soil Backfilling & Compaction (B04) (Sog),The Big - P.01 - UP-24-MAY-26.CON.P01.B04.SUB.3.1,28-Mar-26,04-Apr-26,26-Jul-26,02-Aug-26,,,7,153,0,No,No,"CON-B03-SOG-1000, CON-B04-BAS02-1140, CON-B04-FOOT-1120",CON-B04-SOG-1010,49.0,49,0.0
The Big -P.01-UP-20-April-26,CON-B04-SOG-1010,Soil Compaction Test (B04) (Sog),The Big - P.01 - UP-24-MAY-26.CON.P01.B04.SUB.3.1,05-Apr-26,06-Apr-26,03-Aug-26,04-Aug-26,,,2,153,0,No,No,"CON-B04-SOG-1000, CON-B03-SOG-1010",CON-B04-SOG-1020,2.0,2,0.0
The Big -P.01-UP-20-April-26,CON-B04-SOG-1020,DPM Layer works (B04) (Sog),The Big - P.01 - UP-24-MAY-26.CON.P01.B04.SUB.3.1,07-Apr-26,19-Apr-26,05-Aug-26,16-Aug-26,,,10,153,0,No,No,"CON-B04-SOG-1010, P-MDEL-1040, E-APP-B04-FOOT-1000","CON-B04-SOG-1030, CON-B04-SOG-1030",0.0,0,0.0
The Big -P.01-UP-20-April-26,CON-B04-SOG-1030,Blinding Concrete works (B04) (Sog),The Big - P.01 - UP-24-MAY-26.CON.P01.B04.SUB.3.1,14-Apr-26,27-Apr-26,11-Aug-26,24-Aug-26,,,12,153,0,No,No,"CON-B04-SOG-1020, CON-B04-SOG-1020, CON-B03-SOG-1030","CON-B04-SOG-1040, CON-B04-SOG-1040",0.0,0,0.0
The Big -P.01-UP-20-April-26,CON-B04-SOG-1040,Shuttering & RFT for S.O.G (B04) (Sog),The Big - P.01 - UP-24-MAY-26.CON.P01.B04.SUB.3.1,20-Apr-26,06-May-26,17-Aug-26,03-Sep-26,,,15,153,0,No,No,"CON-B04-SOG-1030, CON-B04-SOG-1030, CON-B03-SOG-1040, E-APP-B04-SOG-1010, E-APP-B04-SOG-1000, P-MDEL-1150","CON-B04-SOG-1050, CON-B04-SOG-1050, AB-SUB-B04-SOG-1000, AB-SUB-B04-SOG-1010",0.0,0,0.0
The Big -P.01-UP-20-April-26,CON-B04-SOG-1050,Pouring for S.O.G (B04) (Sog),The Big - P.01 - UP-24-MAY-26.CON.P01.B04.SUB.3.1,26-Apr-26,06-May-26,23-Aug-26,03-Sep-26,,,10,153,0,No,No,"CON-B04-SOG-1040, CON-B04-SOG-1040, CON-B03-SOG-1050, P-MDEL-1030","CON-B04-SOG-1060, CON-B04-SOG-1060, AB-SUB-B04-SOG-1010",0.0,0,0.0
The Big -P.01-UP-20-April-26,CON-B04-SOG-1060,Curing & Smoothing Surface for S.O.G (B04) (Sog),The Big - P.01 - UP-24-MAY-26.CON.P01.B04.SUB.3.1,27-Apr-26,06-May-26,25-Aug-26,03-Sep-26,,,10,205,334,No,No,"CON-B04-SOG-1050, CON-B04-SOG-1050",HO-1040,0.0,0,0.0
The Big -P.01-UP-20-April-26,CON-B04-BAS01-1000,"Scaffolding works for Walls, Col. & Cores (B04) (Bas 01)",The Big - P.01 - UP-24-MAY-26.CON.P01.B04.SUB.2,10-Mar-26,22-Mar-26,05-Jul-26,12-Jul-26,,,7,-90,0,Yes,No,CON-B04-BAS02-1130,"CON-B04-BAS01-1010, CON-B04-BAS01-1010",0.0,0,0.0
The Big -P.01-UP-20-April-26,CON-B04-BAS01-1010,"RFT for Walls, Col. & Cores (B04) (Bas 01)",The Big - P.01 - UP-24-MAY-26.CON.P01.B04.SUB.2,10-Mar-26,23-Mar-26,05-Jul-26,13-Jul-26,,,8,-90,0,Yes,No,"CON-B04-BAS01-1000, CON-B04-BAS01-1000, E-APP-B04-BAS01-1000, P-MDEL-1160","CON-B04-BAS01-1020, CON-B04-BAS01-1020",12.0,12,0.0
The Big -P.01-UP-20-April-26,CON-B04-BAS01-1020,"Shuttering for Walls, Col. & Cores (B04) (Bas 01)",The Big - P.01 - UP-24-MAY-26.CON.P01.B04.SUB.2,15-Mar-26,25-Mar-26,09-Jul-26,15-Jul-26,,,6,-90,0,Yes,No,"CON-B04-BAS01-1010, CON-B04-BAS01-1010, E-APP-B04-BAS01-1000",CON-B04-BAS01-1030,0.0,0,0.0
The Big -P.01-UP-20-April-26,CON-B04-BAS01-1030,"Pouring for Walls, Col. & Cores (B04) (Bas 01)",The Big - P.01 - UP-24-MAY-26.CON.P01.B04.SUB.2,26-Mar-26,28-Mar-26,16-Jul-26,18-Jul-26,,,2,-90,0,Yes,No,"CON-B04-BAS01-1020, P-MDEL-1030","CON-B04-BAS01-1040, CON-B04-BAS01-1050, AB-SUB-B04-BAS1-1000",0.0,0,0.0
The Big -P.01-UP-20-April-26,CON-B04-BAS01-1040,Shuttering for Slabs & Beams (B04) (Bas 01),The Big - P.01 - UP-24-MAY-26.CON.P01.B04.SUB.2,29-Mar-26,06-Apr-26,19-Jul-26,28-Jul-26,,,8,-90,0,Yes,No,"E-APP-B04-BAS01-1040, E-APP-B04-BAS01-1030, CON-B04-BAS01-1030, CON-B04-BAS02-1140","CON-B04-BAS01-1060, CON-B04-BAS01-1070, CON-B04-BAS01-1070",0.0,0,0.0
The Big -P.01-UP-20-April-26,CON-B04-BAS01-1060,Shuttering for Stairs  (B04) (Bas 01),The Big - P.01 - UP-24-MAY-26.CON.P01.B04.SUB.2,31-Mar-26,06-Apr-26,21-Jul-26,28-Jul-26,,,6,-90,0,Yes,No,"CON-B04-BAS01-1040, E-APP-B04-BAS01-1010","CON-B04-BAS01-1090, CON-B04-BAS01-1090",0.0,0,0.0
The Big -P.01-UP-20-April-26,CON-B04-BAS01-1070,RFT for Slabs & Beams (B04) (Bas 01),The Big - P.01 - UP-24-MAY-26.CON.P01.B04.SUB.2,02-Apr-26,11-Apr-26,25-Jul-26,02-Aug-26,,,8,-90,0,Yes,No,"CON-B04-BAS01-1040, CON-B04-BAS01-1040, E-APP-B04-BAS01-1030, E-APP-B04-BAS01-1040, P-MDEL-1160",CON-B04-BAS01-1120,0.0,0,0.0
The Big -P.01-UP-20-April-26,CON-B04-BAS01-1090,RFT for Stairs  (B04) (Bas 01),The Big - P.01 - UP-24-MAY-26.CON.P01.B04.SUB.2,06-Apr-26,11-Apr-26,28-Jul-26,02-Aug-26,,,5,-90,0,Yes,No,"CON-B04-BAS01-1060, CON-B04-BAS01-1060, E-APP-B04-BAS01-1010, P-MDEL-1160",CON-B04-BAS01-1100,0.0,0,0.0
The Big -P.01-UP-20-April-26,CON-B04-BAS01-1120,Pouring for Slabs & Beams (B04) (Bas 01),The Big - P.01 - UP-24-MAY-26.CON.P01.B04.SUB.2,12-Apr-26,14-Apr-26,03-Aug-26,04-Aug-26,,,2,-90,0,Yes,No,"CON-B04-BAS01-1070, P-MDEL-1030","CON-B04-BAS01-1140, AB-SUB-B04-BAS1-1030, AB-SUB-B04-BAS1-1040, CON-B04-GR-1000, CON-B04-BAS01-1130",0.0,0,0.0
The Big -P.01-UP-20-April-26,CON-B04-BAS01-1100,Pouring for Stairs  (B04) (Bas 01),The Big - P.01 - UP-24-MAY-26.CON.P01.B04.SUB.2,12-Apr-26,14-Apr-26,03-Aug-26,04-Aug-26,,,2,-90,0,Yes,No,"CON-B04-BAS01-1090, P-MDEL-1030","CON-B04-BAS01-1130, CON-B04-BAS01-1150",0.0,0,0.0
The Big -P.01-UP-20-April-26,CON-B04-BAS01-1130,"Curing for Slabs, Beams (B04) (Bas 01)",The Big - P.01 - UP-24-MAY-26.CON.P01.B04.SUB.2,15-Apr-26,17-Apr-26,05-Aug-26,07-Aug-26,,,3,-101,11,Yes,No,"CON-B04-BAS01-1100, CON-B04-BAS01-1120",CON-B04-BAS01-1140,0.0,0,0.0
The Big -P.01-UP-20-April-26,CON-B04-BAS01-1140,Dismantling Formwork (B04) (Bas 01),The Big - P.01 - UP-24-MAY-26.CON.P01.B04.SUB.2,29-Apr-26,29-Apr-26,19-Aug-26,19-Aug-26,,,1,-112,0,Yes,No,"CON-B04-BAS01-1120, CON-B04-BAS01-1130, CON-B04-BAS01-1150",CON-B04-GR-1040,0.0,0,0.0
The Big -P.01-UP-20-April-26,CON-B04-BAS01-1050,Shuttering for Ramps (B04) (Bas 01),The Big - P.01 - UP-24-MAY-26.CON.P01.B04.SUB.2,29-Mar-26,05-Apr-26,19-Jul-26,27-Jul-26,,,7,-90,0,Yes,No,"CON-B04-BAS01-1030, E-APP-B04-BAS01-1020","CON-B04-BAS01-1080, CON-B04-BAS01-1080",0.0,0,0.0
The Big -P.01-UP-20-April-26,CON-B04-BAS01-1080,RFT for  Ramps (B04) (Bas 01),The Big - P.01 - UP-24-MAY-26.CON.P01.B04.SUB.2,04-Apr-26,11-Apr-26,26-Jul-26,02-Aug-26,,,7,-90,0,Yes,No,"CON-B04-BAS01-1050, CON-B04-BAS01-1050, E-APP-B04-BAS01-1020, P-MDEL-1160",CON-B04-BAS01-1110,0.0,0,0.0
The Big -P.01-UP-20-April-26,CON-B04-BAS01-1110,Pouring for  Ramps (B04) (Bas 01),The Big - P.01 - UP-24-MAY-26.CON.P01.B04.SUB.2,12-Apr-26,14-Apr-26,03-Aug-26,04-Aug-26,,,2,-90,0,Yes,No,"CON-B04-BAS01-1080, P-MDEL-1030","AB-SUB-B04-BAS1-1010, AB-SUB-B04-BAS1-1020, CON-B04-BAS01-1150",0.0,0,0.0
The Big -P.01-UP-20-April-26,CON-B04-BAS01-1150,Curing for  Ramps & Stairs (B04) (Bas 01),The Big - P.01 - UP-24-MAY-26.CON.P01.B04.SUB.2,15-Apr-26,18-Apr-26,05-Aug-26,08-Aug-26,,,4,-112,0,Yes,No,"CON-B04-BAS01-1100, CON-B04-BAS01-1110",CON-B04-BAS01-1140,0.0,0,0.0
The Big -P.01-UP-20-April-26,CON-B04-GR-1000,"Scaffolding works for Walls, Col. & Cores (B04) (GR)",The Big - P.01 - UP-24-MAY-26.CON.P01.B04.SUP.GF,15-Apr-26,22-Apr-26,05-Aug-26,12-Aug-26,,,7,-90,0,Yes,No,CON-B04-BAS01-1120,"CON-B04-GR-1010, CON-B04-GR-1010",0.0,0,0.0
The Big -P.01-UP-20-April-26,CON-B04-GR-1010,"RFT for Walls, Col. & Cores (B04) (GR)",The Big - P.01 - UP-24-MAY-26.CON.P01.B04.SUP.GF,18-Apr-26,27-Apr-26,08-Aug-26,17-Aug-26,,,9,-90,0,Yes,No,"CON-B04-GR-1000, CON-B04-GR-1000, E-APP-B04-GR-1000, P-MDEL-1130","CON-B04-GR-1020, CON-B04-GR-1020",1.0,1,0.0
The Big -P.01-UP-20-April-26,CON-B04-GR-1020,"Shuttering for Walls, Col. & Cores (B04) (GR)",The Big - P.01 - UP-24-MAY-26.CON.P01.B04.SUP.GF,20-Apr-26,27-Apr-26,10-Aug-26,17-Aug-26,,,7,-90,0,Yes,No,"CON-B04-GR-1010, CON-B04-GR-1010, E-APP-B04-GR-1000",CON-B04-GR-1030,0.0,0,0.0
The Big -P.01-UP-20-April-26,CON-B04-GR-1030,"Pouring for Walls, Col. & Cores (B04) (GR)",The Big - P.01 - UP-24-MAY-26.CON.P01.B04.SUP.GF,28-Apr-26,29-Apr-26,18-Aug-26,19-Aug-26,,,2,-90,0,Yes,No,"CON-B04-GR-1020, P-MDEL-1030","CON-B04-GR-1040, AB-SUB-B04-GR-1000",0.0,0,0.0
The Big -P.01-UP-20-April-26,CON-B04-GR-1040,Shuttering for Slabs & Beams (B04) (GR),The Big - P.01 - UP-24-MAY-26.CON.P01.B04.SUP.GF,30-Apr-26,06-May-26,20-Aug-26,26-Aug-26,,,6,-90,0,Yes,No,"E-APP-B04-GR-1030, E-APP-B04-GR-1020, CON-B04-GR-1030, CON-B04-BAS01-1140","CON-B04-GR-1050, CON-B04-GR-1060, CON-B04-GR-1060",0.0,0,0.0
The Big -P.01-UP-20-April-26,CON-B04-GR-1050,Shuttering for Stairs (B04) (GR),The Big - P.01 - UP-24-MAY-26.CON.P01.B04.SUP.GF,03-May-26,09-May-26,23-Aug-26,30-Aug-26,,,6,-89,0,Yes,No,"CON-B04-GR-1040, E-APP-B04-GR-1010","CON-B04-GR-1070, CON-B04-GR-1070",0.0,0,0.0
The Big -P.01-UP-20-April-26,CON-B04-GR-1060,RFT for Slabs & Beams (B04) (GR),The Big - P.01 - UP-24-MAY-26.CON.P01.B04.SUP.GF,04-May-26,09-May-26,24-Aug-26,30-Aug-26,,,5,-90,0,Yes,No,"CON-B04-GR-1040, CON-B04-GR-1040, E-APP-B04-GR-1020, E-APP-B04-GR-1030, P-MDEL-1130",CON-B04-GR-1080,0.0,0,0.0
The Big -P.01-UP-20-April-26,CON-B04-GR-1070,RFT for Stairs  (B04) (GR),The Big - P.01 - UP-24-MAY-26.CON.P01.B04.SUP.GF,05-May-26,09-May-26,25-Aug-26,30-Aug-26,,,4,-89,0,Yes,No,"CON-B04-GR-1050, CON-B04-GR-1050, E-APP-B04-GR-1010, P-MDEL-1130",CON-B04-GR-1090,0.0,0,0.0
The Big -P.01-UP-20-April-26,CON-B04-GR-1080,Pouring for Slabs & Beams (B04) (GR),The Big - P.01 - UP-24-MAY-26.CON.P01.B04.SUP.GF,10-May-26,11-May-26,31-Aug-26,01-Sep-26,,,2,-90,0,Yes,No,"CON-B04-GR-1060, P-MDEL-1030","CON-B04-GR-1110, KD-MS-1040, AB-SUB-B04-GR-1010, AB-SUB-B04-GR-1020, CON-B04-GR-1100",0.0,0,0.0
The Big -P.01-UP-20-April-26,CON-B04-GR-1090,Pouring for Stairs (B04) (GR),The Big - P.01 - UP-24-MAY-26.CON.P01.B04.SUP.GF,10-May-26,11-May-26,31-Aug-26,01-Sep-26,,,2,-89,0,Yes,No,"CON-B04-GR-1070, P-MDEL-1030","CON-B04-GR-1100, AB-SUB-B04-GR-1030",0.0,0,0.0
The Big -P.01-UP-20-April-26,CON-B04-GR-1100,"Curing for Slabs, Beams & Stairs (B04) (GR)",The Big - P.01 - UP-24-MAY-26.CON.P01.B04.SUP.GF,12-May-26,14-May-26,02-Sep-26,04-Sep-26,,,3,-112,18,Yes,No,"CON-B04-GR-1090, CON-B04-GR-1080",CON-B04-1ST-1000,0.0,0,0.0
The Big -P.01-UP-20-April-26,CON-B04-GR-1110,Dismantling Formwork (B04) (GR),The Big - P.01 - UP-24-MAY-26.CON.P01.B04.SUP.GF,24-May-26,24-May-26,14-Sep-26,14-Sep-26,,,1,-103,25,Yes,No,CON-B04-GR-1080,CON-B04-1ST-1040,0.0,0,0.0
The Big -P.01-UP-20-April-26,CON-B04-1ST-1000,"Scaffolding works for Walls, Col. & Cores (B04) (1st)",The Big - P.01 - UP-24-MAY-26.CON.P01.B04.SUP.1stF,16-May-26,20-May-26,23-Sep-26,29-Sep-26,,,5,-105,0,Yes,No,"CON-B04-GR-1100, KD-MS-1040","CON-B04-1ST-1010, CON-B04-1ST-1010",0.0,0,0.0
The Big -P.01-UP-20-April-26,CON-B04-1ST-1010,"RFT for Walls, Col. & Cores (B04) (1st)",The Big - P.01 - UP-24-MAY-26.CON.P01.B04.SUP.1stF,19-May-26,26-May-26,27-Sep-26,05-Oct-26,,,7,-105,0,Yes,No,"CON-B04-1ST-1000, CON-B04-1ST-1000, E-APP-B04-1ST-1000, P-MDEL-1120","CON-B04-1ST-1020, CON-B04-1ST-1020",1.0,1,0.0
The Big -P.01-UP-20-April-26,CON-B04-1ST-1020,"Shuttering for Walls, Col. & Cores (B04) (1st)",The Big - P.01 - UP-24-MAY-26.CON.P01.B04.SUP.1stF,21-May-26,01-Jun-26,29-Sep-26,07-Oct-26,,,6,-105,0,Yes,No,"CON-B04-1ST-1010, CON-B04-1ST-1010, E-APP-B04-1ST-1000",CON-B04-1ST-1030,0.0,0,0.0
The Big -P.01-UP-20-April-26,CON-B04-1ST-1030,"Pouring for Walls, Col. & Cores (B04) (1st)",The Big - P.01 - UP-24-MAY-26.CON.P01.B04.SUP.1stF,02-Jun-26,03-Jun-26,07-Oct-26,10-Oct-26,,,2,-105,0,Yes,No,"CON-B04-1ST-1020, P-MDEL-1030","CON-B04-1ST-1040, AB-SUB-B04-1ST-1000",0.0,0,0.0
The Big -P.01-UP-20-April-26,CON-B04-1ST-1040,"Shuttering for Slabs, Beams & Stairs (B04) (1st)",The Big - P.01 - UP-24-MAY-26.CON.P01.B04.SUP.1stF,04-Jun-26,15-Jun-26,10-Oct-26,21-Oct-26,,,10,-105,0,Yes,No,"E-APP-B04-1ST-1030, E-APP-B04-1ST-1020, E-APP-B04-1ST-1010, CON-B04-1ST-1030, CON-B04-GR-1110","CON-B04-1ST-1050, CON-B04-1ST-1050",0.0,0,0.0
The Big -P.01-UP-20-April-26,CON-B04-1ST-1050,"RFT for Slabs, Beams & Stairs (B04) (1st)",The Big - P.01 - UP-24-MAY-26.CON.P01.B04.SUP.1stF,09-Jun-26,20-Jun-26,14-Oct-26,26-Oct-26,,,10,-105,0,Yes,No,"CON-B04-1ST-1040, CON-B04-1ST-1040, E-APP-B04-1ST-1010, E-APP-B04-1ST-1020, E-APP-B04-1ST-1030, P-MDEL-1120",CON-B04-1ST-1060,0.0,0,0.0
The Big -P.01-UP-20-April-26,CON-B04-1ST-1060,"Pouring for Slabs, Beams & Stairs (B04) (1st)",The Big - P.01 - UP-24-MAY-26.CON.P01.B04.SUP.1stF,21-Jun-26,23-Jun-26,26-Oct-26,29-Oct-26,,,3,-105,0,Yes,No,"CON-B04-1ST-1050, P-MDEL-1030","CON-B04-1ST-1070, CON-B04-1ST-1080, AB-SUB-B04-1ST-1010, AB-SUB-B04-1ST-1020, AB-SUB-B04-1ST-1030",0.0,0,0.0
The Big -P.01-UP-20-April-26,CON-B04-1ST-1070,"Curing for Slabs, Beams & Stairs (B04) (1st)",The Big - P.01 - UP-24-MAY-26.CON.P01.B04.SUP.1stF,24-Jun-26,26-Jun-26,29-Oct-26,01-Nov-26,,,3,-127,0,Yes,No,CON-B04-1ST-1060,CON-B04-2ND-1000,0.0,0,0.0
The Big -P.01-UP-20-April-26,CON-B04-1ST-1080,Dismantling Formwork (B04) (1st),The Big - P.01 - UP-24-MAY-26.CON.P01.B04.SUP.1stF,07-Jul-26,07-Jul-26,10-Nov-26,11-Nov-26,,,1,-119,7,Yes,No,CON-B04-1ST-1060,CON-B04-2ND-1040,0.0,0,0.0
The Big -P.01-UP-20-April-26,CON-B04-2ND-1000,"Scaffolding works for Walls, Col. & Cores (B04) (2nd)",The Big - P.01 - UP-24-MAY-26.CON.P01.B04.SUP.2ndF,27-Jun-26,02-Jul-26,01-Nov-26,07-Nov-26,,,5,-105,0,Yes,No,CON-B04-1ST-1070,"CON-B04-2ND-1010, CON-B04-2ND-1010",0.0,0,0.0
The Big -P.01-UP-20-April-26,CON-B04-2ND-1010,"RFT for Walls, Col. & Cores (B04) (2nd)",The Big - P.01 - UP-24-MAY-26.CON.P01.B04.SUP.2ndF,01-Jul-26,09-Jul-26,04-Nov-26,14-Nov-26,,,8,-105,0,Yes,No,"CON-B04-2ND-1000, CON-B04-2ND-1000, E-APP-B04-2ND-1000, P-MDEL-1110","CON-B04-2ND-1020, CON-B04-2ND-1020",1.0,1,0.0
The Big -P.01-UP-20-April-26,CON-B04-2ND-1020,"Shuttering for Walls, Col. & Cores (B04) (2nd)",The Big - P.01 - UP-24-MAY-26.CON.P01.B04.SUP.2ndF,05-Jul-26,13-Jul-26,08-Nov-26,17-Nov-26,,,8,-105,0,Yes,No,"CON-B04-2ND-1010, CON-B04-2ND-1010, E-APP-B04-2ND-1000",CON-B04-2ND-1030,0.0,0,0.0
The Big -P.01-UP-20-April-26,CON-B04-2ND-1030,"Pouring for Walls, Col. & Cores (B04) (2nd)",The Big - P.01 - UP-24-MAY-26.CON.P01.B04.SUP.2ndF,14-Jul-26,14-Jul-26,17-Nov-26,18-Nov-26,,,1,-105,0,Yes,No,"CON-B04-2ND-1020, P-MDEL-1030","CON-B04-2ND-1040, AB-SUB-B04-2ND-1000",0.0,0,0.0
The Big -P.01-UP-20-April-26,CON-B04-2ND-1040,"Shuttering for Slabs, Beams & Stairs (B04) (2nd)",The Big - P.01 - UP-24-MAY-26.CON.P01.B04.SUP.2ndF,15-Jul-26,27-Jul-26,18-Nov-26,30-Nov-26,,,10,-105,0,Yes,No,"E-APP-B04-2ND-1030, E-APP-B04-2ND-1020, E-APP-B04-2ND-1010, CON-B04-2ND-1030, CON-B04-1ST-1080","CON-B04-2ND-1050, CON-B04-2ND-1050",0.0,0,0.0
The Big -P.01-UP-20-April-26,CON-B04-2ND-1050,"RFT for Slabs, Beams & Stairs (B04) (2nd)",The Big - P.01 - UP-24-MAY-26.CON.P01.B04.SUP.2ndF,20-Jul-26,01-Aug-26,23-Nov-26,05-Dec-26,,,10,-105,0,Yes,No,"CON-B04-2ND-1040, CON-B04-2ND-1040, E-APP-B04-2ND-1010, E-APP-B04-2ND-1020, E-APP-B04-2ND-1030, P-MDEL-1110",CON-B04-2ND-1060,0.0,0,0.0
The Big -P.01-UP-20-April-26,CON-B04-2ND-1060,"Pouring for Slabs, Beams & Stairs (B04) (2nd)",The Big - P.01 - UP-24-MAY-26.CON.P01.B04.SUP.2ndF,02-Aug-26,04-Aug-26,05-Dec-26,08-Dec-26,,,3,-105,0,Yes,No,"CON-B04-2ND-1050, P-MDEL-1030","CON-B04-2ND-1070, CON-B04-2ND-1080, AB-SUB-B04-2ND-1010, AB-SUB-B04-2ND-1020, AB-SUB-B04-2ND-1030",0.0,0,0.0
The Big -P.01-UP-20-April-26,CON-B04-2ND-1070,"Curing for Slabs, Beams & Stairs (B04) (2nd)",The Big - P.01 - UP-24-MAY-26.CON.P01.B04.SUP.2ndF,05-Aug-26,07-Aug-26,08-Dec-26,11-Dec-26,,,3,-125,1,Yes,No,CON-B04-2ND-1060,CON-B04-3RD-1000,0.0,0,0.0
The Big -P.01-UP-20-April-26,CON-B04-2ND-1080,Dismantling Formwork (B04) (2nd),The Big - P.01 - UP-24-MAY-26.CON.P01.B04.SUP.2ndF,17-Aug-26,17-Aug-26,20-Dec-26,21-Dec-26,,,1,-118,8,Yes,No,CON-B04-2ND-1060,CON-B04-3RD-1040,0.0,0,0.0
The Big -P.01-UP-20-April-26,CON-B04-3RD-1000,"Scaffolding works for Walls, Col. & Cores (B04) (3rd)",The Big - P.01 - UP-24-MAY-26.CON.P01.B04.SUP.3rdF,08-Aug-26,12-Aug-26,12-Dec-26,16-Dec-26,,,5,-106,0,Yes,No,CON-B04-2ND-1070,"CON-B04-3RD-1010, CON-B04-3RD-1010",0.0,0,0.0
The Big -P.01-UP-20-April-26,CON-B04-3RD-1010,"RFT for Walls, Col. & Cores (B04) (3rd)",The Big - P.01 - UP-24-MAY-26.CON.P01.B04.SUP.3rdF,11-Aug-26,19-Aug-26,15-Dec-26,23-Dec-26,,,8,-106,0,Yes,No,"CON-B04-3RD-1000, CON-B04-3RD-1000, E-APP-B04-2RD-1000, P-MDEL-1100","CON-B04-3RD-1020, CON-B04-3RD-1020",1.0,1,0.0
The Big -P.01-UP-20-April-26,CON-B04-3RD-1020,"Shuttering for Walls, Col. & Cores (B04) (3rd)",The Big - P.01 - UP-24-MAY-26.CON.P01.B04.SUP.3rdF,15-Aug-26,23-Aug-26,19-Dec-26,27-Dec-26,,,8,-106,0,Yes,No,"CON-B04-3RD-1010, CON-B04-3RD-1010, E-APP-B04-2RD-1000",CON-B04-3RD-1030,0.0,0,0.0
The Big -P.01-UP-20-April-26,CON-B04-3RD-1030,"Pouring for Walls, Col. & Cores (B04) (3rd)",The Big - P.01 - UP-24-MAY-26.CON.P01.B04.SUP.3rdF,24-Aug-26,24-Aug-26,28-Dec-26,28-Dec-26,,,1,-106,0,Yes,No,"CON-B04-3RD-1020, P-MDEL-1030","CON-B04-3RD-1040, AB-SUB-B04-3RD-1000",0.0,0,0.0
The Big -P.01-UP-20-April-26,CON-B04-3RD-1040,"Shuttering for Slabs, Beams & Stairs (B04) (3rd)",The Big - P.01 - UP-24-MAY-26.CON.P01.B04.SUP.3rdF,25-Aug-26,06-Sep-26,29-Dec-26,10-Jan-27,,,10,-106,0,Yes,No,"E-APP-B04-2RD-1030, E-APP-B04-2RD-1020, E-APP-B04-2RD-1010, CON-B04-3RD-1030, CON-B04-2ND-1080","CON-B04-3RD-1050, CON-B04-3RD-1050",0.0,0,0.0
The Big -P.01-UP-20-April-26,CON-B04-3RD-1050,"RFT for Slabs, Beams & Stairs (B04) (3rd)",The Big - P.01 - UP-24-MAY-26.CON.P01.B04.SUP.3rdF,31-Aug-26,10-Sep-26,03-Jan-27,14-Jan-27,,,10,-106,0,Yes,No,"CON-B04-3RD-1040, CON-B04-3RD-1040, E-APP-B04-2RD-1010, E-APP-B04-2RD-1020, E-APP-B04-2RD-1030, P-MDEL-1100",CON-B04-3RD-1060,0.0,0,0.0
The Big -P.01-UP-20-April-26,CON-B04-3RD-1060,"Pouring for Slabs, Beams & Stairs (B04) (3rd)",The Big - P.01 - UP-24-MAY-26.CON.P01.B04.SUP.3rdF,12-Sep-26,14-Sep-26,16-Jan-27,18-Jan-27,,,3,-106,0,Yes,No,"CON-B04-3RD-1050, P-MDEL-1030","CON-B04-3RD-1070, CON-B04-3RD-1080, AB-SUB-B04-3RD-1010, AB-SUB-B04-3RD-1020, AB-SUB-B04-3RD-1030, CON-B04-4TH-1000",0.0,0,0.0
The Big -P.01-UP-20-April-26,CON-B04-3RD-1070,"Curing for Slabs, Beams & Stairs (B04) (3rd)",The Big - P.01 - UP-24-MAY-26.CON.P01.B04.SUP.3rdF,15-Sep-26,17-Sep-26,19-Jan-27,21-Jan-27,,,3,-112,10,Yes,No,CON-B04-3RD-1060,CON-B04-3RD-1080,0.0,0,0.0
The Big -P.01-UP-20-April-26,CON-B04-3RD-1080,Dismantling Formwork (B04) (3rd),The Big - P.01 - UP-24-MAY-26.CON.P01.B04.SUP.3rdF,27-Sep-26,27-Sep-26,01-Feb-27,01-Feb-27,,,1,-122,5,Yes,No,"CON-B04-3RD-1060, CON-B04-3RD-1070",CON-B04-4TH-1040,0.0,0,0.0
The Big -P.01-UP-20-April-26,CON-B04-4TH-1000,"Scaffolding works for Walls, Col. & Cores (B04) (4th)",The Big - P.01 - UP-24-MAY-26.CON.P01.B04.SUP.4thF,15-Sep-26,20-Sep-26,19-Jan-27,24-Jan-27,,,5,-106,0,Yes,No,CON-B04-3RD-1060,"CON-B04-4TH-1010, CON-B04-4TH-1010",0.0,0,0.0
The Big -P.01-UP-20-April-26,CON-B04-4TH-1010,"RFT for Walls, Col. & Cores (B04) (4th)",The Big - P.01 - UP-24-MAY-26.CON.P01.B04.SUP.4thF,19-Sep-26,27-Sep-26,23-Jan-27,01-Feb-27,,,8,-106,0,Yes,No,"CON-B04-4TH-1000, CON-B04-4TH-1000, E-APP-B04-4TH-1000, P-MDEL-1090","CON-B04-4TH-1020, CON-B04-4TH-1020",1.0,1,0.0
The Big -P.01-UP-20-April-26,CON-B04-4TH-1020,"Shuttering for Walls, Col. & Cores (B04) (4th)",The Big - P.01 - UP-24-MAY-26.CON.P01.B04.SUP.4thF,22-Sep-26,30-Sep-26,27-Jan-27,04-Feb-27,,,8,-106,0,Yes,No,"CON-B04-4TH-1010, CON-B04-4TH-1010, E-APP-B04-4TH-1000",CON-B04-4TH-1030,0.0,0,0.0
The Big -P.01-UP-20-April-26,CON-B04-4TH-1030,"Pouring for Walls, Col. & Cores (B04) (4th)",The Big - P.01 - UP-24-MAY-26.CON.P01.B04.SUP.4thF,01-Oct-26,01-Oct-26,06-Feb-27,06-Feb-27,,,1,-106,0,Yes,No,"CON-B04-4TH-1020, P-MDEL-1030","CON-B04-4TH-1040, AB-SUB-B04-4TH-1000",0.0,0,0.0
The Big -P.01-UP-20-April-26,CON-B04-4TH-1040,"Shuttering for Slabs, Beams & Stairs (B04) (4th)",The Big - P.01 - UP-24-MAY-26.CON.P01.B04.SUP.4thF,03-Oct-26,14-Oct-26,07-Feb-27,17-Feb-27,,,10,-106,0,Yes,No,"E-APP-B04-4TH-1030, E-APP-B04-4TH-1020, E-APP-B04-4TH-1010, CON-B04-4TH-1030, CON-B04-3RD-1080","CON-B04-4TH-1050, CON-B04-4TH-1050",0.0,0,0.0
The Big -P.01-UP-20-April-26,CON-B04-4TH-1050,"RFT for Slabs, Beams & Stairs (B04) (4th)",The Big - P.01 - UP-24-MAY-26.CON.P01.B04.SUP.4thF,08-Oct-26,19-Oct-26,11-Feb-27,22-Feb-27,,,10,-106,0,Yes,No,"CON-B04-4TH-1040, CON-B04-4TH-1040, E-APP-B04-4TH-1010, E-APP-B04-4TH-1020, E-APP-B04-4TH-1030, P-MDEL-1090",CON-B04-4TH-1060,0.0,0,0.0
The Big -P.01-UP-20-April-26,CON-B04-4TH-1060,"Pouring for Slabs, Beams & Stairs (B04) (4th)",The Big - P.01 - UP-24-MAY-26.CON.P01.B04.SUP.4thF,20-Oct-26,21-Oct-26,23-Feb-27,24-Feb-27,,,2,-106,0,Yes,No,"CON-B04-4TH-1050, P-MDEL-1030","CON-B04-4TH-1070, CON-B04-4TH-1080, AB-SUB-B04-4TH-1010, AB-SUB-B04-4TH-1020, AB-SUB-B04-4TH-1030",0.0,0,0.0
The Big -P.01-UP-20-April-26,CON-B04-4TH-1070,"Curing for Slabs, Beams & Stairs (B04) (4th)",The Big - P.01 - UP-24-MAY-26.CON.P01.B04.SUP.4thF,22-Oct-26,24-Oct-26,25-Feb-27,27-Feb-27,,,3,-126,0,Yes,No,CON-B04-4TH-1060,CON-B04-5TH-1000,3.0,3,0.0
The Big -P.01-UP-20-April-26,CON-B04-4TH-1080,Dismantling Formwork (B04) (4th),The Big - P.01 - UP-24-MAY-26.CON.P01.B04.SUP.4thF,03-Nov-26,03-Nov-26,09-Mar-27,09-Mar-27,,,1,-120,10,Yes,No,CON-B04-4TH-1060,CON-B04-5TH-1040,0.0,0,0.0
The Big -P.01-UP-20-April-26,CON-B04-5TH-1000,"Scaffolding works for Walls, Col. & Cores (B04) (5th)",The Big - P.01 - UP-24-MAY-26.CON.P01.B04.SUP.5thF,25-Oct-26,29-Oct-26,28-Feb-27,04-Mar-27,,,5,-106,0,Yes,No,CON-B04-4TH-1070,"CON-B04-5TH-1010, CON-B04-5TH-1010",0.0,0,0.0
The Big -P.01-UP-20-April-26,CON-B04-5TH-1010,"RFT for Walls, Col. & Cores (B04) (5th)",The Big - P.01 - UP-24-MAY-26.CON.P01.B04.SUP.5thF,28-Oct-26,05-Nov-26,03-Mar-27,15-Mar-27,,,8,-106,0,Yes,No,"CON-B04-5TH-1000, CON-B04-5TH-1000, E-APP-B04-5TH-1000, P-MDEL-1080","CON-B04-5TH-1020, CON-B04-5TH-1020",1.0,1,0.0
The Big -P.01-UP-20-April-26,CON-B04-5TH-1020,"Shuttering for Walls, Col. & Cores (B04) (5th)",The Big - P.01 - UP-24-MAY-26.CON.P01.B04.SUP.5thF,31-Oct-26,08-Nov-26,06-Mar-27,17-Mar-27,,,8,-106,0,Yes,No,"CON-B04-5TH-1010, CON-B04-5TH-1010, E-APP-B04-5TH-1000",CON-B04-5TH-1030,0.0,0,0.0
The Big -P.01-UP-20-April-26,CON-B04-5TH-1030,"Pouring for Walls, Col. & Cores (B04) (5th)",The Big - P.01 - UP-24-MAY-26.CON.P01.B04.SUP.5thF,09-Nov-26,09-Nov-26,18-Mar-27,18-Mar-27,,,1,-106,0,Yes,No,"CON-B04-5TH-1020, P-MDEL-1030","CON-B04-5TH-1040, AB-SUB-B04-5TH-1000",0.0,0,0.0
The Big -P.01-UP-20-April-26,CON-B04-5TH-1040,"Shuttering for Slabs, Beams & Stairs (B04) (5th)",The Big - P.01 - UP-24-MAY-26.CON.P01.B04.SUP.5thF,10-Nov-26,21-Nov-26,20-Mar-27,30-Mar-27,,,10,-106,0,Yes,No,"E-APP-B04-5TH-1030, E-APP-B04-5TH-1020, E-APP-B04-5TH-1010, CON-B04-5TH-1030, CON-B04-4TH-1080","CON-B04-5TH-1050, CON-B04-5TH-1050",0.0,0,0.0
The Big -P.01-UP-20-April-26,CON-B04-5TH-1050,"RFT for Slabs, Beams & Stairs (B04) (5th)",The Big - P.01 - UP-24-MAY-26.CON.P01.B04.SUP.5thF,14-Nov-26,24-Nov-26,23-Mar-27,03-Apr-27,,,10,-106,0,Yes,No,"CON-B04-5TH-1040, CON-B04-5TH-1040, E-APP-B04-5TH-1010, E-APP-B04-5TH-1020, E-APP-B04-5TH-1030, P-MDEL-1080",CON-B04-5TH-1060,0.0,0,0.0
The Big -P.01-UP-20-April-26,CON-B04-5TH-1060,"Pouring for Slabs, Beams & Stairs (B04) (5th)",The Big - P.01 - UP-24-MAY-26.CON.P01.B04.SUP.5thF,25-Nov-26,25-Nov-26,04-Apr-27,04-Apr-27,,,1,-106,0,Yes,No,"CON-B04-5TH-1050, P-MDEL-1030","CON-B04-5TH-1070, CON-B04-5TH-1080, AB-SUB-B04-5TH-1010, AB-SUB-B04-5TH-1020, AB-SUB-B04-5TH-1030",0.0,0,0.0
The Big -P.01-UP-20-April-26,CON-B04-5TH-1070,"Curing for Slabs, Beams & Stairs (B04) (5th)",The Big - P.01 - UP-24-MAY-26.CON.P01.B04.SUP.5thF,26-Nov-26,28-Nov-26,05-Apr-27,07-Apr-27,,,3,-130,0,Yes,No,CON-B04-5TH-1060,CON-B04-6TH-1000,0.0,0,0.0
The Big -P.01-UP-20-April-26,CON-B04-5TH-1080,Dismantling Formwork (B04) (5th),The Big - P.01 - UP-24-MAY-26.CON.P01.B04.SUP.5thF,08-Dec-26,08-Dec-26,16-Apr-27,16-Apr-27,,,1,-126,4,Yes,No,CON-B04-5TH-1060,CON-B04-6TH-1040,0.0,0,0.0
The Big -P.01-UP-20-April-26,CON-B04-6TH-1000,"Scaffolding works for Walls, Col. & Cores (B04) (6th)",The Big - P.01 - UP-24-MAY-26.CON.P01.B04.SUP.6thF,29-Nov-26,01-Dec-26,08-Apr-27,11-Apr-27,,,3,-107,0,Yes,No,CON-B04-5TH-1070,"CON-B04-6TH-1010, CON-B04-6TH-1010",0.0,0,0.0
The Big -P.01-UP-20-April-26,CON-B04-6TH-1010,"RFT for Walls, Col. & Cores (B04) (6th)",The Big - P.01 - UP-24-MAY-26.CON.P01.B04.SUP.6thF,02-Dec-26,07-Dec-26,12-Apr-27,17-Apr-27,,,5,-107,0,Yes,No,"CON-B04-6TH-1000, CON-B04-6TH-1000, E-APP-B04-6TH-1000, P-MDEL-1070","CON-B04-6TH-1020, CON-B04-6TH-1020",1.0,1,0.0
The Big -P.01-UP-20-April-26,CON-B04-6TH-1020,"Shuttering for Walls, Col. & Cores (B04) (6th)",The Big - P.01 - UP-24-MAY-26.CON.P01.B04.SUP.6thF,05-Dec-26,09-Dec-26,14-Apr-27,19-Apr-27,,,5,-107,0,Yes,No,"CON-B04-6TH-1010, CON-B04-6TH-1010, E-APP-B04-6TH-1000",CON-B04-6TH-1030,0.0,0,0.0
The Big -P.01-UP-20-April-26,CON-B04-6TH-1030,"Pouring for Walls, Col. & Cores (B04) (6th)",The Big - P.01 - UP-24-MAY-26.CON.P01.B04.SUP.6thF,10-Dec-26,10-Dec-26,20-Apr-27,20-Apr-27,,,1,-107,0,Yes,No,"CON-B04-6TH-1020, P-MDEL-1030","CON-B04-6TH-1040, AB-SUB-B04-6TH-1000",0.0,0,0.0
The Big -P.01-UP-20-April-26,CON-B04-6TH-1040,"Shuttering for Slabs, Beams & Stairs (B04) (6th)",The Big - P.01 - UP-24-MAY-26.CON.P01.B04.SUP.6thF,12-Dec-26,20-Dec-26,21-Apr-27,29-Apr-27,,,8,-107,0,Yes,No,"E-APP-B04-6TH-1030, E-APP-B04-6TH-1020, E-APP-B04-6TH-1010, CON-B04-6TH-1030, CON-B04-5TH-1080","CON-B04-6TH-1050, CON-B04-6TH-1050",0.0,0,0.0
The Big -P.01-UP-20-April-26,CON-B04-6TH-1050,"RFT for Slabs, Beams & Stairs (B04) (6th)",The Big - P.01 - UP-24-MAY-26.CON.P01.B04.SUP.6thF,15-Dec-26,23-Dec-26,25-Apr-27,03-May-27,,,8,-107,0,Yes,No,"CON-B04-6TH-1040, CON-B04-6TH-1040, E-APP-B04-6TH-1010, E-APP-B04-6TH-1020, E-APP-B04-6TH-1030, P-MDEL-1070",CON-B04-6TH-1060,0.0,0,0.0
The Big -P.01-UP-20-April-26,CON-B04-6TH-1060,"Pouring for Slabs, Beams & Stairs (B04) (6th)",The Big - P.01 - UP-24-MAY-26.CON.P01.B04.SUP.6thF,24-Dec-26,24-Dec-26,04-May-27,04-May-27,,,1,-107,0,Yes,No,"CON-B04-6TH-1050, P-MDEL-1030","CON-B04-6TH-1070, CON-B04-6TH-1080, AB-SUB-B04-6TH-1010, AB-SUB-B04-6TH-1020, AB-SUB-B04-6TH-1030",0.0,0,0.0
The Big -P.01-UP-20-April-26,CON-B04-6TH-1070,"Curing for Slabs, Beams & Stairs (B04) (6th)",The Big - P.01 - UP-24-MAY-26.CON.P01.B04.SUP.6thF,25-Dec-26,27-Dec-26,05-May-27,07-May-27,,,3,-131,0,Yes,No,CON-B04-6TH-1060,CON-B04-7TH-1000,0.0,0,0.0
The Big -P.01-UP-20-April-26,CON-B04-6TH-1080,Dismantling Formwork (B04) (6th),The Big - P.01 - UP-24-MAY-26.CON.P01.B04.SUP.6thF,06-Jan-27,06-Jan-27,17-May-27,17-May-27,,,1,-127,2,Yes,No,CON-B04-6TH-1060,CON-B04-7TH-1040,0.0,0,0.0
The Big -P.01-UP-20-April-26,CON-B04-7TH-1000,"Scaffolding works for Walls, Col. & Cores (B04) (7th)",The Big - P.01 - UP-24-MAY-26.CON.P01.B04.SUP.7thF,28-Dec-26,31-Dec-26,08-May-27,11-May-27,,,4,-107,0,Yes,No,CON-B04-6TH-1070,"CON-B04-7TH-1010, CON-B04-7TH-1010",0.0,0,0.0
The Big -P.01-UP-20-April-26,CON-B04-7TH-1010,"RFT for Walls, Col. & Cores (B04) (7th)",The Big - P.01 - UP-24-MAY-26.CON.P01.B04.SUP.7thF,31-Dec-26,05-Jan-27,11-May-27,16-May-27,,,5,-107,0,Yes,No,"CON-B04-7TH-1000, CON-B04-7TH-1000, E-APP-B04-7TH-1000, P-MDEL-1190","CON-B04-7TH-1020, CON-B04-7TH-1020",1.0,1,0.0
The Big -P.01-UP-20-April-26,CON-B04-7TH-1020,"Shuttering for Walls, Col. & Cores (B04) (7th)",The Big - P.01 - UP-24-MAY-26.CON.P01.B04.SUP.7thF,03-Jan-27,09-Jan-27,13-May-27,18-May-27,,,5,-107,0,Yes,No,"CON-B04-7TH-1010, CON-B04-7TH-1010, E-APP-B04-7TH-1000",CON-B04-7TH-1030,0.0,0,0.0
The Big -P.01-UP-20-April-26,CON-B04-7TH-1030,"Pouring for Walls, Col. & Cores (B04) (7th)",The Big - P.01 - UP-24-MAY-26.CON.P01.B04.SUP.7thF,10-Jan-27,10-Jan-27,19-May-27,19-May-27,,,1,-107,0,Yes,No,"CON-B04-7TH-1020, P-MDEL-1030","CON-B04-7TH-1040, AB-SUB-B04-7TH-1000",0.0,0,0.0
The Big -P.01-UP-20-April-26,CON-B04-7TH-1040,"Shuttering for Slabs, Beams & Stairs (B04) (7th)",The Big - P.01 - UP-24-MAY-26.CON.P01.B04.SUP.7thF,11-Jan-27,19-Jan-27,20-May-27,29-May-27,,,8,-107,0,Yes,No,"E-APP-B04-7TH-1030, E-APP-B04-7TH-1020, E-APP-B04-7TH-1010, CON-B04-7TH-1030, CON-B04-6TH-1080","CON-B04-7TH-1050, CON-B04-7TH-1050",0.0,0,0.0
The Big -P.01-UP-20-April-26,CON-B04-7TH-1050,"RFT for Slabs, Beams & Stairs (B04) (7th)",The Big - P.01 - UP-24-MAY-26.CON.P01.B04.SUP.7thF,13-Jan-27,21-Jan-27,23-May-27,31-May-27,,,8,-107,0,Yes,No,"CON-B04-7TH-1040, CON-B04-7TH-1040, E-APP-B04-7TH-1010, E-APP-B04-7TH-1020, E-APP-B04-7TH-1030, P-MDEL-1190",CON-B04-7TH-1060,0.0,0,0.0
The Big -P.01-UP-20-April-26,CON-B04-7TH-1060,"Pouring for Slabs, Beams & Stairs (B04) (7th)",The Big - P.01 - UP-24-MAY-26.CON.P01.B04.SUP.7thF,23-Jan-27,23-Jan-27,01-Jun-27,01-Jun-27,,,1,-107,0,Yes,No,"CON-B04-7TH-1050, P-MDEL-1030","CON-B04-7TH-1070, CON-B04-7TH-1080, AB-SUB-B04-7TH-1010, AB-SUB-B04-7TH-1020, AB-SUB-B04-7TH-1030",0.0,0,0.0
The Big -P.01-UP-20-April-26,CON-B04-7TH-1070,"Curing for Slabs, Beams & Stairs (B04) (7th)",The Big - P.01 - UP-24-MAY-26.CON.P01.B04.SUP.7thF,24-Jan-27,26-Jan-27,02-Jun-27,04-Jun-27,,,3,-129,0,Yes,No,CON-B04-7TH-1060,CON-B04-8TH-1000,0.0,0,0.0
The Big -P.01-UP-20-April-26,CON-B04-7TH-1080,Dismantling Formwork (B04) (7th),The Big - P.01 - UP-24-MAY-26.CON.P01.B04.SUP.7thF,05-Feb-27,05-Feb-27,14-Jun-27,14-Jun-27,,,1,-126,2,Yes,No,CON-B04-7TH-1060,CON-B04-8TH-1040,0.0,0,0.0
The Big -P.01-UP-20-April-26,CON-B04-8TH-1000,"Scaffolding works for Walls, Col. & Cores (B04) (8th)",The Big - P.01 - UP-24-MAY-26.CON.P01.B04.SUP.8thF,27-Jan-27,31-Jan-27,05-Jun-27,08-Jun-27,,,4,-107,0,Yes,No,CON-B04-7TH-1070,"CON-B04-8TH-1010, CON-B04-8TH-1010",0.0,0,0.0
The Big -P.01-UP-20-April-26,CON-B04-8TH-1010,"RFT for Walls, Col. & Cores (B04) (8th)",The Big - P.01 - UP-24-MAY-26.CON.P01.B04.SUP.8thF,30-Jan-27,04-Feb-27,07-Jun-27,13-Jun-27,,,6,-107,0,Yes,No,"CON-B04-8TH-1000, CON-B04-8TH-1000, E-APP-B04-8TH-1000, P-MDEL-1180","CON-B04-8TH-1020, CON-B04-8TH-1020",1.0,1,0.0
The Big -P.01-UP-20-April-26,CON-B04-8TH-1020,"Shuttering for Walls, Col. & Cores (B04) (8th)",The Big - P.01 - UP-24-MAY-26.CON.P01.B04.SUP.8thF,01-Feb-27,07-Feb-27,09-Jun-27,15-Jun-27,,,6,-107,0,Yes,No,"CON-B04-8TH-1010, CON-B04-8TH-1010, E-APP-B04-8TH-1000",CON-B04-8TH-1030,0.0,0,0.0
The Big -P.01-UP-20-April-26,CON-B04-8TH-1030,"Pouring for Walls, Col. & Cores (B04) (8th)",The Big - P.01 - UP-24-MAY-26.CON.P01.B04.SUP.8thF,08-Feb-27,08-Feb-27,16-Jun-27,16-Jun-27,,,1,-107,0,Yes,No,"CON-B04-8TH-1020, P-MDEL-1030","CON-B04-8TH-1040, AB-SUB-B04-8TH-1000",0.0,0,0.0
The Big -P.01-UP-20-April-26,CON-B04-8TH-1040,"Shuttering for Slabs, Beams & Stairs (B04) (8th)",The Big - P.01 - UP-24-MAY-26.CON.P01.B04.SUP.8thF,09-Feb-27,13-Feb-27,17-Jun-27,21-Jun-27,,,4,-107,0,Yes,No,"E-APP-B04-8TH-1030, E-APP-B04-8TH-1020, E-APP-B04-8TH-1010, CON-B04-8TH-1030, CON-B04-7TH-1080","CON-B04-8TH-1050, CON-B04-8TH-1050",0.0,0,0.0
The Big -P.01-UP-20-April-26,CON-B04-8TH-1050,"RFT for Slabs, Beams & Stairs (B04) (8th)",The Big - P.01 - UP-24-MAY-26.CON.P01.B04.SUP.8thF,11-Feb-27,17-Feb-27,20-Jun-27,26-Jun-27,,,6,-107,0,Yes,No,"CON-B04-8TH-1040, CON-B04-8TH-1040, E-APP-B04-8TH-1010, E-APP-B04-8TH-1020, E-APP-B04-8TH-1030, P-MDEL-1180",CON-B04-8TH-1060,0.0,0,0.0
The Big -P.01-UP-20-April-26,CON-B04-8TH-1060,"Pouring for Slabs, Beams & Stairs (B04) (8th)",The Big - P.01 - UP-24-MAY-26.CON.P01.B04.SUP.8thF,18-Feb-27,18-Feb-27,27-Jun-27,27-Jun-27,,,1,-107,0,Yes,No,"CON-B04-8TH-1050, P-MDEL-1030","CON-B04-8TH-1070, CON-B04-8TH-1080, AB-SUB-B04-8TH-1010, AB-SUB-B04-8TH-1020, AB-SUB-B04-8TH-1030",0.0,0,0.0
The Big -P.01-UP-20-April-26,CON-B04-8TH-1070,"Curing for Slabs, Beams & Stairs (B04) (8th)",The Big - P.01 - UP-24-MAY-26.CON.P01.B04.SUP.8thF,19-Feb-27,21-Feb-27,28-Jun-27,30-Jun-27,,,3,-128,0,Yes,No,CON-B04-8TH-1060,CON-B04-RF-1000,0.0,0,0.0
The Big -P.01-UP-20-April-26,CON-B04-8TH-1080,Dismantling Formwork (B04) (8th),The Big - P.01 - UP-24-MAY-26.CON.P01.B04.SUP.8thF,03-Mar-27,03-Mar-27,09-Jul-27,09-Jul-27,,,1,-128,1,Yes,No,CON-B04-8TH-1060,CON-B04-RF-1060,0.0,0,0.0
The Big -P.01-UP-20-April-26,CON-B04-RF-1000,"Scaffolding works for Walls, Col. & Cores (B04) (RF)",The Big - P.01 - UP-24-MAY-26.CON.P01.B04.SUP.RF,22-Feb-27,22-Feb-27,01-Jul-27,01-Jul-27,,,1,-107,0,Yes,No,CON-B04-8TH-1070,CON-B04-RF-1010,0.0,0,0.0
The Big -P.01-UP-20-April-26,CON-B04-RF-1010,"RFT for Walls, Col. & Cores (B04) (RF)",The Big - P.01 - UP-24-MAY-26.CON.P01.B04.SUP.RF,23-Feb-27,23-Feb-27,03-Jul-27,03-Jul-27,,,1,-107,0,Yes,No,"CON-B04-RF-1000, E-APP-B04-RF-1000, P-MDEL-1200",CON-B04-RF-1020,1.0,1,0.0
The Big -P.01-UP-20-April-26,CON-B04-RF-1020,"Shuttering for Walls, Col. & Cores (B04) (RF)",The Big - P.01 - UP-24-MAY-26.CON.P01.B04.SUP.RF,24-Feb-27,24-Feb-27,04-Jul-27,04-Jul-27,,,1,-107,0,Yes,No,"CON-B04-RF-1010, E-APP-B04-RF-1000",CON-B04-RF-1030,0.0,0,0.0
The Big -P.01-UP-20-April-26,CON-B04-RF-1030,"Pouring for Walls, Col. & Cores (B04) (RF)",The Big - P.01 - UP-24-MAY-26.CON.P01.B04.SUP.RF,25-Feb-27,25-Feb-27,05-Jul-27,05-Jul-27,,,1,-107,0,Yes,No,"CON-B04-RF-1020, P-MDEL-1030","CON-B04-RF-1040, AB-SUB-B04-RF-1000",0.0,0,0.0
The Big -P.01-UP-20-April-26,CON-B04-RF-1040,"Shuttering for Slabs, Beams (B04) (RF)",The Big - P.01 - UP-24-MAY-26.CON.P01.B04.SUP.RF,27-Feb-27,28-Feb-27,06-Jul-27,07-Jul-27,,,2,-107,0,Yes,No,"E-APP-B04-RF-1020, E-APP-B04-RF-1010, CON-B04-RF-1030",CON-B04-RF-1050,0.0,0,0.0
The Big -P.01-UP-20-April-26,CON-B04-RF-1050,"RFT for Slabs, Beams  (B04) (RF)",The Big - P.01 - UP-24-MAY-26.CON.P01.B04.SUP.RF,01-Mar-27,02-Mar-27,08-Jul-27,10-Jul-27,,,2,-107,0,Yes,No,"CON-B04-RF-1040, E-APP-B04-RF-1010, E-APP-B04-RF-1020, P-MDEL-1200",CON-B04-RF-1060,0.0,0,0.0
The Big -P.01-UP-20-April-26,CON-B04-RF-1060,"Pouring for Slabs, Beams  (B04) (RF)",The Big - P.01 - UP-24-MAY-26.CON.P01.B04.SUP.RF,04-Mar-27,04-Mar-27,11-Jul-27,11-Jul-27,,,1,-107,0,Yes,No,"CON-B04-RF-1050, P-MDEL-1030, CON-B04-8TH-1080","CON-B04-RF-1070, AB-SUB-B04-RF-1010, AB-SUB-B04-RF-1020",0.0,0,0.0
The Big -P.01-UP-20-April-26,CON-B04-RF-1070,"Curing for Slabs, Beams  (B04) (RF)",The Big - P.01 - UP-24-MAY-26.CON.P01.B04.SUP.RF,05-Mar-27,07-Mar-27,12-Jul-27,14-Jul-27,,,3,-129,0,Yes,No,CON-B04-RF-1060,CON-B04-RF-1080,0.0,0,0.0
The Big -P.01-UP-20-April-26,CON-B04-RF-1080,Dismantling Formwork (B04) (RF),The Big - P.01 - UP-24-MAY-26.CON.P01.B04.SUP.RF,13-Mar-27,13-Mar-27,20-Jul-27,20-Jul-27,,,1,-129,0,Yes,No,CON-B04-RF-1070,HO-1040,0.0,0,0.0
The Big -P.01-UP-20-April-26,CON-B03-FOOT-1000,Shuttering for PC Raft (B03) (footing),The Big - P.01 - UP-24-MAY-26.CON.P01.B03.SUB.F,25-Dec-25,25-Dec-25,01-Dec-25,03-Dec-25,01-Dec-25,03-Dec-25,0,0,0,No,No,"E-APP-B03-FOOT-1010, CON-EW-B03-1010, P-MDEL-1020","CON-B03-FOOT-1010, AB-SUB-B03-FOOT-1000",0.0,0,1.0
The Big -P.01-UP-20-April-26,CON-B03-FOOT-1010,Pouring for PC Raft (B03) (footing),The Big - P.01 - UP-24-MAY-26.CON.P01.B03.SUB.F,27-Dec-25,27-Dec-25,22-Dec-25,23-Dec-25,22-Dec-25,23-Dec-25,0,0,0,No,No,"CON-B03-FOOT-1000, P-MDEL-1030","CON-B03-FOOT-1020, AB-SUB-B03-FOOT-1000",0.0,0,1.0
The Big -P.01-UP-20-April-26,CON-B03-FOOT-1020,Curing for PC Raft (B03) (footing),The Big - P.01 - UP-24-MAY-26.CON.P01.B03.SUB.F,28-Dec-25,30-Dec-25,23-Dec-25,23-Dec-25,23-Dec-25,23-Dec-25,0,0,0,No,No,CON-B03-FOOT-1010,CON-B03-FOOT-1030,0.0,0,1.0
The Big -P.01-UP-20-April-26,CON-B03-FOOT-1030,Waterproofing & Ins. Protection works (B03) (footing),The Big - P.01 - UP-24-MAY-26.CON.P01.B03.SUB.F,31-Dec-25,01-Jan-26,24-Dec-25,24-Dec-25,24-Dec-25,24-Dec-25,0,0,0,No,No,"P-MDEL-1040, E-APP-B03-FOOT-1000, CON-B03-FOOT-1020","CON-B03-FOOT-1040, CON-B03-FOOT-1040",0.0,0,1.0
The Big -P.01-UP-20-April-26,CON-B03-FOOT-1040,Shuttering for RC Raft & Footings (B03) (footing),The Big - P.01 - UP-24-MAY-26.CON.P01.B03.SUB.F,04-Jan-26,15-Jan-26,08-Jan-26,20-Jan-26,08-Jan-26,20-Jan-26,0,0,0,No,No,"CON-B03-FOOT-1030, E-APP-B03-FOOT-1020, CON-B03-FOOT-1030","CON-B03-FOOT-1050, AB-SUB-B03-FOOT-1010, CON-B03-FOOT-1050, CON-B03-FOOT-1060",0.0,0,1.0
The Big -P.01-UP-20-April-26,CON-B03-FOOT-1050,RFT for RC Raft & Footings (B03) (footing),The Big - P.01 - UP-24-MAY-26.CON.P01.B03.SUB.F,05-Jan-26,17-Jan-26,10-Jan-26,21-Jan-26,10-Jan-26,21-Jan-26,0,0,0,No,No,"CON-B03-FOOT-1040, E-APP-B03-FOOT-1030, CON-B03-FOOT-1040, P-MDEL-1000","CON-B03-FOOT-1080, AB-SUB-B03-FOOT-1020",0.0,1,1.0
The Big -P.01-UP-20-April-26,CON-B03-FOOT-1080,Pouring for RC Raft & Footings (B03) (footing),The Big - P.01 - UP-24-MAY-26.CON.P01.B03.SUB.F,18-Jan-26,18-Jan-26,21-Jan-26,21-Jan-26,21-Jan-26,21-Jan-26,0,0,0,No,No,"CON-B03-FOOT-1050, P-MDEL-1030","CON-B03-FOOT-1100, AB-SUB-B03-FOOT-1020",0.0,0,1.0
The Big -P.01-UP-20-April-26,CON-B03-FOOT-1100,Curing & Deshuttering for RC Raft & Footings (B03) (footing),The Big - P.01 - UP-24-MAY-26.CON.P01.B03.SUB.F,19-Jan-26,21-Jan-26,04-Mar-26,07-Mar-26,04-Mar-26,07-Mar-26,0,0,0,No,No,"CON-B03-FOOT-1080, CON-B03-FOOT-1090","CON-B03-FOOT-1110, CON-B03-BAS02-1000",0.0,0,1.0
The Big -P.01-UP-20-April-26,CON-B03-FOOT-1110,Bitumen Ins. for RC Raft & Footings (B03) (footing),The Big - P.01 - UP-24-MAY-26.CON.P01.B03.SUB.F,22-Jan-26,26-Jan-26,05-Jul-26,07-Jul-26,,,3,153,0,No,No,"CON-B03-FOOT-1100, P-MDEL-1050, E-APP-B03-FOOT-1000","CON-B03-FOOT-1120, AB-SUB-B03-FOOT-1030",0.0,0,0.0
The Big -P.01-UP-20-April-26,CON-B03-FOOT-1120,Soil Backfilling (B03) (footing),The Big - P.01 - UP-24-MAY-26.CON.P01.B03.SUB.F,27-Jan-26,31-Jan-26,08-Jul-26,12-Jul-26,,,4,153,0,No,No,CON-B03-FOOT-1110,CON-B03-SOG-1000,22.0,22,0.0
The Big -P.01-UP-20-April-26,CON-B03-FOOT-1060,Shuttering for Columns & Walls Below SOG (B01) (footing),The Big - P.01 - UP-24-MAY-26.CON.P01.B03.SUB.F,10-Jan-26,14-Jan-26,26-Jan-26,02-Mar-26,26-Jan-26,02-Mar-26,0,0,0,No,No,"CON-B03-FOOT-1040, E-APP-B03-FOOT-1020","CON-B03-FOOT-1070, CON-B03-FOOT-1070",0.0,0,1.0
The Big -P.01-UP-20-April-26,CON-B03-FOOT-1070,RFT for Columns & Walls Below SOG (B03) (footing),The Big - P.01 - UP-24-MAY-26.CON.P01.B03.SUB.F,12-Jan-26,17-Jan-26,26-Jan-26,02-Mar-26,26-Jan-26,02-Mar-26,0,0,0,No,No,"CON-B03-FOOT-1060, CON-B03-FOOT-1060, E-APP-B03-FOOT-1030, P-MDEL-1000",CON-B03-FOOT-1090,0.0,0,1.0
The Big -P.01-UP-20-April-26,CON-B03-FOOT-1090,Pouring Columns & Walls Below SOG (B01) (footing),The Big - P.01 - UP-24-MAY-26.CON.P01.B03.SUB.F,18-Jan-26,18-Jan-26,02-Mar-26,03-Mar-26,02-Mar-26,03-Mar-26,0,0,0,No,No,CON-B03-FOOT-1070,CON-B03-FOOT-1100,0.0,0,1.0
The Big -P.01-UP-20-April-26,CON-B03-BAS02-1000,"Scaffolding works for Walls, Col. & Cores (B03) (Bas 02)",The Big - P.01 - UP-24-MAY-26.CON.P01.B03.SUB.2ndB,22-Jan-26,29-Jan-26,15-Feb-26,21-Feb-26,15-Feb-26,21-Feb-26,0,0,0,No,No,"CON-B02-BAS02-1000, CON-B03-FOOT-1100","CON-B03-BAS02-1010, CON-B03-BAS02-1010",0.0,0,1.0
The Big -P.01-UP-20-April-26,CON-B03-BAS02-1010,"RFT for Walls, Col. & Cores (B03) (Bas 02)",The Big - P.01 - UP-24-MAY-26.CON.P01.B03.SUB.2ndB,22-Jan-26,05-Feb-26,05-Mar-26,11-Mar-26,05-Mar-26,11-Mar-26,0,0,0,No,No,"CON-B03-BAS02-1000, CON-B03-BAS02-1000, CON-B02-BAS02-1010, E-APP-B03-BAS02-1000, P-MDEL-1170","CON-B03-BAS02-1020, CON-B03-BAS02-1020",0.0,1,1.0
The Big -P.01-UP-20-April-26,CON-B03-BAS02-1020,"Shuttering for Walls, Col. & Cores (B03) (Bas 02)",The Big - P.01 - UP-24-MAY-26.CON.P01.B03.SUB.2ndB,27-Jan-26,09-Feb-26,07-Mar-26,11-Mar-26,07-Mar-26,11-Mar-26,0,0,0,No,No,"CON-B03-BAS02-1010, CON-B02-BAS02-1020, CON-B03-BAS02-1010, E-APP-B03-BAS02-1000",CON-B03-BAS02-1030,0.0,0,1.0
The Big -P.01-UP-20-April-26,CON-B03-BAS02-1030,"Pouring for Walls, Col. & Cores (B03) (Bas 02)",The Big - P.01 - UP-24-MAY-26.CON.P01.B03.SUB.2ndB,10-Feb-26,11-Feb-26,17-Mar-26,17-Mar-26,17-Mar-26,17-Mar-26,0,0,0,No,No,"CON-B02-BAS02-1030, CON-B03-BAS02-1020, P-MDEL-1030","CON-B03-BAS02-1040, AB-SUB-B03-BAS2-1000",0.0,0,1.0
The Big -P.01-UP-20-April-26,CON-B03-BAS02-1040,Shuttering for Slabs & Beams (B03) (Bas 02),The Big - P.01 - UP-24-MAY-26.CON.P01.B03.SUB.2ndB,12-Feb-26,21-Feb-26,24-May-26,07-Jun-26,,,8,-81,0,Yes,No,"CON-B02-BAS02-1040, E-APP-B03-BAS02-1030, E-APP-B03-BAS02-1020, CON-B03-BAS02-1030","CON-B03-BAS02-1050, CON-B03-BAS02-1060, CON-B03-BAS02-1060",0.0,0,0.0
The Big -P.01-UP-20-April-26,CON-B03-BAS02-1050,Shuttering for Stairs (B03) (Bas 02),The Big - P.01 - UP-24-MAY-26.CON.P01.B03.SUB.2ndB,15-Feb-26,21-Feb-26,26-May-26,07-Jun-26,,,6,-73,0,Yes,No,"CON-B03-BAS02-1040, CON-B02-BAS02-1050, E-APP-B03-BAS02-1010","CON-B03-BAS02-1070, CON-B03-BAS02-1070",0.0,0,0.0
The Big -P.01-UP-20-April-26,CON-B03-BAS02-1060,RFT for Slabs & Beams (B03) (Bas 02),The Big - P.01 - UP-24-MAY-26.CON.P01.B03.SUB.2ndB,15-Feb-26,25-Feb-26,02-Jun-26,13-Jun-26,,,10,-83,0,Yes,No,"CON-B03-BAS02-1040, CON-B02-BAS02-1060, CON-B03-BAS02-1040, E-APP-B03-BAS02-1020, E-APP-B03-BAS02-1030, P-MDEL-1170",CON-B03-BAS02-1100,0.0,0,0.0
The Big -P.01-UP-20-April-26,CON-B03-BAS02-1070,RFT for Stairs  (B03) (Bas 02),The Big - P.01 - UP-24-MAY-26.CON.P01.B03.SUB.2ndB,17-Feb-26,23-Feb-26,02-Jun-26,09-Jun-26,,,6,-73,0,Yes,No,"CON-B03-BAS02-1050, CON-B02-BAS02-1070, CON-B03-BAS02-1050, E-APP-B03-BAS02-1010, P-MDEL-1170",CON-B03-BAS02-1080,0.0,0,0.0
The Big -P.01-UP-20-April-26,CON-B03-BAS02-1100,Pouring for Slabs & Beams B03) (Bas 02),The Big - P.01 - UP-24-MAY-26.CON.P01.B03.SUB.2ndB,26-Feb-26,28-Feb-26,14-Jun-26,15-Jun-26,,,2,-83,0,Yes,No,"CON-B02-BAS02-1100, CON-B03-BAS02-1060, P-MDEL-1030","CON-B03-BAS01-1000, AB-SUB-B03-BAS2-1020, AB-SUB-B03-BAS2-1030",0.0,0,0.0
The Big -P.01-UP-20-April-26,CON-B03-BAS02-1080,Pouring for Stairs  (B03) (Bas 02),The Big - P.01 - UP-24-MAY-26.CON.P01.B03.SUB.2ndB,24-Feb-26,25-Feb-26,09-Jun-26,11-Jun-26,,,2,-73,0,Yes,No,"CON-B02-BAS02-1080, CON-B03-BAS02-1070, P-MDEL-1030","CON-B03-BAS02-1090, CON-B03-BAS02-1110, AB-SUB-B03-BAS2-1010",0.0,0,0.0
The Big -P.01-UP-20-April-26,CON-B03-BAS02-1090,"Curing for Slabs, Beams & Stairs (B03) (Bas 02)",The Big - P.01 - UP-24-MAY-26.CON.P01.B03.SUB.2ndB,26-Feb-26,02-Mar-26,11-Jun-26,16-Jun-26,,,5,-84,7,Yes,No,"CON-B03-BAS02-1080, CON-B02-BAS02-1090",CON-B03-BAS02-1110,0.0,0,0.0
The Big -P.01-UP-20-April-26,CON-B03-BAS02-1110,Dismantling Formwork (B03) (Bas 02),The Big - P.01 - UP-24-MAY-26.CON.P01.B03.SUB.2ndB,10-Mar-26,10-Mar-26,23-Jun-26,24-Jun-26,,,1,-91,18,Yes,No,"CON-B02-BAS02-1110, CON-B03-BAS02-1080, CON-B03-BAS02-1090","CON-B03-SOG-1000, CON-B03-BAS01-1040",0.0,0,0.0
The Big -P.01-UP-20-April-26,CON-B03-SOG-1000,Soil Backfilling & Compaction (B03) (sog),The Big - P.01 - UP-24-MAY-26.CON.P01.B03.SUB.2ndB.SOG,11-Mar-26,23-Mar-26,13-Jul-26,20-Jul-26,,,7,153,0,No,No,"CON-B03-BAS02-1110, CON-B03-FOOT-1120","CON-B03-SOG-1010, CON-B04-SOG-1000",37.0,37,0.0
The Big -P.01-UP-20-April-26,CON-B03-SOG-1010,Soil Compaction Test (B03) (sog),The Big - P.01 - UP-24-MAY-26.CON.P01.B03.SUB.2ndB.SOG,24-Mar-26,25-Mar-26,21-Jul-26,22-Jul-26,,,2,161,0,No,No,CON-B03-SOG-1000,"CON-B03-SOG-1020, CON-B04-SOG-1010",2.0,2,0.0
The Big -P.01-UP-20-April-26,CON-B03-SOG-1020,DPM Layer works (B03) (sog),The Big - P.01 - UP-24-MAY-26.CON.P01.B03.SUB.2ndB.SOG,26-Mar-26,06-Apr-26,25-Jul-26,04-Aug-26,,,10,161,0,No,No,"CON-B03-SOG-1010, P-MDEL-1040, E-APP-B03-FOOT-1000","CON-B03-SOG-1030, CON-B03-SOG-1030",0.0,0,0.0
The Big -P.01-UP-20-April-26,CON-B03-SOG-1030,Blinding Concrete works (B03) (sog),The Big - P.01 - UP-24-MAY-26.CON.P01.B03.SUB.2ndB.SOG,01-Apr-26,15-Apr-26,30-Jul-26,12-Aug-26,,,12,161,0,No,No,"CON-B03-SOG-1020, CON-B03-SOG-1020","CON-B03-SOG-1040, CON-B03-SOG-1040, CON-B04-SOG-1030",0.0,0,0.0
The Big -P.01-UP-20-April-26,CON-B03-SOG-1040,Shuttering & RFT for S.O.G (B03) (sog),The Big - P.01 - UP-24-MAY-26.CON.P01.B03.SUB.2ndB.SOG,07-Apr-26,19-Apr-26,05-Aug-26,16-Aug-26,,,10,161,0,No,No,"CON-B03-SOG-1030, CON-B03-SOG-1030, E-APP-B03-SOG-1010, E-APP-B03-SOG-1000, P-MDEL-1150","CON-B03-SOG-1050, CON-B03-SOG-1050, CON-B04-SOG-1040, AB-SUB-B03-SOG-1000",0.0,0,0.0
The Big -P.01-UP-20-April-26,CON-B03-SOG-1050,Pouring for S.O.G (B03) (sog),The Big - P.01 - UP-24-MAY-26.CON.P01.B03.SUB.2ndB.SOG,16-Apr-26,23-Apr-26,13-Aug-26,20-Aug-26,,,7,161,0,No,No,"CON-B03-SOG-1040, CON-B03-SOG-1040, P-MDEL-1030","CON-B03-SOG-1060, CON-B03-SOG-1060, CON-B04-SOG-1050, AB-SUB-B03-SOG-1010",0.0,0,0.0
The Big -P.01-UP-20-April-26,CON-B03-SOG-1060,Curing & Smoothing Surface for S.O.G (B03) (sog),The Big - P.01 - UP-24-MAY-26.CON.P01.B03.SUB.2ndB.SOG,17-Apr-26,23-Apr-26,14-Aug-26,20-Aug-26,,,7,219,316,No,No,"CON-B03-SOG-1050, CON-B03-SOG-1050",HO-1030,0.0,0,0.0
The Big -P.01-UP-20-April-26,CON-B03-BAS01-1000,"Scaffolding works for Walls, Col. & Cores (B03) (Bas 01)",The Big - P.01 - UP-24-MAY-26.CON.P01.B03.SUB.1stB,01-Mar-26,07-Mar-26,16-Jun-26,22-Jun-26,,,6,-83,4,Yes,No,"CON-B02-BAS01-1000, CON-B03-BAS02-1100","CON-B03-BAS01-1010, CON-B03-BAS01-1010",0.0,0,0.0
The Big -P.01-UP-20-April-26,CON-B03-BAS01-1010,"RFT for Walls, Col. & Cores (B03) (Bas 01)",The Big - P.01 - UP-24-MAY-26.CON.P01.B03.SUB.1stB,01-Mar-26,14-Mar-26,21-Jun-26,05-Jul-26,,,12,-87,0,Yes,No,"CON-B03-BAS01-1000, CON-B02-BAS01-1010, CON-B03-BAS01-1000, E-APP-B03-BAS01-1000, P-MDEL-1160","CON-B03-BAS01-1020, CON-B03-BAS01-1020",0.0,0,0.0
The Big -P.01-UP-20-April-26,CON-B03-BAS01-1020,"Shuttering for Walls, Col. & Cores (B03) (Bas 01)",The Big - P.01 - UP-24-MAY-26.CON.P01.B03.SUB.1stB,04-Mar-26,22-Mar-26,24-Jun-26,08-Jul-26,,,12,-87,0,Yes,No,"CON-B03-BAS01-1010, CON-B02-BAS01-1020, CON-B03-BAS01-1010, E-APP-B03-BAS01-1000",CON-B03-BAS01-1030,0.0,0,0.0
The Big -P.01-UP-20-April-26,CON-B03-BAS01-1030,"Pouring for Walls, Col. & Cores (B03) (Bas 01)",The Big - P.01 - UP-24-MAY-26.CON.P01.B03.SUB.1stB,23-Mar-26,24-Mar-26,09-Jul-26,11-Jul-26,,,2,-87,0,Yes,No,"CON-B03-BAS01-1020, CON-B02-BAS01-1030, P-MDEL-1030","CON-B03-BAS01-1040, AB-SUB-B03-BAS1-1000",0.0,0,0.0
The Big -P.01-UP-20-April-26,CON-B03-BAS01-1040,Shuttering for Slabs & Beams (B03) (Bas 01),The Big - P.01 - UP-24-MAY-26.CON.P01.B03.SUB.1stB,25-Mar-26,02-Apr-26,12-Jul-26,20-Jul-26,,,8,-87,0,Yes,No,"CON-B02-BAS01-1040, E-APP-B03-BAS01-1030, E-APP-B03-BAS01-1020, CON-B03-BAS01-1030, CON-B03-BAS02-1110","CON-B03-BAS01-1060, CON-B03-BAS01-1050, CON-B03-BAS01-1050",0.0,0,0.0
The Big -P.01-UP-20-April-26,CON-B03-BAS01-1060,Shuttering for Stairs (B03) (Bas 01),The Big - P.01 - UP-24-MAY-26.CON.P01.B03.SUB.1stB,29-Mar-26,06-Apr-26,15-Jul-26,25-Jul-26,,,8,-87,0,Yes,No,"CON-B03-BAS01-1040, CON-B02-BAS01-1050, E-APP-B03-BAS01-1010","CON-B03-BAS01-1070, CON-B03-BAS01-1070",0.0,0,0.0
The Big -P.01-UP-20-April-26,CON-B03-BAS01-1050,RFT for Slabs & Beams (B03) (Bas 01),The Big - P.01 - UP-24-MAY-26.CON.P01.B03.SUB.1stB,28-Mar-26,07-Apr-26,14-Jul-26,26-Jul-26,,,10,-74,0,Yes,No,"CON-B03-BAS01-1040, CON-B02-BAS01-1060, CON-B03-BAS01-1040, E-APP-B03-BAS01-1020, E-APP-B03-BAS01-1030, P-MDEL-1160",CON-B03-BAS01-1090,0.0,0,0.0
The Big -P.01-UP-20-April-26,CON-B03-BAS01-1070,RFT for Stairs (B03) (Bas 01),The Big - P.01 - UP-24-MAY-26.CON.P01.B03.SUB.1stB,31-Mar-26,06-Apr-26,18-Jul-26,25-Jul-26,,,6,-87,0,Yes,No,"CON-B03-BAS01-1060, CON-B02-BAS01-1070, CON-B03-BAS01-1060, E-APP-B03-BAS01-1010, P-MDEL-1160",CON-B03-BAS01-1080,0.0,0,0.0
The Big -P.01-UP-20-April-26,CON-B03-BAS01-1090,Pouring for Slabs & Beams (B03) (Bas 01),The Big - P.01 - UP-24-MAY-26.CON.P01.B03.SUB.1stB,08-Apr-26,09-Apr-26,27-Jul-26,28-Jul-26,,,2,-74,0,Yes,No,"CON-B03-BAS01-1050, P-MDEL-1030","CON-B03-BAS01-1110, AB-SUB-B03-BAS1-1020, AB-SUB-B03-BAS1-1030",0.0,0,0.0
The Big -P.01-UP-20-April-26,CON-B03-BAS01-1080,Pouring for Stairs (B03) (Bas 01),The Big - P.01 - UP-24-MAY-26.CON.P01.B03.SUB.1stB,07-Apr-26,08-Apr-26,26-Jul-26,27-Jul-26,,,2,-87,0,Yes,No,"CON-B02-BAS01-1080, CON-B03-BAS01-1070, P-MDEL-1030","CON-B03-BAS01-1100, CON-B03-BAS01-1110, AB-SUB-B03-BAS1-1010",0.0,0,0.0
The Big -P.01-UP-20-April-26,CON-B03-BAS01-1100,"Curing for Slabs, Beams & Stairs (B03) (Bas 01)",The Big - P.01 - UP-24-MAY-26.CON.P01.B03.SUB.1stB,09-Apr-26,13-Apr-26,28-Jul-26,01-Aug-26,,,5,-110,0,Yes,No,"CON-B03-BAS01-1080, CON-B02-BAS01-1100",CON-B03-GR-1000,0.0,0,0.0
The Big -P.01-UP-20-April-26,CON-B03-BAS01-1110,Dismantling Formwork (B03) (Bas 01),The Big - P.01 - UP-24-MAY-26.CON.P01.B03.SUB.1stB,22-Apr-26,22-Apr-26,09-Aug-26,09-Aug-26,,,1,-104,6,Yes,No,"CON-B03-BAS01-1080, CON-B03-BAS01-1090",CON-B03-GR-1040,0.0,0,0.0
The Big -P.01-UP-20-April-26,CON-B03-GR-1000,"Scaffolding works for Walls, Col. & Cores (B03) (GR)",The Big - P.01 - UP-24-MAY-26.CON.P01.B03.SUP.GF,14-Apr-26,21-Apr-26,02-Aug-26,09-Aug-26,,,7,-88,0,Yes,No,CON-B03-BAS01-1100,"CON-B03-GR-1010, CON-B03-GR-1010",0.0,0,0.0
The Big -P.01-UP-20-April-26,CON-B03-GR-1010,"RFT for Walls, Col. & Cores (B03) (GR)",The Big - P.01 - UP-24-MAY-26.CON.P01.B03.SUP.GF,14-Apr-26,22-Apr-26,02-Aug-26,10-Aug-26,,,8,-88,0,Yes,No,"CON-B03-GR-1000, CON-B03-GR-1000, E-APP-B03-GR-1000, P-MDEL-1130","CON-B03-GR-1020, CON-B03-GR-1020",1.0,1,0.0
The Big -P.01-UP-20-April-26,CON-B03-GR-1020,"Shuttering for Walls, Col. & Cores (B03) (GR)",The Big - P.01 - UP-24-MAY-26.CON.P01.B03.SUP.GF,16-Apr-26,25-Apr-26,04-Aug-26,12-Aug-26,,,8,-88,0,Yes,No,"CON-B03-GR-1010, CON-B03-GR-1010, E-APP-B03-GR-1000",CON-B03-GR-1030,0.0,0,0.0
The Big -P.01-UP-20-April-26,CON-B03-GR-1030,"Pouring for Walls, Col. & Cores (B03) (GR)",The Big - P.01 - UP-24-MAY-26.CON.P01.B03.SUP.GF,26-Apr-26,27-Apr-26,13-Aug-26,15-Aug-26,,,2,-88,0,Yes,No,"CON-B03-GR-1020, P-MDEL-1030","AB-SUB-B03-GR-1000, CON-B03-GR-1040",0.0,0,0.0
The Big -P.01-UP-20-April-26,CON-B03-GR-1040,Shuttering for Slabs & Beams (B03) (GR),The Big - P.01 - UP-24-MAY-26.CON.P01.B03.SUP.GF,28-Apr-26,05-May-26,16-Aug-26,23-Aug-26,,,7,-88,0,Yes,No,"E-APP-B03-GR-1030, E-APP-B03-GR-1020, CON-B03-GR-1030, CON-B03-BAS01-1110","CON-B03-GR-1050, CON-B03-GR-1060, CON-B03-GR-1070",0.0,0,0.0
The Big -P.01-UP-20-April-26,CON-B03-GR-1050,Shuttering for Stairs  (B03) (GR),The Big - P.01 - UP-24-MAY-26.CON.P01.B03.SUP.GF,30-Apr-26,05-May-26,18-Aug-26,23-Aug-26,,,5,-88,0,Yes,No,"CON-B03-GR-1040, E-APP-B03-GR-1010","CON-B03-GR-1070, CON-B03-GR-1060",0.0,0,0.0
The Big -P.01-UP-20-April-26,CON-B03-GR-1060,RFT for Slabs & Beams (B03) (GR),The Big - P.01 - UP-24-MAY-26.CON.P01.B03.SUP.GF,02-May-26,06-May-26,19-Aug-26,24-Aug-26,,,5,-88,0,Yes,No,"CON-B03-GR-1040, CON-B03-GR-1050, E-APP-B03-GR-1020, E-APP-B03-GR-1030, P-MDEL-1130","CON-B03-GR-1070, CON-B03-GR-1080",0.0,0,0.0
The Big -P.01-UP-20-April-26,CON-B03-GR-1070,RFT for Stairs  (B03) (GR),The Big - P.01 - UP-24-MAY-26.CON.P01.B03.SUP.GF,03-May-26,06-May-26,20-Aug-26,24-Aug-26,,,4,-88,0,Yes,No,"CON-B03-GR-1050, CON-B03-GR-1040, CON-B03-GR-1060, E-APP-B03-GR-1010, P-MDEL-1130",CON-B03-GR-1090,0.0,0,0.0
The Big -P.01-UP-20-April-26,CON-B03-GR-1080,Pouring for Slabs & Beams (B03) (GR),The Big - P.01 - UP-24-MAY-26.CON.P01.B03.SUP.GF,07-May-26,09-May-26,25-Aug-26,26-Aug-26,,,2,-88,0,Yes,No,"P-MDEL-1030, CON-B03-GR-1060","AB-SUB-B03-GR-1010, AB-SUB-B03-GR-1020, CON-B03-GR-1110, CON-B03-GR-1100, KD-MS-1040",0.0,0,0.0
The Big -P.01-UP-20-April-26,CON-B03-GR-1090,Pouring for Stairs  (B03) (GR),The Big - P.01 - UP-24-MAY-26.CON.P01.B03.SUP.GF,07-May-26,09-May-26,25-Aug-26,26-Aug-26,,,2,-88,0,Yes,No,"P-MDEL-1030, CON-B03-GR-1070","CON-B03-GR-1100, AB-SUB-B03-GR-1030",0.0,0,0.0
The Big -P.01-UP-20-April-26,CON-B03-GR-1100,"Curing for Slabs, Beams & Stairs (B03) (GR)",The Big - P.01 - UP-24-MAY-26.CON.P01.B03.SUP.GF,10-May-26,12-May-26,27-Aug-26,29-Aug-26,,,3,-109,0,Yes,No,"CON-B03-GR-1090, CON-B03-GR-1080",CON-B03-1ST-1000,0.0,0,0.0
The Big -P.01-UP-20-April-26,CON-B03-GR-1110,Dismantling Formwork (B03) (GR),The Big - P.01 - UP-24-MAY-26.CON.P01.B03.SUP.GF,26-May-26,26-May-26,14-Sep-26,14-Sep-26,,,1,-80,29,Yes,No,CON-B03-GR-1080,CON-B03-1ST-1040,0.0,0,0.0
The Big -P.01-UP-20-April-26,CON-B03-1ST-1000,"Scaffolding works for Walls, Col. & Cores (B03) (1st)",The Big - P.01 - UP-24-MAY-26.CON.P01.B03.SUP.1stF,02-Jun-26,07-Jun-26,19-Sep-26,23-Sep-26,,,5,-90,0,Yes,No,CON-B03-GR-1100,"CON-B03-1ST-1010, CON-B03-1ST-1010",0.0,0,0.0
The Big -P.01-UP-20-April-26,CON-B03-1ST-1010,"RFT for Walls, Col. & Cores (B03) (1st)",The Big - P.01 - UP-24-MAY-26.CON.P01.B03.SUP.1stF,06-Jun-26,18-Jun-26,22-Sep-26,05-Oct-26,,,12,-90,0,Yes,No,"CON-B03-1ST-1000, CON-B03-1ST-1000, E-APP-B03-1ST-1000, P-MDEL-1120","CON-B03-1ST-1020, CON-B03-1ST-1020",1.0,1,0.0
The Big -P.01-UP-20-April-26,CON-B03-1ST-1020,"Shuttering for Walls, Col. & Cores (B03) (1st)",The Big - P.01 - UP-24-MAY-26.CON.P01.B03.SUP.1stF,10-Jun-26,23-Jun-26,27-Sep-26,11-Oct-26,,,12,-90,0,Yes,No,"CON-B03-1ST-1010, CON-B03-1ST-1010, E-APP-B03-1ST-1000",CON-B03-1ST-1030,0.0,0,0.0
The Big -P.01-UP-20-April-26,CON-B03-1ST-1030,"Pouring for Walls, Col. & Cores (B03) (1st)",The Big - P.01 - UP-24-MAY-26.CON.P01.B03.SUP.1stF,24-Jun-26,25-Jun-26,12-Oct-26,13-Oct-26,,,2,-90,0,Yes,No,"CON-B03-1ST-1020, P-MDEL-1030","CON-B03-1ST-1040, AB-SUB-B03-1ST-1000",0.0,0,0.0
The Big -P.01-UP-20-April-26,CON-B03-1ST-1040,"Shuttering for Slabs, Beams & Stairs (B03) (1st)",The Big - P.01 - UP-24-MAY-26.CON.P01.B03.SUP.1stF,27-Jun-26,14-Jul-26,14-Oct-26,31-Oct-26,,,15,-90,0,Yes,No,"E-APP-B03-1ST-1030, E-APP-B03-1ST-1020, E-APP-B03-1ST-1010, CON-B03-1ST-1030, CON-B03-GR-1110","CON-B03-1ST-1050, CON-B03-1ST-1050",0.0,0,0.0
The Big -P.01-UP-20-April-26,CON-B03-1ST-1050,"RFT for Slabs, Beams & Stairs (B03) (1st)",The Big - P.01 - UP-24-MAY-26.CON.P01.B03.SUP.1stF,02-Jul-26,19-Jul-26,19-Oct-26,04-Nov-26,,,15,-90,0,Yes,No,"CON-B03-1ST-1040, CON-B03-1ST-1040, E-APP-B03-1ST-1010, E-APP-B03-1ST-1020, E-APP-B03-1ST-1030, P-MDEL-1120",CON-B03-1ST-1060,0.0,0,0.0
The Big -P.01-UP-20-April-26,CON-B03-1ST-1060,"Pouring for Slabs, Beams & Stairs (B03) (1st)",The Big - P.01 - UP-24-MAY-26.CON.P01.B03.SUP.1stF,20-Jul-26,22-Jul-26,05-Nov-26,08-Nov-26,,,3,-90,0,Yes,No,"CON-B03-1ST-1050, P-MDEL-1030","CON-B03-1ST-1070, CON-B03-1ST-1080, AB-SUB-B03-1ST-1010, AB-SUB-B03-1ST-1020, AB-SUB-B03-1ST-1030",0.0,0,0.0
The Big -P.01-UP-20-April-26,CON-B03-1ST-1070,"Curing for Slabs, Beams & Stairs (B03) (1st)",The Big - P.01 - UP-24-MAY-26.CON.P01.B03.SUP.1stF,23-Jul-26,27-Jul-26,09-Nov-26,13-Nov-26,,,5,-108,0,Yes,No,CON-B03-1ST-1060,CON-B03-2ND-1000,0.0,0,0.0
The Big -P.01-UP-20-April-26,CON-B03-1ST-1080,Dismantling Formwork (B03) (1st),The Big - P.01 - UP-24-MAY-26.CON.P01.B03.SUP.1stF,05-Aug-26,05-Aug-26,20-Nov-26,20-Nov-26,,,1,-80,28,Yes,No,CON-B03-1ST-1060,CON-B03-2ND-1040,0.0,0,0.0
The Big -P.01-UP-20-April-26,CON-B03-2ND-1000,"Scaffolding works for Walls, Col. & Cores (B03) (2nd)",The Big - P.01 - UP-24-MAY-26.CON.P01.B03.SUP.2ndF,08-Aug-26,12-Aug-26,24-Nov-26,29-Nov-26,,,5,-91,0,Yes,No,CON-B03-1ST-1070,"CON-B03-2ND-1010, CON-B03-2ND-1010",0.0,0,0.0
The Big -P.01-UP-20-April-26,CON-B03-2ND-1010,"RFT for Walls, Col. & Cores (B03) (2nd)",The Big - P.01 - UP-24-MAY-26.CON.P01.B03.SUP.2ndF,11-Aug-26,24-Aug-26,28-Nov-26,10-Dec-26,,,12,-91,0,Yes,No,"CON-B03-2ND-1000, CON-B03-2ND-1000, E-APP-B03-2ND-1000, P-MDEL-1110","CON-B03-2ND-1020, CON-B03-2ND-1020",1.0,1,0.0
The Big -P.01-UP-20-April-26,CON-B03-2ND-1020,"Shuttering for Walls, Col. & Cores (B03) (2nd)",The Big - P.01 - UP-24-MAY-26.CON.P01.B03.SUP.2ndF,16-Aug-26,30-Aug-26,02-Dec-26,15-Dec-26,,,12,-91,0,Yes,No,"CON-B03-2ND-1010, CON-B03-2ND-1010, E-APP-B03-2ND-1000",CON-B03-2ND-1030,0.0,0,0.0
The Big -P.01-UP-20-April-26,CON-B03-2ND-1030,"Pouring for Walls, Col. & Cores (B03) (2nd)",The Big - P.01 - UP-24-MAY-26.CON.P01.B03.SUP.2ndF,31-Aug-26,01-Sep-26,16-Dec-26,17-Dec-26,,,2,-91,0,Yes,No,"CON-B03-2ND-1020, P-MDEL-1030","CON-B03-2ND-1040, AB-SUB-B03-2ND-1000",0.0,0,0.0
The Big -P.01-UP-20-April-26,CON-B03-2ND-1040,"Shuttering for Slabs, Beams & Stairs (B03) (2nd)",The Big - P.01 - UP-24-MAY-26.CON.P01.B03.SUP.2ndF,02-Sep-26,19-Sep-26,19-Dec-26,04-Jan-27,,,15,-91,0,Yes,No,"E-APP-B03-2ND-1030, E-APP-B03-2ND-1020, E-APP-B03-2ND-1010, CON-B03-2ND-1030, CON-B03-1ST-1080","CON-B03-2ND-1050, CON-B03-2ND-1050",0.0,0,0.0
The Big -P.01-UP-20-April-26,CON-B03-2ND-1050,"RFT for Slabs, Beams & Stairs(B03) (2nd)",The Big - P.01 - UP-24-MAY-26.CON.P01.B03.SUP.2ndF,07-Sep-26,23-Sep-26,23-Dec-26,10-Jan-27,,,15,-91,0,Yes,No,"CON-B03-2ND-1040, CON-B03-2ND-1040, E-APP-B03-2ND-1010, E-APP-B03-2ND-1020, E-APP-B03-2ND-1030, P-MDEL-1110",CON-B03-2ND-1060,0.0,0,0.0
The Big -P.01-UP-20-April-26,CON-B03-2ND-1060,"Pouring for Slabs, Beams & Stairs (B03) (2nd)",The Big - P.01 - UP-24-MAY-26.CON.P01.B03.SUP.2ndF,24-Sep-26,27-Sep-26,11-Jan-27,13-Jan-27,,,3,-91,0,Yes,No,"CON-B03-2ND-1050, P-MDEL-1030","CON-B03-2ND-1070, CON-B03-2ND-1080, AB-SUB-B03-2ND-1010, AB-SUB-B03-2ND-1020, AB-SUB-B03-2ND-1030",0.0,0,0.0
The Big -P.01-UP-20-April-26,CON-B03-2ND-1070,"Curing for Slabs, Beams & Stairs (B03) (2nd)",The Big - P.01 - UP-24-MAY-26.CON.P01.B03.SUP.2ndF,28-Sep-26,30-Sep-26,14-Jan-27,16-Jan-27,,,3,-108,0,Yes,No,CON-B03-2ND-1060,CON-B03-3RD-1000,0.0,0,0.0
The Big -P.01-UP-20-April-26,CON-B03-2ND-1080,Dismantling Formwork (B03) (2nd),The Big - P.01 - UP-24-MAY-26.CON.P01.B03.SUP.2ndF,11-Oct-26,11-Oct-26,27-Jan-27,27-Jan-27,,,1,-85,24,Yes,No,CON-B03-2ND-1060,CON-B03-3RD-1040,0.0,0,0.0
The Big -P.01-UP-20-April-26,CON-B03-3RD-1000,"Scaffolding works for Walls, Col. & Cores (B03) (3rd)",The Big - P.01 - UP-24-MAY-26.CON.P01.B03.SUP.3rdF,11-Oct-26,15-Oct-26,27-Jan-27,01-Feb-27,,,5,-91,0,Yes,No,CON-B03-2ND-1070,"CON-B03-3RD-1010, CON-B03-3RD-1010",0.0,0,0.0
The Big -P.01-UP-20-April-26,CON-B03-3RD-1010,"RFT for Walls, Col. & Cores (B03) (3rd)",The Big - P.01 - UP-24-MAY-26.CON.P01.B03.SUP.3rdF,14-Oct-26,27-Oct-26,31-Jan-27,13-Feb-27,,,12,-91,0,Yes,No,"CON-B03-3RD-1000, CON-B03-3RD-1000, E-APP-B03-3RD-1000, P-MDEL-1100","CON-B03-3RD-1020, CON-B03-3RD-1020",1.0,1,0.0
The Big -P.01-UP-20-April-26,CON-B03-3RD-1020,"Shuttering for Walls, Col. & Cores (B03) (3rd)",The Big - P.01 - UP-24-MAY-26.CON.P01.B03.SUP.3rdF,19-Oct-26,01-Nov-26,04-Feb-27,17-Feb-27,,,12,-91,0,Yes,No,"CON-B03-3RD-1010, CON-B03-3RD-1010, E-APP-B03-3RD-1000",CON-B03-3RD-1030,0.0,0,0.0
The Big -P.01-UP-20-April-26,CON-B03-3RD-1030,"Pouring for Walls, Col. & Cores (B03) (3rd)",The Big - P.01 - UP-24-MAY-26.CON.P01.B03.SUP.3rdF,02-Nov-26,03-Nov-26,18-Feb-27,20-Feb-27,,,2,-91,0,Yes,No,"CON-B03-3RD-1020, P-MDEL-1030","CON-B03-3RD-1040, AB-SUB-B03-3RD-1000",0.0,0,0.0
The Big -P.01-UP-20-April-26,CON-B03-3RD-1040,"Shuttering for Slabs, Beams & Stairs (B03) (3rd)",The Big - P.01 - UP-24-MAY-26.CON.P01.B03.SUP.3rdF,04-Nov-26,21-Nov-26,21-Feb-27,13-Mar-27,,,15,-91,0,Yes,No,"E-APP-B03-3RD-1030, E-APP-B03-3RD-1020, E-APP-B03-3RD-1010, CON-B03-3RD-1030, CON-B03-2ND-1080","CON-B03-3RD-1050, CON-B03-3RD-1050",0.0,0,0.0
The Big -P.01-UP-20-April-26,CON-B03-3RD-1050,"RFT for Slabs, Beams & Stairs (B03) (3rd)",The Big - P.01 - UP-24-MAY-26.CON.P01.B03.SUP.3rdF,09-Nov-26,25-Nov-26,25-Feb-27,17-Mar-27,,,15,-91,0,Yes,No,"CON-B03-3RD-1040, CON-B03-3RD-1040, E-APP-B03-3RD-1010, E-APP-B03-3RD-1020, E-APP-B03-3RD-1030, P-MDEL-1100",CON-B03-3RD-1060,0.0,0,0.0
The Big -P.01-UP-20-April-26,CON-B03-3RD-1060,"Pouring for Slabs, Beams & Stairs (B03) (3rd)",The Big - P.01 - UP-24-MAY-26.CON.P01.B03.SUP.3rdF,26-Nov-26,29-Nov-26,18-Mar-27,21-Mar-27,,,3,-91,0,Yes,No,"CON-B03-3RD-1050, P-MDEL-1030","CON-B03-3RD-1070, CON-B03-3RD-1080, AB-SUB-B03-3RD-1010, AB-SUB-B03-3RD-1020, AB-SUB-B03-3RD-1030",0.0,0,0.0
The Big -P.01-UP-20-April-26,CON-B03-3RD-1070,"Curing for Slabs, Beams & Stairs (B03) (3rd)",The Big - P.01 - UP-24-MAY-26.CON.P01.B03.SUP.3rdF,30-Nov-26,02-Dec-26,22-Mar-27,24-Mar-27,,,3,-112,0,Yes,No,CON-B03-3RD-1060,CON-B03-4TH-1000,0.0,0,0.0
The Big -P.01-UP-20-April-26,CON-B03-3RD-1080,Dismantling Formwork (B03) (3rd),The Big - P.01 - UP-24-MAY-26.CON.P01.B03.SUP.3rdF,11-Dec-26,11-Dec-26,02-Apr-27,02-Apr-27,,,1,-87,25,Yes,No,CON-B03-3RD-1060,CON-B03-4TH-1040,0.0,0,0.0
The Big -P.01-UP-20-April-26,CON-B03-4TH-1000,"Scaffolding works for Walls, Col. & Cores (B03) (4th)",The Big - P.01 - UP-24-MAY-26.CON.P01.B03.SUP.4thF,13-Dec-26,17-Dec-26,04-Apr-27,08-Apr-27,,,5,-91,0,Yes,No,CON-B03-3RD-1070,"CON-B03-4TH-1010, CON-B03-4TH-1010",0.0,0,0.0
The Big -P.01-UP-20-April-26,CON-B03-4TH-1010,"RFT for Walls, Col. & Cores (B03) (4th)",The Big - P.01 - UP-24-MAY-26.CON.P01.B03.SUP.4thF,16-Dec-26,29-Dec-26,07-Apr-27,20-Apr-27,,,12,-91,0,Yes,No,"CON-B03-4TH-1000, CON-B03-4TH-1000, E-APP-B03-4TH-1000, P-MDEL-1090","CON-B03-4TH-1020, CON-B03-4TH-1020",1.0,1,0.0
The Big -P.01-UP-20-April-26,CON-B03-4TH-1020,"Shuttering for Walls, Col. & Cores (B03) (4th)",The Big - P.01 - UP-24-MAY-26.CON.P01.B03.SUP.4thF,21-Dec-26,03-Jan-27,12-Apr-27,25-Apr-27,,,12,-91,0,Yes,No,"CON-B03-4TH-1010, CON-B03-4TH-1010, E-APP-B03-4TH-1000",CON-B03-4TH-1030,0.0,0,0.0
The Big -P.01-UP-20-April-26,CON-B03-4TH-1030,"Pouring for Walls, Col. & Cores (B03) (4th)",The Big - P.01 - UP-24-MAY-26.CON.P01.B03.SUP.4thF,04-Jan-27,05-Jan-27,26-Apr-27,27-Apr-27,,,2,-91,0,Yes,No,"CON-B03-4TH-1020, P-MDEL-1030","CON-B03-4TH-1040, AB-SUB-B03-4TH-1000",0.0,0,0.0
The Big -P.01-UP-20-April-26,CON-B03-4TH-1040,"Shuttering for Slabs, Beams & Stairs (B03) (4th)",The Big - P.01 - UP-24-MAY-26.CON.P01.B03.SUP.4thF,06-Jan-27,20-Jan-27,28-Apr-27,11-May-27,,,12,-91,0,Yes,No,"E-APP-B03-4TH-1030, E-APP-B03-4TH-1020, E-APP-B03-4TH-1010, CON-B03-4TH-1030, CON-B03-3RD-1080","CON-B03-4TH-1050, CON-B03-4TH-1050",0.0,0,0.0
The Big -P.01-UP-20-April-26,CON-B03-4TH-1050,"RFT for Slabs, Beams & Stairs (B03) (4th)",The Big - P.01 - UP-24-MAY-26.CON.P01.B03.SUP.4thF,12-Jan-27,26-Jan-27,03-May-27,16-May-27,,,12,-91,0,Yes,No,"CON-B03-4TH-1040, CON-B03-4TH-1040, E-APP-B03-4TH-1010, E-APP-B03-4TH-1020, E-APP-B03-4TH-1030, P-MDEL-1090",CON-B03-4TH-1060,0.0,0,0.0
The Big -P.01-UP-20-April-26,CON-B03-4TH-1060,"Pouring for Slabs, Beams & Stairs (B03) (4th)",The Big - P.01 - UP-24-MAY-26.CON.P01.B03.SUP.4thF,27-Jan-27,30-Jan-27,17-May-27,19-May-27,,,3,-91,0,Yes,No,"CON-B03-4TH-1050, P-MDEL-1030","CON-B03-4TH-1070, CON-B03-4TH-1080, AB-SUB-B03-4TH-1010, AB-SUB-B03-4TH-1020, AB-SUB-B03-4TH-1030",0.0,0,0.0
The Big -P.01-UP-20-April-26,CON-B03-4TH-1070,"Curing for Slabs, Beams & Stairs (B03) (4th)",The Big - P.01 - UP-24-MAY-26.CON.P01.B03.SUP.4thF,31-Jan-27,02-Feb-27,20-May-27,22-May-27,,,3,-109,0,Yes,No,CON-B03-4TH-1060,CON-B03-RF-1000,0.0,0,0.0
The Big -P.01-UP-20-April-26,CON-B03-4TH-1080,Dismantling Formwork (B03) (4th),The Big - P.01 - UP-24-MAY-26.CON.P01.B03.SUP.4thF,11-Feb-27,11-Feb-27,01-Jun-27,01-Jun-27,,,1,-93,17,Yes,No,CON-B03-4TH-1060,CON-B03-RF-1060,0.0,0,0.0
The Big -P.01-UP-20-April-26,CON-B03-RF-1000,"Scaffolding works for Walls, Col. & Cores (B03) (RF)",The Big - P.01 - UP-24-MAY-26.CON.P01.B03.SUP.RF,13-Feb-27,14-Feb-27,02-Jun-27,03-Jun-27,,,2,-91,0,Yes,No,CON-B03-4TH-1070,CON-B03-RF-1010,0.0,0,0.0
The Big -P.01-UP-20-April-26,CON-B03-RF-1010,"RFT for Walls, Col. & Cores (B03) (RF)",The Big - P.01 - UP-24-MAY-26.CON.P01.B03.SUP.RF,15-Feb-27,16-Feb-27,05-Jun-27,06-Jun-27,,,2,-91,0,Yes,No,"CON-B03-RF-1000, E-APP-B03-RF-1000, P-MDEL-1200",CON-B03-RF-1020,1.0,1,0.0
The Big -P.01-UP-20-April-26,CON-B03-RF-1020,"Shuttering for Walls, Col. & Cores (B03) (RF)",The Big - P.01 - UP-24-MAY-26.CON.P01.B03.SUP.RF,17-Feb-27,18-Feb-27,07-Jun-27,08-Jun-27,,,2,-91,0,Yes,No,"CON-B03-RF-1010, E-APP-B03-RF-1000",CON-B03-RF-1030,0.0,0,0.0
The Big -P.01-UP-20-April-26,CON-B03-RF-1030,"Pouring for Walls, Col. & Cores (B03) (RF)",The Big - P.01 - UP-24-MAY-26.CON.P01.B03.SUP.RF,20-Feb-27,21-Feb-27,09-Jun-27,10-Jun-27,,,2,-91,0,Yes,No,"CON-B03-RF-1020, P-MDEL-1030","CON-B03-RF-1040, AB-SUB-B03-RF-1000",0.0,0,0.0
The Big -P.01-UP-20-April-26,CON-B03-RF-1040,"Shuttering for Slabs, Beams  (B03) (RF)",The Big - P.01 - UP-24-MAY-26.CON.P01.B03.SUP.RF,22-Feb-27,24-Feb-27,12-Jun-27,14-Jun-27,,,3,-91,0,Yes,No,"E-APP-B03-RF-1020, E-APP-B03-RF-1010, CON-B03-RF-1030",CON-B03-RF-1050,0.0,0,0.0
The Big -P.01-UP-20-April-26,CON-B03-RF-1050,"RFT for Slabs, Beams  (B03) (RF)",The Big - P.01 - UP-24-MAY-26.CON.P01.B03.SUP.RF,25-Feb-27,28-Feb-27,15-Jun-27,17-Jun-27,,,3,-91,0,Yes,No,"CON-B03-RF-1040, E-APP-B03-RF-1010, E-APP-B03-RF-1020, P-MDEL-1200",CON-B03-RF-1060,0.0,0,0.0
The Big -P.01-UP-20-April-26,CON-B03-RF-1060,"Pouring for Slabs, Beams  (B03) (RF)",The Big - P.01 - UP-24-MAY-26.CON.P01.B03.SUP.RF,01-Mar-27,02-Mar-27,19-Jun-27,20-Jun-27,,,2,-91,0,Yes,No,"CON-B03-RF-1050, P-MDEL-1030, CON-B03-4TH-1080","CON-B03-RF-1070, AB-SUB-B03-RF-1010, AB-SUB-B03-RF-1020",0.0,0,0.0
The Big -P.01-UP-20-April-26,CON-B03-RF-1070,"Curing for Slabs, Beams  (B03) (RF)",The Big - P.01 - UP-24-MAY-26.CON.P01.B03.SUP.RF,03-Mar-27,07-Mar-27,21-Jun-27,25-Jun-27,,,5,-96,0,Yes,No,CON-B03-RF-1060,CON-B03-RF-1080,0.0,0,0.0
The Big -P.01-UP-20-April-26,CON-B03-RF-1080,Dismantling Formwork (B03) (RF),The Big - P.01 - UP-24-MAY-26.CON.P01.B03.SUP.RF,13-Mar-27,13-Mar-27,01-Jul-27,01-Jul-27,,,1,-96,1,Yes,No,CON-B03-RF-1070,HO-1030,0.0,0,0.0
The Big -P.01-UP-20-April-26,HO-1000,Demobilization,The Big - P.01 - UP-24-MAY-26.HO.2,08-Apr-27,10-Apr-27,31-Aug-27,02-Sep-27,,,2,-124,0,Yes,Yes,"HO-1030, HO-1020, HO-1010, HO-1040, HO-1050",KD-MS-1050,0.0,0,0.0
The Big -P.01-UP-20-April-26,HO-1010,Snag list for B01,The Big - P.01 - UP-24-MAY-26.HO.2,28-Mar-27,07-Apr-27,19-Aug-27,31-Aug-27,,,10,-124,0,Yes,Yes,"CON-B01-9TH-1080, CON-B01-SOG-1060",HO-1000,0.0,0,0.0
The Big -P.01-UP-20-April-26,HO-1020,Snag list for B02,The Big - P.01 - UP-24-MAY-26.HO.2,06-Mar-27,20-Mar-27,16-Jun-27,27-Jun-27,,,10,-69,55,Yes,No,"CON-B02-RF-1080, CON-B02-SOG-1060",HO-1000,0.0,0,0.0
The Big -P.01-UP-20-April-26,HO-1030,Snag list for B03,The Big - P.01 - UP-24-MAY-26.HO.2,14-Mar-27,24-Mar-27,03-Jul-27,13-Jul-27,,,10,-83,41,Yes,No,"CON-B03-RF-1080, CON-B03-SOG-1060",HO-1000,0.0,0,0.0
The Big -P.01-UP-20-April-26,HO-1040,Snag list for B04,The Big - P.01 - UP-24-MAY-26.HO.2,28-Mar-27,07-Apr-27,04-Aug-27,15-Aug-27,,,10,-111,13,Yes,No,"CON-B04-RF-1080, CON-B04-SOG-1060",HO-1000,0.0,0,0.0
The Big -P.01-UP-20-April-26,HO-1050,Snag list for As-Built,The Big - P.01 - UP-24-MAY-26.HO.2,06-Apr-27,07-Apr-27,24-Aug-27,26-Aug-27,,,2,-140,5,Yes,No,"AB-APP-B01-FOOT-1000, AB-APP-B01-FOOT-1020, AB-APP-B01-FOOT-1030, AB-APP-B02-FOOT-1000, AB-APP-B02-FOOT-1010, AB-APP-B02-FOOT-1020, AB-APP-B02-BAS2-1000, AB-APP-B02-BAS2-1020, AB-APP-B02-BAS2-1030, AB-APP-B02-BAS2-1010, AB-APP-B01-BAS2-1000, AB-APP-B01-BAS2-1030, AB-APP-B01-BAS2-1040, AB-APP-B01-BAS2-1010, AB-APP-B01-BAS2-1020, AB-APP-B02-BAS1-1000, AB-APP-B02-BAS1-1020, AB-APP-B02-BAS1-1030, AB-APP-B02-BAS1-1010, AB-APP-B01-BAS1-1000, AB-APP-B01-BAS1-1020, AB-APP-B01-BAS1-1030, AB-APP-B01-BAS1-1010, AB-APP-B01-BAS1-1040, AB-APP-B02-GR-1000, AB-APP-B02-GR-1020, AB-APP-B02-GR-1030, AB-APP-B02-GR-1010, AB-APP-B01-GR-1000, AB-APP-B01-GR-1020, AB-APP-B01-GR-1030, AB-APP-B01-GR-1010, AB-APP-B02-1ST-1000, AB-APP-B02-1ST-1010, AB-APP-B02-1ST-1020, AB-APP-B02-1ST-1030, AB-APP-B02-2ND-1000, AB-APP-B02-2ND-1010, AB-APP-B02-2ND-1020, AB-APP-B02-2ND-1030, AB-APP-B02-3RD-1000, AB-APP-B02-3RD-1010, AB-APP-B02-3RD-1020, AB-APP-B02-3RD-1030, AB-APP-B02-4TH-1000, AB-APP-B02-4TH-1010, AB-APP-B02-4TH-1020, AB-APP-B02-4TH-1030, AB-APP-B01-1ST-1000, AB-APP-B01-1ST-1010, AB-APP-B01-1ST-1020, AB-APP-B01-1ST-1030, AB-APP-B01-2ND-1000, AB-APP-B01-2ND-1010, AB-APP-B01-2ND-1020, AB-APP-B01-2ND-1030, AB-APP-B01-3RD-1000, AB-APP-B01-3RD-1010, AB-APP-B01-3RD-1020, AB-APP-B01-3RD-1030, AB-APP-B01-4TH-1000, AB-APP-B01-4TH-1010, AB-APP-B01-4TH-1020, AB-APP-B01-4TH-1030, AB-APP-B01-5TH-1000, AB-APP-B01-5TH-1010, AB-APP-B01-5TH-1020, AB-APP-B01-5TH-1030, AB-APP-B01-6TH-1000, AB-APP-B01-6TH-1010, AB-APP-B01-6TH-1020, AB-APP-B01-6TH-1030, AB-APP-B01-7TH-1000, AB-APP-B01-7TH-1010, AB-APP-B01-7TH-1020, AB-APP-B01-7TH-1030, AB-APP-B01-8TH-1000, AB-APP-B01-8TH-1010, AB-APP-B01-8TH-1020, AB-APP-B01-8TH-1030, AB-APP-B02-RF-1000, AB-APP-B02-RF-1010, AB-APP-B02-RF-1020, AB-APP-B01-RF-1000, AB-APP-B01-RF-1010, AB-APP-B01-RF-1020, AB-APP-B03-FOOT-1000, AB-APP-B03-FOOT-1010, AB-APP-B03-FOOT-1020, AB-APP-B04-FOOT-1000, AB-APP-B04-FOOT-1010, AB-APP-B04-FOOT-1020, AB-APP-B03-BAS2-1000, AB-APP-B03-BAS2-1020, AB-APP-B03-BAS2-1030, AB-APP-B03-BAS2-1010, AB-APP-B04-BAS2-1000, AB-APP-B04-BAS2-1030, AB-APP-B04-BAS2-1040, AB-APP-B04-BAS2-1010, AB-APP-B04-BAS2-1020, AB-APP-B03-BAS1-1000, AB-APP-B03-BAS1-1020, AB-APP-B03-BAS1-1030, AB-APP-B03-BAS1-1010, AB-APP-B04-BAS1-1000, AB-APP-B04-BAS1-1030, AB-APP-B04-BAS1-1040, AB-APP-B04-BAS1-1010, AB-APP-B04-BAS1-1020, AB-APP-B04-GR-1000, AB-APP-B04-GR-1010, AB-APP-B04-GR-1020, AB-APP-B04-GR-1030, AB-APP-B03-GR-1000, AB-APP-B03-GR-1010, AB-APP-B03-GR-1020, AB-APP-B03-GR-1030, AB-APP-B04-1ST-1000, AB-APP-B04-1ST-1010, AB-APP-B04-1ST-1020, AB-APP-B04-1ST-1030, AB-APP-B04-2ND-1000, AB-APP-B04-2ND-1010, AB-APP-B04-2ND-1020, AB-APP-B04-2ND-1030, AB-APP-B04-3TH-1000, AB-APP-B04-3TH-1010, AB-APP-B04-3TH-1020, AB-APP-B04-3TH-1030, AB-APP-B04-4TH-1000, AB-APP-B04-4TH-1010, AB-APP-B04-4TH-1020, AB-APP-B04-4TH-1030, AB-APP-B04-5TH-1000, AB-APP-B04-5TH-1010, AB-APP-B04-5TH-1020, AB-APP-B04-5TH-1030, AB-APP-B04-6TH-1000, AB-APP-B04-6TH-1010, AB-APP-B04-6TH-1020, AB-APP-B04-6TH-1030, AB-APP-B04-7TH-1000, AB-APP-B04-7TH-1010, AB-APP-B04-7TH-1020, AB-APP-B04-7TH-1030, AB-APP-B04-8TH-1000, AB-APP-B04-8TH-1010, AB-APP-B04-8TH-1020, AB-APP-B04-8TH-1030, AB-APP-B03-1ST-1000, AB-APP-B03-1ST-1010, AB-APP-B03-1ST-1020, AB-APP-B03-1ST-1030, AB-APP-B03-2ND-1000, AB-APP-B03-2ND-1010, AB-APP-B03-2ND-1020, AB-APP-B03-2ND-1030, AB-APP-B03-3RD-1000, AB-APP-B03-3RD-1010, AB-APP-B03-3RD-1020, AB-APP-B03-3RD-1030, AB-APP-B03-4TH-1000, AB-APP-B03-4TH-1010, AB-APP-B03-4TH-1020, AB-APP-B03-4TH-1030, AB-APP-B04-RF-1000, AB-APP-B04-RF-1010, AB-APP-B04-RF-1020, AB-APP-B03-RF-1000, AB-APP-B03-RF-1010, AB-APP-B03-RF-1020, AB-APP-B01-SOG-1000, AB-APP-B01-SOG-1010, AB-APP-B02-SOG-1000, AB-APP-B02-SOG-1010, AB-APP-B03-SOG-1000, AB-APP-B03-SOG-1010, AB-APP-B04-SOG-1000, AB-APP-B04-SOG-1010, AB-APP-B04-WT-1000, AB-APP-B04-WT-1010, AB-APP-B04-WT-1030, AB-APP-B04-WT-1040, AB-APP-B04-WT-1020, AB-APP-B01-REP-1000, AB-APP-B02-REP-1000, AB-APP-B03-REP-1000, AB-APP-B04-REP-1000, AB-APP-B03-FOOT-1030, AB-APP-B04-FOOT-1030, AB-APP-B01-FOOT-1010, AB-APP-B02-FOOT-1030",HO-1000,0.0,0,0.0
The Big -P.01-UP-20-April-26,AB-SUB-B01-REP-1000,Submittal for General Replacement Plan & Typical Sections for Replacement / Backfilling DWGs As-Built Drawing (B01),The Big - P.01 - UP-24-MAY-26.HO.1.S.P02.B01.SUB.1,24-Nov-25,14-Dec-25,17-May-26,10-Jun-26,,,18,241,0,No,No,"CON-EW-B01-1000, CON-EW-B01-1010","AB-APP-B01-REP-1000, AB-APP-B01-REP-1000",0.0,0,0.0
The Big -P.01-UP-20-April-26,AB-SUB-B01-FOOT-1000,Submittal for PC Raft Conc. Dim. DWGs As-Built Drawing (B01) (footing),The Big - P.01 - UP-24-MAY-26.HO.1.S.P02.B01.SUB.F,29-Nov-25,18-Dec-25,17-May-26,10-Jun-26,,,18,241,0,No,No,CON-B01-FOOT-1010,"AB-APP-B01-FOOT-1000, AB-APP-B01-FOOT-1000",0.0,0,0.0
The Big -P.01-UP-20-April-26,AB-SUB-B01-FOOT-1020,Submittal for RC Raft & Footings Conc. Dim. DWGs As-Built Drawing (B01) (footing),The Big - P.01 - UP-24-MAY-26.HO.1.S.P02.B01.SUB.F,22-Dec-25,12-Jan-26,17-May-26,10-Jun-26,,,18,241,0,No,No,CON-B01-FOOT-1090,"AB-APP-B01-FOOT-1020, AB-APP-B01-FOOT-1020",0.0,0,0.0
The Big -P.01-UP-20-April-26,AB-SUB-B01-FOOT-1030,Submittal for RC Raft & Footings RFT DWGs As-Built Drawing (B01) (footing),The Big - P.01 - UP-24-MAY-26.HO.1.S.P02.B01.SUB.F,22-Dec-25,12-Jan-26,17-May-26,10-Jun-26,,,18,241,0,No,No,CON-B01-FOOT-1090,"AB-APP-B01-FOOT-1030, AB-APP-B01-FOOT-1030",0.0,0,0.0
The Big -P.01-UP-20-April-26,AB-SUB-B01-FOOT-1010,Submittal for  Waterproofing Layout Plan DWGs As-Built Drawing (B01),The Big - P.01 - UP-24-MAY-26.HO.1.S.P02.B01.SUB.F,03-Dec-25,23-Dec-25,17-May-26,10-Jun-26,,,18,241,0,No,No,CON-B01-FOOT-1030,"AB-APP-B01-FOOT-1010, AB-APP-B01-FOOT-1010",0.0,0,0.0
The Big -P.01-UP-20-April-26,AB-SUB-B01-BAS2-1000,Submittal for Col. & Walls Conc. Dim.  & RFT DWGs As-Built Drawing (B01) (Bas 02),The Big - P.01 - UP-24-MAY-26.HO.1.S.P02.B01.SUB.2ndB,19-Jan-26,09-Feb-26,17-Jun-26,09-Jul-26,,,18,218,0,No,No,CON-B01-BAS02-1030,"AB-APP-B01-BAS2-1000, AB-APP-B01-BAS2-1000",0.0,0,0.0
The Big -P.01-UP-20-April-26,AB-SUB-B01-BAS2-1030,Submittal for Slabs Conc. Dim.  & RFT DWGs As-Built Drawing (B01) (Bas 02),The Big - P.01 - UP-24-MAY-26.HO.1.S.P02.B01.SUB.2ndB,07-Feb-26,26-Feb-26,06-Jul-26,28-Jul-26,,,18,203,0,No,No,CON-B01-BAS02-1130,"AB-APP-B01-BAS2-1030, AB-APP-B01-BAS2-1030",0.0,0,0.0
The Big -P.01-UP-20-April-26,AB-SUB-B01-BAS2-1040,Submittal for Beams Conc. Dim.  & RFT DWGs As-Built Drawing (B01) (Bas 02),The Big - P.01 - UP-24-MAY-26.HO.1.S.P02.B01.SUB.2ndB,07-Feb-26,26-Feb-26,06-Jul-26,28-Jul-26,,,18,203,0,No,No,CON-B01-BAS02-1130,"AB-APP-B01-BAS2-1040, AB-APP-B01-BAS2-1040",0.0,0,0.0
The Big -P.01-UP-20-April-26,AB-SUB-B01-BAS2-1010,Submittal for Stairs Conc. Dim.  & RFT DWGs As-Built Drawing (B01) (Bas 02),The Big - P.01 - UP-24-MAY-26.HO.1.S.P02.B01.SUB.2ndB,03-Feb-26,23-Feb-26,02-Jul-26,25-Jul-26,,,18,206,0,No,No,CON-B01-BAS02-1100,"AB-APP-B01-BAS2-1010, AB-APP-B01-BAS2-1010",0.0,0,0.0
The Big -P.01-UP-20-April-26,AB-SUB-B01-BAS2-1020,Submittal for Ramps Conc. Dim.  & RFT DWGs As-Built Drawing (B01) (Bas 02),The Big - P.01 - UP-24-MAY-26.HO.1.S.P02.B01.SUB.2ndB,05-Feb-26,25-Feb-26,05-Jul-26,27-Jul-26,,,18,204,0,No,No,CON-B01-BAS02-1110,"AB-APP-B01-BAS2-1020, AB-APP-B01-BAS2-1020",0.0,0,0.0
The Big -P.01-UP-20-April-26,AB-SUB-B01-SOG-1000,Submittal for S.O.G Conc. Dim. DWGs As-Built Drawing (B01) (Sog),The Big - P.01 - UP-24-MAY-26.HO.1.S.P02.B01.SUB.2ndB.SOG,25-May-26,18-Jun-26,22-Oct-26,11-Nov-26,,,18,113,0,No,No,CON-B01-SOG-1040,"AB-APP-B01-SOG-1000, AB-APP-B01-SOG-1000",0.0,0,0.0
The Big -P.01-UP-20-April-26,AB-SUB-B01-SOG-1010,Submittal for S.O.G RFT DWGs As-Built Drawing (B01) (Sog),The Big - P.01 - UP-24-MAY-26.HO.1.S.P02.B01.SUB.2ndB.SOG,03-Jun-26,23-Jun-26,27-Oct-26,16-Nov-26,,,18,109,0,No,No,CON-B01-SOG-1050,"AB-APP-B01-SOG-1010, AB-APP-B01-SOG-1010",0.0,0,0.0
The Big -P.01-UP-20-April-26,AB-SUB-B01-BAS1-1000,Submittal for Col. & Walls Conc. Dim.  & RFT DWGs As-Built Drawing (B01) (Bas 01),The Big - P.01 - UP-24-MAY-26.HO.1.S.P02.B01.SUB.1stB,01-Mar-26,25-Mar-26,30-Jul-26,20-Aug-26,,,18,183,0,No,No,CON-B01-BAS01-1030,"AB-APP-B01-BAS1-1000, AB-APP-B01-BAS1-1000",0.0,0,0.0
The Big -P.01-UP-20-April-26,AB-SUB-B01-BAS1-1020,Submittal for Slabs Conc. Dim.  & RFT DWGs As-Built Drawing (B01) (Bas 01),The Big - P.01 - UP-24-MAY-26.HO.1.S.P02.B01.SUB.1stB,22-Mar-26,11-Apr-26,16-Aug-26,07-Sep-26,,,18,169,0,No,No,CON-B01-BAS01-1110,"AB-APP-B01-BAS1-1020, AB-APP-B01-BAS1-1020",0.0,0,0.0
The Big -P.01-UP-20-April-26,AB-SUB-B01-BAS1-1030,Submittal for Beams Conc. Dim.  & RFT DWGs As-Built Drawing (B01) (Bas 01),The Big - P.01 - UP-24-MAY-26.HO.1.S.P02.B01.SUB.1stB,22-Mar-26,11-Apr-26,16-Aug-26,07-Sep-26,,,18,169,0,No,No,CON-B01-BAS01-1110,"AB-APP-B01-BAS1-1030, AB-APP-B01-BAS1-1030",0.0,0,0.0
The Big -P.01-UP-20-April-26,AB-SUB-B01-BAS1-1010,Submittal for Stairs Conc. Dim.  & RFT DWGs As-Built Drawing (B01) (Bas 01),The Big - P.01 - UP-24-MAY-26.HO.1.S.P02.B01.SUB.1stB,21-Mar-26,09-Apr-26,15-Aug-26,06-Sep-26,,,18,170,0,No,No,CON-B01-BAS01-1100,"AB-APP-B01-BAS1-1010, AB-APP-B01-BAS1-1010",0.0,0,0.0
The Big -P.01-UP-20-April-26,AB-SUB-B01-BAS1-1040,Submittal for Ramps Conc. Dim.  & RFT DWGs As-Built Drawing (B01) (Bas 01),The Big - P.01 - UP-24-MAY-26.HO.1.S.P02.B01.SUB.1stB,23-Mar-26,12-Apr-26,17-Aug-26,08-Sep-26,,,18,168,0,No,No,CON-B01-BAS01-1130,"AB-APP-B01-BAS1-1040, AB-APP-B01-BAS1-1040",0.0,0,0.0
The Big -P.01-UP-20-April-26,AB-SUB-B01-GR-1000,Submittal for Col. & Walls Conc. Dim.  & RFT DWGs As-Built Drawing (B01),The Big - P.01 - UP-24-MAY-26.HO.1.S.P02.B01.SUP.GF,07-Apr-26,28-Apr-26,02-Sep-26,23-Sep-26,,,18,155,0,No,No,CON-B01-GR-1030,"AB-APP-B01-GR-1000, AB-APP-B01-GR-1000",0.0,0,0.0
The Big -P.01-UP-20-April-26,AB-SUB-B01-GR-1020,Submittal for Slabs Conc. Dim.  & RFT DWGs As-Built Drawing (B01),The Big - P.01 - UP-24-MAY-26.HO.1.S.P02.B01.SUP.GF,29-Apr-26,19-May-26,23-Sep-26,15-Oct-26,,,18,137,0,No,No,CON-B01-GR-1090,"AB-APP-B01-GR-1020, AB-APP-B01-GR-1020",0.0,0,0.0
The Big -P.01-UP-20-April-26,AB-SUB-B01-GR-1030,Submittal for Beams Conc. Dim.  & RFT DWGs As-Built Drawing (B01),The Big - P.01 - UP-24-MAY-26.HO.1.S.P02.B01.SUP.GF,29-Apr-26,19-May-26,23-Sep-26,15-Oct-26,,,18,137,0,No,No,CON-B01-GR-1090,"AB-APP-B01-GR-1030, AB-APP-B01-GR-1030",0.0,0,0.0
The Big -P.01-UP-20-April-26,AB-SUB-B01-GR-1010,Submittal for Stairs Conc. Dim.  & RFT DWGs As-Built Drawing (B01),The Big - P.01 - UP-24-MAY-26.HO.1.S.P02.B01.SUP.GF,25-Apr-26,14-May-26,19-Sep-26,11-Oct-26,,,18,141,0,No,No,CON-B01-GR-1080,"AB-APP-B01-GR-1010, AB-APP-B01-GR-1010",0.0,0,0.0
The Big -P.01-UP-20-April-26,AB-SUB-B01-1ST-1000,Submittal for Col. & Walls Conc. Dim.  & RFT DWGs As-Built Drawing (B01) (1st),The Big - P.01 - UP-24-MAY-26.HO.1.S.P02.B01.SUP.1stF,17-May-26,10-Jun-26,13-Oct-26,03-Nov-26,,,18,121,0,No,No,CON-B01-1ST-1030,"AB-APP-B01-1ST-1000, AB-APP-B01-1ST-1000",0.0,0,0.0
The Big -P.01-UP-20-April-26,AB-SUB-B01-1ST-1010,Submittal for Slabs Conc. Dim.  & RFT DWGs As-Built Drawing (B01) (1st),The Big - P.01 - UP-24-MAY-26.HO.1.S.P02.B01.SUP.1stF,13-Jun-26,04-Jul-26,04-Nov-26,25-Nov-26,,,18,102,0,No,No,CON-B01-1ST-1060,"AB-APP-B01-1ST-1010, AB-APP-B01-1ST-1010",0.0,0,0.0
The Big -P.01-UP-20-April-26,AB-SUB-B01-1ST-1020,Submittal for Beams Conc. Dim.  & RFT DWGs As-Built Drawing (B01) (1st),The Big - P.01 - UP-24-MAY-26.HO.1.S.P02.B01.SUP.1stF,13-Jun-26,04-Jul-26,04-Nov-26,25-Nov-26,,,18,102,0,No,No,CON-B01-1ST-1060,"AB-APP-B01-1ST-1020, AB-APP-B01-1ST-1020",0.0,0,0.0
The Big -P.01-UP-20-April-26,AB-SUB-B01-1ST-1030,Submittal for Stairs Conc. Dim.  & RFT DWGs As-Built Drawing (B01) (1st),The Big - P.01 - UP-24-MAY-26.HO.1.S.P02.B01.SUP.1stF,13-Jun-26,04-Jul-26,04-Nov-26,25-Nov-26,,,18,102,0,No,No,CON-B01-1ST-1060,"AB-APP-B01-1ST-1030, AB-APP-B01-1ST-1030",0.0,0,0.0
The Big -P.01-UP-20-April-26,AB-SUB-B01-2ND-1000,Submittal for Col. & Walls Conc. Dim.  & RFT DWGs As-Built Drawing (B01) (2nd),The Big - P.01 - UP-24-MAY-26.HO.1.S.P02.B01.SUP.2ndF,01-Jul-26,21-Jul-26,22-Nov-26,13-Dec-26,,,18,87,0,No,No,CON-B01-2ND-1030,"AB-APP-B01-2ND-1000, AB-APP-B01-2ND-1000",0.0,0,0.0
The Big -P.01-UP-20-April-26,AB-SUB-B01-2ND-1010,Submittal for Slabs Conc. Dim.  & RFT DWGs As-Built Drawing (B01) (2nd),The Big - P.01 - UP-24-MAY-26.HO.1.S.P02.B01.SUP.2ndF,19-Jul-26,09-Aug-26,09-Dec-26,30-Dec-26,,,18,72,0,No,No,CON-B01-2ND-1060,"AB-APP-B01-2ND-1010, AB-APP-B01-2ND-1010",0.0,0,0.0
The Big -P.01-UP-20-April-26,AB-SUB-B01-2ND-1020,Submittal for Beams Conc. Dim.  & RFT DWGs As-Built Drawing (B01) (2nd),The Big - P.01 - UP-24-MAY-26.HO.1.S.P02.B01.SUP.2ndF,19-Jul-26,09-Aug-26,09-Dec-26,30-Dec-26,,,18,72,0,No,No,CON-B01-2ND-1060,"AB-APP-B01-2ND-1020, AB-APP-B01-2ND-1020",0.0,0,0.0
The Big -P.01-UP-20-April-26,AB-SUB-B01-2ND-1030,Submittal for Stairs Conc. Dim.  & RFT DWGs As-Built Drawing (B01) (2nd),The Big - P.01 - UP-24-MAY-26.HO.1.S.P02.B01.SUP.2ndF,19-Jul-26,09-Aug-26,09-Dec-26,30-Dec-26,,,18,72,0,No,No,CON-B01-2ND-1060,"AB-APP-B01-2ND-1030, AB-APP-B01-2ND-1030",0.0,0,0.0
The Big -P.01-UP-20-April-26,AB-SUB-B01-3RD-1000,Submittal for Col. & Walls Conc. Dim.  & RFT DWGs As-Built Drawing (B01) (3rd),The Big - P.01 - UP-24-MAY-26.HO.1.S.P02.B01.SUP.3rdF,08-Aug-26,29-Aug-26,28-Dec-26,19-Jan-27,,,18,56,0,No,No,CON-B01-3RD-1030,"AB-APP-B01-3RD-1000, AB-APP-B01-3RD-1000",0.0,0,0.0
The Big -P.01-UP-20-April-26,AB-SUB-B01-3RD-1010,Submittal for Slabs Conc. Dim.  & RFT DWGs As-Built Drawing (B01) (3rd),The Big - P.01 - UP-24-MAY-26.HO.1.S.P02.B01.SUP.3rdF,29-Aug-26,17-Sep-26,18-Jan-27,09-Feb-27,,,18,39,0,No,No,CON-B01-3RD-1060,"AB-APP-B01-3RD-1010, AB-APP-B01-3RD-1010",0.0,0,0.0
The Big -P.01-UP-20-April-26,AB-SUB-B01-3RD-1020,Submittal for Beams Conc. Dim.  & RFT DWGs As-Built Drawing (B01) (3rd),The Big - P.01 - UP-24-MAY-26.HO.1.S.P02.B01.SUP.3rdF,29-Aug-26,17-Sep-26,18-Jan-27,09-Feb-27,,,18,39,0,No,No,CON-B01-3RD-1060,"AB-APP-B01-3RD-1020, AB-APP-B01-3RD-1020",0.0,0,0.0
The Big -P.01-UP-20-April-26,AB-SUB-B01-3RD-1030,Submittal for Stairs Conc. Dim.  & RFT DWGs As-Built Drawing (B01) (3rd),The Big - P.01 - UP-24-MAY-26.HO.1.S.P02.B01.SUP.3rdF,29-Aug-26,17-Sep-26,18-Jan-27,09-Feb-27,,,18,39,0,No,No,CON-B01-3RD-1060,"AB-APP-B01-3RD-1030, AB-APP-B01-3RD-1030",0.0,0,0.0
The Big -P.01-UP-20-April-26,AB-SUB-B01-4TH-1000,Submittal for Col. & Walls Conc. Dim.  & RFT DWGs As-Built Drawing (B01) (4th),The Big - P.01 - UP-24-MAY-26.HO.1.S.P02.B01.SUP.4thF,16-Sep-26,07-Oct-26,07-Feb-27,28-Feb-27,,,18,23,0,No,No,CON-B01-4TH-1030,"AB-APP-B01-4TH-1000, AB-APP-B01-4TH-1000",0.0,0,0.0
The Big -P.01-UP-20-April-26,AB-SUB-B01-4TH-1010,Submittal for Slabs Conc. Dim.  & RFT DWGs As-Built Drawing (B01) (4th),The Big - P.01 - UP-24-MAY-26.HO.1.S.P02.B01.SUP.4thF,10-Oct-26,29-Oct-26,01-Mar-27,25-Mar-27,,,18,4,0,No,No,CON-B01-4TH-1060,"AB-APP-B01-4TH-1010, AB-APP-B01-4TH-1010",0.0,0,0.0
The Big -P.01-UP-20-April-26,AB-SUB-B01-4TH-1020,Submittal for Beams Conc. Dim.  & RFT DWGs As-Built Drawing (B01) (4th),The Big - P.01 - UP-24-MAY-26.HO.1.S.P02.B01.SUP.4thF,10-Oct-26,29-Oct-26,01-Mar-27,25-Mar-27,,,18,4,0,No,No,CON-B01-4TH-1060,"AB-APP-B01-4TH-1020, AB-APP-B01-4TH-1020",0.0,0,0.0
The Big -P.01-UP-20-April-26,AB-SUB-B01-4TH-1030,Submittal for Stairs Conc. Dim.  & RFT DWGs As-Built Drawing (B01) (4th),The Big - P.01 - UP-24-MAY-26.HO.1.S.P02.B01.SUP.4thF,10-Oct-26,29-Oct-26,01-Mar-27,25-Mar-27,,,18,4,0,No,No,CON-B01-4TH-1060,"AB-APP-B01-4TH-1030, AB-APP-B01-4TH-1030",0.0,0,0.0
The Big -P.01-UP-20-April-26,AB-SUB-B01-5TH-1000,Submittal for Col. & Walls Conc. Dim.  & RFT DWGs As-Built Drawing (B01) (5th),The Big - P.01 - UP-24-MAY-26.HO.1.S.P02.B01.SUP.5thF,27-Oct-26,16-Nov-26,22-Mar-27,12-Apr-27,,,18,-11,0,Yes,No,CON-B01-5TH-1030,"AB-APP-B01-5TH-1000, AB-APP-B01-5TH-1000",0.0,0,0.0
The Big -P.01-UP-20-April-26,AB-SUB-B01-5TH-1010,Submittal for Slabs Conc. Dim.  & RFT DWGs As-Built Drawing (B01) (5th),The Big - P.01 - UP-24-MAY-26.HO.1.S.P02.B01.SUP.5thF,14-Nov-26,03-Dec-26,08-Apr-27,29-Apr-27,,,18,-26,0,Yes,No,CON-B01-5TH-1060,"AB-APP-B01-5TH-1010, AB-APP-B01-5TH-1010",0.0,0,0.0
The Big -P.01-UP-20-April-26,AB-SUB-B01-5TH-1020,Submittal for Beams Conc. Dim.  & RFT DWGs As-Built Drawing (B01) (5th),The Big - P.01 - UP-24-MAY-26.HO.1.S.P02.B01.SUP.5thF,14-Nov-26,03-Dec-26,08-Apr-27,29-Apr-27,,,18,-26,0,Yes,No,CON-B01-5TH-1060,"AB-APP-B01-5TH-1020, AB-APP-B01-5TH-1020",0.0,0,0.0
The Big -P.01-UP-20-April-26,AB-SUB-B01-5TH-1030,Submittal for Stairs Conc. Dim.  & RFT DWGs As-Built Drawing (B01) (5th),The Big - P.01 - UP-24-MAY-26.HO.1.S.P02.B01.SUP.5thF,14-Nov-26,03-Dec-26,08-Apr-27,29-Apr-27,,,18,-26,0,Yes,No,CON-B01-5TH-1060,"AB-APP-B01-5TH-1030, AB-APP-B01-5TH-1030",0.0,0,0.0
The Big -P.01-UP-20-April-26,AB-SUB-B01-6TH-1000,Submittal for Col. & Walls Conc. Dim.  & RFT DWGs As-Built Drawing (B01) (6th),The Big - P.01 - UP-24-MAY-26.HO.1.S.P02.B01.SUP.6thF,01-Dec-26,21-Dec-26,26-Apr-27,17-May-27,,,18,-41,0,Yes,No,CON-B01-6TH-1030,"AB-APP-B01-6TH-1000, AB-APP-B01-6TH-1000",0.0,0,0.0
The Big -P.01-UP-20-April-26,AB-SUB-B01-6TH-1010,Submittal for Slabs Conc. Dim.  & RFT DWGs As-Built Drawing (B01) (6th),The Big - P.01 - UP-24-MAY-26.HO.1.S.P02.B01.SUP.6thF,19-Dec-26,09-Jan-27,13-May-27,03-Jun-27,,,18,-56,0,Yes,No,CON-B01-6TH-1060,"AB-APP-B01-6TH-1010, AB-APP-B01-6TH-1010",0.0,0,0.0
The Big -P.01-UP-20-April-26,AB-SUB-B01-6TH-1020,Submittal for Beams Conc. Dim.  & RFT DWGs As-Built Drawing (B01) (6th),The Big - P.01 - UP-24-MAY-26.HO.1.S.P02.B01.SUP.6thF,19-Dec-26,09-Jan-27,13-May-27,03-Jun-27,,,18,-56,0,Yes,No,CON-B01-6TH-1060,"AB-APP-B01-6TH-1020, AB-APP-B01-6TH-1020",0.0,0,0.0
The Big -P.01-UP-20-April-26,AB-SUB-B01-6TH-1030,Submittal for Stairs Conc. Dim.  & RFT DWGs As-Built Drawing (B01) (6th),The Big - P.01 - UP-24-MAY-26.HO.1.S.P02.B01.SUP.6thF,19-Dec-26,09-Jan-27,13-May-27,03-Jun-27,,,18,-56,0,Yes,No,CON-B01-6TH-1060,"AB-APP-B01-6TH-1030, AB-APP-B01-6TH-1030",0.0,0,0.0
The Big -P.01-UP-20-April-26,AB-SUB-B01-7TH-1000,Submittal for Col. & Walls Conc. Dim.  & RFT DWGs As-Built Drawing (B01) (7th),The Big - P.01 - UP-24-MAY-26.HO.1.S.P02.B01.SUP.7thF,03-Jan-27,24-Jan-27,29-May-27,19-Jun-27,,,18,-69,0,Yes,No,CON-B01-7TH-1030,"AB-APP-B01-7TH-1000, AB-APP-B01-7TH-1000",0.0,0,0.0
The Big -P.01-UP-20-April-26,AB-SUB-B01-7TH-1010,Submittal for Slabs Conc. Dim.  & RFT DWGs As-Built Drawing (B01) (7th),The Big - P.01 - UP-24-MAY-26.HO.1.S.P02.B01.SUP.7thF,20-Jan-27,10-Feb-27,14-Jun-27,05-Jul-27,,,18,-83,0,Yes,No,CON-B01-7TH-1060,"AB-APP-B01-7TH-1010, AB-APP-B01-7TH-1010",0.0,0,0.0
The Big -P.01-UP-20-April-26,AB-SUB-B01-7TH-1020,Submittal for Beams Conc. Dim.  & RFT DWGs As-Built Drawing (B01) (7th),The Big - P.01 - UP-24-MAY-26.HO.1.S.P02.B01.SUP.7thF,20-Jan-27,10-Feb-27,14-Jun-27,05-Jul-27,,,18,-83,0,Yes,No,CON-B01-7TH-1060,"AB-APP-B01-7TH-1020, AB-APP-B01-7TH-1020",0.0,0,0.0
The Big -P.01-UP-20-April-26,AB-SUB-B01-7TH-1030,Submittal for Stairs Conc. Dim.  & RFT DWGs As-Built Drawing (B01) (7th),The Big - P.01 - UP-24-MAY-26.HO.1.S.P02.B01.SUP.7thF,20-Jan-27,10-Feb-27,14-Jun-27,05-Jul-27,,,18,-83,0,Yes,No,CON-B01-7TH-1060,"AB-APP-B01-7TH-1030, AB-APP-B01-7TH-1030",0.0,0,0.0
The Big -P.01-UP-20-April-26,AB-SUB-B01-8TH-1000,Submittal for Col. & Walls Conc. Dim.  & RFT DWGs As-Built Drawing (B01) (8th),The Big - P.01 - UP-24-MAY-26.HO.1.S.P02.B01.SUP.8thF,04-Feb-27,24-Feb-27,28-Jun-27,19-Jul-27,,,18,-95,0,Yes,No,CON-B01-8TH-1030,"AB-APP-B01-8TH-1000, AB-APP-B01-8TH-1000",0.0,0,0.0
The Big -P.01-UP-20-April-26,AB-SUB-B01-8TH-1010,Submittal for Slabs Conc. Dim.  & RFT DWGs As-Built Drawing (B01) (8th),The Big - P.01 - UP-24-MAY-26.HO.1.S.P02.B01.SUP.8thF,18-Feb-27,14-Mar-27,12-Jul-27,02-Aug-27,,,18,-107,0,Yes,No,CON-B01-8TH-1060,"AB-APP-B01-8TH-1010, AB-APP-B01-8TH-1010",0.0,0,0.0
The Big -P.01-UP-20-April-26,AB-SUB-B01-8TH-1020,Submittal for Beams Conc. Dim.  & RFT DWGs As-Built Drawing (B01) (8th),The Big - P.01 - UP-24-MAY-26.HO.1.S.P02.B01.SUP.8thF,18-Feb-27,14-Mar-27,12-Jul-27,02-Aug-27,,,18,-107,0,Yes,No,CON-B01-8TH-1060,"AB-APP-B01-8TH-1020, AB-APP-B01-8TH-1020",0.0,0,0.0
The Big -P.01-UP-20-April-26,AB-SUB-B01-8TH-1030,Submittal for Stairs Conc. Dim.  & RFT DWGs As-Built Drawing (B01) (8th),The Big - P.01 - UP-24-MAY-26.HO.1.S.P02.B01.SUP.8thF,18-Feb-27,14-Mar-27,12-Jul-27,02-Aug-27,,,18,-107,0,Yes,No,CON-B01-8TH-1060,"AB-APP-B01-8TH-1030, AB-APP-B01-8TH-1030",0.0,0,0.0
The Big -P.01-UP-20-April-26,AB-SUB-B01-RF-1000,Submittal for Col. & Walls Conc. Dim.  & RFT DWGs As-Built Drawing (B01) (RF),The Big - P.01 - UP-24-MAY-26.HO.1.S.P02.B01.SUP.RF,27-Feb-27,22-Mar-27,21-Jul-27,11-Aug-27,,,18,-115,0,Yes,No,CON-B01-9TH-1030,"AB-APP-B01-RF-1000, AB-APP-B01-RF-1000",0.0,0,0.0
The Big -P.01-UP-20-April-26,AB-SUB-B01-RF-1010,Submittal for Slabs Conc. Dim.  & RFT DWGs As-Built Drawing (B01) (RF),The Big - P.01 - UP-24-MAY-26.HO.1.S.P02.B01.SUP.RF,06-Mar-27,29-Mar-27,27-Jul-27,17-Aug-27,,,18,-120,0,Yes,No,CON-B01-9TH-1060,"AB-APP-B01-RF-1010, AB-APP-B01-RF-1010",0.0,0,0.0
The Big -P.01-UP-20-April-26,AB-SUB-B01-RF-1020,Submittal for Beams Conc. Dim.  & RFT DWGs As-Built Drawing (B01) (RF),The Big - P.01 - UP-24-MAY-26.HO.1.S.P02.B01.SUP.RF,06-Mar-27,29-Mar-27,27-Jul-27,17-Aug-27,,,18,-120,0,Yes,No,CON-B01-9TH-1060,"AB-APP-B01-RF-1020, AB-APP-B01-RF-1020",0.0,0,0.0
The Big -P.01-UP-20-April-26,AB-SUB-B02-REP-1000,Submittal for General Replacement Plan & Typical Sections for Replacement / Backfilling DWGs As-Built Drawing (B02),The Big - P.01 - UP-24-MAY-26.HO.1.S.P02.B02.SUB.1,09-Dec-25,29-Dec-25,17-May-26,10-Jun-26,,,18,241,0,No,No,"CON-EW-B02-1000, CON-EW-B02-1010","AB-APP-B02-REP-1000, AB-APP-B02-REP-1000",0.0,0,0.0
The Big -P.01-UP-20-April-26,AB-SUB-B02-FOOT-1000,Submittal for PC Raft Conc. Dim. DWGs As-Built Drawing (B02) (footing),The Big - P.01 - UP-24-MAY-26.HO.1.S.P02.B02.SUB.F,11-Dec-25,31-Dec-25,17-May-26,10-Jun-26,,,18,241,0,No,No,"CON-B02-FOOT-1000, CON-B02-FOOT-1010","AB-APP-B02-FOOT-1000, AB-APP-B02-FOOT-1000",0.0,0,0.0
The Big -P.01-UP-20-April-26,AB-SUB-B02-FOOT-1010,Submittal for RC Raft & Footings Conc. Dim. DWGs As-Built Drawing  (B02) (footing),The Big - P.01 - UP-24-MAY-26.HO.1.S.P02.B02.SUB.F,29-Dec-25,19-Jan-26,17-May-26,10-Jun-26,,,18,241,0,No,No,CON-B02-FOOT-1040,"AB-APP-B02-FOOT-1010, AB-APP-B02-FOOT-1010",0.0,0,0.0
The Big -P.01-UP-20-April-26,AB-SUB-B02-FOOT-1020,Submittal for RC Raft & Footings RFT DWGs As-Built Drawing (B02) (footing),The Big - P.01 - UP-24-MAY-26.HO.1.S.P02.B02.SUB.F,03-Jan-26,24-Jan-26,17-May-26,10-Jun-26,,,18,241,0,No,No,"CON-B02-FOOT-1050, CON-B02-FOOT-1090","AB-APP-B02-FOOT-1020, AB-APP-B02-FOOT-1020",0.0,0,0.0
The Big -P.01-UP-20-April-26,AB-SUB-B02-FOOT-1030,Submittal for  Waterproofing Layout Plan DWGs As-Built Drawing (B02),The Big - P.01 - UP-24-MAY-26.HO.1.S.P02.B02.SUB.F,10-Jan-26,31-Jan-26,08-Jul-26,29-Jul-26,,,18,201,0,No,No,CON-B02-FOOT-1110,"AB-APP-B02-FOOT-1030, AB-APP-B02-FOOT-1030",0.0,0,0.0
The Big -P.01-UP-20-April-26,AB-SUB-B02-BAS2-1000,Submittal for Col. & Walls Conc. Dim.& RFT DWGs As-Built Drawing (B02) (Bas 02),The Big - P.01 - UP-24-MAY-26.HO.1.S.P02.B02.SUB.2ndB,27-Jan-26,16-Feb-26,17-May-26,10-Jun-26,,,18,241,0,No,No,CON-B02-BAS02-1030,"AB-APP-B02-BAS2-1000, AB-APP-B02-BAS2-1000",0.0,0,0.0
The Big -P.01-UP-20-April-26,AB-SUB-B02-BAS2-1020,Submittal for Slabs Conc. Dim.& RFT DWGs As-Built Drawing (B02) (Bas 02),The Big - P.01 - UP-24-MAY-26.HO.1.S.P02.B02.SUB.2ndB,12-Feb-26,04-Mar-26,04-Jun-26,24-Jun-26,,,18,229,0,No,No,CON-B02-BAS02-1100,"AB-APP-B02-BAS2-1020, AB-APP-B02-BAS2-1020",0.0,0,0.0
The Big -P.01-UP-20-April-26,AB-SUB-B02-BAS2-1030,Submittal for Beams Conc. Dim.& RFT DWGs As-Built Drawing (B02) (Bas 02),The Big - P.01 - UP-24-MAY-26.HO.1.S.P02.B02.SUB.2ndB,12-Feb-26,04-Mar-26,04-Jun-26,24-Jun-26,,,18,229,0,No,No,CON-B02-BAS02-1100,"AB-APP-B02-BAS2-1030, AB-APP-B02-BAS2-1030",0.0,0,0.0
The Big -P.01-UP-20-April-26,AB-SUB-B02-BAS2-1010,Submittal for Stairs Conc. Dim.& RFT DWGs As-Built Drawing (B02) (Bas 02),The Big - P.01 - UP-24-MAY-26.HO.1.S.P02.B02.SUB.2ndB,08-Feb-26,28-Feb-26,26-May-26,20-Jun-26,,,18,233,0,No,No,CON-B02-BAS02-1070,"AB-APP-B02-BAS2-1010, AB-APP-B02-BAS2-1010",0.0,0,0.0
The Big -P.01-UP-20-April-26,AB-SUB-B02-SOG-1000,Submittal for S.O.G Conc. Dim. DWGs As-Built Drawing (B02) (Sog),The Big - P.01 - UP-24-MAY-26.HO.1.S.P02.B02.SUB.2ndB.2,21-Jun-26,12-Jul-26,14-Nov-26,03-Dec-26,,,18,94,0,No,No,"CON-B02-SOG-1040, CON-B02-SOG-1050","AB-APP-B02-SOG-1000, AB-APP-B02-SOG-1000",0.0,0,0.0
The Big -P.01-UP-20-April-26,AB-SUB-B02-SOG-1010,Submittal for S.O.G RFT DWGs As-Built Drawing (B02) (Sog),The Big - P.01 - UP-24-MAY-26.HO.1.S.P02.B02.SUB.2ndB.2,21-Jun-26,12-Jul-26,14-Nov-26,03-Dec-26,,,18,94,0,No,No,"CON-B02-SOG-1050, CON-B02-SOG-1040","AB-APP-B02-SOG-1010, AB-APP-B02-SOG-1010",0.0,0,0.0
The Big -P.01-UP-20-April-26,AB-SUB-B02-BAS1-1000,Submittal for Col. & Walls Conc. Dim.  & RFT DWGs As-Built Drawing (B02) (Bas 01),The Big - P.01 - UP-24-MAY-26.HO.1.S.P02.B02.SUB.1stB,05-Mar-26,30-Mar-26,25-Jun-26,16-Jul-26,,,18,211,0,No,No,CON-B02-BAS01-1030,"AB-APP-B02-BAS1-1000, AB-APP-B02-BAS1-1000",0.0,0,0.0
The Big -P.01-UP-20-April-26,AB-SUB-B02-BAS1-1020,Submittal for Slabs Conc. Dim.  & RFT DWGs As-Built Drawing (B02) (Bas 01),The Big - P.01 - UP-24-MAY-26.HO.1.S.P02.B02.SUB.1stB,26-Mar-26,16-Apr-26,13-Jul-26,03-Aug-26,,,18,197,0,No,No,CON-B02-BAS01-1090,"AB-APP-B02-BAS1-1020, AB-APP-B02-BAS1-1020",0.0,0,0.0
The Big -P.01-UP-20-April-26,AB-SUB-B02-BAS1-1030,Submittal for Beams Conc. Dim.  & RFT DWGs As-Built Drawing (B02) (Bas 01),The Big - P.01 - UP-24-MAY-26.HO.1.S.P02.B02.SUB.1stB,26-Mar-26,16-Apr-26,13-Jul-26,03-Aug-26,,,18,197,0,No,No,CON-B02-BAS01-1090,"AB-APP-B02-BAS1-1030, AB-APP-B02-BAS1-1030",0.0,0,0.0
The Big -P.01-UP-20-April-26,AB-SUB-B02-BAS1-1010,Submittal for Stairs Conc. Dim.  & RFT DWGs As-Built Drawing (B02) (Bas 01),The Big - P.01 - UP-24-MAY-26.HO.1.S.P02.B02.SUB.1stB,24-Mar-26,14-Apr-26,11-Jul-26,01-Aug-26,,,18,199,0,No,No,CON-B02-BAS01-1080,"AB-APP-B02-BAS1-1010, AB-APP-B02-BAS1-1010",0.0,0,0.0
The Big -P.01-UP-20-April-26,AB-SUB-B02-GR-1000,Submittal for Col. & Walls Conc. Dim.  & RFT DWGs As-Built Drawing (B02) (GF),The Big - P.01 - UP-24-MAY-26.HO.1.S.P02.B02.SUP.GF,19-Apr-26,09-May-26,05-Aug-26,25-Aug-26,,,18,178,0,No,No,CON-B02-GR-1030,"AB-APP-B02-GR-1000, AB-APP-B02-GR-1000",0.0,0,0.0
The Big -P.01-UP-20-April-26,AB-SUB-B02-GR-1020,Submittal for Slabs Conc. Dim.  & RFT DWGs As-Built Drawing (B02) (GF),The Big - P.01 - UP-24-MAY-26.HO.1.S.P02.B02.SUP.GF,12-May-26,06-Jun-26,30-Aug-26,19-Sep-26,,,18,158,0,No,No,CON-B02-GR-1100,"AB-APP-B02-GR-1020, AB-APP-B02-GR-1020",0.0,0,0.0
The Big -P.01-UP-20-April-26,AB-SUB-B02-GR-1030,Submittal for Beams Conc. Dim.  & RFT DWGs As-Built Drawing (B02) (GF),The Big - P.01 - UP-24-MAY-26.HO.1.S.P02.B02.SUP.GF,12-May-26,06-Jun-26,30-Aug-26,19-Sep-26,,,18,158,0,No,No,CON-B02-GR-1100,"AB-APP-B02-GR-1030, AB-APP-B02-GR-1030",0.0,0,0.0
The Big -P.01-UP-20-April-26,AB-SUB-B02-GR-1010,Submittal for Stairs Conc. Dim.  & RFT DWGs As-Built Drawing (B02) (GF),The Big - P.01 - UP-24-MAY-26.HO.1.S.P02.B02.SUP.GF,04-May-26,24-May-26,20-Aug-26,10-Sep-26,,,18,165,0,No,No,CON-B02-GR-1080,"AB-APP-B02-GR-1010, AB-APP-B02-GR-1010",0.0,0,0.0
The Big -P.01-UP-20-April-26,AB-SUB-B02-1ST-1000,Submittal for Col. & Walls Conc. Dim.  & RFT DWGs As-Built Drawing (B02) (1st),The Big - P.01 - UP-24-MAY-26.HO.1.S.P02.B02.SUP.1stF,22-Jun-26,13-Jul-26,05-Oct-26,26-Oct-26,,,18,127,0,No,No,CON-B02-1ST-1030,"AB-APP-B02-1ST-1000, AB-APP-B02-1ST-1000",0.0,0,0.0
The Big -P.01-UP-20-April-26,AB-SUB-B02-1ST-1010,Submittal for Slabs Conc. Dim.  & RFT DWGs As-Built Drawing (B02) (1st),The Big - P.01 - UP-24-MAY-26.HO.1.S.P02.B02.SUP.1stF,15-Jul-26,05-Aug-26,28-Oct-26,17-Nov-26,,,18,108,0,No,No,CON-B02-1ST-1060,"AB-APP-B02-1ST-1010, AB-APP-B02-1ST-1010",0.0,0,0.0
The Big -P.01-UP-20-April-26,AB-SUB-B02-1ST-1020,Submittal for Beams Conc. Dim.  & RFT DWGs As-Built Drawing (B02) (1st),The Big - P.01 - UP-24-MAY-26.HO.1.S.P02.B02.SUP.1stF,15-Jul-26,05-Aug-26,28-Oct-26,17-Nov-26,,,18,108,0,No,No,CON-B02-1ST-1060,"AB-APP-B02-1ST-1020, AB-APP-B02-1ST-1020",0.0,0,0.0
The Big -P.01-UP-20-April-26,AB-SUB-B02-1ST-1030,Submittal for Stairs Conc. Dim.  & RFT DWGs As-Built Drawing (B02) (1st),The Big - P.01 - UP-24-MAY-26.HO.1.S.P02.B02.SUP.1stF,15-Jul-26,05-Aug-26,28-Oct-26,17-Nov-26,,,18,108,0,No,No,CON-B02-1ST-1060,"AB-APP-B02-1ST-1030, AB-APP-B02-1ST-1030",0.0,0,0.0
The Big -P.01-UP-20-April-26,AB-SUB-B02-2ND-1000,Submittal for Col. & Walls Conc. Dim.  & RFT DWGs As-Built Drawing (B02) (2nd),The Big - P.01 - UP-24-MAY-26.HO.1.S.P02.B02.SUP.2ndF,19-Aug-26,09-Sep-26,02-Dec-26,22-Dec-26,,,18,78,0,No,No,CON-B02-2ND-1030,"AB-APP-B02-2ND-1000, AB-APP-B02-2ND-1000",0.0,0,0.0
The Big -P.01-UP-20-April-26,AB-SUB-B02-2ND-1010,Submittal for Slabs Conc. Dim.  & RFT DWGs As-Built Drawing (B02) (2nd),The Big - P.01 - UP-24-MAY-26.HO.1.S.P02.B02.SUP.2ndF,15-Sep-26,05-Oct-26,28-Dec-26,18-Jan-27,,,18,56,0,No,No,CON-B02-2ND-1060,"AB-APP-B02-2ND-1010, AB-APP-B02-2ND-1010",0.0,0,0.0
The Big -P.01-UP-20-April-26,AB-SUB-B02-2ND-1020,Submittal for Beams Conc. Dim.  & RFT DWGs As-Built Drawing (B02) (2nd),The Big - P.01 - UP-24-MAY-26.HO.1.S.P02.B02.SUP.2ndF,15-Sep-26,05-Oct-26,28-Dec-26,18-Jan-27,,,18,56,0,No,No,CON-B02-2ND-1060,"AB-APP-B02-2ND-1020, AB-APP-B02-2ND-1020",0.0,0,0.0
The Big -P.01-UP-20-April-26,AB-SUB-B02-2ND-1030,Submittal for Stairs Conc. Dim.  & RFT DWGs As-Built Drawing (B02) (2nd),The Big - P.01 - UP-24-MAY-26.HO.1.S.P02.B02.SUP.2ndF,15-Sep-26,05-Oct-26,28-Dec-26,18-Jan-27,,,18,56,0,No,No,CON-B02-2ND-1060,"AB-APP-B02-2ND-1030, AB-APP-B02-2ND-1030",0.0,0,0.0
The Big -P.01-UP-20-April-26,AB-SUB-B02-3RD-1000,Submittal for Col. & Walls Conc. Dim.  & RFT DWGs As-Built Drawing (B02) (3rd),The Big - P.01 - UP-24-MAY-26.HO.1.S.P02.B02.SUP.3rdF,21-Oct-26,10-Nov-26,02-Feb-27,22-Feb-27,,,18,27,0,No,No,CON-B02-3RD-1030,"AB-APP-B02-3RD-1000, AB-APP-B02-3RD-1000",0.0,0,0.0
The Big -P.01-UP-20-April-26,AB-SUB-B02-3RD-1010,Submittal for Slabs Conc. Dim.  & RFT DWGs As-Built Drawing (B02) (3rd),The Big - P.01 - UP-24-MAY-26.HO.1.S.P02.B02.SUP.3rdF,16-Nov-26,06-Dec-26,28-Feb-27,23-Mar-27,,,18,5,0,No,No,CON-B02-3RD-1060,"AB-APP-B02-3RD-1010, AB-APP-B02-3RD-1010",0.0,0,0.0
The Big -P.01-UP-20-April-26,AB-SUB-B02-3RD-1020,Submittal for Beams Conc. Dim.  & RFT DWGs As-Built Drawing (B02) (3rd),The Big - P.01 - UP-24-MAY-26.HO.1.S.P02.B02.SUP.3rdF,16-Nov-26,06-Dec-26,28-Feb-27,23-Mar-27,,,18,5,0,No,No,CON-B02-3RD-1060,"AB-APP-B02-3RD-1020, AB-APP-B02-3RD-1020",0.0,0,0.0
The Big -P.01-UP-20-April-26,AB-SUB-B02-3RD-1030,Submittal for Stairs Conc. Dim.  & RFT DWGs As-Built Drawing (B02) (3rd),The Big - P.01 - UP-24-MAY-26.HO.1.S.P02.B02.SUP.3rdF,16-Nov-26,06-Dec-26,28-Feb-27,23-Mar-27,,,18,5,0,No,No,CON-B02-3RD-1060,"AB-APP-B02-3RD-1030, AB-APP-B02-3RD-1030",0.0,0,0.0
The Big -P.01-UP-20-April-26,AB-SUB-B02-4TH-1000,Submittal for Col. & Walls Conc. Dim.  & RFT DWGs As-Built Drawing (B02) (4th),The Big - P.01 - UP-24-MAY-26.HO.1.S.P02.B02.SUP.4thF,21-Dec-26,11-Jan-27,04-Apr-27,24-Apr-27,,,18,-22,0,Yes,No,CON-B02-4TH-1030,"AB-APP-B02-4TH-1000, AB-APP-B02-4TH-1000",0.0,0,0.0
The Big -P.01-UP-20-April-26,AB-SUB-B02-4TH-1010,Submittal for Slabs Conc. Dim.  & RFT DWGs As-Built Drawing (B02) (4th),The Big - P.01 - UP-24-MAY-26.HO.1.S.P02.B02.SUP.4thF,16-Jan-27,06-Feb-27,28-Apr-27,18-May-27,,,18,-43,0,Yes,No,CON-B02-4TH-1060,"AB-APP-B02-4TH-1010, AB-APP-B02-4TH-1010",0.0,0,0.0
The Big -P.01-UP-20-April-26,AB-SUB-B02-4TH-1020,Submittal for Beams Conc. Dim.  & RFT DWGs As-Built Drawing (B02) (4th),The Big - P.01 - UP-24-MAY-26.HO.1.S.P02.B02.SUP.4thF,16-Jan-27,06-Feb-27,28-Apr-27,18-May-27,,,18,-43,0,Yes,No,CON-B02-4TH-1060,"AB-APP-B02-4TH-1020, AB-APP-B02-4TH-1020",0.0,0,0.0
The Big -P.01-UP-20-April-26,AB-SUB-B02-4TH-1030,Submittal for Stairs Conc. Dim.  & RFT DWGs As-Built Drawing (B02) (4th),The Big - P.01 - UP-24-MAY-26.HO.1.S.P02.B02.SUP.4thF,16-Jan-27,06-Feb-27,28-Apr-27,18-May-27,,,18,-43,0,Yes,No,CON-B02-4TH-1060,"AB-APP-B02-4TH-1030, AB-APP-B02-4TH-1030",0.0,0,0.0
The Big -P.01-UP-20-April-26,AB-SUB-B02-RF-1000,Submittal for Col. & Walls Conc. Dim.  & RFT DWGs As-Built Drawing (B02) (RF),The Big - P.01 - UP-24-MAY-26.HO.1.S.P02.B02.SUP.RF,09-Feb-27,01-Mar-27,23-May-27,12-Jun-27,,,18,-64,0,Yes,No,CON-B02-RF-1030,"AB-APP-B02-RF-1000, AB-APP-B02-RF-1000",0.0,0,0.0
The Big -P.01-UP-20-April-26,AB-SUB-B02-RF-1010,Submittal for Slabs Conc. Dim.  & RFT DWGs As-Built Drawing (B02) (RF),The Big - P.01 - UP-24-MAY-26.HO.1.S.P02.B02.SUP.RF,21-Feb-27,16-Mar-27,03-Jun-27,23-Jun-27,,,18,-74,0,Yes,No,CON-B02-RF-1060,"AB-APP-B02-RF-1010, AB-APP-B02-RF-1010",0.0,0,0.0
The Big -P.01-UP-20-April-26,AB-SUB-B02-RF-1020,Submittal for Beams Conc. Dim.  & RFT DWGs As-Built Drawing (B02) (RF),The Big - P.01 - UP-24-MAY-26.HO.1.S.P02.B02.SUP.RF,21-Feb-27,16-Mar-27,03-Jun-27,23-Jun-27,,,18,-74,0,Yes,No,CON-B02-RF-1060,"AB-APP-B02-RF-1020, AB-APP-B02-RF-1020",0.0,0,0.0
The Big -P.01-UP-20-April-26,AB-SUB-B03-REP-1000,Submittal for General Replacement Plan & Typical Sections for Replacement / Backfilling DWGs As-Built Drawing (B03),The Big - P.01 - UP-24-MAY-26.HO.1.S.P01.B03.SUB.1,25-Dec-25,15-Jan-26,17-May-26,10-Jun-26,,,18,241,0,No,No,"CON-EW-B03-1000, CON-EW-B03-1010","AB-APP-B03-REP-1000, AB-APP-B03-REP-1000",0.0,0,0.0
The Big -P.01-UP-20-April-26,AB-SUB-B03-FOOT-1000,Submittal for PC Raft Conc. Dim. DWGs As-Built Drawing (B03) (footing),The Big - P.01 - UP-24-MAY-26.HO.1.S.P01.B03.SUB.F,28-Dec-25,18-Jan-26,17-May-26,10-Jun-26,,,18,241,0,No,No,"CON-B03-FOOT-1000, CON-B03-FOOT-1010","AB-APP-B03-FOOT-1000, AB-APP-B03-FOOT-1000",0.0,0,0.0
The Big -P.01-UP-20-April-26,AB-SUB-B03-FOOT-1010,Submittal for RC Raft & Footings Conc. Dim. DWGs As-Built Drawing (B03) (footing),The Big - P.01 - UP-24-MAY-26.HO.1.S.P01.B03.SUB.F,17-Jan-26,07-Feb-26,17-May-26,10-Jun-26,,,18,241,0,No,No,CON-B03-FOOT-1040,"AB-APP-B03-FOOT-1010, AB-APP-B03-FOOT-1010",0.0,0,0.0
The Big -P.01-UP-20-April-26,AB-SUB-B03-FOOT-1020,Submittal for RC Raft & Footings RFT DWGs As-Built Drawing (B03) (footing),The Big - P.01 - UP-24-MAY-26.HO.1.S.P01.B03.SUB.F,19-Jan-26,09-Feb-26,17-May-26,10-Jun-26,,,18,241,0,No,No,"CON-B03-FOOT-1050, CON-B03-FOOT-1080","AB-APP-B03-FOOT-1020, AB-APP-B03-FOOT-1020",0.0,0,0.0
The Big -P.01-UP-20-April-26,AB-SUB-B03-FOOT-1030,Submittal for  Waterproofing Layout Plan DWGs As-Built Drawing (B03),The Big - P.01 - UP-24-MAY-26.HO.1.S.P01.B03.SUB.F,27-Jan-26,16-Feb-26,08-Jul-26,29-Jul-26,,,18,201,0,No,No,CON-B03-FOOT-1110,"AB-APP-B03-FOOT-1030, AB-APP-B03-FOOT-1030",0.0,0,0.0
The Big -P.01-UP-20-April-26,AB-SUB-B03-BAS2-1000,Submittal for Col. & Walls Conc. Dim.  & RFT DWGs As-Built Drawing (B03) (Bas 02),The Big - P.01 - UP-24-MAY-26.HO.1.S.P01.B03.SUB.2ndB,12-Feb-26,04-Mar-26,17-May-26,10-Jun-26,,,18,241,0,No,No,CON-B03-BAS02-1030,"AB-APP-B03-BAS2-1000, AB-APP-B03-BAS2-1000",0.0,0,0.0
The Big -P.01-UP-20-April-26,AB-SUB-B03-BAS2-1020,Submittal for Slabs Conc. Dim.  & RFT DWGs As-Built Drawing (B03) (Bas 02),The Big - P.01 - UP-24-MAY-26.HO.1.S.P01.B03.SUB.2ndB,01-Mar-26,25-Mar-26,16-Jun-26,07-Jul-26,,,18,219,0,No,No,CON-B03-BAS02-1100,"AB-APP-B03-BAS2-1020, AB-APP-B03-BAS2-1020",0.0,0,0.0
The Big -P.01-UP-20-April-26,AB-SUB-B03-BAS2-1030,Submittal for Beams Conc. Dim.  & RFT DWGs As-Built Drawing (B03) (Bas 02),The Big - P.01 - UP-24-MAY-26.HO.1.S.P01.B03.SUB.2ndB,01-Mar-26,25-Mar-26,16-Jun-26,07-Jul-26,,,18,219,0,No,No,CON-B03-BAS02-1100,"AB-APP-B03-BAS2-1030, AB-APP-B03-BAS2-1030",0.0,0,0.0
The Big -P.01-UP-20-April-26,AB-SUB-B03-BAS2-1010,Submittal for Stairs Conc. Dim.  & RFT DWGs As-Built Drawing (B03) (Bas 02),The Big - P.01 - UP-24-MAY-26.HO.1.S.P01.B03.SUB.2ndB,26-Feb-26,23-Mar-26,11-Jun-26,04-Jul-26,,,18,223,0,No,No,CON-B03-BAS02-1080,"AB-APP-B03-BAS2-1010, AB-APP-B03-BAS2-1010",0.0,0,0.0
The Big -P.01-UP-20-April-26,AB-SUB-B03-SOG-1000,Submittal for S.O.G Conc. Dim. DWGs As-Built Drawing (B03) (Sog),The Big - P.01 - UP-24-MAY-26.HO.1.S.P01.B03.SUB.2ndB.1,20-Apr-26,10-May-26,17-Aug-26,07-Sep-26,,,18,168,0,No,No,CON-B03-SOG-1040,"AB-APP-B03-SOG-1000, AB-APP-B03-SOG-1000",0.0,0,0.0
The Big -P.01-UP-20-April-26,AB-SUB-B03-SOG-1010,Submittal for S.O.G RFT DWGs As-Built Drawing (B03) (Sog),The Big - P.01 - UP-24-MAY-26.HO.1.S.P01.B03.SUB.2ndB.1,25-Apr-26,14-May-26,22-Aug-26,12-Sep-26,,,18,164,0,No,No,CON-B03-SOG-1050,"AB-APP-B03-SOG-1010, AB-APP-B03-SOG-1010",0.0,0,0.0
The Big -P.01-UP-20-April-26,AB-SUB-B03-BAS1-1000,Submittal for Col. & Walls Conc. Dim.  & RFT DWGs As-Built Drawing (B03) (Bas 01),The Big - P.01 - UP-24-MAY-26.HO.1.S.P01.B03.SUB.1stB,25-Mar-26,15-Apr-26,12-Jul-26,02-Aug-26,,,18,198,0,No,No,CON-B03-BAS01-1030,"AB-APP-B03-BAS1-1000, AB-APP-B03-BAS1-1000",0.0,0,0.0
The Big -P.01-UP-20-April-26,AB-SUB-B03-BAS1-1020,Submittal for Slabs Conc. Dim.  & RFT DWGs As-Built Drawing (B03) (Bas 01),The Big - P.01 - UP-24-MAY-26.HO.1.S.P01.B03.SUB.1stB,11-Apr-26,02-May-26,29-Jul-26,18-Aug-26,,,18,184,0,No,No,CON-B03-BAS01-1090,"AB-APP-B03-BAS1-1020, AB-APP-B03-BAS1-1020",0.0,0,0.0
The Big -P.01-UP-20-April-26,AB-SUB-B03-BAS1-1030,Submittal for Beams Conc. Dim.  & RFT DWGs As-Built Drawing (B03) (Bas 01),The Big - P.01 - UP-24-MAY-26.HO.1.S.P01.B03.SUB.1stB,11-Apr-26,02-May-26,29-Jul-26,18-Aug-26,,,18,184,0,No,No,CON-B03-BAS01-1090,"AB-APP-B03-BAS1-1030, AB-APP-B03-BAS1-1030",0.0,0,0.0
The Big -P.01-UP-20-April-26,AB-SUB-B03-BAS1-1010,Submittal for Stairs Conc. Dim.  & RFT DWGs As-Built Drawing (B03) (Bas 01),The Big - P.01 - UP-24-MAY-26.HO.1.S.P01.B03.SUB.1stB,09-Apr-26,30-Apr-26,28-Jul-26,17-Aug-26,,,18,185,0,No,No,CON-B03-BAS01-1080,"AB-APP-B03-BAS1-1010, AB-APP-B03-BAS1-1010",0.0,0,0.0
The Big -P.01-UP-20-April-26,AB-SUB-B03-GR-1000,Submittal for Col. & Walls Conc. Dim.  & RFT DWGs As-Built Drawing (B03) (GF),The Big - P.01 - UP-24-MAY-26.HO.1.S.P01.B03.SUP.GF,28-Apr-26,18-May-26,16-Aug-26,06-Sep-26,,,18,169,0,No,No,CON-B03-GR-1030,"AB-APP-B03-GR-1000, AB-APP-B03-GR-1000",0.0,0,0.0
The Big -P.01-UP-20-April-26,AB-SUB-B03-GR-1010,Submittal for Slabs Conc. Dim.  & RFT DWGs As-Built Drawing (B03) (GF),The Big - P.01 - UP-24-MAY-26.HO.1.S.P01.B03.SUP.GF,10-May-26,03-Jun-26,29-Aug-26,17-Sep-26,,,18,159,0,No,No,CON-B03-GR-1080,"AB-APP-B03-GR-1010, AB-APP-B03-GR-1010",0.0,0,0.0
The Big -P.01-UP-20-April-26,AB-SUB-B03-GR-1020,Submittal for Beams Conc. Dim.  & RFT DWGs As-Built Drawing (B03) (GF),The Big - P.01 - UP-24-MAY-26.HO.1.S.P01.B03.SUP.GF,10-May-26,03-Jun-26,29-Aug-26,17-Sep-26,,,18,159,0,No,No,CON-B03-GR-1080,"AB-APP-B03-GR-1020, AB-APP-B03-GR-1020",0.0,0,0.0
The Big -P.01-UP-20-April-26,AB-SUB-B03-GR-1030,Submittal for Stairs Conc. Dim.  & RFT DWGs As-Built Drawing (B03) (GF),The Big - P.01 - UP-24-MAY-26.HO.1.S.P01.B03.SUP.GF,10-May-26,03-Jun-26,29-Aug-26,17-Sep-26,,,18,159,0,No,No,CON-B03-GR-1090,"AB-APP-B03-GR-1030, AB-APP-B03-GR-1030",0.0,0,0.0
The Big -P.01-UP-20-April-26,AB-SUB-B03-1ST-1000,Submittal for Col. & Walls Conc. Dim.  & RFT DWGs As-Built Drawing (B03) (1st),The Big - P.01 - UP-24-MAY-26.HO.1.S.P01.B03.SUP.1stF,27-Jun-26,18-Jul-26,14-Oct-26,03-Nov-26,,,18,120,0,No,No,CON-B03-1ST-1030,"AB-APP-B03-1ST-1000, AB-APP-B03-1ST-1000",0.0,0,0.0
The Big -P.01-UP-20-April-26,AB-SUB-B03-1ST-1010,Submittal for Slabs Conc. Dim.  & RFT DWGs As-Built Drawing (B03) (1st),The Big - P.01 - UP-24-MAY-26.HO.1.S.P01.B03.SUP.1stF,25-Jul-26,13-Aug-26,09-Nov-26,29-Nov-26,,,18,98,0,No,No,CON-B03-1ST-1060,"AB-APP-B03-1ST-1010, AB-APP-B03-1ST-1010",0.0,0,0.0
The Big -P.01-UP-20-April-26,AB-SUB-B03-1ST-1020,Submittal for Beams Conc. Dim.  & RFT DWGs As-Built Drawing (B03) (1st),The Big - P.01 - UP-24-MAY-26.HO.1.S.P01.B03.SUP.1stF,25-Jul-26,13-Aug-26,09-Nov-26,29-Nov-26,,,18,98,0,No,No,CON-B03-1ST-1060,"AB-APP-B03-1ST-1020, AB-APP-B03-1ST-1020",0.0,0,0.0
The Big -P.01-UP-20-April-26,AB-SUB-B03-1ST-1030,Submittal for Stairs Conc. Dim.  & RFT DWGs As-Built Drawing (B03) (1st),The Big - P.01 - UP-24-MAY-26.HO.1.S.P01.B03.SUP.1stF,25-Jul-26,13-Aug-26,09-Nov-26,29-Nov-26,,,18,98,0,No,No,CON-B03-1ST-1060,"AB-APP-B03-1ST-1030, AB-APP-B03-1ST-1030",0.0,0,0.0
The Big -P.01-UP-20-April-26,AB-SUB-B03-2ND-1000,Submittal for Col. & Walls Conc. Dim.  & RFT DWGs As-Built Drawing (B03) (2nd),The Big - P.01 - UP-24-MAY-26.HO.1.S.P01.B03.SUP.2ndF,02-Sep-26,22-Sep-26,19-Dec-26,09-Jan-27,,,18,64,0,No,No,CON-B03-2ND-1030,"AB-APP-B03-2ND-1000, AB-APP-B03-2ND-1000",0.0,0,0.0
The Big -P.01-UP-20-April-26,AB-SUB-B03-2ND-1010,Submittal for Slabs Conc. Dim.  & RFT DWGs As-Built Drawing (B03) (2nd),The Big - P.01 - UP-24-MAY-26.HO.1.S.P01.B03.SUP.2ndF,28-Sep-26,19-Oct-26,14-Jan-27,04-Feb-27,,,18,42,0,No,No,CON-B03-2ND-1060,"AB-APP-B03-2ND-1010, AB-APP-B03-2ND-1010",0.0,0,0.0
The Big -P.01-UP-20-April-26,AB-SUB-B03-2ND-1020,Submittal for Beams Conc. Dim.  & RFT DWGs As-Built Drawing (B03) (2nd),The Big - P.01 - UP-24-MAY-26.HO.1.S.P01.B03.SUP.2ndF,28-Sep-26,19-Oct-26,14-Jan-27,04-Feb-27,,,18,42,0,No,No,CON-B03-2ND-1060,"AB-APP-B03-2ND-1020, AB-APP-B03-2ND-1020",0.0,0,0.0
The Big -P.01-UP-20-April-26,AB-SUB-B03-2ND-1030,Submittal for Stairs Conc. Dim.  & RFT DWGs As-Built Drawing (B03) (2nd),The Big - P.01 - UP-24-MAY-26.HO.1.S.P01.B03.SUP.2ndF,28-Sep-26,19-Oct-26,14-Jan-27,04-Feb-27,,,18,42,0,No,No,CON-B03-2ND-1060,"AB-APP-B03-2ND-1030, AB-APP-B03-2ND-1030",0.0,0,0.0
The Big -P.01-UP-20-April-26,AB-SUB-B03-3RD-1000,Submittal for Col. & Walls Conc. Dim.  & RFT DWGs As-Built Drawing (B03) (3rd),The Big - P.01 - UP-24-MAY-26.HO.1.S.P01.B03.SUP.3rdF,04-Nov-26,24-Nov-26,21-Feb-27,16-Mar-27,,,18,11,0,No,No,CON-B03-3RD-1030,"AB-APP-B03-3RD-1000, AB-APP-B03-3RD-1000",0.0,0,0.0
The Big -P.01-UP-20-April-26,AB-SUB-B03-3RD-1010,Submittal for Slabs Conc. Dim.  & RFT DWGs As-Built Drawing (B03) (3rd),The Big - P.01 - UP-24-MAY-26.HO.1.S.P01.B03.SUP.3rdF,30-Nov-26,20-Dec-26,22-Mar-27,11-Apr-27,,,18,-11,0,Yes,No,CON-B03-3RD-1060,"AB-APP-B03-3RD-1010, AB-APP-B03-3RD-1010",0.0,0,0.0
The Big -P.01-UP-20-April-26,AB-SUB-B03-3RD-1020,Submittal for Beams Conc. Dim.  & RFT DWGs As-Built Drawing (B03) (3rd),The Big - P.01 - UP-24-MAY-26.HO.1.S.P01.B03.SUP.3rdF,30-Nov-26,20-Dec-26,22-Mar-27,11-Apr-27,,,18,-11,0,Yes,No,CON-B03-3RD-1060,"AB-APP-B03-3RD-1020, AB-APP-B03-3RD-1020",0.0,0,0.0
The Big -P.01-UP-20-April-26,AB-SUB-B03-3RD-1030,Submittal for Stairs Conc. Dim.  & RFT DWGs As-Built Drawing (B03) (3rd),The Big - P.01 - UP-24-MAY-26.HO.1.S.P01.B03.SUP.3rdF,30-Nov-26,20-Dec-26,22-Mar-27,11-Apr-27,,,18,-11,0,Yes,No,CON-B03-3RD-1060,"AB-APP-B03-3RD-1030, AB-APP-B03-3RD-1030",0.0,0,0.0
The Big -P.01-UP-20-April-26,AB-SUB-B03-4TH-1000,Submittal for Col. & Walls Conc. Dim.  & RFT DWGs As-Built Drawing (B03) (4th),The Big - P.01 - UP-24-MAY-26.HO.1.S.P01.B03.SUP.4thF,06-Jan-27,28-Jan-27,28-Apr-27,18-May-27,,,18,-43,0,Yes,No,CON-B03-4TH-1030,"AB-APP-B03-4TH-1000, AB-APP-B03-4TH-1000",0.0,0,0.0
The Big -P.01-UP-20-April-26,AB-SUB-B03-4TH-1010,Submittal for Slabs Conc. Dim.  & RFT DWGs As-Built Drawing (B03) (4th),The Big - P.01 - UP-24-MAY-26.HO.1.S.P01.B03.SUP.4thF,31-Jan-27,20-Feb-27,20-May-27,09-Jun-27,,,18,-62,0,Yes,No,CON-B03-4TH-1060,"AB-APP-B03-4TH-1010, AB-APP-B03-4TH-1010",0.0,0,0.0
The Big -P.01-UP-20-April-26,AB-SUB-B03-4TH-1020,Submittal for Beams Conc. Dim.  & RFT DWGs As-Built Drawing (B03) (4th),The Big - P.01 - UP-24-MAY-26.HO.1.S.P01.B03.SUP.4thF,31-Jan-27,20-Feb-27,20-May-27,09-Jun-27,,,18,-62,0,Yes,No,CON-B03-4TH-1060,"AB-APP-B03-4TH-1020, AB-APP-B03-4TH-1020",0.0,0,0.0
The Big -P.01-UP-20-April-26,AB-SUB-B03-4TH-1030,Submittal for Stairs Conc. Dim.  & RFT DWGs As-Built Drawing (B03) (4th),The Big - P.01 - UP-24-MAY-26.HO.1.S.P01.B03.SUP.4thF,31-Jan-27,20-Feb-27,20-May-27,09-Jun-27,,,18,-62,0,Yes,No,CON-B03-4TH-1060,"AB-APP-B03-4TH-1030, AB-APP-B03-4TH-1030",0.0,0,0.0
The Big -P.01-UP-20-April-26,AB-SUB-B03-RF-1000,Submittal for Col. & Walls Conc. Dim.  & RFT DWGs As-Built Drawing (B03) (RF),The Big - P.01 - UP-24-MAY-26.HO.1.S.P01.B03.SUP.RF,22-Feb-27,17-Mar-27,12-Jun-27,01-Jul-27,,,18,-81,0,Yes,No,CON-B03-RF-1030,"AB-APP-B03-RF-1000, AB-APP-B03-RF-1000",0.0,0,0.0
The Big -P.01-UP-20-April-26,AB-SUB-B03-RF-1010,Submittal for Slabs Conc. Dim.  & RFT DWGs As-Built Drawing (B03) (RF),The Big - P.01 - UP-24-MAY-26.HO.1.S.P01.B03.SUP.RF,03-Mar-27,27-Mar-27,21-Jun-27,11-Jul-27,,,18,-91,0,Yes,No,CON-B03-RF-1060,"AB-APP-B03-RF-1010, AB-APP-B03-RF-1010",0.0,0,0.0
The Big -P.01-UP-20-April-26,AB-SUB-B03-RF-1020,Submittal for Beams Conc. Dim.  & RFT DWGs As-Built Drawing (B03) (RF),The Big - P.01 - UP-24-MAY-26.HO.1.S.P01.B03.SUP.RF,03-Mar-27,27-Mar-27,21-Jun-27,11-Jul-27,,,18,-91,0,Yes,No,CON-B03-RF-1060,"AB-APP-B03-RF-1020, AB-APP-B03-RF-1020",0.0,0,0.0
The Big -P.01-UP-20-April-26,AB-SUB-B04-REP-1000,Submittal for General Replacement Plan & Typical Sections for Replacement / Backfilling DWGs As-Built Drawing (B04),The Big - P.01 - UP-24-MAY-26.HO.1.S.P01.B04.SUB.1,06-Jan-26,28-Jan-26,17-May-26,10-Jun-26,,,18,241,0,No,No,"CON-EW-B04-1000, CON-EW-B04-1010","AB-APP-B04-REP-1000, AB-APP-B04-REP-1000",0.0,0,0.0
The Big -P.01-UP-20-April-26,AB-SUB-B04-FOOT-1000,Submittal for PC Raft Conc. Dim. DWGs As-Built Drawing (B04) (footing),The Big - P.01 - UP-24-MAY-26.HO.1.S.P01.B04.SUB.F,10-Jan-26,31-Jan-26,17-May-26,10-Jun-26,,,18,241,0,No,No,"CON-B04-FOOT-1000, CON-B04-FOOT-1010","AB-APP-B04-FOOT-1000, AB-APP-B04-FOOT-1000",0.0,0,0.0
The Big -P.01-UP-20-April-26,AB-SUB-B04-FOOT-1010,Submittal for RC Raft & Footings Conc. Dim. DWGs As-Built Drawing (B04) (footing),The Big - P.01 - UP-24-MAY-26.HO.1.S.P01.B04.SUB.F,24-Jan-26,14-Feb-26,19-May-26,14-Jun-26,,,18,238,0,No,No,CON-B04-FOOT-1040,"AB-APP-B04-FOOT-1010, AB-APP-B04-FOOT-1010",0.0,0,0.0
The Big -P.01-UP-20-April-26,AB-SUB-B04-FOOT-1020,Submittal for RC Raft & Footings RFT DWGs As-Built Drawing (B04) (footing),The Big - P.01 - UP-24-MAY-26.HO.1.S.P01.B04.SUB.F,28-Jan-26,17-Feb-26,19-May-26,14-Jun-26,,,18,238,0,No,No,"CON-B04-FOOT-1050, CON-B04-FOOT-1080","AB-APP-B04-FOOT-1020, AB-APP-B04-FOOT-1020",0.0,0,0.0
The Big -P.01-UP-20-April-26,AB-SUB-B04-FOOT-1030,Submittal for  Waterproofing Layout Plan DWGs As-Built Drawing (B04),The Big - P.01 - UP-24-MAY-26.HO.1.S.P01.B04.SUB.F,04-Feb-26,24-Feb-26,08-Jul-26,29-Jul-26,,,18,201,0,No,No,"CON-B04-FOOT-1030, CON-B04-FOOT-1110","AB-APP-B04-FOOT-1030, AB-APP-B04-FOOT-1030",0.0,0,0.0
The Big -P.01-UP-20-April-26,AB-SUB-B04-BAS2-1000,Submittal for Col. & Walls Conc. Dim.  & RFT DWGs As-Built Drawing (B04) (Bas 02),The Big - P.01 - UP-24-MAY-26.HO.1.S.P01.B04.SUB.2ndB,12-Feb-26,04-Mar-26,08-Jun-26,28-Jun-26,,,18,226,0,No,No,CON-B04-BAS02-1010,"AB-APP-B04-BAS2-1000, AB-APP-B04-BAS2-1000",0.0,0,0.0
The Big -P.01-UP-20-April-26,AB-SUB-B04-BAS2-1030,Submittal for Slabs Conc. Dim.  & RFT DWGs As-Built Drawing (B04) (Bas 02),The Big - P.01 - UP-24-MAY-26.HO.1.S.P01.B04.SUB.2ndB,10-Mar-26,04-Apr-26,05-Jul-26,26-Jul-26,,,18,204,0,No,No,CON-B04-BAS02-1130,"AB-APP-B04-BAS2-1030, AB-APP-B04-BAS2-1030",0.0,0,0.0
The Big -P.01-UP-20-April-26,AB-SUB-B04-BAS2-1040,Submittal for Beams Conc. Dim.  & RFT DWGs As-Built Drawing (B04) (Bas 02),The Big - P.01 - UP-24-MAY-26.HO.1.S.P01.B04.SUB.2ndB,10-Mar-26,04-Apr-26,05-Jul-26,26-Jul-26,,,18,204,0,No,No,CON-B04-BAS02-1130,"AB-APP-B04-BAS2-1040, AB-APP-B04-BAS2-1040",0.0,0,0.0
The Big -P.01-UP-20-April-26,AB-SUB-B04-BAS2-1010,Submittal for Stairs Conc. Dim.  & RFT DWGs As-Built Drawing (B04) (Bas 02),The Big - P.01 - UP-24-MAY-26.HO.1.S.P01.B04.SUB.2ndB,05-Mar-26,30-Mar-26,29-Jun-26,20-Jul-26,,,18,208,0,No,No,CON-B04-BAS02-1100,"AB-APP-B04-BAS2-1010, AB-APP-B04-BAS2-1010",0.0,0,0.0
The Big -P.01-UP-20-April-26,AB-SUB-B04-BAS2-1020,Submittal for Ramps Conc. Dim.  & RFT DWGs As-Built Drawing (B04) (Bas 02),The Big - P.01 - UP-24-MAY-26.HO.1.S.P01.B04.SUB.2ndB,07-Mar-26,31-Mar-26,01-Jul-26,21-Jul-26,,,18,207,0,No,No,CON-B04-BAS02-1110,"AB-APP-B04-BAS2-1020, AB-APP-B04-BAS2-1020",0.0,0,0.0
The Big -P.01-UP-20-April-26,AB-SUB-B04-WT-1000,Submittal for PC Raft Conc. Dim. DWGs As-Built Drawing (B04) (Water Tank),The Big - P.01 - UP-24-MAY-26.HO.1.S.P01.B04.SUB.2ndB.1,15-Nov-25,04-Dec-25,17-May-26,10-Jun-26,,,18,241,0,No,No,CON-B04-WT-1030,"AB-APP-B04-WT-1000, AB-APP-B04-WT-1000",0.0,0,0.0
The Big -P.01-UP-20-April-26,AB-SUB-B04-WT-1010,Submittal for RC Raft Conc. Dim. DWGs As-Built Drawing (B04) (Water Tank),The Big - P.01 - UP-24-MAY-26.HO.1.S.P01.B04.SUB.2ndB.1,03-Dec-25,23-Dec-25,17-May-26,10-Jun-26,,,18,241,0,No,No,CON-B04-WT-1060,"AB-APP-B04-WT-1010, AB-APP-B04-WT-1010",0.0,0,0.0
The Big -P.01-UP-20-April-26,AB-SUB-B04-WT-1030,Submittal for Col. & Walls DWGs As-Built Drawing (B04) (Water Tank),The Big - P.01 - UP-24-MAY-26.HO.1.S.P01.B04.SUB.2ndB.1,24-Dec-25,14-Jan-26,17-May-26,10-Jun-26,,,18,241,0,No,No,"CON-B04-WT-1100, CON-B04-WT-1110, CON-B04-WT-1130","AB-APP-B04-WT-1030, AB-APP-B04-WT-1030",0.0,0,0.0
The Big -P.01-UP-20-April-26,AB-SUB-B04-WT-1040,Submittal for Slabs DWGs As-Built Drawing (B04) (Water Tank),The Big - P.01 - UP-24-MAY-26.HO.1.S.P01.B04.SUB.2ndB.1,04-Jan-26,26-Jan-26,03-Jun-26,23-Jun-26,,,18,230,0,No,No,"CON-B04-WT-1150, CON-B04-WT-1160, CON-B04-WT-1170","AB-APP-B04-WT-1040, AB-APP-B04-WT-1040",0.0,0,0.0
The Big -P.01-UP-20-April-26,AB-SUB-B04-WT-1020,Submittal for RC Raft RFT DWGs As-Built Drawing (B04) (Water Tank),The Big - P.01 - UP-24-MAY-26.HO.1.S.P01.B04.SUB.2ndB.1,09-Dec-25,29-Dec-25,17-May-26,10-Jun-26,,,18,241,0,No,No,CON-B04-WT-1070,"AB-APP-B04-WT-1020, AB-APP-B04-WT-1020",0.0,0,0.0
The Big -P.01-UP-20-April-26,AB-SUB-B04-SOG-1000,Submittal for S.O.G Conc. Dim. DWGs As-Built Drawing (B04) (Sog),The Big - P.01 - UP-24-MAY-26.HO.1.S.P01.B04.SUB.2ndB.2,07-May-26,01-Jun-26,05-Sep-26,24-Sep-26,,,18,153,0,No,No,CON-B04-SOG-1040,"AB-APP-B04-SOG-1000, AB-APP-B04-SOG-1000",0.0,0,0.0
The Big -P.01-UP-20-April-26,AB-SUB-B04-SOG-1010,Submittal for S.O.G RFT DWGs As-Built Drawing (B04) (Sog),The Big - P.01 - UP-24-MAY-26.HO.1.S.P01.B04.SUB.2ndB.2,07-May-26,01-Jun-26,05-Sep-26,24-Sep-26,,,18,153,0,No,No,"CON-B04-SOG-1050, CON-B04-SOG-1040","AB-APP-B04-SOG-1010, AB-APP-B04-SOG-1010",0.0,0,0.0
The Big -P.01-UP-20-April-26,AB-SUB-B04-BAS1-1000,Submittal for Col. & Walls Conc. Dim.  & RFT DWGs As-Built Drawing (B04) (Bas 01),The Big - P.01 - UP-24-MAY-26.HO.1.S.P01.B04.SUB.1stB,29-Mar-26,19-Apr-26,19-Jul-26,09-Aug-26,,,18,192,0,No,No,CON-B04-BAS01-1030,"AB-APP-B04-BAS1-1000, AB-APP-B04-BAS1-1000",0.0,0,0.0
The Big -P.01-UP-20-April-26,AB-SUB-B04-BAS1-1030,Submittal for Slabs Conc. Dim.  & RFT DWGs As-Built Drawing (B04) (Bas 01),The Big - P.01 - UP-24-MAY-26.HO.1.S.P01.B04.SUB.1stB,15-Apr-26,05-May-26,05-Aug-26,25-Aug-26,,,18,178,0,No,No,CON-B04-BAS01-1120,"AB-APP-B04-BAS1-1030, AB-APP-B04-BAS1-1030",0.0,0,0.0
The Big -P.01-UP-20-April-26,AB-SUB-B04-BAS1-1040,Submittal for Beams Conc. Dim.  & RFT DWGs As-Built Drawing (B04) (Bas 01),The Big - P.01 - UP-24-MAY-26.HO.1.S.P01.B04.SUB.1stB,15-Apr-26,05-May-26,05-Aug-26,25-Aug-26,,,18,178,0,No,No,CON-B04-BAS01-1120,"AB-APP-B04-BAS1-1040, AB-APP-B04-BAS1-1040",0.0,0,0.0
The Big -P.01-UP-20-April-26,AB-SUB-B04-BAS1-1010,Submittal for Stairs Conc. Dim.  & RFT DWGs As-Built Drawing (B04) (Bas 01),The Big - P.01 - UP-24-MAY-26.HO.1.S.P01.B04.SUB.1stB,15-Apr-26,05-May-26,05-Aug-26,25-Aug-26,,,18,178,0,No,No,CON-B04-BAS01-1110,"AB-APP-B04-BAS1-1010, AB-APP-B04-BAS1-1010",0.0,0,0.0
The Big -P.01-UP-20-April-26,AB-SUB-B04-BAS1-1020,Submittal for Ramps Conc. Dim.  & RFT DWGs As-Built Drawing (B04) (Bas 01),The Big - P.01 - UP-24-MAY-26.HO.1.S.P01.B04.SUB.1stB,15-Apr-26,05-May-26,05-Aug-26,25-Aug-26,,,18,178,0,No,No,CON-B04-BAS01-1110,"AB-APP-B04-BAS1-1020, AB-APP-B04-BAS1-1020",0.0,0,0.0
The Big -P.01-UP-20-April-26,AB-SUB-B04-GR-1000,Submittal for Col. & Walls Conc. Dim.  & RFT DWGs As-Built Drawing (B04) (GF),The Big - P.01 - UP-24-MAY-26.HO.1.S.P01.B04.SUP.GF,30-Apr-26,20-May-26,20-Aug-26,10-Sep-26,,,18,165,0,No,No,CON-B04-GR-1030,"AB-APP-B04-GR-1000, AB-APP-B04-GR-1000",0.0,0,0.0
The Big -P.01-UP-20-April-26,AB-SUB-B04-GR-1010,Submittal for Slabs Conc. Dim.  & RFT DWGs As-Built Drawing (B04) (GF),The Big - P.01 - UP-24-MAY-26.HO.1.S.P01.B04.SUP.GF,12-May-26,06-Jun-26,02-Sep-26,22-Sep-26,,,18,155,0,No,No,CON-B04-GR-1080,"AB-APP-B04-GR-1010, AB-APP-B04-GR-1010",0.0,0,0.0
The Big -P.01-UP-20-April-26,AB-SUB-B04-GR-1020,Submittal for Beams Conc. Dim.  & RFT DWGs As-Built Drawing (B04) (GF),The Big - P.01 - UP-24-MAY-26.HO.1.S.P01.B04.SUP.GF,12-May-26,06-Jun-26,02-Sep-26,22-Sep-26,,,18,155,0,No,No,CON-B04-GR-1080,"AB-APP-B04-GR-1020, AB-APP-B04-GR-1020",0.0,0,0.0
The Big -P.01-UP-20-April-26,AB-SUB-B04-GR-1030,Submittal for Stairs Conc. Dim.  & RFT DWGs As-Built Drawing (B04) (GF),The Big - P.01 - UP-24-MAY-26.HO.1.S.P01.B04.SUP.GF,12-May-26,06-Jun-26,02-Sep-26,22-Sep-26,,,18,155,0,No,No,CON-B04-GR-1090,"AB-APP-B04-GR-1030, AB-APP-B04-GR-1030",0.0,0,0.0
The Big -P.01-UP-20-April-26,AB-SUB-B04-1ST-1000,Submittal for Col. & Walls Conc. Dim.  & RFT DWGs As-Built Drawing (B04) (1st),The Big - P.01 - UP-24-MAY-26.HO.1.S.P01.B04.SUP.1stF,04-Jun-26,24-Jun-26,10-Oct-26,31-Oct-26,,,18,124,0,No,No,CON-B04-1ST-1030,"AB-APP-B04-1ST-1000, AB-APP-B04-1ST-1000",0.0,0,0.0
The Big -P.01-UP-20-April-26,AB-SUB-B04-1ST-1010,Submittal for Slabs Conc. Dim.  & RFT DWGs As-Built Drawing (B04) (1st),The Big - P.01 - UP-24-MAY-26.HO.1.S.P01.B04.SUP.1stF,24-Jun-26,15-Jul-26,29-Oct-26,19-Nov-26,,,18,107,0,No,No,CON-B04-1ST-1060,"AB-APP-B04-1ST-1010, AB-APP-B04-1ST-1010",0.0,0,0.0
The Big -P.01-UP-20-April-26,AB-SUB-B04-1ST-1020,Submittal for Beams Conc. Dim.  & RFT DWGs As-Built Drawing (B04) (1st),The Big - P.01 - UP-24-MAY-26.HO.1.S.P01.B04.SUP.1stF,24-Jun-26,15-Jul-26,29-Oct-26,19-Nov-26,,,18,107,0,No,No,CON-B04-1ST-1060,"AB-APP-B04-1ST-1020, AB-APP-B04-1ST-1020",0.0,0,0.0
The Big -P.01-UP-20-April-26,AB-SUB-B04-1ST-1030,Submittal for Stairs Conc. Dim.  & RFT DWGs As-Built Drawing (B04) (1st),The Big - P.01 - UP-24-MAY-26.HO.1.S.P01.B04.SUP.1stF,24-Jun-26,15-Jul-26,29-Oct-26,19-Nov-26,,,18,107,0,No,No,CON-B04-1ST-1060,"AB-APP-B04-1ST-1030, AB-APP-B04-1ST-1030",0.0,0,0.0
The Big -P.01-UP-20-April-26,AB-SUB-B04-2ND-1000,Submittal for Col. & Walls Conc. Dim.  & RFT DWGs As-Built Drawing (B04) (2nd),The Big - P.01 - UP-24-MAY-26.HO.1.S.P01.B04.SUP.2ndF,15-Jul-26,05-Aug-26,18-Nov-26,09-Dec-26,,,18,90,0,No,No,CON-B04-2ND-1030,"AB-APP-B04-2ND-1000, AB-APP-B04-2ND-1000",0.0,0,0.0
The Big -P.01-UP-20-April-26,AB-SUB-B04-2ND-1010,Submittal for Slabs Conc. Dim.  & RFT DWGs As-Built Drawing (B04) (2nd),The Big - P.01 - UP-24-MAY-26.HO.1.S.P01.B04.SUP.2ndF,05-Aug-26,25-Aug-26,08-Dec-26,29-Dec-26,,,18,73,0,No,No,CON-B04-2ND-1060,"AB-APP-B04-2ND-1010, AB-APP-B04-2ND-1010",0.0,0,0.0
The Big -P.01-UP-20-April-26,AB-SUB-B04-2ND-1020,Submittal for Beams Conc. Dim.  & RFT DWGs As-Built Drawing (B04) (2nd),The Big - P.01 - UP-24-MAY-26.HO.1.S.P01.B04.SUP.2ndF,05-Aug-26,25-Aug-26,08-Dec-26,29-Dec-26,,,18,73,0,No,No,CON-B04-2ND-1060,"AB-APP-B04-2ND-1020, AB-APP-B04-2ND-1020",0.0,0,0.0
The Big -P.01-UP-20-April-26,AB-SUB-B04-2ND-1030,Submittal for Stairs Conc. Dim.  & RFT DWGs As-Built Drawing (B04) (2nd),The Big - P.01 - UP-24-MAY-26.HO.1.S.P01.B04.SUP.2ndF,05-Aug-26,25-Aug-26,08-Dec-26,29-Dec-26,,,18,73,0,No,No,CON-B04-2ND-1060,"AB-APP-B04-2ND-1030, AB-APP-B04-2ND-1030",0.0,0,0.0
The Big -P.01-UP-20-April-26,AB-SUB-B04-3RD-1000,Submittal for Col. & Walls Conc. Dim.  & RFT DWGs As-Built Drawing (B04) (3rd),The Big - P.01 - UP-24-MAY-26.HO.1.S.P01.B04.SUP.3rdF,25-Aug-26,15-Sep-26,29-Dec-26,19-Jan-27,,,18,55,0,No,No,CON-B04-3RD-1030,"AB-APP-B04-3TH-1000, AB-APP-B04-3TH-1000",0.0,0,0.0
The Big -P.01-UP-20-April-26,AB-SUB-B04-3RD-1010,Submittal for Slabs Conc. Dim.  & RFT DWGs As-Built Drawing (B04) (3rd),The Big - P.01 - UP-24-MAY-26.HO.1.S.P01.B04.SUP.3rdF,15-Sep-26,05-Oct-26,19-Jan-27,09-Feb-27,,,18,38,0,No,No,CON-B04-3RD-1060,"AB-APP-B04-3TH-1010, AB-APP-B04-3TH-1010",0.0,0,0.0
The Big -P.01-UP-20-April-26,AB-SUB-B04-3RD-1020,Submittal for Beams Conc. Dim.  & RFT DWGs As-Built Drawing (B04) (3rd),The Big - P.01 - UP-24-MAY-26.HO.1.S.P01.B04.SUP.3rdF,15-Sep-26,05-Oct-26,19-Jan-27,09-Feb-27,,,18,38,0,No,No,CON-B04-3RD-1060,"AB-APP-B04-3TH-1020, AB-APP-B04-3TH-1020",0.0,0,0.0
The Big -P.01-UP-20-April-26,AB-SUB-B04-3RD-1030,Submittal for Stairs Conc. Dim.  & RFT DWGs As-Built Drawing (B04) (3rd),The Big - P.01 - UP-24-MAY-26.HO.1.S.P01.B04.SUP.3rdF,15-Sep-26,05-Oct-26,19-Jan-27,09-Feb-27,,,18,38,0,No,No,CON-B04-3RD-1060,"AB-APP-B04-3TH-1030, AB-APP-B04-3TH-1030",0.0,0,0.0
The Big -P.01-UP-20-April-26,AB-SUB-B04-4TH-1000,Submittal for Col. & Walls Conc. Dim.  & RFT DWGs As-Built Drawing (B04) (4th),The Big - P.01 - UP-24-MAY-26.HO.1.S.P01.B04.SUP.4thF,03-Oct-26,24-Oct-26,07-Feb-27,27-Feb-27,,,18,23,0,No,No,CON-B04-4TH-1030,"AB-APP-B04-4TH-1000, AB-APP-B04-4TH-1000",0.0,0,0.0
The Big -P.01-UP-20-April-26,AB-SUB-B04-4TH-1010,Submittal for Slabs Conc. Dim.  & RFT DWGs As-Built Drawing (B04) (4th),The Big - P.01 - UP-24-MAY-26.HO.1.S.P01.B04.SUP.4thF,22-Oct-26,11-Nov-26,25-Feb-27,21-Mar-27,,,18,7,0,No,No,CON-B04-4TH-1060,"AB-APP-B04-4TH-1010, AB-APP-B04-4TH-1010",0.0,0,0.0
The Big -P.01-UP-20-April-26,AB-SUB-B04-4TH-1020,Submittal for Beams Conc. Dim.  & RFT DWGs As-Built Drawing (B04) (4th),The Big - P.01 - UP-24-MAY-26.HO.1.S.P01.B04.SUP.4thF,22-Oct-26,11-Nov-26,25-Feb-27,21-Mar-27,,,18,7,0,No,No,CON-B04-4TH-1060,"AB-APP-B04-4TH-1020, AB-APP-B04-4TH-1020",0.0,0,0.0
The Big -P.01-UP-20-April-26,AB-SUB-B04-4TH-1030,Submittal for Stairs Conc. Dim.  & RFT DWGs As-Built Drawing (B04) (4th),The Big - P.01 - UP-24-MAY-26.HO.1.S.P01.B04.SUP.4thF,22-Oct-26,11-Nov-26,25-Feb-27,21-Mar-27,,,18,7,0,No,No,CON-B04-4TH-1060,"AB-APP-B04-4TH-1030, AB-APP-B04-4TH-1030",0.0,0,0.0
The Big -P.01-UP-20-April-26,AB-SUB-B04-5TH-1000,Submittal for Col. & Walls Conc. Dim.  & RFT DWGs As-Built Drawing (B04) (5th),The Big - P.01 - UP-24-MAY-26.HO.1.S.P01.B04.SUP.5thF,10-Nov-26,30-Nov-26,20-Mar-27,08-Apr-27,,,18,-9,0,Yes,No,CON-B04-5TH-1030,"AB-APP-B04-5TH-1000, AB-APP-B04-5TH-1000",0.0,0,0.0
The Big -P.01-UP-20-April-26,AB-SUB-B04-5TH-1010,Submittal for Slabs Conc. Dim.  & RFT DWGs As-Built Drawing (B04) (5th),The Big - P.01 - UP-24-MAY-26.HO.1.S.P01.B04.SUP.5thF,26-Nov-26,16-Dec-26,05-Apr-27,25-Apr-27,,,18,-23,0,Yes,No,CON-B04-5TH-1060,"AB-APP-B04-5TH-1010, AB-APP-B04-5TH-1010",0.0,0,0.0
The Big -P.01-UP-20-April-26,AB-SUB-B04-5TH-1020,Submittal for Beams Conc. Dim.  & RFT DWGs As-Built Drawing (B04) (5th),The Big - P.01 - UP-24-MAY-26.HO.1.S.P01.B04.SUP.5thF,26-Nov-26,16-Dec-26,05-Apr-27,25-Apr-27,,,18,-23,0,Yes,No,CON-B04-5TH-1060,"AB-APP-B04-5TH-1020, AB-APP-B04-5TH-1020",0.0,0,0.0
The Big -P.01-UP-20-April-26,AB-SUB-B04-5TH-1030,Submittal for Stairs Conc. Dim.  & RFT DWGs As-Built Drawing (B04) (5th),The Big - P.01 - UP-24-MAY-26.HO.1.S.P01.B04.SUP.5thF,26-Nov-26,16-Dec-26,05-Apr-27,25-Apr-27,,,18,-23,0,Yes,No,CON-B04-5TH-1060,"AB-APP-B04-5TH-1030, AB-APP-B04-5TH-1030",0.0,0,0.0
The Big -P.01-UP-20-April-26,AB-SUB-B04-6TH-1000,Submittal for Col. & Walls Conc. Dim.  & RFT DWGs As-Built Drawing (B04) (6th),The Big - P.01 - UP-24-MAY-26.HO.1.S.P01.B04.SUP.6thF,12-Dec-26,31-Dec-26,21-Apr-27,11-May-27,,,18,-37,0,Yes,No,CON-B04-6TH-1030,"AB-APP-B04-6TH-1000, AB-APP-B04-6TH-1000",0.0,0,0.0
The Big -P.01-UP-20-April-26,AB-SUB-B04-6TH-1010,Submittal for Slabs Conc. Dim.  & RFT DWGs As-Built Drawing (B04) (6th),The Big - P.01 - UP-24-MAY-26.HO.1.S.P01.B04.SUP.6thF,26-Dec-26,16-Jan-27,05-May-27,25-May-27,,,18,-49,0,Yes,No,CON-B04-6TH-1060,"AB-APP-B04-6TH-1010, AB-APP-B04-6TH-1010",0.0,0,0.0
The Big -P.01-UP-20-April-26,AB-SUB-B04-6TH-1020,Submittal for Beams Conc. Dim.  & RFT DWGs As-Built Drawing (B04) (6th),The Big - P.01 - UP-24-MAY-26.HO.1.S.P01.B04.SUP.6thF,26-Dec-26,16-Jan-27,05-May-27,25-May-27,,,18,-49,0,Yes,No,CON-B04-6TH-1060,"AB-APP-B04-6TH-1020, AB-APP-B04-6TH-1020",0.0,0,0.0
The Big -P.01-UP-20-April-26,AB-SUB-B04-6TH-1030,Submittal for Stairs Conc. Dim.  & RFT DWGs As-Built Drawing (B04) (6th),The Big - P.01 - UP-24-MAY-26.HO.1.S.P01.B04.SUP.6thF,26-Dec-26,16-Jan-27,05-May-27,25-May-27,,,18,-45,0,Yes,No,CON-B04-6TH-1060,"AB-APP-B04-6TH-1030, AB-APP-B04-6TH-1030",0.0,0,0.0
The Big -P.01-UP-20-April-26,AB-SUB-B04-7TH-1000,Submittal for Col. & Walls Conc. Dim.  & RFT DWGs As-Built Drawing (B04) (7th),The Big - P.01 - UP-24-MAY-26.HO.1.S.P01.B04.SUP.7thF,11-Jan-27,01-Feb-27,20-May-27,09-Jun-27,,,18,-62,0,Yes,No,CON-B04-7TH-1030,"AB-APP-B04-7TH-1000, AB-APP-B04-7TH-1000",0.0,0,0.0
The Big -P.01-UP-20-April-26,AB-SUB-B04-7TH-1010,Submittal for Slabs Conc. Dim.  & RFT DWGs As-Built Drawing  (B04) (7th),The Big - P.01 - UP-24-MAY-26.HO.1.S.P01.B04.SUP.7thF,24-Jan-27,14-Feb-27,02-Jun-27,22-Jun-27,,,18,-73,0,Yes,No,CON-B04-7TH-1060,"AB-APP-B04-7TH-1010, AB-APP-B04-7TH-1010",0.0,0,0.0
The Big -P.01-UP-20-April-26,AB-SUB-B04-7TH-1020,Submittal for Beams Conc. Dim.  & RFT DWGs As-Built Drawing (B04) (7th),The Big - P.01 - UP-24-MAY-26.HO.1.S.P01.B04.SUP.7thF,24-Jan-27,14-Feb-27,02-Jun-27,22-Jun-27,,,18,-73,0,Yes,No,CON-B04-7TH-1060,"AB-APP-B04-7TH-1020, AB-APP-B04-7TH-1020",0.0,0,0.0
The Big -P.01-UP-20-April-26,AB-SUB-B04-7TH-1030,Submittal for Stairs Conc. Dim.  & RFT DWGs As-Built Drawing (B04) (7th),The Big - P.01 - UP-24-MAY-26.HO.1.S.P01.B04.SUP.7thF,24-Jan-27,14-Feb-27,02-Jun-27,22-Jun-27,,,18,-73,0,Yes,No,CON-B04-7TH-1060,"AB-APP-B04-7TH-1030, AB-APP-B04-7TH-1030",0.0,0,0.0
The Big -P.01-UP-20-April-26,AB-SUB-B04-8TH-1000,Submittal for Col. & Walls Conc. Dim.  & RFT DWGs As-Built Drawing (B04) (8th),The Big - P.01 - UP-24-MAY-26.HO.1.S.P01.B04.SUP.8thF,09-Feb-27,01-Mar-27,17-Jun-27,07-Jul-27,,,18,-86,0,Yes,No,CON-B04-8TH-1030,"AB-APP-B04-8TH-1000, AB-APP-B04-8TH-1000",0.0,0,0.0
The Big -P.01-UP-20-April-26,AB-SUB-B04-8TH-1010,Submittal for Slabs Conc. Dim.  & RFT DWGs As-Built Drawing (B04) (8th),The Big - P.01 - UP-24-MAY-26.HO.1.S.P01.B04.SUP.8thF,20-Feb-27,15-Mar-27,28-Jun-27,18-Jul-27,,,18,-95,0,Yes,No,CON-B04-8TH-1060,"AB-APP-B04-8TH-1010, AB-APP-B04-8TH-1010",0.0,0,0.0
The Big -P.01-UP-20-April-26,AB-SUB-B04-8TH-1020,Submittal for Beams Conc. Dim.  & RFT DWGs As-Built Drawing (B04) (8th),The Big - P.01 - UP-24-MAY-26.HO.1.S.P01.B04.SUP.8thF,20-Feb-27,15-Mar-27,28-Jun-27,18-Jul-27,,,18,-95,0,Yes,No,CON-B04-8TH-1060,"AB-APP-B04-8TH-1020, AB-APP-B04-8TH-1020",0.0,0,0.0
The Big -P.01-UP-20-April-26,AB-SUB-B04-8TH-1030,Submittal for Stairs Conc. Dim.  & RFT DWGs As-Built Drawing (B04) (8th),The Big - P.01 - UP-24-MAY-26.HO.1.S.P01.B04.SUP.8thF,20-Feb-27,15-Mar-27,28-Jun-27,18-Jul-27,,,18,-95,0,Yes,No,CON-B04-8TH-1060,"AB-APP-B04-8TH-1030, AB-APP-B04-8TH-1030",0.0,0,0.0
The Big -P.01-UP-20-April-26,AB-SUB-B04-RF-1000,Submittal for Col. & Walls Conc. Dim.  & RFT DWGs As-Built Drawing (B04) (RF),The Big - P.01 - UP-24-MAY-26.HO.1.S.P01.B04.SUP.RF,27-Feb-27,07-Mar-27,06-Jul-27,14-Jul-27,,,8,-102,0,Yes,No,CON-B04-RF-1030,"AB-APP-B04-RF-1000, AB-APP-B04-RF-1000",0.0,0,0.0
The Big -P.01-UP-20-April-26,AB-SUB-B04-RF-1010,Submittal for Slabs Conc. Dim.  & RFT DWGs As-Built Drawing (B04) (RF),The Big - P.01 - UP-24-MAY-26.HO.1.S.P01.B04.SUP.RF,06-Mar-27,21-Mar-27,12-Jul-27,24-Jul-27,,,11,-107,0,Yes,No,CON-B04-RF-1060,"AB-APP-B04-RF-1010, AB-APP-B04-RF-1010",0.0,0,0.0
The Big -P.01-UP-20-April-26,AB-SUB-B04-RF-1020,Submittal for Beams Conc. Dim.  & RFT DWGs As-Built Drawing (B04) (RF),The Big - P.01 - UP-24-MAY-26.HO.1.S.P01.B04.SUP.RF,06-Mar-27,21-Mar-27,12-Jul-27,24-Jul-27,,,11,-107,0,Yes,No,CON-B04-RF-1060,"AB-APP-B04-RF-1020, AB-APP-B04-RF-1020",0.0,0,0.0
The Big -P.01-UP-20-April-26,AB-APP-B01-REP-1000,Approval for General Replacement Plan & Typical Sections for Replacement / Backfilling DWGs As-Built Drawing (B01),The Big - P.01 - UP-24-MAY-26.HO.1.A.P02.B01.SUB.1,08-Dec-25,21-Dec-25,04-Jun-26,17-Jun-26,,,12,241,361,No,No,"AB-SUB-B01-REP-1000, AB-SUB-B01-REP-1000",HO-1050,0.0,0,0.0
The Big -P.01-UP-20-April-26,AB-APP-B01-FOOT-1000,Approval for PC Raft Conc. Dim. DWGs As-Built Drawing (B01) (footing),The Big - P.01 - UP-24-MAY-26.HO.1.A.P02.B01.SUB.F,13-Dec-25,25-Dec-25,04-Jun-26,17-Jun-26,,,12,241,361,No,No,"AB-SUB-B01-FOOT-1000, AB-SUB-B01-FOOT-1000",HO-1050,0.0,0,0.0
The Big -P.01-UP-20-April-26,AB-APP-B01-FOOT-1020,Approval for RC Raft & Footings Conc. Dim. DWGs As-Built Drawing (B01),The Big - P.01 - UP-24-MAY-26.HO.1.A.P02.B01.SUB.F,05-Jan-26,19-Jan-26,04-Jun-26,17-Jun-26,,,12,241,361,No,No,"AB-SUB-B01-FOOT-1020, AB-SUB-B01-FOOT-1020",HO-1050,0.0,0,0.0
The Big -P.01-UP-20-April-26,AB-APP-B01-FOOT-1030,Approval for RC Raft & Footings RFT DWGs As-Built Drawing (B01),The Big - P.01 - UP-24-MAY-26.HO.1.A.P02.B01.SUB.F,05-Jan-26,19-Jan-26,04-Jun-26,17-Jun-26,,,12,241,361,No,No,"AB-SUB-B01-FOOT-1030, AB-SUB-B01-FOOT-1030",HO-1050,0.0,0,0.0
The Big -P.01-UP-20-April-26,AB-APP-B01-FOOT-1010,Approval for  Waterproofing Layout Plan DWGs As-Built Drawing (B01),The Big - P.01 - UP-24-MAY-26.HO.1.A.P02.B01.SUB.F,17-Dec-25,30-Dec-25,04-Jun-26,17-Jun-26,,,12,241,361,No,No,"AB-SUB-B01-FOOT-1010, AB-SUB-B01-FOOT-1010",HO-1050,0.0,0,0.0
The Big -P.01-UP-20-April-26,AB-APP-B01-BAS2-1000,Approval for Col. & Walls Conc. Dim.  & RFT DWGs As-Built Drawing (B01) (Bas 02),The Big - P.01 - UP-24-MAY-26.HO.1.A.P02.B01.SUB.2ndB,03-Feb-26,16-Feb-26,02-Jul-26,16-Jul-26,,,12,218,338,No,No,"AB-SUB-B01-BAS2-1000, AB-SUB-B01-BAS2-1000",HO-1050,0.0,0,0.0
The Big -P.01-UP-20-April-26,AB-APP-B01-BAS2-1030,Approval for Slabs Conc. Dim.  & RFT DWGs As-Built Drawing (B01) (Bas 02),The Big - P.01 - UP-24-MAY-26.HO.1.A.P02.B01.SUB.2ndB,21-Feb-26,05-Mar-26,20-Jul-26,04-Aug-26,,,12,203,323,No,No,"AB-SUB-B01-BAS2-1030, AB-SUB-B01-BAS2-1030",HO-1050,0.0,0,0.0
The Big -P.01-UP-20-April-26,AB-APP-B01-BAS2-1040,Approval for Beams Conc. Dim.  & RFT DWGs As-Built Drawing (B01) (Bas 02),The Big - P.01 - UP-24-MAY-26.HO.1.A.P02.B01.SUB.2ndB,21-Feb-26,05-Mar-26,20-Jul-26,04-Aug-26,,,12,203,323,No,No,"AB-SUB-B01-BAS2-1040, AB-SUB-B01-BAS2-1040",HO-1050,0.0,0,0.0
The Big -P.01-UP-20-April-26,AB-APP-B01-BAS2-1010,Approval for Stairs Conc. Dim.  & RFT DWGs As-Built Drawing (B01) (Bas 02),The Big - P.01 - UP-24-MAY-26.HO.1.A.P02.B01.SUB.2ndB,17-Feb-26,02-Mar-26,16-Jul-26,01-Aug-26,,,12,206,326,No,No,"AB-SUB-B01-BAS2-1010, AB-SUB-B01-BAS2-1010",HO-1050,0.0,0,0.0
The Big -P.01-UP-20-April-26,AB-APP-B01-BAS2-1020,Approval for Ramps Conc. Dim.  & RFT DWGs As-Built Drawing (B01) (Bas 02),The Big - P.01 - UP-24-MAY-26.HO.1.A.P02.B01.SUB.2ndB,19-Feb-26,04-Mar-26,19-Jul-26,03-Aug-26,,,12,204,324,No,No,"AB-SUB-B01-BAS2-1020, AB-SUB-B01-BAS2-1020",HO-1050,0.0,0,0.0
The Big -P.01-UP-20-April-26,AB-APP-B01-SOG-1000,Approval for S.O.G Conc. Dim.DWGs As-Built Drawing (B01) (Sog),The Big - P.01 - UP-24-MAY-26.HO.1.A.P02.B01.SUB.2ndB.1,13-Jun-26,25-Jun-26,05-Nov-26,18-Nov-26,,,12,113,233,No,No,"AB-SUB-B01-SOG-1000, AB-SUB-B01-SOG-1000",HO-1050,0.0,0,0.0
The Big -P.01-UP-20-April-26,AB-APP-B01-SOG-1010,Approval for S.O.G RFT DWGs As-Built Drawing (B01) (Sog),The Big - P.01 - UP-24-MAY-26.HO.1.A.P02.B01.SUB.2ndB.1,17-Jun-26,01-Jul-26,10-Nov-26,23-Nov-26,,,12,109,229,No,No,"AB-SUB-B01-SOG-1010, AB-SUB-B01-SOG-1010",HO-1050,0.0,0,0.0
The Big -P.01-UP-20-April-26,AB-APP-B01-BAS1-1000,Approval for Col. & Walls Conc. Dim.  & RFT DWGs As-Built Drawing (B01) (Bas 01),The Big - P.01 - UP-24-MAY-26.HO.1.A.P02.B01.SUB.1stB,15-Mar-26,01-Apr-26,13-Aug-26,29-Aug-26,,,12,183,303,No,No,"AB-SUB-B01-BAS1-1000, AB-SUB-B01-BAS1-1000",HO-1050,0.0,0,0.0
The Big -P.01-UP-20-April-26,AB-APP-B01-BAS1-1020,Approval for Slabs Conc. Dim.  & RFT DWGs As-Built Drawing (B01) (Bas 01),The Big - P.01 - UP-24-MAY-26.HO.1.A.P02.B01.SUB.1stB,05-Apr-26,19-Apr-26,31-Aug-26,14-Sep-26,,,12,169,289,No,No,"AB-SUB-B01-BAS1-1020, AB-SUB-B01-BAS1-1020",HO-1050,0.0,0,0.0
The Big -P.01-UP-20-April-26,AB-APP-B01-BAS1-1030,Approval for Beams Conc. Dim.  & RFT DWGs As-Built Drawing (B01) (Bas 01),The Big - P.01 - UP-24-MAY-26.HO.1.A.P02.B01.SUB.1stB,05-Apr-26,19-Apr-26,31-Aug-26,14-Sep-26,,,12,169,289,No,No,"AB-SUB-B01-BAS1-1030, AB-SUB-B01-BAS1-1030",HO-1050,0.0,0,0.0
The Big -P.01-UP-20-April-26,AB-APP-B01-BAS1-1010,Approval for Stairs Conc. Dim.  & RFT DWGs As-Built Drawing (B01) (Bas 01),The Big - P.01 - UP-24-MAY-26.HO.1.A.P02.B01.SUB.1stB,04-Apr-26,18-Apr-26,30-Aug-26,13-Sep-26,,,12,170,290,No,No,"AB-SUB-B01-BAS1-1010, AB-SUB-B01-BAS1-1010",HO-1050,0.0,0,0.0
The Big -P.01-UP-20-April-26,AB-APP-B01-BAS1-1040,Approval for Ramps Conc. Dim.  & RFT DWGs As-Built Drawing (B01) (Bas 01),The Big - P.01 - UP-24-MAY-26.HO.1.A.P02.B01.SUB.1stB,06-Apr-26,20-Apr-26,01-Sep-26,15-Sep-26,,,12,168,288,No,No,"AB-SUB-B01-BAS1-1040, AB-SUB-B01-BAS1-1040",HO-1050,0.0,0,0.0
The Big -P.01-UP-20-April-26,AB-APP-B01-GR-1000,Approval for Col. & Walls Conc. Dim.  & RFT DWGs As-Built Drawing (B01)  (GF),The Big - P.01 - UP-24-MAY-26.HO.1.A.P02.B01.SUP.GF,22-Apr-26,05-May-26,16-Sep-26,30-Sep-26,,,12,155,275,No,No,"AB-SUB-B01-GR-1000, AB-SUB-B01-GR-1000",HO-1050,0.0,0,0.0
The Big -P.01-UP-20-April-26,AB-APP-B01-GR-1020,Approval for Slabs Conc. Dim.  & RFT DWGs As-Built Drawing (B01)  (GF),The Big - P.01 - UP-24-MAY-26.HO.1.A.P02.B01.SUP.GF,13-May-26,26-May-26,08-Oct-26,22-Oct-26,,,12,137,257,No,No,"AB-SUB-B01-GR-1020, AB-SUB-B01-GR-1020",HO-1050,0.0,0,0.0
The Big -P.01-UP-20-April-26,AB-APP-B01-GR-1030,Approval for Beams Conc. Dim.  & RFT DWGs As-Built Drawing (B01)  (GF),The Big - P.01 - UP-24-MAY-26.HO.1.A.P02.B01.SUP.GF,13-May-26,26-May-26,08-Oct-26,22-Oct-26,,,12,137,257,No,No,"AB-SUB-B01-GR-1030, AB-SUB-B01-GR-1030",HO-1050,0.0,0,0.0
The Big -P.01-UP-20-April-26,AB-APP-B01-GR-1010,Approval for Stairs Conc. Dim.  & RFT DWGs As-Built Drawing (B01)  (GF),The Big - P.01 - UP-24-MAY-26.HO.1.A.P02.B01.SUP.GF,09-May-26,21-May-26,03-Oct-26,18-Oct-26,,,12,141,261,No,No,"AB-SUB-B01-GR-1010, AB-SUB-B01-GR-1010",HO-1050,0.0,0,0.0
The Big -P.01-UP-20-April-26,AB-APP-B01-1ST-1000,Approval for Col. & Walls Conc. Dim.  & RFT DWGs As-Built Drawing (B01) (1st),The Big - P.01 - UP-24-MAY-26.HO.1.A.P02.B01.SUP.1stF,04-Jun-26,17-Jun-26,27-Oct-26,10-Nov-26,,,12,121,241,No,No,"AB-SUB-B01-1ST-1000, AB-SUB-B01-1ST-1000",HO-1050,0.0,0,0.0
The Big -P.01-UP-20-April-26,AB-APP-B01-1ST-1010,Approval for Slabs Conc. Dim.  & RFT DWGs As-Built Drawing (B01) (1st),The Big - P.01 - UP-24-MAY-26.HO.1.A.P02.B01.SUP.1stF,27-Jun-26,11-Jul-26,18-Nov-26,02-Dec-26,,,12,102,222,No,No,"AB-SUB-B01-1ST-1010, AB-SUB-B01-1ST-1010",HO-1050,0.0,0,0.0
The Big -P.01-UP-20-April-26,AB-APP-B01-1ST-1020,Approval for Beams Conc. Dim.  & RFT DWGs As-Built Drawing (B01) (1st),The Big - P.01 - UP-24-MAY-26.HO.1.A.P02.B01.SUP.1stF,27-Jun-26,11-Jul-26,18-Nov-26,02-Dec-26,,,12,102,222,No,No,"AB-SUB-B01-1ST-1020, AB-SUB-B01-1ST-1020",HO-1050,0.0,0,0.0
The Big -P.01-UP-20-April-26,AB-APP-B01-1ST-1030,Approval for Stairs Conc. Dim.  & RFT DWGs As-Built Drawing (B01) (1st),The Big - P.01 - UP-24-MAY-26.HO.1.A.P02.B01.SUP.1stF,27-Jun-26,11-Jul-26,18-Nov-26,02-Dec-26,,,12,102,222,No,No,"AB-SUB-B01-1ST-1030, AB-SUB-B01-1ST-1030",HO-1050,0.0,0,0.0
The Big -P.01-UP-20-April-26,AB-APP-B01-2ND-1000,Approval for Col. & Walls Conc. Dim.  & RFT DWGs As-Built Drawing (B01) (2nd),The Big - P.01 - UP-24-MAY-26.HO.1.A.P02.B01.SUP.2ndF,15-Jul-26,29-Jul-26,06-Dec-26,20-Dec-26,,,12,87,207,No,No,"AB-SUB-B01-2ND-1000, AB-SUB-B01-2ND-1000",HO-1050,0.0,0,0.0
The Big -P.01-UP-20-April-26,AB-APP-B01-2ND-1010,Approval for Slabs Conc. Dim.  & RFT DWGs As-Built Drawing (B01) (2nd),The Big - P.01 - UP-24-MAY-26.HO.1.A.P02.B01.SUP.2ndF,03-Aug-26,16-Aug-26,23-Dec-26,06-Jan-27,,,12,72,192,No,No,"AB-SUB-B01-2ND-1010, AB-SUB-B01-2ND-1010",HO-1050,0.0,0,0.0
The Big -P.01-UP-20-April-26,AB-APP-B01-2ND-1020,Approval for Beams Conc. Dim.  & RFT DWGs As-Built Drawing (B01) (2nd),The Big - P.01 - UP-24-MAY-26.HO.1.A.P02.B01.SUP.2ndF,03-Aug-26,16-Aug-26,23-Dec-26,06-Jan-27,,,12,72,192,No,No,"AB-SUB-B01-2ND-1020, AB-SUB-B01-2ND-1020",HO-1050,0.0,0,0.0
The Big -P.01-UP-20-April-26,AB-APP-B01-2ND-1030,Approval for Stairs Conc. Dim.  & RFT DWGs As-Built Drawing (B01) (2nd),The Big - P.01 - UP-24-MAY-26.HO.1.A.P02.B01.SUP.2ndF,03-Aug-26,16-Aug-26,23-Dec-26,06-Jan-27,,,12,72,192,No,No,"AB-SUB-B01-2ND-1030, AB-SUB-B01-2ND-1030",HO-1050,0.0,0,0.0
The Big -P.01-UP-20-April-26,AB-APP-B01-3RD-1000,Approval for Col. & Walls Conc. Dim.  & RFT DWGs As-Built Drawing (B01) (3rd),The Big - P.01 - UP-24-MAY-26.HO.1.A.P02.B01.SUP.3rdF,22-Aug-26,05-Sep-26,12-Jan-27,27-Jan-27,,,12,56,176,No,No,"AB-SUB-B01-3RD-1000, AB-SUB-B01-3RD-1000",HO-1050,0.0,0,0.0
The Big -P.01-UP-20-April-26,AB-APP-B01-3RD-1010,Approval for Slabs Conc. Dim.  & RFT DWGs As-Built Drawing (B01) (3rd),The Big - P.01 - UP-24-MAY-26.HO.1.A.P02.B01.SUP.3rdF,12-Sep-26,24-Sep-26,02-Feb-27,16-Feb-27,,,12,39,159,No,No,"AB-SUB-B01-3RD-1010, AB-SUB-B01-3RD-1010",HO-1050,0.0,0,0.0
The Big -P.01-UP-20-April-26,AB-APP-B01-3RD-1020,Approval for Beams Conc. Dim.  & RFT DWGs As-Built Drawing (B01) (3rd),The Big - P.01 - UP-24-MAY-26.HO.1.A.P02.B01.SUP.3rdF,12-Sep-26,24-Sep-26,02-Feb-27,16-Feb-27,,,12,39,159,No,No,"AB-SUB-B01-3RD-1020, AB-SUB-B01-3RD-1020",HO-1050,0.0,0,0.0
The Big -P.01-UP-20-April-26,AB-APP-B01-3RD-1030,Approval for Stairs Conc. Dim.  & RFT DWGs As-Built Drawing (B01) (3rd),The Big - P.01 - UP-24-MAY-26.HO.1.A.P02.B01.SUP.3rdF,12-Sep-26,24-Sep-26,02-Feb-27,16-Feb-27,,,12,39,159,No,No,"AB-SUB-B01-3RD-1030, AB-SUB-B01-3RD-1030",HO-1050,0.0,0,0.0
The Big -P.01-UP-20-April-26,AB-APP-B01-4TH-1000,Approval for Col. & Walls Conc. Dim.  & RFT DWGs As-Built Drawing (B01) (4th),The Big - P.01 - UP-24-MAY-26.HO.1.A.P02.B01.SUP.4thF,30-Sep-26,14-Oct-26,21-Feb-27,07-Mar-27,,,12,23,143,No,No,"AB-SUB-B01-4TH-1000, AB-SUB-B01-4TH-1000",HO-1050,0.0,0,0.0
The Big -P.01-UP-20-April-26,AB-APP-B01-4TH-1010,Approval for Slabs Conc. Dim.  & RFT DWGs As-Built Drawing (B01) (4th),The Big - P.01 - UP-24-MAY-26.HO.1.A.P02.B01.SUP.4thF,24-Oct-26,05-Nov-26,18-Mar-27,01-Apr-27,,,12,4,124,No,No,"AB-SUB-B01-4TH-1010, AB-SUB-B01-4TH-1010",HO-1050,0.0,0,0.0
The Big -P.01-UP-20-April-26,AB-APP-B01-4TH-1020,Approval for Beams Conc. Dim.  & RFT DWGs As-Built Drawing (B01) (4th),The Big - P.01 - UP-24-MAY-26.HO.1.A.P02.B01.SUP.4thF,24-Oct-26,05-Nov-26,18-Mar-27,01-Apr-27,,,12,4,124,No,No,"AB-SUB-B01-4TH-1020, AB-SUB-B01-4TH-1020",HO-1050,0.0,0,0.0
The Big -P.01-UP-20-April-26,AB-APP-B01-4TH-1030,Approval for Stairs Conc. Dim.  & RFT DWGs As-Built Drawing (B01) (4th),The Big - P.01 - UP-24-MAY-26.HO.1.A.P02.B01.SUP.4thF,24-Oct-26,05-Nov-26,18-Mar-27,01-Apr-27,,,12,4,124,No,No,"AB-SUB-B01-4TH-1030, AB-SUB-B01-4TH-1030",HO-1050,0.0,0,0.0
The Big -P.01-UP-20-April-26,AB-APP-B01-5TH-1000,Approval for Col. & Walls Conc. Dim.  & RFT DWGs As-Built Drawing (B01) (5th),The Big - P.01 - UP-24-MAY-26.HO.1.A.P02.B01.SUP.5thF,10-Nov-26,23-Nov-26,05-Apr-27,19-Apr-27,,,12,-11,109,Yes,No,"AB-SUB-B01-5TH-1000, AB-SUB-B01-5TH-1000",HO-1050,0.0,0,0.0
The Big -P.01-UP-20-April-26,AB-APP-B01-5TH-1010,Approval for Slabs Conc. Dim.  & RFT DWGs As-Built Drawing (B01) (5th),The Big - P.01 - UP-24-MAY-26.HO.1.A.P02.B01.SUP.5thF,28-Nov-26,10-Dec-26,22-Apr-27,06-May-27,,,12,-26,94,Yes,No,"AB-SUB-B01-5TH-1010, AB-SUB-B01-5TH-1010",HO-1050,0.0,0,0.0
The Big -P.01-UP-20-April-26,AB-APP-B01-5TH-1020,Approval for Beams Conc. Dim.  & RFT DWGs As-Built Drawing (B01) (5th),The Big - P.01 - UP-24-MAY-26.HO.1.A.P02.B01.SUP.5thF,28-Nov-26,10-Dec-26,22-Apr-27,06-May-27,,,12,-26,94,Yes,No,"AB-SUB-B01-5TH-1020, AB-SUB-B01-5TH-1020",HO-1050,0.0,0,0.0
The Big -P.01-UP-20-April-26,AB-APP-B01-5TH-1030,Approval for Stairs Conc. Dim.  & RFT DWGs As-Built Drawing (B01) (5th),The Big - P.01 - UP-24-MAY-26.HO.1.A.P02.B01.SUP.5thF,28-Nov-26,10-Dec-26,22-Apr-27,06-May-27,,,12,-26,94,Yes,No,"AB-SUB-B01-5TH-1030, AB-SUB-B01-5TH-1030",HO-1050,0.0,0,0.0
The Big -P.01-UP-20-April-26,AB-APP-B01-6TH-1000,Approval for Col. & Walls Conc. Dim.  & RFT DWGs As-Built Drawing (B01) (6th),The Big - P.01 - UP-24-MAY-26.HO.1.A.P02.B01.SUP.6thF,15-Dec-26,28-Dec-26,10-May-27,24-May-27,,,12,-41,79,Yes,No,"AB-SUB-B01-6TH-1000, AB-SUB-B01-6TH-1000",HO-1050,0.0,0,0.0
The Big -P.01-UP-20-April-26,AB-APP-B01-6TH-1010,Approval for Slabs Conc. Dim.  & RFT DWGs As-Built Drawing (B01) (6th),The Big - P.01 - UP-24-MAY-26.HO.1.A.P02.B01.SUP.6thF,02-Jan-27,16-Jan-27,27-May-27,10-Jun-27,,,12,-56,64,Yes,No,"AB-SUB-B01-6TH-1010, AB-SUB-B01-6TH-1010",HO-1050,0.0,0,0.0
The Big -P.01-UP-20-April-26,AB-APP-B01-6TH-1020,Approval for Beams Conc. Dim.  & RFT DWGs As-Built Drawing (B01) (6th),The Big - P.01 - UP-24-MAY-26.HO.1.A.P02.B01.SUP.6thF,02-Jan-27,16-Jan-27,27-May-27,10-Jun-27,,,12,-56,64,Yes,No,"AB-SUB-B01-6TH-1020, AB-SUB-B01-6TH-1020",HO-1050,0.0,0,0.0
The Big -P.01-UP-20-April-26,AB-APP-B01-6TH-1030,Approval for Stairs Conc. Dim.  & RFT DWGs As-Built Drawing (B01) (6th),The Big - P.01 - UP-24-MAY-26.HO.1.A.P02.B01.SUP.6thF,02-Jan-27,16-Jan-27,27-May-27,10-Jun-27,,,12,-56,64,Yes,No,"AB-SUB-B01-6TH-1030, AB-SUB-B01-6TH-1030",HO-1050,0.0,0,0.0
The Big -P.01-UP-20-April-26,AB-APP-B01-7TH-1000,Approval for Col. & Walls Conc. Dim.  & RFT DWGs As-Built Drawing (B01) (7th),The Big - P.01 - UP-24-MAY-26.HO.1.A.P02.B01.SUP.7thF,18-Jan-27,01-Feb-27,12-Jun-27,26-Jun-27,,,12,-69,51,Yes,No,"AB-SUB-B01-7TH-1000, AB-SUB-B01-7TH-1000",HO-1050,0.0,0,0.0
The Big -P.01-UP-20-April-26,AB-APP-B01-7TH-1010,Approval for Slabs Conc. Dim.  & RFT DWGs As-Built Drawing (B01) (7th),The Big - P.01 - UP-24-MAY-26.HO.1.A.P02.B01.SUP.7thF,04-Feb-27,17-Feb-27,28-Jun-27,12-Jul-27,,,12,-83,37,Yes,No,"AB-SUB-B01-7TH-1010, AB-SUB-B01-7TH-1010",HO-1050,0.0,0,0.0
The Big -P.01-UP-20-April-26,AB-APP-B01-7TH-1020,Approval for Beams Conc. Dim.  & RFT DWGs As-Built Drawing (B01) (7th),The Big - P.01 - UP-24-MAY-26.HO.1.A.P02.B01.SUP.7thF,04-Feb-27,17-Feb-27,28-Jun-27,12-Jul-27,,,12,-83,37,Yes,No,"AB-SUB-B01-7TH-1020, AB-SUB-B01-7TH-1020",HO-1050,0.0,0,0.0
The Big -P.01-UP-20-April-26,AB-APP-B01-7TH-1030,Approval for Stairs Conc. Dim.  & RFT DWGs As-Built Drawing (B01) (7th),The Big - P.01 - UP-24-MAY-26.HO.1.A.P02.B01.SUP.7thF,04-Feb-27,17-Feb-27,28-Jun-27,12-Jul-27,,,12,-83,37,Yes,No,"AB-SUB-B01-7TH-1030, AB-SUB-B01-7TH-1030",HO-1050,0.0,0,0.0
The Big -P.01-UP-20-April-26,AB-APP-B01-8TH-1000,Approval for Col. & Walls Conc. Dim.  & RFT DWGs As-Built Drawing (B01) (8th),The Big - P.01 - UP-24-MAY-26.HO.1.A.P02.B01.SUP.8thF,18-Feb-27,03-Mar-27,12-Jul-27,26-Jul-27,,,12,-95,25,Yes,No,"AB-SUB-B01-8TH-1000, AB-SUB-B01-8TH-1000",HO-1050,0.0,0,0.0
The Big -P.01-UP-20-April-26,AB-APP-B01-8TH-1010,Approval for Slabs Conc. Dim.  & RFT DWGs As-Built Drawing (B01) (8th),The Big - P.01 - UP-24-MAY-26.HO.1.A.P02.B01.SUP.8thF,04-Mar-27,21-Mar-27,26-Jul-27,09-Aug-27,,,12,-107,13,Yes,No,"AB-SUB-B01-8TH-1010, AB-SUB-B01-8TH-1010",HO-1050,0.0,0,0.0
The Big -P.01-UP-20-April-26,AB-APP-B01-8TH-1020,Approval for Beams Conc. Dim.  & RFT DWGs As-Built Drawing (B01) (8th),The Big - P.01 - UP-24-MAY-26.HO.1.A.P02.B01.SUP.8thF,04-Mar-27,21-Mar-27,26-Jul-27,09-Aug-27,,,12,-107,13,Yes,No,"AB-SUB-B01-8TH-1020, AB-SUB-B01-8TH-1020",HO-1050,0.0,0,0.0
The Big -P.01-UP-20-April-26,AB-APP-B01-8TH-1030,Approval for Stairs Conc. Dim.  & RFT DWGs As-Built Drawing (B01) (8th),The Big - P.01 - UP-24-MAY-26.HO.1.A.P02.B01.SUP.8thF,04-Mar-27,21-Mar-27,26-Jul-27,09-Aug-27,,,12,-107,13,Yes,No,"AB-SUB-B01-8TH-1030, AB-SUB-B01-8TH-1030",HO-1050,0.0,0,0.0
The Big -P.01-UP-20-April-26,AB-APP-B01-RF-1000,Approval for Col. & Walls Conc. Dim.  & RFT DWGs As-Built Drawing (B01) (RF),The Big - P.01 - UP-24-MAY-26.HO.1.A.P02.B01.SUP.RF,16-Mar-27,29-Mar-27,04-Aug-27,18-Aug-27,,,12,-115,5,Yes,No,"AB-SUB-B01-RF-1000, AB-SUB-B01-RF-1000",HO-1050,0.0,0,0.0
The Big -P.01-UP-20-April-26,AB-APP-B01-RF-1010,Approval for Slabs Conc. Dim.  & RFT DWGs As-Built Drawing (B01) (RF),The Big - P.01 - UP-24-MAY-26.HO.1.A.P02.B01.SUP.RF,23-Mar-27,05-Apr-27,10-Aug-27,24-Aug-27,,,12,-120,0,Yes,No,"AB-SUB-B01-RF-1010, AB-SUB-B01-RF-1010",HO-1050,0.0,0,0.0
The Big -P.01-UP-20-April-26,AB-APP-B01-RF-1020,Approval for Beams Conc. Dim.  & RFT DWGs As-Built Drawing (B01) (RF),The Big - P.01 - UP-24-MAY-26.HO.1.A.P02.B01.SUP.RF,23-Mar-27,05-Apr-27,10-Aug-27,24-Aug-27,,,12,-120,0,Yes,No,"AB-SUB-B01-RF-1020, AB-SUB-B01-RF-1020",HO-1050,0.0,0,0.0
The Big -P.01-UP-20-April-26,AB-APP-B02-REP-1000,Approval for General Replacement Plan & Typical Sections for Replacement / Backfilling DWGs As-Built Drawing (B02),The Big - P.01 - UP-24-MAY-26.HO.1.A.P02.B02.SUB.1,23-Dec-25,05-Jan-26,04-Jun-26,17-Jun-26,,,12,241,361,No,No,"AB-SUB-B02-REP-1000, AB-SUB-B02-REP-1000",HO-1050,0.0,0,0.0
The Big -P.01-UP-20-April-26,AB-APP-B02-FOOT-1000,Approval for PC Raft Conc. Dim. DWGs As-Built Drawing (B02) (footing),The Big - P.01 - UP-24-MAY-26.HO.1.A.P02.B02.SUB.F,25-Dec-25,08-Jan-26,04-Jun-26,17-Jun-26,,,12,241,361,No,No,"AB-SUB-B02-FOOT-1000, AB-SUB-B02-FOOT-1000",HO-1050,0.0,0,0.0
The Big -P.01-UP-20-April-26,AB-APP-B02-FOOT-1010,Approval for RC Raft & Footings Conc. Dim. DWGs As-Built Drawing (B02) (footing),The Big - P.01 - UP-24-MAY-26.HO.1.A.P02.B02.SUB.F,13-Jan-26,27-Jan-26,04-Jun-26,17-Jun-26,,,12,241,361,No,No,"AB-SUB-B02-FOOT-1010, AB-SUB-B02-FOOT-1010",HO-1050,0.0,0,0.0
The Big -P.01-UP-20-April-26,AB-APP-B02-FOOT-1020,Approval for RC Raft & Footings RFT DWGs As-Built Drawing (B02) (footing),The Big - P.01 - UP-24-MAY-26.HO.1.A.P02.B02.SUB.F,18-Jan-26,01-Feb-26,04-Jun-26,17-Jun-26,,,12,241,361,No,No,"AB-SUB-B02-FOOT-1020, AB-SUB-B02-FOOT-1020",HO-1050,0.0,0,0.0
The Big -P.01-UP-20-April-26,AB-APP-B02-FOOT-1030,Approval for  Waterproofing Layout Plan DWGs As-Built Drawing  (B02),The Big - P.01 - UP-24-MAY-26.HO.1.A.P02.B02.SUB.F,24-Jan-26,07-Feb-26,22-Jul-26,05-Aug-26,,,12,201,321,No,No,"AB-SUB-B02-FOOT-1030, AB-SUB-B02-FOOT-1030",HO-1050,0.0,0,0.0
The Big -P.01-UP-20-April-26,AB-APP-B02-BAS2-1000,Approval for Col. & Walls Conc. Dim.  & RFT DWGs As-Built Drawing (B02) (Bas 02),The Big - P.01 - UP-24-MAY-26.HO.1.A.P02.B02.SUB.2ndB,10-Feb-26,23-Feb-26,04-Jun-26,17-Jun-26,,,12,241,361,No,No,"AB-SUB-B02-BAS2-1000, AB-SUB-B02-BAS2-1000",HO-1050,0.0,0,0.0
The Big -P.01-UP-20-April-26,AB-APP-B02-BAS2-1020,Approval for Slabs Conc. Dim.  & RFT DWGs As-Built Drawing (B02) (Bas 02),The Big - P.01 - UP-24-MAY-26.HO.1.A.P02.B02.SUB.2ndB,26-Feb-26,11-Mar-26,18-Jun-26,02-Jul-26,,,12,229,349,No,No,"AB-SUB-B02-BAS2-1020, AB-SUB-B02-BAS2-1020",HO-1050,0.0,0,0.0
The Big -P.01-UP-20-April-26,AB-APP-B02-BAS2-1030,Approval for Beams Conc. Dim.  & RFT DWGs As-Built Drawing (B02) (Bas 02),The Big - P.01 - UP-24-MAY-26.HO.1.A.P02.B02.SUB.2ndB,26-Feb-26,11-Mar-26,18-Jun-26,02-Jul-26,,,12,229,349,No,No,"AB-SUB-B02-BAS2-1030, AB-SUB-B02-BAS2-1030",HO-1050,0.0,0,0.0
The Big -P.01-UP-20-April-26,AB-APP-B02-BAS2-1010,Approval for Stairs Conc. Dim.  & RFT DWGs As-Built Drawing (B02) (Bas 02),The Big - P.01 - UP-24-MAY-26.HO.1.A.P02.B02.SUB.2ndB,22-Feb-26,07-Mar-26,14-Jun-26,27-Jun-26,,,12,233,353,No,No,"AB-SUB-B02-BAS2-1010, AB-SUB-B02-BAS2-1010",HO-1050,0.0,0,0.0
The Big -P.01-UP-20-April-26,AB-APP-B02-SOG-1000,Approval for S.O.G Conc. Dim. DWGs As-Built Drawing (B02) (Sog),The Big - P.01 - UP-24-MAY-26.HO.1.A.P02.B02.SUB.2ndB.SOG,06-Jul-26,19-Jul-26,28-Nov-26,10-Dec-26,,,12,94,214,No,No,"AB-SUB-B02-SOG-1000, AB-SUB-B02-SOG-1000",HO-1050,0.0,0,0.0
The Big -P.01-UP-20-April-26,AB-APP-B02-SOG-1010,Approval for S.O.G RFT DWGs As-Built Drawing (B02) (Sog),The Big - P.01 - UP-24-MAY-26.HO.1.A.P02.B02.SUB.2ndB.SOG,06-Jul-26,19-Jul-26,28-Nov-26,10-Dec-26,,,12,94,214,No,No,"AB-SUB-B02-SOG-1010, AB-SUB-B02-SOG-1010",HO-1050,0.0,0,0.0
The Big -P.01-UP-20-April-26,AB-APP-B02-BAS1-1000,Approval for Col. & Walls Conc. Dim.  & RFT DWGs As-Built Drawing (B02) (Bas 01),The Big - P.01 - UP-24-MAY-26.HO.1.A.P02.B02.SUB.1stB,24-Mar-26,06-Apr-26,11-Jul-26,25-Jul-26,,,12,211,331,No,No,"AB-SUB-B02-BAS1-1000, AB-SUB-B02-BAS1-1000",HO-1050,0.0,0,0.0
The Big -P.01-UP-20-April-26,AB-APP-B02-BAS1-1020,Approval for Slabs Conc. Dim.  & RFT DWGs As-Built Drawing (B02) (Bas 01),The Big - P.01 - UP-24-MAY-26.HO.1.A.P02.B02.SUB.1stB,09-Apr-26,23-Apr-26,28-Jul-26,10-Aug-26,,,12,197,317,No,No,"AB-SUB-B02-BAS1-1020, AB-SUB-B02-BAS1-1020",HO-1050,0.0,0,0.0
The Big -P.01-UP-20-April-26,AB-APP-B02-BAS1-1030,Approval for Beams Conc. Dim.  & RFT DWGs As-Built Drawing (B02) (Bas 01),The Big - P.01 - UP-24-MAY-26.HO.1.A.P02.B02.SUB.1stB,09-Apr-26,23-Apr-26,28-Jul-26,10-Aug-26,,,12,197,317,No,No,"AB-SUB-B02-BAS1-1030, AB-SUB-B02-BAS1-1030",HO-1050,0.0,0,0.0
The Big -P.01-UP-20-April-26,AB-APP-B02-BAS1-1010,Approval for Stairs Conc. Dim.  & RFT DWGs As-Built Drawing (B02) (Bas 01),The Big - P.01 - UP-24-MAY-26.HO.1.A.P02.B02.SUB.1stB,07-Apr-26,21-Apr-26,26-Jul-26,08-Aug-26,,,12,199,319,No,No,"AB-SUB-B02-BAS1-1010, AB-SUB-B02-BAS1-1010",HO-1050,0.0,0,0.0
The Big -P.01-UP-20-April-26,AB-APP-B02-GR-1000,Approval for Col. & Walls Conc. Dim.  & RFT DWGs As-Built Drawing (B02) (GF),The Big - P.01 - UP-24-MAY-26.HO.1.A.P02.B02.SUP.GF,03-May-26,16-May-26,19-Aug-26,02-Sep-26,,,12,178,298,No,No,"AB-SUB-B02-GR-1000, AB-SUB-B02-GR-1000",HO-1050,0.0,0,0.0
The Big -P.01-UP-20-April-26,AB-APP-B02-GR-1020,Approval for Slabs Conc. Dim.  & RFT DWGs As-Built Drawing (B02) (GF),The Big - P.01 - UP-24-MAY-26.HO.1.A.P02.B02.SUP.GF,26-May-26,13-Jun-26,13-Sep-26,26-Sep-26,,,12,158,278,No,No,"AB-SUB-B02-GR-1020, AB-SUB-B02-GR-1020",HO-1050,0.0,0,0.0
The Big -P.01-UP-20-April-26,AB-APP-B02-GR-1030,Approval for Beams Conc. Dim.  & RFT DWGs As-Built Drawing (B02) (GF),The Big - P.01 - UP-24-MAY-26.HO.1.A.P02.B02.SUP.GF,26-May-26,13-Jun-26,13-Sep-26,26-Sep-26,,,12,158,278,No,No,"AB-SUB-B02-GR-1030, AB-SUB-B02-GR-1030",HO-1050,0.0,0,0.0
The Big -P.01-UP-20-April-26,AB-APP-B02-GR-1010,Approval for Stairs Conc. Dim.  & RFT DWGs As-Built Drawing (B02) (GF),The Big - P.01 - UP-24-MAY-26.HO.1.A.P02.B02.SUP.GF,18-May-26,04-Jun-26,05-Sep-26,17-Sep-26,,,12,165,285,No,No,"AB-SUB-B02-GR-1010, AB-SUB-B02-GR-1010",HO-1050,0.0,0,0.0
The Big -P.01-UP-20-April-26,AB-APP-B02-1ST-1000,Approval for Col. & Walls Conc. Dim.  & RFT DWGs As-Built Drawing (B02) (1st),The Big - P.01 - UP-24-MAY-26.HO.1.A.P02.B02.SUP.1stF,07-Jul-26,20-Jul-26,20-Oct-26,02-Nov-26,,,12,127,247,No,No,"AB-SUB-B02-1ST-1000, AB-SUB-B02-1ST-1000",HO-1050,0.0,0,0.0
The Big -P.01-UP-20-April-26,AB-APP-B02-1ST-1010,Approval for Slabs Conc. Dim.  & RFT DWGs As-Built Drawing (B02) (1st),The Big - P.01 - UP-24-MAY-26.HO.1.A.P02.B02.SUP.1stF,30-Jul-26,12-Aug-26,11-Nov-26,24-Nov-26,,,12,108,228,No,No,"AB-SUB-B02-1ST-1010, AB-SUB-B02-1ST-1010",HO-1050,0.0,0,0.0
The Big -P.01-UP-20-April-26,AB-APP-B02-1ST-1020,Approval for Beams Conc. Dim.  & RFT DWGs As-Built Drawing (B02) (1st),The Big - P.01 - UP-24-MAY-26.HO.1.A.P02.B02.SUP.1stF,30-Jul-26,12-Aug-26,11-Nov-26,24-Nov-26,,,12,108,228,No,No,"AB-SUB-B02-1ST-1020, AB-SUB-B02-1ST-1020",HO-1050,0.0,0,0.0
The Big -P.01-UP-20-April-26,AB-APP-B02-1ST-1030,Approval for Stairs Conc. Dim.  & RFT DWGs As-Built Drawing (B02) (1st),The Big - P.01 - UP-24-MAY-26.HO.1.A.P02.B02.SUP.1stF,30-Jul-26,12-Aug-26,11-Nov-26,24-Nov-26,,,12,108,228,No,No,"AB-SUB-B02-1ST-1030, AB-SUB-B02-1ST-1030",HO-1050,0.0,0,0.0
The Big -P.01-UP-20-April-26,AB-APP-B02-2ND-1000,Approval for Col. & Walls Conc. Dim.  & RFT DWGs As-Built Drawing (B02) (2nd),The Big - P.01 - UP-24-MAY-26.HO.1.A.P02.B02.SUP.2ndF,03-Sep-26,16-Sep-26,16-Dec-26,29-Dec-26,,,12,78,198,No,No,"AB-SUB-B02-2ND-1000, AB-SUB-B02-2ND-1000",HO-1050,0.0,0,0.0
The Big -P.01-UP-20-April-26,AB-APP-B02-2ND-1010,Approval for Slabs Conc. Dim.  & RFT DWGs As-Built Drawing (B02) (2nd),The Big - P.01 - UP-24-MAY-26.HO.1.A.P02.B02.SUP.2ndF,29-Sep-26,13-Oct-26,12-Jan-27,26-Jan-27,,,12,56,176,No,No,"AB-SUB-B02-2ND-1010, AB-SUB-B02-2ND-1010",HO-1050,0.0,0,0.0
The Big -P.01-UP-20-April-26,AB-APP-B02-2ND-1020,Approval for Beams Conc. Dim.  & RFT DWGs As-Built Drawing (B02) (2nd),The Big - P.01 - UP-24-MAY-26.HO.1.A.P02.B02.SUP.2ndF,29-Sep-26,13-Oct-26,12-Jan-27,26-Jan-27,,,12,56,176,No,No,"AB-SUB-B02-2ND-1020, AB-SUB-B02-2ND-1020",HO-1050,0.0,0,0.0
The Big -P.01-UP-20-April-26,AB-APP-B02-2ND-1030,Approval for Stairs Conc. Dim.  & RFT DWGs As-Built Drawing (B02) (2nd),The Big - P.01 - UP-24-MAY-26.HO.1.A.P02.B02.SUP.2ndF,29-Sep-26,13-Oct-26,12-Jan-27,26-Jan-27,,,12,56,176,No,No,"AB-SUB-B02-2ND-1030, AB-SUB-B02-2ND-1030",HO-1050,0.0,0,0.0
The Big -P.01-UP-20-April-26,AB-APP-B02-3RD-1000,Approval for Col. & Walls Conc. Dim.  & RFT DWGs As-Built Drawing (B02) (3rd),The Big - P.01 - UP-24-MAY-26.HO.1.A.P02.B02.SUP.3rdF,04-Nov-26,17-Nov-26,16-Feb-27,01-Mar-27,,,12,27,147,No,No,"AB-SUB-B02-3RD-1000, AB-SUB-B02-3RD-1000",HO-1050,0.0,0,0.0
The Big -P.01-UP-20-April-26,AB-APP-B02-3RD-1010,Approval for Slabs Conc. Dim.  & RFT DWGs As-Built Drawing (B02) (3rd),The Big - P.01 - UP-24-MAY-26.HO.1.A.P02.B02.SUP.3rdF,30-Nov-26,13-Dec-26,17-Mar-27,30-Mar-27,,,12,5,125,No,No,"AB-SUB-B02-3RD-1010, AB-SUB-B02-3RD-1010",HO-1050,0.0,0,0.0
The Big -P.01-UP-20-April-26,AB-APP-B02-3RD-1020,Approval for Beams Conc. Dim.  & RFT DWGs As-Built Drawing (B02) (3rd),The Big - P.01 - UP-24-MAY-26.HO.1.A.P02.B02.SUP.3rdF,30-Nov-26,13-Dec-26,17-Mar-27,30-Mar-27,,,12,5,125,No,No,"AB-SUB-B02-3RD-1020, AB-SUB-B02-3RD-1020",HO-1050,0.0,0,0.0
The Big -P.01-UP-20-April-26,AB-APP-B02-3RD-1030,Approval for Stairs Conc. Dim.  & RFT DWGs As-Built Drawing (B02) (3rd),The Big - P.01 - UP-24-MAY-26.HO.1.A.P02.B02.SUP.3rdF,30-Nov-26,13-Dec-26,17-Mar-27,30-Mar-27,,,12,5,125,No,No,"AB-SUB-B02-3RD-1030, AB-SUB-B02-3RD-1030",HO-1050,0.0,0,0.0
The Big -P.01-UP-20-April-26,AB-APP-B02-4TH-1000,Approval for Col. & Walls Conc. Dim.  & RFT DWGs As-Built Drawing (B02) (4th),The Big - P.01 - UP-24-MAY-26.HO.1.A.P02.B02.SUP.4thF,04-Jan-27,18-Jan-27,18-Apr-27,01-May-27,,,12,-22,98,Yes,No,"AB-SUB-B02-4TH-1000, AB-SUB-B02-4TH-1000",HO-1050,0.0,0,0.0
The Big -P.01-UP-20-April-26,AB-APP-B02-4TH-1010,Approval for Slabs Conc. Dim.  & RFT DWGs As-Built Drawing (B02) (4th),The Big - P.01 - UP-24-MAY-26.HO.1.A.P02.B02.SUP.4thF,31-Jan-27,13-Feb-27,12-May-27,25-May-27,,,12,-43,77,Yes,No,"AB-SUB-B02-4TH-1010, AB-SUB-B02-4TH-1010",HO-1050,0.0,0,0.0
The Big -P.01-UP-20-April-26,AB-APP-B02-4TH-1020,Approval for Beams Conc. Dim.  & RFT DWGs As-Built Drawing (B02) (4th),The Big - P.01 - UP-24-MAY-26.HO.1.A.P02.B02.SUP.4thF,31-Jan-27,13-Feb-27,12-May-27,25-May-27,,,12,-43,77,Yes,No,"AB-SUB-B02-4TH-1020, AB-SUB-B02-4TH-1020",HO-1050,0.0,0,0.0
The Big -P.01-UP-20-April-26,AB-APP-B02-4TH-1030,Approval for Stairs Conc. Dim.  & RFT DWGs As-Built Drawing (B02) (4th),The Big - P.01 - UP-24-MAY-26.HO.1.A.P02.B02.SUP.4thF,31-Jan-27,13-Feb-27,12-May-27,25-May-27,,,12,-43,77,Yes,No,"AB-SUB-B02-4TH-1030, AB-SUB-B02-4TH-1030",HO-1050,0.0,0,0.0
The Big -P.01-UP-20-April-26,AB-APP-B02-RF-1000,Approval for Col. & Walls Conc. Dim.  & RFT DWGs As-Built Drawing (B02) (RF),The Big - P.01 - UP-24-MAY-26.HO.1.A.P02.B02.SUP.RF,23-Feb-27,08-Mar-27,06-Jun-27,19-Jun-27,,,12,-64,56,Yes,No,"AB-SUB-B02-RF-1000, AB-SUB-B02-RF-1000",HO-1050,0.0,0,0.0
The Big -P.01-UP-20-April-26,AB-APP-B02-RF-1010,Approval for Slabs Conc. Dim.  & RFT DWGs As-Built Drawing (B02) (RF),The Big - P.01 - UP-24-MAY-26.HO.1.A.P02.B02.SUP.RF,07-Mar-27,23-Mar-27,17-Jun-27,30-Jun-27,,,12,-74,46,Yes,No,"AB-SUB-B02-RF-1010, AB-SUB-B02-RF-1010",HO-1050,0.0,0,0.0
The Big -P.01-UP-20-April-26,AB-APP-B02-RF-1020,Approval for Beams Conc. Dim.  & RFT DWGs As-Built Drawing (B02) (RF),The Big - P.01 - UP-24-MAY-26.HO.1.A.P02.B02.SUP.RF,07-Mar-27,23-Mar-27,17-Jun-27,30-Jun-27,,,12,-74,46,Yes,No,"AB-SUB-B02-RF-1020, AB-SUB-B02-RF-1020",HO-1050,0.0,0,0.0
The Big -P.01-UP-20-April-26,AB-APP-B03-REP-1000,Approval for General Replacement Plan & Typical Sections for Replacement / Backfilling DWGs As-Built Drawing (B03),The Big - P.01 - UP-24-MAY-26.HO.1.A.P01.B03.SUB.4,10-Jan-26,22-Jan-26,04-Jun-26,17-Jun-26,,,12,241,361,No,No,"AB-SUB-B03-REP-1000, AB-SUB-B03-REP-1000",HO-1050,0.0,0,0.0
The Big -P.01-UP-20-April-26,AB-APP-B03-FOOT-1000,Approval for PC Raft Conc. Dim. DWGs As-Built Drawing (B03) (footing),The Big - P.01 - UP-24-MAY-26.HO.1.A.P01.B03.SUB.1,12-Jan-26,26-Jan-26,04-Jun-26,17-Jun-26,,,12,241,361,No,No,"AB-SUB-B03-FOOT-1000, AB-SUB-B03-FOOT-1000",HO-1050,0.0,0,0.0
The Big -P.01-UP-20-April-26,AB-APP-B03-FOOT-1010,Approval for RC Raft & Footings Conc. Dim. DWGs  (B03) (footing),The Big - P.01 - UP-24-MAY-26.HO.1.A.P01.B03.SUB.1,01-Feb-26,14-Feb-26,04-Jun-26,17-Jun-26,,,12,241,361,No,No,"AB-SUB-B03-FOOT-1010, AB-SUB-B03-FOOT-1010",HO-1050,0.0,0,0.0
The Big -P.01-UP-20-April-26,AB-APP-B03-FOOT-1020,Approval for RC Raft & Footings RFT DWGs As-Built Drawing  (B03) (footing),The Big - P.01 - UP-24-MAY-26.HO.1.A.P01.B03.SUB.1,03-Feb-26,16-Feb-26,04-Jun-26,17-Jun-26,,,12,241,361,No,No,"AB-SUB-B03-FOOT-1020, AB-SUB-B03-FOOT-1020",HO-1050,0.0,0,0.0
The Big -P.01-UP-20-April-26,AB-APP-B03-FOOT-1030,Approval for  Waterproofing Layout Plan  DWGs As-Built Drawing(B03),The Big - P.01 - UP-24-MAY-26.HO.1.A.P01.B03.SUB.1,10-Feb-26,23-Feb-26,22-Jul-26,05-Aug-26,,,12,201,321,No,No,"AB-SUB-B03-FOOT-1030, AB-SUB-B03-FOOT-1030",HO-1050,0.0,0,0.0
The Big -P.01-UP-20-April-26,AB-APP-B03-BAS2-1000,Approval for Col. & Walls Conc. Dim.  & RFT DWGs As-Built Drawing  (B03) (Bas 02),The Big - P.01 - UP-24-MAY-26.HO.1.A.P01.B03.SUB.3,26-Feb-26,11-Mar-26,04-Jun-26,17-Jun-26,,,12,241,361,No,No,"AB-SUB-B03-BAS2-1000, AB-SUB-B03-BAS2-1000",HO-1050,0.0,0,0.0
The Big -P.01-UP-20-April-26,AB-APP-B03-BAS2-1020,Approval for Slabs Conc. Dim.  & RFT DWGs As-Built Drawing  (B03) (Bas 02),The Big - P.01 - UP-24-MAY-26.HO.1.A.P01.B03.SUB.3,15-Mar-26,01-Apr-26,01-Jul-26,14-Jul-26,,,12,219,339,No,No,"AB-SUB-B03-BAS2-1020, AB-SUB-B03-BAS2-1020",HO-1050,0.0,0,0.0
The Big -P.01-UP-20-April-26,AB-APP-B03-BAS2-1030,Approval for Beams Conc. Dim.  & RFT DWGs As-Built Drawing  (B03) (Bas 02),The Big - P.01 - UP-24-MAY-26.HO.1.A.P01.B03.SUB.3,15-Mar-26,01-Apr-26,01-Jul-26,14-Jul-26,,,12,219,339,No,No,"AB-SUB-B03-BAS2-1030, AB-SUB-B03-BAS2-1030",HO-1050,0.0,0,0.0
The Big -P.01-UP-20-April-26,AB-APP-B03-BAS2-1010,Approval for Stairs Conc. Dim.  & RFT DWGs As-Built Drawing  (B03) (Bas 02),The Big - P.01 - UP-24-MAY-26.HO.1.A.P01.B03.SUB.3,12-Mar-26,30-Mar-26,25-Jun-26,11-Jul-26,,,12,223,343,No,No,"AB-SUB-B03-BAS2-1010, AB-SUB-B03-BAS2-1010",HO-1050,0.0,0,0.0
The Big -P.01-UP-20-April-26,AB-APP-B03-SOG-1000,Approval for S.O.G Conc. Dim. DWGs As-Built Drawing  (B03) (Sog),The Big - P.01 - UP-24-MAY-26.HO.1.A.P01.B03.SUB.3.2,04-May-26,17-May-26,01-Sep-26,14-Sep-26,,,12,168,288,No,No,"AB-SUB-B03-SOG-1000, AB-SUB-B03-SOG-1000",HO-1050,0.0,0,0.0
The Big -P.01-UP-20-April-26,AB-APP-B03-SOG-1010,Approval for S.O.G RFT DWGs As-Built Drawing  (B03) (Sog),The Big - P.01 - UP-24-MAY-26.HO.1.A.P01.B03.SUB.3.2,09-May-26,21-May-26,06-Sep-26,19-Sep-26,,,12,164,284,No,No,"AB-SUB-B03-SOG-1010, AB-SUB-B03-SOG-1010",HO-1050,0.0,0,0.0
The Big -P.01-UP-20-April-26,AB-APP-B03-BAS1-1000,Approval for Col. & Walls Conc. Dim.  & RFT DWGs As-Built Drawing  (B03) (Bas 01),The Big - P.01 - UP-24-MAY-26.HO.1.A.P01.B03.SUB.2,08-Apr-26,22-Apr-26,27-Jul-26,09-Aug-26,,,12,198,318,No,No,"AB-SUB-B03-BAS1-1000, AB-SUB-B03-BAS1-1000",HO-1050,0.0,0,0.0
The Big -P.01-UP-20-April-26,AB-APP-B03-BAS1-1020,Approval for Slabs Conc. Dim.  & RFT DWGs As-Built Drawing  (B03) (Bas 01),The Big - P.01 - UP-24-MAY-26.HO.1.A.P01.B03.SUB.2,26-Apr-26,09-May-26,12-Aug-26,25-Aug-26,,,12,184,304,No,No,"AB-SUB-B03-BAS1-1020, AB-SUB-B03-BAS1-1020",HO-1050,0.0,0,0.0
The Big -P.01-UP-20-April-26,AB-APP-B03-BAS1-1030,Approval for Beams Conc. Dim.  & RFT DWGs As-Built Drawing  (B03) (Bas 01),The Big - P.01 - UP-24-MAY-26.HO.1.A.P01.B03.SUB.2,26-Apr-26,09-May-26,12-Aug-26,25-Aug-26,,,12,184,304,No,No,"AB-SUB-B03-BAS1-1030, AB-SUB-B03-BAS1-1030",HO-1050,0.0,0,0.0
The Big -P.01-UP-20-April-26,AB-APP-B03-BAS1-1010,Approval for Stairs Conc. Dim.  & RFT DWGs As-Built Drawing  (B03) (Bas 01),The Big - P.01 - UP-24-MAY-26.HO.1.A.P01.B03.SUB.2,25-Apr-26,07-May-26,11-Aug-26,24-Aug-26,,,12,185,305,No,No,"AB-SUB-B03-BAS1-1010, AB-SUB-B03-BAS1-1010",HO-1050,0.0,0,0.0
The Big -P.01-UP-20-April-26,AB-APP-B03-GR-1000,Approval for Col. & Walls Conc. Dim.  & RFT DWGs As-Built Drawing  (B03) (GF),The Big - P.01 - UP-24-MAY-26.HO.1.A.P01.B03.SUP.GF,12-May-26,25-May-26,31-Aug-26,13-Sep-26,,,12,169,289,No,No,"AB-SUB-B03-GR-1000, AB-SUB-B03-GR-1000",HO-1050,0.0,0,0.0
The Big -P.01-UP-20-April-26,AB-APP-B03-GR-1010,Approval for Slabs Conc. Dim.  & RFT DWGs As-Built Drawing  (B03) (GF),The Big - P.01 - UP-24-MAY-26.HO.1.A.P01.B03.SUP.GF,24-May-26,10-Jun-26,12-Sep-26,24-Sep-26,,,12,159,279,No,No,"AB-SUB-B03-GR-1010, AB-SUB-B03-GR-1010",HO-1050,0.0,0,0.0
The Big -P.01-UP-20-April-26,AB-APP-B03-GR-1020,Approval for Beams Conc. Dim.  & RFT DWGs As-Built Drawing  (B03) (GF),The Big - P.01 - UP-24-MAY-26.HO.1.A.P01.B03.SUP.GF,24-May-26,10-Jun-26,12-Sep-26,24-Sep-26,,,12,159,279,No,No,"AB-SUB-B03-GR-1020, AB-SUB-B03-GR-1020",HO-1050,0.0,0,0.0
The Big -P.01-UP-20-April-26,AB-APP-B03-GR-1030,Approval for Stairs Conc. Dim.  & RFT DWGs As-Built Drawing  (B03) (GF),The Big - P.01 - UP-24-MAY-26.HO.1.A.P01.B03.SUP.GF,24-May-26,10-Jun-26,12-Sep-26,24-Sep-26,,,12,159,279,No,No,"AB-SUB-B03-GR-1030, AB-SUB-B03-GR-1030",HO-1050,0.0,0,0.0
The Big -P.01-UP-20-April-26,AB-APP-B03-1ST-1000,Approval for Col. & Walls Conc. Dim.  & RFT DWGs As-Built Drawing  (B03) (1st),The Big - P.01 - UP-24-MAY-26.HO.1.A.P01.B03.SUP.1stF,12-Jul-26,26-Jul-26,28-Oct-26,10-Nov-26,,,12,120,240,No,No,"AB-SUB-B03-1ST-1000, AB-SUB-B03-1ST-1000",HO-1050,0.0,0,0.0
The Big -P.01-UP-20-April-26,AB-APP-B03-1ST-1010,Approval for Slabs Conc. Dim.  & RFT DWGs As-Built Drawing  (B03) (1st),The Big - P.01 - UP-24-MAY-26.HO.1.A.P01.B03.SUP.1stF,08-Aug-26,20-Aug-26,23-Nov-26,06-Dec-26,,,12,98,218,No,No,"AB-SUB-B03-1ST-1010, AB-SUB-B03-1ST-1010",HO-1050,0.0,0,0.0
The Big -P.01-UP-20-April-26,AB-APP-B03-1ST-1020,Approval for Beams Conc. Dim.  & RFT DWGs As-Built Drawing  (B03) (1st),The Big - P.01 - UP-24-MAY-26.HO.1.A.P01.B03.SUP.1stF,08-Aug-26,20-Aug-26,23-Nov-26,06-Dec-26,,,12,98,218,No,No,"AB-SUB-B03-1ST-1020, AB-SUB-B03-1ST-1020",HO-1050,0.0,0,0.0
The Big -P.01-UP-20-April-26,AB-APP-B03-1ST-1030,Approval for Stairs Conc. Dim.  & RFT DWGs As-Built Drawing  (B03) (1st),The Big - P.01 - UP-24-MAY-26.HO.1.A.P01.B03.SUP.1stF,08-Aug-26,20-Aug-26,23-Nov-26,06-Dec-26,,,12,98,218,No,No,"AB-SUB-B03-1ST-1030, AB-SUB-B03-1ST-1030",HO-1050,0.0,0,0.0
The Big -P.01-UP-20-April-26,AB-APP-B03-2ND-1000,Approval for Col. & Walls Conc. Dim.  & RFT DWGs As-Built Drawing  (B03) (2nd),The Big - P.01 - UP-24-MAY-26.HO.1.A.P01.B03.SUP.2ndF,16-Sep-26,29-Sep-26,02-Jan-27,16-Jan-27,,,12,64,184,No,No,"AB-SUB-B03-2ND-1000, AB-SUB-B03-2ND-1000",HO-1050,0.0,0,0.0
The Big -P.01-UP-20-April-26,AB-APP-B03-2ND-1010,Approval for Slabs Conc. Dim.  & RFT DWGs As-Built Drawing  (B03) (2nd),The Big - P.01 - UP-24-MAY-26.HO.1.A.P01.B03.SUP.2ndF,13-Oct-26,26-Oct-26,30-Jan-27,11-Feb-27,,,12,42,162,No,No,"AB-SUB-B03-2ND-1010, AB-SUB-B03-2ND-1010",HO-1050,0.0,0,0.0
The Big -P.01-UP-20-April-26,AB-APP-B03-2ND-1020,Approval for Beams Conc. Dim.  & RFT DWGs As-Built Drawing  (B03) (2nd),The Big - P.01 - UP-24-MAY-26.HO.1.A.P01.B03.SUP.2ndF,13-Oct-26,26-Oct-26,30-Jan-27,11-Feb-27,,,12,42,162,No,No,"AB-SUB-B03-2ND-1020, AB-SUB-B03-2ND-1020",HO-1050,0.0,0,0.0
The Big -P.01-UP-20-April-26,AB-APP-B03-2ND-1030,Approval for Stairs Conc. Dim.  & RFT DWGs As-Built Drawing  (B03) (2nd),The Big - P.01 - UP-24-MAY-26.HO.1.A.P01.B03.SUP.2ndF,13-Oct-26,26-Oct-26,30-Jan-27,11-Feb-27,,,12,42,162,No,No,"AB-SUB-B03-2ND-1030, AB-SUB-B03-2ND-1030",HO-1050,0.0,0,0.0
The Big -P.01-UP-20-April-26,AB-APP-B03-3RD-1000,Approval for Col. & Walls Conc. Dim.  & RFT DWGs As-Built Drawing  (B03) (3rd),The Big - P.01 - UP-24-MAY-26.HO.1.A.P01.B03.SUP.3rdF,18-Nov-26,01-Dec-26,07-Mar-27,23-Mar-27,,,12,11,131,No,No,"AB-SUB-B03-3RD-1000, AB-SUB-B03-3RD-1000",HO-1050,0.0,0,0.0
The Big -P.01-UP-20-April-26,AB-APP-B03-3RD-1010,Approval for Slabs Conc. Dim.  & RFT DWGs As-Built Drawing  (B03) (3rd),The Big - P.01 - UP-24-MAY-26.HO.1.A.P01.B03.SUP.3rdF,14-Dec-26,27-Dec-26,05-Apr-27,18-Apr-27,,,12,-11,109,Yes,No,"AB-SUB-B03-3RD-1010, AB-SUB-B03-3RD-1010",HO-1050,0.0,0,0.0
The Big -P.01-UP-20-April-26,AB-APP-B03-3RD-1020,Approval for Beams Conc. Dim.  & RFT DWGs As-Built Drawing  (B03) (3rd),The Big - P.01 - UP-24-MAY-26.HO.1.A.P01.B03.SUP.3rdF,14-Dec-26,27-Dec-26,05-Apr-27,18-Apr-27,,,12,-11,109,Yes,No,"AB-SUB-B03-3RD-1020, AB-SUB-B03-3RD-1020",HO-1050,0.0,0,0.0
The Big -P.01-UP-20-April-26,AB-APP-B03-3RD-1030,Approval for Stairs Conc. Dim.  & RFT DWGs As-Built Drawing  (B03) (3rd),The Big - P.01 - UP-24-MAY-26.HO.1.A.P01.B03.SUP.3rdF,14-Dec-26,27-Dec-26,05-Apr-27,18-Apr-27,,,12,-11,109,Yes,No,"AB-SUB-B03-3RD-1030, AB-SUB-B03-3RD-1030",HO-1050,0.0,0,0.0
The Big -P.01-UP-20-April-26,AB-APP-B03-4TH-1000,Approval for Col. & Walls Conc. Dim.  & RFT DWGs As-Built Drawing  (B03) (4th),The Big - P.01 - UP-24-MAY-26.HO.1.A.P01.B03.SUP.4thF,21-Jan-27,04-Feb-27,12-May-27,25-May-27,,,12,-43,77,Yes,No,"AB-SUB-B03-4TH-1000, AB-SUB-B03-4TH-1000",HO-1050,0.0,0,0.0
The Big -P.01-UP-20-April-26,AB-APP-B03-4TH-1010,Approval for Slabs Conc. Dim.  & RFT DWGs As-Built Drawing  (B03) (4th),The Big - P.01 - UP-24-MAY-26.HO.1.A.P01.B03.SUP.4thF,14-Feb-27,27-Feb-27,03-Jun-27,16-Jun-27,,,12,-62,58,Yes,No,"AB-SUB-B03-4TH-1010, AB-SUB-B03-4TH-1010",HO-1050,0.0,0,0.0
The Big -P.01-UP-20-April-26,AB-APP-B03-4TH-1020,Approval for Beams Conc. Dim.  & RFT DWGs As-Built Drawing  (B03) (4th),The Big - P.01 - UP-24-MAY-26.HO.1.A.P01.B03.SUP.4thF,14-Feb-27,27-Feb-27,03-Jun-27,16-Jun-27,,,12,-62,58,Yes,No,"AB-SUB-B03-4TH-1020, AB-SUB-B03-4TH-1020",HO-1050,0.0,0,0.0
The Big -P.01-UP-20-April-26,AB-APP-B03-4TH-1030,Approval for Stairs Conc. Dim.  & RFT DWGs As-Built Drawing  (B03) (4th),The Big - P.01 - UP-24-MAY-26.HO.1.A.P01.B03.SUP.4thF,14-Feb-27,27-Feb-27,03-Jun-27,16-Jun-27,,,12,-62,58,Yes,No,"AB-SUB-B03-4TH-1030, AB-SUB-B03-4TH-1030",HO-1050,0.0,0,0.0
The Big -P.01-UP-20-April-26,AB-APP-B03-RF-1000,Approval for Col. & Walls Conc. Dim.  & RFT DWGs As-Built Drawing  (B03) (RF),The Big - P.01 - UP-24-MAY-26.HO.1.A.P01.B03.SUP.RF,08-Mar-27,24-Mar-27,26-Jun-27,08-Jul-27,,,12,-81,39,Yes,No,"AB-SUB-B03-RF-1000, AB-SUB-B03-RF-1000",HO-1050,0.0,0,0.0
The Big -P.01-UP-20-April-26,AB-APP-B03-RF-1010,Approval for Slabs Conc. Dim.  & RFT DWGs As-Built Drawing  (B03) (RF),The Big - P.01 - UP-24-MAY-26.HO.1.A.P01.B03.SUP.RF,21-Mar-27,05-Apr-27,05-Jul-27,20-Jul-27,,,14,-91,29,Yes,No,"AB-SUB-B03-RF-1010, AB-SUB-B03-RF-1010",HO-1050,0.0,0,0.0
The Big -P.01-UP-20-April-26,AB-APP-B03-RF-1020,Approval for Beams Conc. Dim.  & RFT DWGs As-Built Drawing  (B03) (RF),The Big - P.01 - UP-24-MAY-26.HO.1.A.P01.B03.SUP.RF,21-Mar-27,05-Apr-27,05-Jul-27,20-Jul-27,,,14,-91,29,Yes,No,"AB-SUB-B03-RF-1020, AB-SUB-B03-RF-1020",HO-1050,0.0,0,0.0
The Big -P.01-UP-20-April-26,AB-APP-B04-REP-1000,Approval for General Replacement Plan & Typical Sections for Replacement / Backfilling DWGs As-Built Drawing (B04),The Big - P.01 - UP-24-MAY-26.HO.1.A.P01.B04.SUB.1,21-Jan-26,04-Feb-26,04-Jun-26,17-Jun-26,,,12,241,361,No,No,"AB-SUB-B04-REP-1000, AB-SUB-B04-REP-1000",HO-1050,0.0,0,0.0
The Big -P.01-UP-20-April-26,AB-APP-B04-FOOT-1000,Approval for PC Raft Conc. Dim. Conc. Dim.  & RFT DWGs As-Built Drawing  (B04) (footing),The Big - P.01 - UP-24-MAY-26.HO.1.A.P01.B04.SUB.F,24-Jan-26,07-Feb-26,04-Jun-26,17-Jun-26,,,12,241,361,No,No,"AB-SUB-B04-FOOT-1000, AB-SUB-B04-FOOT-1000",HO-1050,0.0,0,0.0
The Big -P.01-UP-20-April-26,AB-APP-B04-FOOT-1010,Approval for RC Raft & Footings Conc. Dim. Conc. Dim.  & RFT DWGs As-Built Drawing (B04) (footing),The Big - P.01 - UP-24-MAY-26.HO.1.A.P01.B04.SUB.F,08-Feb-26,21-Feb-26,07-Jun-26,21-Jun-26,,,12,238,359,No,No,"AB-SUB-B04-FOOT-1010, AB-SUB-B04-FOOT-1010",HO-1050,0.0,0,0.0
The Big -P.01-UP-20-April-26,AB-APP-B04-FOOT-1020,Approval for RC Raft & Footings RFT Conc. Dim.  & RFT DWGs As-Built Drawing (B04) (footing),The Big - P.01 - UP-24-MAY-26.HO.1.A.P01.B04.SUB.F,11-Feb-26,24-Feb-26,07-Jun-26,21-Jun-26,,,12,238,359,No,No,"AB-SUB-B04-FOOT-1020, AB-SUB-B04-FOOT-1020",HO-1050,0.0,0,0.0
The Big -P.01-UP-20-April-26,AB-APP-B04-FOOT-1030,Approval for  Waterproofing Layout Plan (B04),The Big - P.01 - UP-24-MAY-26.HO.1.A.P01.B04.SUB.F,18-Feb-26,03-Mar-26,22-Jul-26,05-Aug-26,,,12,201,321,No,No,"AB-SUB-B04-FOOT-1030, AB-SUB-B04-FOOT-1030",HO-1050,0.0,0,0.0
The Big -P.01-UP-20-April-26,AB-APP-B04-BAS2-1000,Approval for Col. & Walls Conc. Dim.  & RFT DWGs As-Built Drawing (B04) (Bas 02),The Big - P.01 - UP-24-MAY-26.HO.1.A.P01.B04.SUB.2ndF,26-Feb-26,11-Mar-26,22-Jun-26,06-Jul-26,,,12,226,346,No,No,"AB-SUB-B04-BAS2-1000, AB-SUB-B04-BAS2-1000",HO-1050,0.0,0,0.0
The Big -P.01-UP-20-April-26,AB-APP-B04-BAS2-1030,Approval for Slabs Conc. Dim.  & RFT DWGs As-Built Drawing (B04) (Bas 02),The Big - P.01 - UP-24-MAY-26.HO.1.A.P01.B04.SUB.2ndF,29-Mar-26,11-Apr-26,19-Jul-26,02-Aug-26,,,12,204,324,No,No,"AB-SUB-B04-BAS2-1030, AB-SUB-B04-BAS2-1030",HO-1050,0.0,0,0.0
The Big -P.01-UP-20-April-26,AB-APP-B04-BAS2-1040,Approval for Beams Conc. Dim.  & RFT DWGs As-Built Drawing (B04) (Bas 02),The Big - P.01 - UP-24-MAY-26.HO.1.A.P01.B04.SUB.2ndF,29-Mar-26,11-Apr-26,19-Jul-26,02-Aug-26,,,12,204,324,No,No,"AB-SUB-B04-BAS2-1040, AB-SUB-B04-BAS2-1040",HO-1050,0.0,0,0.0
The Big -P.01-UP-20-April-26,AB-APP-B04-BAS2-1010,Approval for Stairs Conc. Dim.  & RFT DWGs As-Built Drawing (B04) (Bas 02),The Big - P.01 - UP-24-MAY-26.HO.1.A.P01.B04.SUB.2ndF,24-Mar-26,06-Apr-26,14-Jul-26,28-Jul-26,,,12,208,328,No,No,"AB-SUB-B04-BAS2-1010, AB-SUB-B04-BAS2-1010",HO-1050,0.0,0,0.0
The Big -P.01-UP-20-April-26,AB-APP-B04-BAS2-1020,Approval for Ramps Conc. Dim.  & RFT DWGs As-Built Drawing (B04) (Bas 02),The Big - P.01 - UP-24-MAY-26.HO.1.A.P01.B04.SUB.2ndF,25-Mar-26,07-Apr-26,15-Jul-26,29-Jul-26,,,12,207,327,No,No,"AB-SUB-B04-BAS2-1020, AB-SUB-B04-BAS2-1020",HO-1050,0.0,0,0.0
The Big -P.01-UP-20-April-26,AB-APP-B04-WT-1000,Approval for PC Raft Conc. Dim. DWGs As-Built Drawing (B04) (Water Tank),The Big - P.01 - UP-24-MAY-26.HO.1.A.P01.B04.SUB.2ndF.WT,29-Nov-25,11-Dec-25,04-Jun-26,17-Jun-26,,,12,241,361,No,No,"AB-SUB-B04-WT-1000, AB-SUB-B04-WT-1000",HO-1050,0.0,0,0.0
The Big -P.01-UP-20-April-26,AB-APP-B04-WT-1010,Approval for RC Raft Conc. Dim. DWGs As-Built Drawing (B04) (Water Tank),The Big - P.01 - UP-24-MAY-26.HO.1.A.P01.B04.SUB.2ndF.WT,17-Dec-25,30-Dec-25,04-Jun-26,17-Jun-26,,,12,241,361,No,No,"AB-SUB-B04-WT-1010, AB-SUB-B04-WT-1010",HO-1050,0.0,0,0.0
The Big -P.01-UP-20-April-26,AB-APP-B04-WT-1030,Approval for Col. & Walls DWGs As-Built Drawing (B04) (Water Tank),The Big - P.01 - UP-24-MAY-26.HO.1.A.P01.B04.SUB.2ndF.WT,08-Jan-26,21-Jan-26,04-Jun-26,17-Jun-26,,,12,241,361,No,No,"AB-SUB-B04-WT-1030, AB-SUB-B04-WT-1030",HO-1050,0.0,0,0.0
The Big -P.01-UP-20-April-26,AB-APP-B04-WT-1040,Approval for Slabs DWGs As-Built Drawing (B04) (Water Tank),The Big - P.01 - UP-24-MAY-26.HO.1.A.P01.B04.SUB.2ndF.WT,19-Jan-26,02-Feb-26,17-Jun-26,01-Jul-26,,,12,230,350,No,No,"AB-SUB-B04-WT-1040, AB-SUB-B04-WT-1040",HO-1050,0.0,0,0.0
The Big -P.01-UP-20-April-26,AB-APP-B04-WT-1020,Approval for RC Raft RFT DWGs As-Built Drawing (B04) (Water Tank),The Big - P.01 - UP-24-MAY-26.HO.1.A.P01.B04.SUB.2ndF.WT,23-Dec-25,05-Jan-26,04-Jun-26,17-Jun-26,,,12,241,361,No,No,"AB-SUB-B04-WT-1020, AB-SUB-B04-WT-1020",HO-1050,0.0,0,0.0
The Big -P.01-UP-20-April-26,AB-APP-B04-SOG-1000,Approval for S.O.G Conc. Dim. DWGs As-Built Drawing (B04) (Sog),The Big - P.01 - UP-24-MAY-26.HO.1.A.P01.B04.SUB.2ndF.SOG,21-May-26,08-Jun-26,19-Sep-26,01-Oct-26,,,12,153,273,No,No,"AB-SUB-B04-SOG-1000, AB-SUB-B04-SOG-1000",HO-1050,0.0,0,0.0
The Big -P.01-UP-20-April-26,AB-APP-B04-SOG-1010,Approval for S.O.G RFT DWGs As-Built Drawing (B04) (Sog),The Big - P.01 - UP-24-MAY-26.HO.1.A.P01.B04.SUB.2ndF.SOG,21-May-26,08-Jun-26,19-Sep-26,01-Oct-26,,,12,153,273,No,No,"AB-SUB-B04-SOG-1010, AB-SUB-B04-SOG-1010",HO-1050,0.0,0,0.0
The Big -P.01-UP-20-April-26,AB-APP-B04-BAS1-1000,Approval for Col. & Walls Conc. Dim.  & RFT DWGs As-Built Drawing (B04) (Bas 01),The Big - P.01 - UP-24-MAY-26.HO.1.A.P01.B04.SUB.1stB,12-Apr-26,26-Apr-26,03-Aug-26,16-Aug-26,,,12,192,312,No,No,"AB-SUB-B04-BAS1-1000, AB-SUB-B04-BAS1-1000",HO-1050,0.0,0,0.0
The Big -P.01-UP-20-April-26,AB-APP-B04-BAS1-1030,Approval for Slabs Conc. Dim.  & RFT DWGs As-Built Drawing (B04) (Bas 01),The Big - P.01 - UP-24-MAY-26.HO.1.A.P01.B04.SUB.1stB,29-Apr-26,12-May-26,19-Aug-26,02-Sep-26,,,12,178,298,No,No,"AB-SUB-B04-BAS1-1030, AB-SUB-B04-BAS1-1030",HO-1050,0.0,0,0.0
The Big -P.01-UP-20-April-26,AB-APP-B04-BAS1-1040,Approval for Beams Conc. Dim.  & RFT DWGs As-Built Drawing (B04) (Bas 01),The Big - P.01 - UP-24-MAY-26.HO.1.A.P01.B04.SUB.1stB,29-Apr-26,12-May-26,19-Aug-26,02-Sep-26,,,12,178,298,No,No,"AB-SUB-B04-BAS1-1040, AB-SUB-B04-BAS1-1040",HO-1050,0.0,0,0.0
The Big -P.01-UP-20-April-26,AB-APP-B04-BAS1-1010,Approval for Stairs Conc. Dim.  & RFT DWGs As-Built Drawing (B04) (Bas 01),The Big - P.01 - UP-24-MAY-26.HO.1.A.P01.B04.SUB.1stB,29-Apr-26,12-May-26,19-Aug-26,02-Sep-26,,,12,178,298,No,No,"AB-SUB-B04-BAS1-1010, AB-SUB-B04-BAS1-1010",HO-1050,0.0,0,0.0
The Big -P.01-UP-20-April-26,AB-APP-B04-BAS1-1020,Approval for Ramps Conc. Dim.  & RFT DWGs As-Built Drawing (B04) (Bas 01),The Big - P.01 - UP-24-MAY-26.HO.1.A.P01.B04.SUB.1stB,29-Apr-26,12-May-26,19-Aug-26,02-Sep-26,,,12,178,298,No,No,"AB-SUB-B04-BAS1-1020, AB-SUB-B04-BAS1-1020",HO-1050,0.0,0,0.0
The Big -P.01-UP-20-April-26,AB-APP-B04-GR-1000,Approval for Col. & Walls Conc. Dim.  & RFT DWGs As-Built Drawing (B04) (GF),The Big - P.01 - UP-24-MAY-26.HO.1.A.P01.B04.SUP.GF,14-May-26,01-Jun-26,05-Sep-26,17-Sep-26,,,12,165,285,No,No,"AB-SUB-B04-GR-1000, AB-SUB-B04-GR-1000",HO-1050,0.0,0,0.0
The Big -P.01-UP-20-April-26,AB-APP-B04-GR-1010,Approval for Slabs Conc. Dim.  & RFT DWGs As-Built Drawing (B04) (GF),The Big - P.01 - UP-24-MAY-26.HO.1.A.P01.B04.SUP.GF,26-May-26,13-Jun-26,16-Sep-26,29-Sep-26,,,12,155,275,No,No,"AB-SUB-B04-GR-1010, AB-SUB-B04-GR-1010",HO-1050,0.0,0,0.0
The Big -P.01-UP-20-April-26,AB-APP-B04-GR-1020,Approval for Beams Conc. Dim.  & RFT DWGs As-Built Drawing (B04) (GF),The Big - P.01 - UP-24-MAY-26.HO.1.A.P01.B04.SUP.GF,26-May-26,13-Jun-26,16-Sep-26,29-Sep-26,,,12,155,275,No,No,"AB-SUB-B04-GR-1020, AB-SUB-B04-GR-1020",HO-1050,0.0,0,0.0
The Big -P.01-UP-20-April-26,AB-APP-B04-GR-1030,Approval for Stairs Conc. Dim.  & RFT DWGs As-Built Drawing (B04) (GF),The Big - P.01 - UP-24-MAY-26.HO.1.A.P01.B04.SUP.GF,26-May-26,13-Jun-26,16-Sep-26,29-Sep-26,,,12,155,275,No,No,"AB-SUB-B04-GR-1030, AB-SUB-B04-GR-1030",HO-1050,0.0,0,0.0
The Big -P.01-UP-20-April-26,AB-APP-B04-1ST-1000,Approval for Col. & Walls Conc. Dim.  & RFT DWGs As-Built Drawing (B04) (1st),The Big - P.01 - UP-24-MAY-26.HO.1.A.P01.B04.SUP.1stF,18-Jun-26,02-Jul-26,24-Oct-26,07-Nov-26,,,12,124,244,No,No,"AB-SUB-B04-1ST-1000, AB-SUB-B04-1ST-1000",HO-1050,0.0,0,0.0
The Big -P.01-UP-20-April-26,AB-APP-B04-1ST-1010,Approval for Slabs Conc. Dim.  & RFT DWGs As-Built Drawing (B04) (1st),The Big - P.01 - UP-24-MAY-26.HO.1.A.P01.B04.SUP.1stF,09-Jul-26,22-Jul-26,12-Nov-26,26-Nov-26,,,12,107,227,No,No,"AB-SUB-B04-1ST-1010, AB-SUB-B04-1ST-1010",HO-1050,0.0,0,0.0
The Big -P.01-UP-20-April-26,AB-APP-B04-1ST-1020,Approval for Beams Conc. Dim.  & RFT DWGs As-Built Drawing (B04) (1st),The Big - P.01 - UP-24-MAY-26.HO.1.A.P01.B04.SUP.1stF,09-Jul-26,22-Jul-26,12-Nov-26,26-Nov-26,,,12,107,227,No,No,"AB-SUB-B04-1ST-1020, AB-SUB-B04-1ST-1020",HO-1050,0.0,0,0.0
The Big -P.01-UP-20-April-26,AB-APP-B04-1ST-1030,Approval for Stairs Conc. Dim.  & RFT DWGs As-Built Drawing (B04) (1st),The Big - P.01 - UP-24-MAY-26.HO.1.A.P01.B04.SUP.1stF,09-Jul-26,22-Jul-26,12-Nov-26,26-Nov-26,,,12,107,227,No,No,"AB-SUB-B04-1ST-1030, AB-SUB-B04-1ST-1030",HO-1050,0.0,0,0.0
The Big -P.01-UP-20-April-26,AB-APP-B04-2ND-1000,Approval for Col. & Walls Conc. Dim.  & RFT DWGs As-Built Drawing (B04) (2nd),The Big - P.01 - UP-24-MAY-26.HO.1.A.P01.B04.SUP.2ndF,30-Jul-26,12-Aug-26,02-Dec-26,16-Dec-26,,,12,90,210,No,No,"AB-SUB-B04-2ND-1000, AB-SUB-B04-2ND-1000",HO-1050,0.0,0,0.0
The Big -P.01-UP-20-April-26,AB-APP-B04-2ND-1010,Approval for Slabs Conc. Dim.  & RFT DWGs As-Built Drawing (B04) (2nd),The Big - P.01 - UP-24-MAY-26.HO.1.A.P01.B04.SUP.2ndF,19-Aug-26,02-Sep-26,22-Dec-26,05-Jan-27,,,12,73,193,No,No,"AB-SUB-B04-2ND-1010, AB-SUB-B04-2ND-1010",HO-1050,0.0,0,0.0
The Big -P.01-UP-20-April-26,AB-APP-B04-2ND-1020,Approval for Beams Conc. Dim.  & RFT DWGs As-Built Drawing (B04) (2nd),The Big - P.01 - UP-24-MAY-26.HO.1.A.P01.B04.SUP.2ndF,19-Aug-26,02-Sep-26,22-Dec-26,05-Jan-27,,,12,73,193,No,No,"AB-SUB-B04-2ND-1020, AB-SUB-B04-2ND-1020",HO-1050,0.0,0,0.0
The Big -P.01-UP-20-April-26,AB-APP-B04-2ND-1030,Approval for Stairs Conc. Dim.  & RFT DWGs As-Built Drawing (B04) (2nd),The Big - P.01 - UP-24-MAY-26.HO.1.A.P01.B04.SUP.2ndF,19-Aug-26,02-Sep-26,22-Dec-26,05-Jan-27,,,12,73,193,No,No,"AB-SUB-B04-2ND-1030, AB-SUB-B04-2ND-1030",HO-1050,0.0,0,0.0
The Big -P.01-UP-20-April-26,AB-APP-B04-3TH-1000,Approval for Col. & Walls Conc. Dim.  & RFT DWGs As-Built Drawing (B04) (3rd),The Big - P.01 - UP-24-MAY-26.HO.1.A.P01.B04.SUP.3rdF,09-Sep-26,22-Sep-26,13-Jan-27,27-Jan-27,,,12,55,175,No,No,"AB-SUB-B04-3RD-1000, AB-SUB-B04-3RD-1000",HO-1050,0.0,0,0.0
The Big -P.01-UP-20-April-26,AB-APP-B04-3TH-1010,Approval for Slabs Conc. Dim.  & RFT DWGs As-Built Drawing (B04) (3rd),The Big - P.01 - UP-24-MAY-26.HO.1.A.P01.B04.SUP.3rdF,29-Sep-26,13-Oct-26,03-Feb-27,16-Feb-27,,,12,38,158,No,No,"AB-SUB-B04-3RD-1010, AB-SUB-B04-3RD-1010",HO-1050,0.0,0,0.0
The Big -P.01-UP-20-April-26,AB-APP-B04-3TH-1020,Approval for Beams Conc. Dim.  & RFT DWGs As-Built Drawing (B04) (3rd),The Big - P.01 - UP-24-MAY-26.HO.1.A.P01.B04.SUP.3rdF,29-Sep-26,13-Oct-26,03-Feb-27,16-Feb-27,,,12,38,158,No,No,"AB-SUB-B04-3RD-1020, AB-SUB-B04-3RD-1020",HO-1050,0.0,0,0.0
The Big -P.01-UP-20-April-26,AB-APP-B04-3TH-1030,Approval for Stairs Conc. Dim.  & RFT DWGs As-Built Drawing (B04) (3rd),The Big - P.01 - UP-24-MAY-26.HO.1.A.P01.B04.SUP.3rdF,29-Sep-26,13-Oct-26,03-Feb-27,16-Feb-27,,,12,38,158,No,No,"AB-SUB-B04-3RD-1030, AB-SUB-B04-3RD-1030",HO-1050,0.0,0,0.0
The Big -P.01-UP-20-April-26,AB-APP-B04-4TH-1000,Approval for Col. & Walls Conc. Dim.  & RFT DWGs As-Built Drawing (B04) (4th),The Big - P.01 - UP-24-MAY-26.HO.1.A.P01.B04.SUP.4thF,18-Oct-26,31-Oct-26,21-Feb-27,06-Mar-27,,,12,23,143,No,No,"AB-SUB-B04-4TH-1000, AB-SUB-B04-4TH-1000",HO-1050,0.0,0,0.0
The Big -P.01-UP-20-April-26,AB-APP-B04-4TH-1010,Approval for Slabs Conc. Dim.  & RFT DWGs As-Built Drawing (B04) (4th),The Big - P.01 - UP-24-MAY-26.HO.1.A.P01.B04.SUP.4thF,05-Nov-26,18-Nov-26,15-Mar-27,28-Mar-27,,,12,7,127,No,No,"AB-SUB-B04-4TH-1010, AB-SUB-B04-4TH-1010",HO-1050,0.0,0,0.0
The Big -P.01-UP-20-April-26,AB-APP-B04-4TH-1020,Approval for Beams Conc. Dim.  & RFT DWGs As-Built Drawing (B04) (4th),The Big - P.01 - UP-24-MAY-26.HO.1.A.P01.B04.SUP.4thF,05-Nov-26,18-Nov-26,15-Mar-27,28-Mar-27,,,12,7,127,No,No,"AB-SUB-B04-4TH-1020, AB-SUB-B04-4TH-1020",HO-1050,0.0,0,0.0
The Big -P.01-UP-20-April-26,AB-APP-B04-4TH-1030,Approval for Stairs Conc. Dim.  & RFT DWGs As-Built Drawing (B04) (4th),The Big - P.01 - UP-24-MAY-26.HO.1.A.P01.B04.SUP.4thF,05-Nov-26,18-Nov-26,15-Mar-27,28-Mar-27,,,12,7,127,No,No,"AB-SUB-B04-4TH-1030, AB-SUB-B04-4TH-1030",HO-1050,0.0,0,0.0
The Big -P.01-UP-20-April-26,AB-APP-B04-5TH-1000,Approval for Col. & Walls Conc. Dim.  & RFT DWGs As-Built Drawing (B04) (5th),The Big - P.01 - UP-24-MAY-26.HO.1.A.P01.B04.SUP.5thF,24-Nov-26,07-Dec-26,03-Apr-27,15-Apr-27,,,12,-9,111,Yes,No,"AB-SUB-B04-5TH-1000, AB-SUB-B04-5TH-1000",HO-1050,0.0,0,0.0
The Big -P.01-UP-20-April-26,AB-APP-B04-5TH-1010,Approval for Slabs Conc. Dim.  & RFT DWGs As-Built Drawing (B04) (5th),The Big - P.01 - UP-24-MAY-26.HO.1.A.P01.B04.SUP.5thF,10-Dec-26,23-Dec-26,19-Apr-27,02-May-27,,,12,-23,97,Yes,No,"AB-SUB-B04-5TH-1010, AB-SUB-B04-5TH-1010",HO-1050,0.0,0,0.0
The Big -P.01-UP-20-April-26,AB-APP-B04-5TH-1020,Approval for Beams Conc. Dim.  & RFT DWGs As-Built Drawing (B04) (5th),The Big - P.01 - UP-24-MAY-26.HO.1.A.P01.B04.SUP.5thF,10-Dec-26,23-Dec-26,19-Apr-27,02-May-27,,,12,-23,97,Yes,No,"AB-SUB-B04-5TH-1020, AB-SUB-B04-5TH-1020",HO-1050,0.0,0,0.0
The Big -P.01-UP-20-April-26,AB-APP-B04-5TH-1030,Approval for Stairs Conc. Dim.  & RFT DWGs As-Built Drawing (B04) (5th),The Big - P.01 - UP-24-MAY-26.HO.1.A.P01.B04.SUP.5thF,10-Dec-26,23-Dec-26,19-Apr-27,02-May-27,,,12,-23,97,Yes,No,"AB-SUB-B04-5TH-1030, AB-SUB-B04-5TH-1030",HO-1050,0.0,0,0.0
The Big -P.01-UP-20-April-26,AB-APP-B04-6TH-1000,Approval for Col. & Walls Conc. Dim.  & RFT DWGs As-Built Drawing (B04) (6th),The Big - P.01 - UP-24-MAY-26.HO.1.A.P01.B04.SUP.6thF,26-Dec-26,09-Jan-27,05-May-27,18-May-27,,,12,-37,83,Yes,No,"AB-SUB-B04-6TH-1000, AB-SUB-B04-6TH-1000",HO-1050,0.0,0,0.0
The Big -P.01-UP-20-April-26,AB-APP-B04-6TH-1010,Approval for Slabs Conc. Dim.  & RFT DWGs As-Built Drawing (B04) (6th),The Big - P.01 - UP-24-MAY-26.HO.1.A.P01.B04.SUP.6thF,10-Jan-27,23-Jan-27,19-May-27,01-Jun-27,,,12,-49,71,Yes,No,"AB-SUB-B04-6TH-1010, AB-SUB-B04-6TH-1010",HO-1050,0.0,0,0.0
The Big -P.01-UP-20-April-26,AB-APP-B04-6TH-1020,Approval for Beams Conc. Dim.  & RFT DWGs As-Built Drawing (B04) (6th),The Big - P.01 - UP-24-MAY-26.HO.1.A.P01.B04.SUP.6thF,10-Jan-27,23-Jan-27,19-May-27,01-Jun-27,,,12,-49,71,Yes,No,"AB-SUB-B04-6TH-1020, AB-SUB-B04-6TH-1020",HO-1050,0.0,0,0.0
The Big -P.01-UP-20-April-26,AB-APP-B04-6TH-1030,Approval for Stairs Conc. Dim.  & RFT DWGs As-Built Drawing (B04) (6th),The Big - P.01 - UP-24-MAY-26.HO.1.A.P01.B04.SUP.6thF,04-Jan-27,18-Jan-27,15-May-27,27-May-27,,,12,-45,75,Yes,No,"AB-SUB-B04-6TH-1030, AB-SUB-B04-6TH-1030",HO-1050,0.0,0,0.0
The Big -P.01-UP-20-April-26,AB-APP-B04-7TH-1000,Approval for Col. & Walls Conc. Dim.  & RFT DWGs As-Built Drawing (B04) (7th),The Big - P.01 - UP-24-MAY-26.HO.1.A.P01.B04.SUP.7thF,26-Jan-27,08-Feb-27,03-Jun-27,16-Jun-27,,,12,-62,58,Yes,No,"AB-SUB-B04-7TH-1000, AB-SUB-B04-7TH-1000",HO-1050,0.0,0,0.0
The Big -P.01-UP-20-April-26,AB-APP-B04-7TH-1010,Approval for Slabs Conc. Dim.  & RFT DWGs As-Built Drawing (B04) (7th),The Big - P.01 - UP-24-MAY-26.HO.1.A.P01.B04.SUP.7thF,08-Feb-27,21-Feb-27,16-Jun-27,29-Jun-27,,,12,-73,47,Yes,No,"AB-SUB-B04-7TH-1010, AB-SUB-B04-7TH-1010",HO-1050,0.0,0,0.0
The Big -P.01-UP-20-April-26,AB-APP-B04-7TH-1020,Approval for Beams Conc. Dim.  & RFT DWGs As-Built Drawing (B04) (7th),The Big - P.01 - UP-24-MAY-26.HO.1.A.P01.B04.SUP.7thF,08-Feb-27,21-Feb-27,16-Jun-27,29-Jun-27,,,12,-73,47,Yes,No,"AB-SUB-B04-7TH-1020, AB-SUB-B04-7TH-1020",HO-1050,0.0,0,0.0
The Big -P.01-UP-20-April-26,AB-APP-B04-7TH-1030,Approval for Stairs Conc. Dim.  & RFT DWGs As-Built Drawing (B04) (7th),The Big - P.01 - UP-24-MAY-26.HO.1.A.P01.B04.SUP.7thF,08-Feb-27,21-Feb-27,16-Jun-27,29-Jun-27,,,12,-73,47,Yes,No,"AB-SUB-B04-7TH-1030, AB-SUB-B04-7TH-1030",HO-1050,0.0,0,0.0
The Big -P.01-UP-20-April-26,AB-APP-B04-8TH-1000,Approval for Col. & Walls Conc. Dim.  & RFT DWGs As-Built Drawing (B04) (8th),The Big - P.01 - UP-24-MAY-26.HO.1.A.P01.B04.SUP.8thF,23-Feb-27,08-Mar-27,01-Jul-27,14-Jul-27,,,12,-86,34,Yes,No,"AB-SUB-B04-8TH-1000, AB-SUB-B04-8TH-1000",HO-1050,0.0,0,0.0
The Big -P.01-UP-20-April-26,AB-APP-B04-8TH-1010,Approval for Slabs Conc. Dim.  & RFT DWGs As-Built Drawing (B04) (8th),The Big - P.01 - UP-24-MAY-26.HO.1.A.P01.B04.SUP.8thF,06-Mar-27,22-Mar-27,12-Jul-27,25-Jul-27,,,12,-95,25,Yes,No,"AB-SUB-B04-8TH-1010, AB-SUB-B04-8TH-1010",HO-1050,0.0,0,0.0
The Big -P.01-UP-20-April-26,AB-APP-B04-8TH-1020,Approval for Beams Conc. Dim.  & RFT DWGs As-Built Drawing (B04) (8th),The Big - P.01 - UP-24-MAY-26.HO.1.A.P01.B04.SUP.8thF,06-Mar-27,22-Mar-27,12-Jul-27,25-Jul-27,,,12,-95,25,Yes,No,"AB-SUB-B04-8TH-1020, AB-SUB-B04-8TH-1020",HO-1050,0.0,0,0.0
The Big -P.01-UP-20-April-26,AB-APP-B04-8TH-1030,Approval for Stairs Conc. Dim.  & RFT DWGs As-Built Drawing (B04) (8th),The Big - P.01 - UP-24-MAY-26.HO.1.A.P01.B04.SUP.8thF,06-Mar-27,22-Mar-27,12-Jul-27,25-Jul-27,,,12,-95,25,Yes,No,"AB-SUB-B04-8TH-1030, AB-SUB-B04-8TH-1030",HO-1050,0.0,0,0.0
The Big -P.01-UP-20-April-26,AB-APP-B04-RF-1000,Approval for Col. & Walls Conc. Dim.  & RFT DWGs As-Built Drawing (B04) (RF),The Big - P.01 - UP-24-MAY-26.HO.1.A.P01.B04.SUP.RF,16-Mar-27,29-Mar-27,20-Jul-27,02-Aug-27,,,12,-102,18,Yes,No,"AB-SUB-B04-RF-1000, AB-SUB-B04-RF-1000",HO-1050,0.0,0,0.0
The Big -P.01-UP-20-April-26,AB-APP-B04-RF-1010,Approval for Slabs Conc. Dim.  & RFT DWGs As-Built Drawing (B04) (RF),The Big - P.01 - UP-24-MAY-26.HO.1.A.P01.B04.SUP.RF,23-Mar-27,05-Apr-27,26-Jul-27,08-Aug-27,,,12,-107,13,Yes,No,"AB-SUB-B04-RF-1010, AB-SUB-B04-RF-1010",HO-1050,0.0,0,0.0
The Big -P.01-UP-20-April-26,AB-APP-B04-RF-1020,Approval for  Beams Conc. Dim.  & RFT DWGs As-Built Drawing (B04) (RF),The Big - P.01 - UP-24-MAY-26.HO.1.A.P01.B04.SUP.RF,23-Mar-27,05-Apr-27,26-Jul-27,08-Aug-27,,,12,-107,13,Yes,No,"AB-SUB-B04-RF-1020, AB-SUB-B04-RF-1020",HO-1050,0.0,0,0.0
