project_id,Activity ID,Activity Name,Predecessors,Predecessor Details,Successors
The Big -P.01-UP-20-April-26,E-SUB-B04-WT-1020,Submittal for RC Raft RFT DWGs (B04) (Water Tank),"E-DR-1000, E-SUB-B04-WT-1010","E-DR-1000: SS 9, E-SUB-B04-WT-1010: SS 3","E-APP-B04-WT-1020, E-APP-B04-WT-1020, E-SUB-B04-WT-1030"
The Big -P.01-UP-20-April-26,E-SUB-B03-SOG-1010,Submittal for S.O.G RFT DWGs (B03) (Sog),"E-DR-1000, E-SUB-B03-SOG-1000","E-DR-1000: FS 80, E-SUB-B03-SOG-1000: SS 3","E-APP-B03-SOG-1010, E-APP-B03-SOG-1010"
The Big -P.01-UP-20-April-26,E-SUB-B01-SOG-1010,Submittal for S.O.G RFT DWGs (B01) (Sog),"E-DR-1000, E-SUB-B01-SOG-1000","E-DR-1000: FS 123, E-SUB-B01-SOG-1000: SS 3","E-APP-B01-SOG-1010, E-APP-B01-SOG-1010"
The Big -P.01-UP-20-April-26,E-SUB-B02-SOG-1010,Submittal for S.O.G RFT DWGs (B02) (Sog),"E-DR-1000, E-SUB-B02-SOG-1000","E-DR-1000: FS 133, E-SUB-B02-SOG-1000: SS 3","E-APP-B02-SOG-1010, E-APP-B02-SOG-1010"
The Big -P.01-UP-20-April-26,E-APP-B01-SOG-1010,Approval for S.O.G RFT DWGs (B01) (Sog),"E-SUB-B01-SOG-1010, E-SUB-B01-SOG-1010","E-SUB-B01-SOG-1010: SS 12, E-SUB-B01-SOG-1010: FF 10",CON-B01-SOG-1040
The Big -P.01-UP-20-April-26,E-APP-B02-SOG-1010,Approval for S.O.G RFT DWGs (B02) (Sog),"E-SUB-B02-SOG-1010, E-SUB-B02-SOG-1010","E-SUB-B02-SOG-1010: SS 12, E-SUB-B02-SOG-1010: FF 10","CON-B02-SOG-1040, CON-B02-SOG-1040"
The Big -P.01-UP-20-April-26,E-APP-B03-SOG-1010,Approval for S.O.G RFT DWGs  (B03) (Sog),"E-SUB-B03-SOG-1010, E-SUB-B03-SOG-1010","E-SUB-B03-SOG-1010: SS 12, E-SUB-B03-SOG-1010: FF 10",CON-B03-SOG-1040
The Big -P.01-UP-20-April-26,E-APP-B04-WT-1020,Approval for RC Raft RFT DWGs (B04) (Water Tank),"E-SUB-B04-WT-1020, E-SUB-B04-WT-1020","E-SUB-B04-WT-1020: SS 12, E-SUB-B04-WT-1020: FF 10",CON-B04-WT-1070
The Big -P.01-UP-20-April-26,AB-SUB-B04-WT-1020,Submittal for RC Raft RFT DWGs As-Built Drawing (B04) (Water Tank),CON-B04-WT-1070,CON-B04-WT-1070: FS,"AB-APP-B04-WT-1020, AB-APP-B04-WT-1020"
The Big -P.01-UP-20-April-26,AB-SUB-B03-SOG-1010,Submittal for S.O.G RFT DWGs As-Built Drawing (B03) (Sog),CON-B03-SOG-1050,CON-B03-SOG-1050: FS,"AB-APP-B03-SOG-1010, AB-APP-B03-SOG-1010"
The Big -P.01-UP-20-April-26,AB-SUB-B01-SOG-1010,Submittal for S.O.G RFT DWGs As-Built Drawing (B01) (Sog),CON-B01-SOG-1050,CON-B01-SOG-1050: FS,"AB-APP-B01-SOG-1010, AB-APP-B01-SOG-1010"
The Big -P.01-UP-20-April-26,AB-SUB-B02-SOG-1010,Submittal for S.O.G RFT DWGs As-Built Drawing (B02) (Sog),"CON-B02-SOG-1050, CON-B02-SOG-1040","CON-B02-SOG-1050: FS, CON-B02-SOG-1040: FS","AB-APP-B02-SOG-1010, AB-APP-B02-SOG-1010"
The Big -P.01-UP-20-April-26,AB-APP-B01-SOG-1010,Approval for S.O.G RFT DWGs As-Built Drawing (B01) (Sog),"AB-SUB-B01-SOG-1010, AB-SUB-B01-SOG-1010","AB-SUB-B01-SOG-1010: SS 12, AB-SUB-B01-SOG-1010: FF 6",HO-1050
The Big -P.01-UP-20-April-26,AB-APP-B02-SOG-1010,Approval for S.O.G RFT DWGs As-Built Drawing (B02) (Sog),"AB-SUB-B02-SOG-1010, AB-SUB-B02-SOG-1010","AB-SUB-B02-SOG-1010: SS 12, AB-SUB-B02-SOG-1010: FF 6",HO-1050
The Big -P.01-UP-20-April-26,AB-APP-B03-SOG-1010,Approval for S.O.G RFT DWGs As-Built Drawing  (B03) (Sog),"AB-SUB-B03-SOG-1010, AB-SUB-B03-SOG-1010","AB-SUB-B03-SOG-1010: SS 12, AB-SUB-B03-SOG-1010: FF 6",HO-1050
The Big -P.01-UP-20-April-26,AB-APP-B04-WT-1020,Approval for RC Raft RFT DWGs As-Built Drawing (B04) (Water Tank),"AB-SUB-B04-WT-1020, AB-SUB-B04-WT-1020","AB-SUB-B04-WT-1020: SS 12, AB-SUB-B04-WT-1020: FF 6",HO-1050
The Big -P.01-UP-20-April-26,E-SUB-B04-SOG-1010,Submittal for S.O.G RFT DWGs (B04) (Sog),"E-DR-1000, E-SUB-B04-SOG-1000","E-DR-1000: FS 135, E-SUB-B04-SOG-1000: SS 3","E-APP-B04-SOG-1010, E-APP-B04-SOG-1010"
The Big -P.01-UP-20-April-26,E-APP-B04-SOG-1010,Approval for S.O.G RFT DWGs (B04) (Sog),"E-SUB-B04-SOG-1010, E-SUB-B04-SOG-1010","E-SUB-B04-SOG-1010: SS 4, E-SUB-B04-SOG-1010: FF",CON-B04-SOG-1040
The Big -P.01-UP-20-April-26,AB-SUB-B04-SOG-1010,Submittal for S.O.G RFT DWGs As-Built Drawing (B04) (Sog),"CON-B04-SOG-1050, CON-B04-SOG-1040","CON-B04-SOG-1050: FS, CON-B04-SOG-1040: FS","AB-APP-B04-SOG-1010, AB-APP-B04-SOG-1010"
The Big -P.01-UP-20-April-26,AB-APP-B04-SOG-1010,Approval for S.O.G RFT DWGs As-Built Drawing (B04) (Sog),"AB-SUB-B04-SOG-1010, AB-SUB-B04-SOG-1010","AB-SUB-B04-SOG-1010: SS 12, AB-SUB-B04-SOG-1010: FF 6",HO-1050
The Big -P.01-UP-20-April-26,P-MS-1000,Submittal for RFT Rebar,KD-MS-1000,KD-MS-1000: FS,"P-MA-1000, P-MA-1000"
The Big -P.01-UP-20-April-26,CON-B01-FOOT-1050,RFT for RC Raft & Footings (B01) (footing),"CON-B01-FOOT-1040, E-APP-B01-FOOT-1020, CON-B01-FOOT-1040, P-MDEL-1000","CON-B01-FOOT-1040: SS 2, E-APP-B01-FOOT-1020: FS, CON-B01-FOOT-1040: FF, P-MDEL-1000: FS",CON-B01-FOOT-1090
The Big -P.01-UP-20-April-26,CON-B02-FOOT-1050,RFT for RC Raft & Footings (B02) (footing),"CON-B02-FOOT-1040, E-APP-B02-FOOT-1020, CON-B02-FOOT-1040, P-MDEL-1000","CON-B02-FOOT-1040: SS 2, E-APP-B02-FOOT-1020: FS, CON-B02-FOOT-1040: FF, P-MDEL-1000: FS","CON-B02-FOOT-1090, AB-SUB-B02-FOOT-1020"
The Big -P.01-UP-20-April-26,CON-B04-FOOT-1050,RFT for RC Raft & Footings (B04) (footing),"CON-B04-FOOT-1040, E-APP-B04-FOOT-1030, CON-B04-FOOT-1040, P-MDEL-1000","CON-B04-FOOT-1040: SS 1, E-APP-B04-FOOT-1030: FS, CON-B04-FOOT-1040: FF, P-MDEL-1000: FS","CON-B04-FOOT-1080, AB-SUB-B04-FOOT-1020"
The Big -P.01-UP-20-April-26,CON-B03-FOOT-1050,RFT for RC Raft & Footings (B03) (footing),"CON-B03-FOOT-1040, E-APP-B03-FOOT-1030, CON-B03-FOOT-1040, P-MDEL-1000","CON-B03-FOOT-1040: SS 1, E-APP-B03-FOOT-1030: FS, CON-B03-FOOT-1040: FF, P-MDEL-1000: FS","CON-B03-FOOT-1080, AB-SUB-B03-FOOT-1020"
The Big -P.01-UP-20-April-26,CON-B01-FOOT-1070,RFT for Columns & Walls Below SOG (B01) (footing),"CON-B01-FOOT-1060, CON-B01-FOOT-1060, E-APP-B01-FOOT-1020, P-MDEL-1000","CON-B01-FOOT-1060: SS 1, CON-B01-FOOT-1060: FF, E-APP-B01-FOOT-1020: FS, P-MDEL-1000: FS",CON-B01-FOOT-1080
The Big -P.01-UP-20-April-26,CON-B02-FOOT-1070,RFT for Columns & Walls Below SOG (B02) (footing),"CON-B02-FOOT-1060, CON-B02-FOOT-1060, E-APP-B02-FOOT-1020, P-MDEL-1000","CON-B02-FOOT-1060: SS 1, CON-B02-FOOT-1060: FF, E-APP-B02-FOOT-1020: FS, P-MDEL-1000: FS",CON-B02-FOOT-1080
The Big -P.01-UP-20-April-26,CON-B04-FOOT-1070,RFT for Columns & Walls Below SOG (B04) (footing),"CON-B04-FOOT-1060, CON-B04-FOOT-1060, E-APP-B04-FOOT-1030, P-MDEL-1000","CON-B04-FOOT-1060: SS 1, CON-B04-FOOT-1060: FF, E-APP-B04-FOOT-1030: FS, P-MDEL-1000: FS",CON-B04-FOOT-1090
The Big -P.01-UP-20-April-26,CON-B03-FOOT-1070,RFT for Columns & Walls Below SOG (B03) (footing),"CON-B03-FOOT-1060, CON-B03-FOOT-1060, E-APP-B03-FOOT-1030, P-MDEL-1000","CON-B03-FOOT-1060: SS 2, CON-B03-FOOT-1060: FF, E-APP-B03-FOOT-1030: FS, P-MDEL-1000: FS",CON-B03-FOOT-1090
The Big -P.01-UP-20-April-26,P-MA-1000,Approval for RFT Rebar,"P-MS-1000, P-MS-1000","P-MS-1000: SS 12, P-MS-1000: FF 10","P-MPOS-1000, P-MPOS-1070, P-MPOS-1080, P-MPOS-1090, P-MPOS-1100, P-MPOS-1110, P-MPOS-1120, P-MPOS-1130, P-MPOS-1140, P-MPOS-1150, P-MPOS-1160, P-MPOS-1170, P-MPOS-1180, P-MPOS-1190"
The Big -P.01-UP-20-April-26,E-SUB-B02-FOOT-1020,Submittal for RC Raft & Footings RFT DWGs (B02) (footing),"E-DR-1000, E-SUB-B02-FOOT-1010","E-DR-1000: SS 33, E-SUB-B02-FOOT-1010: SS 1","E-APP-B02-FOOT-1020, E-APP-B02-FOOT-1020"
The Big -P.01-UP-20-April-26,E-SUB-B03-FOOT-1030,Submittal for RC Raft & Footings RFT DWGs (B03) (footing),"E-DR-1000, E-SUB-B03-FOOT-1020","E-DR-1000: SS 37, E-SUB-B03-FOOT-1020: SS 1","E-APP-B03-FOOT-1030, E-APP-B03-FOOT-1030"
The Big -P.01-UP-20-April-26,E-SUB-B04-FOOT-1030,Submittal for RC Raft & Footings RFT DWGs (B04) (footing),"E-DR-1000, E-SUB-B04-FOOT-1020","E-DR-1000: SS 35, E-SUB-B04-FOOT-1020: SS 3","E-APP-B04-FOOT-1030, E-APP-B04-FOOT-1030"
The Big -P.01-UP-20-April-26,E-APP-B01-FOOT-1020,Approval for RC Raft & Footings RFT DWGs (B01),"E-SUB-B01-FOOT-1020, E-SUB-B01-FOOT-1020","E-SUB-B01-FOOT-1020: SS 12, E-SUB-B01-FOOT-1020: FF 10","CON-B01-FOOT-1050, CON-B01-FOOT-1070"
The Big -P.01-UP-20-April-26,E-APP-B02-FOOT-1020,Approval for RC Raft & Footings RFT DWGs (B02) (footing),"E-SUB-B02-FOOT-1020, E-SUB-B02-FOOT-1020","E-SUB-B02-FOOT-1020: SS 12, E-SUB-B02-FOOT-1020: FF 10","CON-B02-FOOT-1050, CON-B02-FOOT-1070"
The Big -P.01-UP-20-April-26,E-APP-B03-FOOT-1030,Approval for RC Raft & Footings RFT DWGs  (B03) (footing),"E-SUB-B03-FOOT-1030, E-SUB-B03-FOOT-1030","E-SUB-B03-FOOT-1030: SS 12, E-SUB-B03-FOOT-1030: FF 10","CON-B03-FOOT-1050, CON-B03-FOOT-1070"
The Big -P.01-UP-20-April-26,E-APP-B04-FOOT-1030,Approval for RC Raft & Footings RFT DWGs (B04) (footing),"E-SUB-B04-FOOT-1030, E-SUB-B04-FOOT-1030","E-SUB-B04-FOOT-1030: SS 12, E-SUB-B04-FOOT-1030: FF 10","CON-B04-FOOT-1050, CON-B04-FOOT-1070"
The Big -P.01-UP-20-April-26,AB-SUB-B02-FOOT-1020,Submittal for RC Raft & Footings RFT DWGs As-Built Drawing (B02) (footing),"CON-B02-FOOT-1050, CON-B02-FOOT-1090","CON-B02-FOOT-1050: FS, CON-B02-FOOT-1090: FS","AB-APP-B02-FOOT-1020, AB-APP-B02-FOOT-1020"
The Big -P.01-UP-20-April-26,AB-SUB-B03-FOOT-1020,Submittal for RC Raft & Footings RFT DWGs As-Built Drawing (B03) (footing),"CON-B03-FOOT-1050, CON-B03-FOOT-1080","CON-B03-FOOT-1050: FS, CON-B03-FOOT-1080: FS","AB-APP-B03-FOOT-1020, AB-APP-B03-FOOT-1020"
The Big -P.01-UP-20-April-26,AB-SUB-B04-FOOT-1020,Submittal for RC Raft & Footings RFT DWGs As-Built Drawing (B04) (footing),"CON-B04-FOOT-1050, CON-B04-FOOT-1080","CON-B04-FOOT-1050: FS, CON-B04-FOOT-1080: FS","AB-APP-B04-FOOT-1020, AB-APP-B04-FOOT-1020"
The Big -P.01-UP-20-April-26,AB-APP-B01-FOOT-1030,Approval for RC Raft & Footings RFT DWGs As-Built Drawing (B01),"AB-SUB-B01-FOOT-1030, AB-SUB-B01-FOOT-1030","AB-SUB-B01-FOOT-1030: SS 12, AB-SUB-B01-FOOT-1030: FF 6",HO-1050
The Big -P.01-UP-20-April-26,AB-APP-B02-FOOT-1020,Approval for RC Raft & Footings RFT DWGs As-Built Drawing (B02) (footing),"AB-SUB-B02-FOOT-1020, AB-SUB-B02-FOOT-1020","AB-SUB-B02-FOOT-1020: SS 12, AB-SUB-B02-FOOT-1020: FF 6",HO-1050
The Big -P.01-UP-20-April-26,AB-APP-B03-FOOT-1020,Approval for RC Raft & Footings RFT DWGs As-Built Drawing  (B03) (footing),"AB-SUB-B03-FOOT-1020, AB-SUB-B03-FOOT-1020","AB-SUB-B03-FOOT-1020: SS 12, AB-SUB-B03-FOOT-1020: FF 6",HO-1050
The Big -P.01-UP-20-April-26,AB-APP-B04-FOOT-1000,Approval for PC Raft Conc. Dim. Conc. Dim.  & RFT DWGs As-Built Drawing  (B04) (footing),"AB-SUB-B04-FOOT-1000, AB-SUB-B04-FOOT-1000","AB-SUB-B04-FOOT-1000: SS 12, AB-SUB-B04-FOOT-1000: FF 6",HO-1050
The Big -P.01-UP-20-April-26,AB-APP-B04-FOOT-1010,Approval for RC Raft & Footings Conc. Dim. Conc. Dim.  & RFT DWGs As-Built Drawing (B04) (footing),"AB-SUB-B04-FOOT-1010, AB-SUB-B04-FOOT-1010","AB-SUB-B04-FOOT-1010: SS 12, AB-SUB-B04-FOOT-1010: FF 6",HO-1050
The Big -P.01-UP-20-April-26,AB-APP-B04-FOOT-1020,Approval for RC Raft & Footings RFT Conc. Dim.  & RFT DWGs As-Built Drawing (B04) (footing),"AB-SUB-B04-FOOT-1020, AB-SUB-B04-FOOT-1020","AB-SUB-B04-FOOT-1020: SS 12, AB-SUB-B04-FOOT-1020: FF 6",HO-1050
The Big -P.01-UP-20-April-26,CON-B01-BAS02-1010,"RFT for Walls, Col. & Cores (B01) (Bas 02)","CON-B01-BAS02-1000, CON-B01-BAS02-1000, E-APP-B01-BAS02-1000, P-MDEL-1170","CON-B01-BAS02-1000: SS, CON-B01-BAS02-1000: FF, E-APP-B01-BAS02-1000: FS, P-MDEL-1170: FS","CON-B01-BAS02-1020, CON-B01-BAS02-1020"
The Big -P.01-UP-20-April-26,CON-B01-BAS02-1070,RFT for Slabs & Beams (B01) (Bas 02),"CON-B01-BAS02-1040, CON-B01-BAS02-1040, E-APP-B01-BAS02-1030, E-APP-B01-BAS02-1040, P-MDEL-1170","CON-B01-BAS02-1040: SS 3, CON-B01-BAS02-1040: FF, E-APP-B01-BAS02-1030: FS, E-APP-B01-BAS02-1040: FS, P-MDEL-1170: FS",CON-B01-BAS02-1130
The Big -P.01-UP-20-April-26,CON-B01-BAS02-1080,RFT for Stairs (B01) (Bas 02),"CON-B01-BAS02-1050, CON-B01-BAS02-1050, E-APP-B01-BAS02-1010, P-MDEL-1170","CON-B01-BAS02-1050: SS 2, CON-B01-BAS02-1050: FF, E-APP-B01-BAS02-1010: FS, P-MDEL-1170: FS",CON-B01-BAS02-1100
The Big -P.01-UP-20-April-26,CON-B02-BAS02-1010,"RFT for Walls, Col. & Cores (B02) (Bas 02)","CON-B02-BAS02-1000, CON-B02-BAS02-1000, E-APP-B02-BAS02-1000, P-MDEL-1170","CON-B02-BAS02-1000: SS, CON-B02-BAS02-1000: FF, E-APP-B02-BAS02-1000: FS, P-MDEL-1170: FS","CON-B02-BAS02-1020, CON-B03-BAS02-1010, CON-B02-BAS02-1020"
The Big -P.01-UP-20-April-26,CON-B02-BAS02-1060,RFT for Slabs & Beams (B02) (Bas 02),"CON-B02-BAS02-1040, CON-B02-BAS02-1040, E-APP-B02-BAS02-1020, E-APP-B02-BAS02-1030, P-MDEL-1170","CON-B02-BAS02-1040: SS 2, CON-B02-BAS02-1040: FF, E-APP-B02-BAS02-1020: FS, E-APP-B02-BAS02-1030: FS, P-MDEL-1170: FS","CON-B03-BAS02-1060, CON-B02-BAS02-1100"
The Big -P.01-UP-20-April-26,CON-B02-BAS02-1070,RFT for Stairs  (B02) (Bas 02),"CON-B02-BAS02-1050, CON-B02-BAS02-1050, E-APP-B02-BAS02-1010, P-MDEL-1170","CON-B02-BAS02-1050: SS 2, CON-B02-BAS02-1050: FF, E-APP-B02-BAS02-1010: FS, P-MDEL-1170: FS","CON-B03-BAS02-1070, CON-B02-BAS02-1080, AB-SUB-B02-BAS2-1010"
The Big -P.01-UP-20-April-26,CON-B03-BAS02-1010,"RFT for Walls, Col. & Cores (B03) (Bas 02)","CON-B03-BAS02-1000, CON-B03-BAS02-1000, CON-B02-BAS02-1010, E-APP-B03-BAS02-1000, P-MDEL-1170","CON-B03-BAS02-1000: SS, CON-B03-BAS02-1000: FF, CON-B02-BAS02-1010: FS, E-APP-B03-BAS02-1000: FS, P-MDEL-1170: FS","CON-B03-BAS02-1020, CON-B03-BAS02-1020"
The Big -P.01-UP-20-April-26,CON-B03-BAS02-1060,RFT for Slabs & Beams (B03) (Bas 02),"CON-B03-BAS02-1040, CON-B02-BAS02-1060, CON-B03-BAS02-1040, E-APP-B03-BAS02-1020, E-APP-B03-BAS02-1030, P-MDEL-1170","CON-B03-BAS02-1040: SS 2, CON-B02-BAS02-1060: FS, CON-B03-BAS02-1040: FF, E-APP-B03-BAS02-1020: FS, E-APP-B03-BAS02-1030: FS, P-MDEL-1170: FS",CON-B03-BAS02-1100
The Big -P.01-UP-20-April-26,CON-B03-BAS02-1070,RFT for Stairs  (B03) (Bas 02),"CON-B03-BAS02-1050, CON-B02-BAS02-1070, CON-B03-BAS02-1050, E-APP-B03-BAS02-1010, P-MDEL-1170","CON-B03-BAS02-1050: SS 2, CON-B02-BAS02-1070: FS, CON-B03-BAS02-1050: FF, E-APP-B03-BAS02-1010: FS, P-MDEL-1170: FS",CON-B03-BAS02-1080
The Big -P.01-UP-20-April-26,CON-B04-BAS02-1010,"RFT for Walls, Col. & Cores (B04) (Bas 02)","CON-B04-BAS02-1000, CON-B04-BAS02-1000, E-APP-B04-BAS02-1000, P-MDEL-1170","CON-B04-BAS02-1000: SS, CON-B04-BAS02-1000: FF, E-APP-B04-BAS02-1000: FS, P-MDEL-1170: FS","CON-B04-BAS02-1020, AB-SUB-B04-BAS2-1000, CON-B04-BAS02-1020"
The Big -P.01-UP-20-April-26,CON-B04-BAS02-1060,RFT for Slabs & Beams (B04) (Bas 02),"CON-B04-BAS02-1040, CON-B04-BAS02-1040, E-APP-B04-BAS02-1030, E-APP-B04-BAS02-1040, P-MDEL-1170","CON-B04-BAS02-1040: SS 2, CON-B04-BAS02-1040: FF, E-APP-B04-BAS02-1030: FS, E-APP-B04-BAS02-1040: FS, P-MDEL-1170: FS",CON-B04-BAS02-1130
The Big -P.01-UP-20-April-26,CON-B04-BAS02-1080,RFT for Stairs  (B04) (Bas 02),"CON-B04-BAS02-1050, CON-B04-BAS02-1050, E-APP-B04-BAS02-1010, P-MDEL-1170","CON-B04-BAS02-1050: SS 2, CON-B04-BAS02-1050: FF, E-APP-B04-BAS02-1010: FS, P-MDEL-1170: FS",CON-B04-BAS02-1100
The Big -P.01-UP-20-April-26,CON-B01-BAS02-1090,RFT for Ramps (B01) (Bas 02),"CON-B01-BAS02-1060, CON-B01-BAS02-1060, E-APP-B01-BAS02-1020, P-MDEL-1170","CON-B01-BAS02-1060: SS 2, CON-B01-BAS02-1060: FF, E-APP-B01-BAS02-1020: FS, P-MDEL-1170: FS",CON-B01-BAS02-1110
The Big -P.01-UP-20-April-26,CON-B04-BAS02-1090,RFT for Ramps (B04) (Bas 02),"CON-B04-BAS02-1070, CON-B04-BAS02-1070, E-APP-B04-BAS02-1020, P-MDEL-1170","CON-B04-BAS02-1070: SS 2, CON-B04-BAS02-1070: FF, E-APP-B04-BAS02-1020: FS, P-MDEL-1170: FS",CON-B04-BAS02-1110
The Big -P.01-UP-20-April-26,CON-B04-WT-1070,RFT for RC Raft (B04) (Water Tank),"CON-B04-WT-1060, E-APP-B04-WT-1020, CON-B04-WT-1060, P-MDEL-1000","CON-B04-WT-1060: SS 1, E-APP-B04-WT-1020: FS, CON-B04-WT-1060: FS, P-MDEL-1000: FS","CON-B04-WT-1080, AB-SUB-B04-WT-1020"
The Big -P.01-UP-20-April-26,CON-B04-WT-1110,RFT for Walls (B04) (Water Tank),"CON-B04-WT-1100, CON-B04-WT-1100, E-APP-B04-WT-1030, P-MDEL-1000","CON-B04-WT-1100: SS, CON-B04-WT-1100: FF, E-APP-B04-WT-1030: FS, P-MDEL-1000: FS","CON-B04-WT-1120, CON-B04-WT-1130, AB-SUB-B04-WT-1030"
The Big -P.01-UP-20-April-26,CON-B04-WT-1160,RFT for Top Slab (B04) (Water Tank),"CON-B04-WT-1150, CON-B04-WT-1150, E-APP-B04-WT-1040, P-MDEL-1000","CON-B04-WT-1150: SS 1, CON-B04-WT-1150: FF, E-APP-B04-WT-1040: FS, P-MDEL-1000: FS","CON-B04-WT-1170, AB-SUB-B04-WT-1040"
The Big -P.01-UP-20-April-26,CON-B02-SOG-1040,Shuttering & RFT for S.O.G (B02) (Sog),"CON-B02-SOG-1030, CON-B02-SOG-1030, CON-B01-SOG-1040, E-APP-B02-SOG-1010, E-APP-B02-SOG-1000, E-APP-B02-SOG-1010, P-MDEL-1150","CON-B02-SOG-1030: SS 5, CON-B02-SOG-1030: FF, CON-B01-SOG-1040: FS, E-APP-B02-SOG-1010: FS, E-APP-B02-SOG-1000: FS, E-APP-B02-SOG-1010: FF, P-MDEL-1150: FS","CON-B02-SOG-1050, CON-B02-SOG-1050, AB-SUB-B02-SOG-1000, AB-SUB-B02-SOG-1010"
The Big -P.01-UP-20-April-26,CON-B01-SOG-1040,Shuttering & RFT for S.O.G (B01) (Sog),"CON-B01-SOG-1030, CON-B01-SOG-1030, E-APP-B01-SOG-1010, E-APP-B01-SOG-1000, P-MDEL-1150","CON-B01-SOG-1030: SS 5, CON-B01-SOG-1030: FF, E-APP-B01-SOG-1010: FS, E-APP-B01-SOG-1000: FS, P-MDEL-1150: FS","CON-B01-SOG-1050, CON-B01-SOG-1050, CON-B02-SOG-1040, AB-SUB-B01-SOG-1000"
The Big -P.01-UP-20-April-26,CON-B03-SOG-1040,Shuttering & RFT for S.O.G (B03) (sog),"CON-B03-SOG-1030, CON-B03-SOG-1030, E-APP-B03-SOG-1010, E-APP-B03-SOG-1000, P-MDEL-1150","CON-B03-SOG-1030: SS 5, CON-B03-SOG-1030: FF, E-APP-B03-SOG-1010: FS, E-APP-B03-SOG-1000: FS, P-MDEL-1150: FS","CON-B03-SOG-1050, CON-B03-SOG-1050, CON-B04-SOG-1040, AB-SUB-B03-SOG-1000"
The Big -P.01-UP-20-April-26,CON-B01-BAS01-1010,"RFT for Walls, Col. & Cores (B01) (Bas 01)","CON-B01-BAS01-1000, CON-B01-BAS01-1000, E-APP-B01-BAS01-1000, P-MDEL-1160","CON-B01-BAS01-1000: SS, CON-B01-BAS01-1000: FF, E-APP-B01-BAS01-1000: FS, P-MDEL-1160: FS","CON-B01-BAS01-1020, CON-B01-BAS01-1030, CON-B01-BAS01-1020"
The Big -P.01-UP-20-April-26,CON-B01-BAS01-1060,RFT for Slabs & Beams (B01) (Bas 01),"CON-B01-BAS01-1040, CON-B01-BAS01-1040, CON-B01-BAS02-1140, E-APP-B01-BAS01-1030, E-APP-B01-BAS01-1040, P-MDEL-1160","CON-B01-BAS01-1040: SS 2, CON-B01-BAS01-1040: FF, CON-B01-BAS02-1140: FS, E-APP-B01-BAS01-1030: FS, E-APP-B01-BAS01-1040: FS, P-MDEL-1160: FS",CON-B01-BAS01-1110
The Big -P.01-UP-20-April-26,CON-B01-BAS01-1080,RFT for Stairs  (B01) (Bas 01),"CON-B01-BAS01-1050, CON-B01-BAS01-1050, E-APP-B01-BAS01-1010, P-MDEL-1160","CON-B01-BAS01-1050: SS 3, CON-B01-BAS01-1050: FF, E-APP-B01-BAS01-1010: FS, P-MDEL-1160: FS",CON-B01-BAS01-1100
The Big -P.01-UP-20-April-26,CON-B02-BAS01-1010,"RFT for Walls, Col. & Cores (B02) (Bas 01)","CON-B02-BAS01-1000, CON-B02-BAS01-1000, E-APP-B02-BAS01-1000, P-MDEL-1160","CON-B02-BAS01-1000: SS, CON-B02-BAS01-1000: FF, E-APP-B02-BAS01-1000: FS, P-MDEL-1160: FS","CON-B02-BAS01-1020, CON-B03-BAS01-1010, CON-B02-BAS01-1020"
The Big -P.01-UP-20-April-26,CON-B02-BAS01-1060,RFT for Slabs & Beams (B02) (Bas 01),"CON-B02-BAS01-1040, CON-B02-BAS01-1040, E-APP-B02-BAS01-1020, E-APP-B02-BAS01-1030, P-MDEL-1160","CON-B02-BAS01-1040: SS 2, CON-B02-BAS01-1040: FF, E-APP-B02-BAS01-1020: FS, E-APP-B02-BAS01-1030: FS, P-MDEL-1160: FS","CON-B03-BAS01-1050, CON-B02-BAS01-1090"
The Big -P.01-UP-20-April-26,CON-B02-BAS01-1070,RFT for Stairs  (B02) (Bas 01),"CON-B02-BAS01-1050, CON-B02-BAS01-1050, E-APP-B02-BAS01-1010, P-MDEL-1160","CON-B02-BAS01-1050: SS 2, CON-B02-BAS01-1050: FF, E-APP-B02-BAS01-1010: FS, P-MDEL-1160: FS","CON-B03-BAS01-1070, CON-B02-BAS01-1080"
The Big -P.01-UP-20-April-26,CON-B04-BAS01-1010,"RFT for Walls, Col. & Cores (B04) (Bas 01)","CON-B04-BAS01-1000, CON-B04-BAS01-1000, E-APP-B04-BAS01-1000, P-MDEL-1160","CON-B04-BAS01-1000: SS, CON-B04-BAS01-1000: FF, E-APP-B04-BAS01-1000: FS, P-MDEL-1160: FS","CON-B04-BAS01-1020, CON-B04-BAS01-1020"
The Big -P.01-UP-20-April-26,CON-B04-BAS01-1070,RFT for Slabs & Beams (B04) (Bas 01),"CON-B04-BAS01-1040, CON-B04-BAS01-1040, E-APP-B04-BAS01-1030, E-APP-B04-BAS01-1040, P-MDEL-1160","CON-B04-BAS01-1040: SS 4, CON-B04-BAS01-1040: FF, E-APP-B04-BAS01-1030: FS, E-APP-B04-BAS01-1040: FS, P-MDEL-1160: FS",CON-B04-BAS01-1120
The Big -P.01-UP-20-April-26,CON-B04-BAS01-1090,RFT for Stairs  (B04) (Bas 01),"CON-B04-BAS01-1060, CON-B04-BAS01-1060, E-APP-B04-BAS01-1010, P-MDEL-1160","CON-B04-BAS01-1060: SS 5, CON-B04-BAS01-1060: FF, E-APP-B04-BAS01-1010: FS, P-MDEL-1160: FS",CON-B04-BAS01-1100
The Big -P.01-UP-20-April-26,CON-B03-BAS01-1010,"RFT for Walls, Col. & Cores (B03) (Bas 01)","CON-B03-BAS01-1000, CON-B02-BAS01-1010, CON-B03-BAS01-1000, E-APP-B03-BAS01-1000, P-MDEL-1160","CON-B03-BAS01-1000: SS, CON-B02-BAS01-1010: FS, CON-B03-BAS01-1000: FF, E-APP-B03-BAS01-1000: FS, P-MDEL-1160: FS","CON-B03-BAS01-1020, CON-B03-BAS01-1020"
The Big -P.01-UP-20-April-26,CON-B03-BAS01-1050,RFT for Slabs & Beams (B03) (Bas 01),"CON-B03-BAS01-1040, CON-B02-BAS01-1060, CON-B03-BAS01-1040, E-APP-B03-BAS01-1020, E-APP-B03-BAS01-1030, P-MDEL-1160","CON-B03-BAS01-1040: SS 2, CON-B02-BAS01-1060: FS, CON-B03-BAS01-1040: FF, E-APP-B03-BAS01-1020: FS, E-APP-B03-BAS01-1030: FS, P-MDEL-1160: FS",CON-B03-BAS01-1090
The Big -P.01-UP-20-April-26,CON-B03-BAS01-1070,RFT for Stairs (B03) (Bas 01),"CON-B03-BAS01-1060, CON-B02-BAS01-1070, CON-B03-BAS01-1060, E-APP-B03-BAS01-1010, P-MDEL-1160","CON-B03-BAS01-1060: SS 2, CON-B02-BAS01-1070: FS, CON-B03-BAS01-1060: FF, E-APP-B03-BAS01-1010: FS, P-MDEL-1160: FS",CON-B03-BAS01-1080
The Big -P.01-UP-20-April-26,CON-B01-BAS01-1090,RFT for  Ramps (B01) (Bas 01),"CON-B01-BAS01-1070, CON-B01-BAS01-1070, E-APP-B01-BAS01-1020, P-MDEL-1160","CON-B01-BAS01-1070: SS 2, CON-B01-BAS01-1070: FF, E-APP-B01-BAS01-1020: FS, P-MDEL-1160: FS",CON-B01-BAS01-1130
The Big -P.01-UP-20-April-26,CON-B04-BAS01-1080,RFT for  Ramps (B04) (Bas 01),"CON-B04-BAS01-1050, CON-B04-BAS01-1050, E-APP-B04-BAS01-1020, P-MDEL-1160","CON-B04-BAS01-1050: SS 5, CON-B04-BAS01-1050: FF, E-APP-B04-BAS01-1020: FS, P-MDEL-1160: FS",CON-B04-BAS01-1110
The Big -P.01-UP-20-April-26,E-SUB-B01-FOOT-1020,Submittal for RC Raft & Footings RFT DWGs (B01) (footing),"E-DR-1000, E-SUB-B01-FOOT-1030","E-DR-1000: SS 28, E-SUB-B01-FOOT-1030: SS 3","E-APP-B01-FOOT-1020, E-APP-B01-FOOT-1020"
The Big -P.01-UP-20-April-26,E-SUB-B03-BAS02-1000,Submittal for Col. & Walls Conc. Dim.  & RFT DWGs (B03) (Bas 02),E-DR-1000,E-DR-1000: FS,"E-APP-B03-BAS02-1000, E-APP-B03-BAS02-1000, E-SUB-B03-BAS02-1010"
The Big -P.01-UP-20-April-26,E-SUB-B03-BAS02-1030,Submittal for Slabs Conc. Dim.  & RFT DWGs (B03) (Bas 02),"E-DR-1000, E-SUB-B03-BAS02-1020","E-DR-1000: FS 10, E-SUB-B03-BAS02-1020: SS 3","E-APP-B03-BAS02-1030, E-APP-B03-BAS02-1030"
The Big -P.01-UP-20-April-26,E-SUB-B03-BAS02-1020,Submittal for Beams Conc. Dim.  & RFT DWGs (B03) (Bas 02),"E-DR-1000, E-SUB-B03-BAS02-1010","E-DR-1000: FS 7, E-SUB-B03-BAS02-1010: SS 3","E-APP-B03-BAS02-1020, E-APP-B03-BAS02-1020, E-SUB-B03-BAS02-1030"
The Big -P.01-UP-20-April-26,E-SUB-B03-BAS02-1010,Submittal for Stairs Conc. Dim.  & RFT DWGs (B03) (Bas 02),"E-DR-1000, E-SUB-B03-BAS02-1000","E-DR-1000: FS 3, E-SUB-B03-BAS02-1000: SS 3","E-APP-B03-BAS02-1010, E-APP-B03-BAS02-1010, E-SUB-B03-BAS02-1020"
The Big -P.01-UP-20-April-26,E-SUB-B04-BAS02-1000,Submittal for Col. & Walls Conc. Dim.  & RFT DWGs (B04) (Bas 02),E-DR-1000,E-DR-1000: FS,"E-APP-B04-BAS02-1000, E-APP-B04-BAS02-1000, E-SUB-B04-BAS02-1010"
The Big -P.01-UP-20-April-26,E-SUB-B04-BAS02-1040,Submittal for Slabs Conc. Dim.  & RFT DWGs (B04) (Bas 02),"E-DR-1000, E-SUB-B04-BAS02-1030","E-DR-1000: FS 14, E-SUB-B04-BAS02-1030: SS 3","E-APP-B04-BAS02-1040, E-APP-B04-BAS02-1040"
The Big -P.01-UP-20-April-26,E-SUB-B04-BAS02-1030,Submittal for Beams Conc. Dim.  & RFT DWGs (B04) (Bas 02),"E-DR-1000, E-SUB-B04-BAS02-1020","E-DR-1000: FS 10, E-SUB-B04-BAS02-1020: SS 3","E-APP-B04-BAS02-1030, E-APP-B04-BAS02-1030, E-SUB-B04-BAS02-1040"
The Big -P.01-UP-20-April-26,E-SUB-B04-BAS02-1010,Submittal for Stairs Conc. Dim.  & RFT DWGs (B04) (Bas 02),"E-DR-1000, E-SUB-B04-BAS02-1000","E-DR-1000: FS 3, E-SUB-B04-BAS02-1000: SS 3","E-APP-B04-BAS02-1010, E-APP-B04-BAS02-1010, E-SUB-B04-BAS02-1020"
The Big -P.01-UP-20-April-26,E-SUB-B04-BAS02-1020,Submittal for Ramps Conc. Dim.  & RFT DWGs (B04) (Bas 02),"E-DR-1000, E-SUB-B04-BAS02-1010","E-DR-1000: FS 7, E-SUB-B04-BAS02-1010: SS 3","E-APP-B04-BAS02-1020, E-APP-B04-BAS02-1020, E-SUB-B04-BAS02-1030"
The Big -P.01-UP-20-April-26,E-SUB-B02-BAS02-1000,Submittal for Col. & Walls Conc. Dim.& RFT DWGs (B02) (Bas 02),E-DR-1000,E-DR-1000: FS,"E-APP-B02-BAS02-1000, E-APP-B02-BAS02-1000, E-SUB-B02-BAS02-1010"
The Big -P.01-UP-20-April-26,E-SUB-B02-BAS02-1030,Submittal for Slabs Conc. Dim.& RFT DWGs (B02) (Bas 02),"E-DR-1000, E-SUB-B02-BAS02-1020","E-DR-1000: FS 10, E-SUB-B02-BAS02-1020: SS 3","E-APP-B02-BAS02-1030, E-APP-B02-BAS02-1030"
The Big -P.01-UP-20-April-26,E-SUB-B02-BAS02-1020,Submittal for Beams Conc. Dim.& RFT DWGs (B02) (Bas 02),"E-DR-1000, E-SUB-B02-BAS02-1010","E-DR-1000: FS 7, E-SUB-B02-BAS02-1010: SS 3","E-APP-B02-BAS02-1020, E-APP-B02-BAS02-1020, E-SUB-B02-BAS02-1030"
The Big -P.01-UP-20-April-26,E-SUB-B02-BAS02-1010,Submittal for Stairs Conc. Dim.& RFT DWGs (B02) (Bas 02),"E-DR-1000, E-SUB-B02-BAS02-1000","E-DR-1000: FS 3, E-SUB-B02-BAS02-1000: SS 3","E-APP-B02-BAS02-1010, E-APP-B02-BAS02-1010, E-SUB-B02-BAS02-1020"
The Big -P.01-UP-20-April-26,E-APP-B02-BAS02-1000,Approval for Col. & Walls Conc. Dim.  & RFT DWGs (B02) (Bas 02),"E-SUB-B02-BAS02-1000, E-SUB-B02-BAS02-1000","E-SUB-B02-BAS02-1000: SS 12, E-SUB-B02-BAS02-1000: FF 10","CON-B02-BAS02-1010, CON-B02-BAS02-1020"
The Big -P.01-UP-20-April-26,E-APP-B02-BAS02-1030,Approval for Slabs Conc. Dim.  & RFT DWGs (B02) (Bas 02),"E-SUB-B02-BAS02-1030, E-SUB-B02-BAS02-1030","E-SUB-B02-BAS02-1030: SS 12, E-SUB-B02-BAS02-1030: FF 10","CON-B02-BAS02-1040, CON-B02-BAS02-1060"
The Big -P.01-UP-20-April-26,E-APP-B02-BAS02-1020,Approval for Beams Conc. Dim.  & RFT DWGs (B02) (Bas 02),"E-SUB-B02-BAS02-1020, E-SUB-B02-BAS02-1020","E-SUB-B02-BAS02-1020: SS 12, E-SUB-B02-BAS02-1020: FF 10","CON-B02-BAS02-1040, CON-B02-BAS02-1060"
The Big -P.01-UP-20-April-26,E-APP-B02-BAS02-1010,Approval for Stairs Conc. Dim.  & RFT DWGs (B02) (Bas 02),"E-SUB-B02-BAS02-1010, E-SUB-B02-BAS02-1010","E-SUB-B02-BAS02-1010: SS 12, E-SUB-B02-BAS02-1010: FF 10","CON-B02-BAS02-1050, CON-B02-BAS02-1070"
The Big -P.01-UP-20-April-26,E-APP-B01-BAS02-1000,Approval for Col. & Walls Conc. Dim.  & RFT DWGs (B01) (Bas 02),"E-SUB-B01-BAS02-1000, E-SUB-B01-BAS02-1000","E-SUB-B01-BAS02-1000: SS 12, E-SUB-B01-BAS02-1000: FF 10","CON-B01-BAS02-1010, CON-B01-BAS02-1020"
The Big -P.01-UP-20-April-26,E-APP-B01-BAS02-1040,Approval for Slabs Conc. Dim.  & RFT DWGs (B01) (Bas 02),"E-SUB-B01-BAS02-1040, E-SUB-B01-BAS02-1040","E-SUB-B01-BAS02-1040: SS 12, E-SUB-B01-BAS02-1040: FF 10","CON-B01-BAS02-1040, CON-B01-BAS02-1070"
The Big -P.01-UP-20-April-26,E-APP-B01-BAS02-1030,Approval for Beams Conc. Dim.  & RFT DWGs (B01) (Bas 02),"E-SUB-B01-BAS02-1030, E-SUB-B01-BAS02-1030","E-SUB-B01-BAS02-1030: SS 12, E-SUB-B01-BAS02-1030: FF 10","CON-B01-BAS02-1040, CON-B01-BAS02-1070"
The Big -P.01-UP-20-April-26,E-APP-B01-BAS02-1010,Approval for Stairs Conc. Dim.  & RFT DWGs (B01) (Bas 02),"E-SUB-B01-BAS02-1010, E-SUB-B01-BAS02-1010","E-SUB-B01-BAS02-1010: SS 12, E-SUB-B01-BAS02-1010: FF 10","CON-B01-BAS02-1050, CON-B01-BAS02-1080"
The Big -P.01-UP-20-April-26,E-APP-B01-BAS02-1020,Approval for Ramps Conc. Dim.  & RFT DWGs (B01) (Bas 02),"E-SUB-B01-BAS02-1020, E-SUB-B01-BAS02-1020","E-SUB-B01-BAS02-1020: SS 12, E-SUB-B01-BAS02-1020: FF 10","CON-B01-BAS02-1060, CON-B01-BAS02-1090"
The Big -P.01-UP-20-April-26,E-APP-B03-BAS02-1000,Approval for Col. & Walls Conc. Dim.  & RFT DWGs  (B03) (Bas 02),"E-SUB-B03-BAS02-1000, E-SUB-B03-BAS02-1000","E-SUB-B03-BAS02-1000: SS 12, E-SUB-B03-BAS02-1000: FF 10","CON-B03-BAS02-1010, CON-B03-BAS02-1020"
The Big -P.01-UP-20-April-26,E-APP-B03-BAS02-1030,Approval for Slabs Conc. Dim.  & RFT DWGs  (B03) (Bas 02),"E-SUB-B03-BAS02-1030, E-SUB-B03-BAS02-1030","E-SUB-B03-BAS02-1030: SS 12, E-SUB-B03-BAS02-1030: FF 10","CON-B03-BAS02-1040, CON-B03-BAS02-1060"
The Big -P.01-UP-20-April-26,E-APP-B03-BAS02-1020,Approval for Beams Conc. Dim.  & RFT DWGs  (B03) (Bas 02),"E-SUB-B03-BAS02-1020, E-SUB-B03-BAS02-1020","E-SUB-B03-BAS02-1020: SS 12, E-SUB-B03-BAS02-1020: FF 10","CON-B03-BAS02-1040, CON-B03-BAS02-1060"
The Big -P.01-UP-20-April-26,E-APP-B03-BAS02-1010,Approval for Stairs Conc. Dim.  & RFT DWGs  (B03) (Bas 02),"E-SUB-B03-BAS02-1010, E-SUB-B03-BAS02-1010","E-SUB-B03-BAS02-1010: SS 12, E-SUB-B03-BAS02-1010: FF 10","CON-B03-BAS02-1050, CON-B03-BAS02-1070"
The Big -P.01-UP-20-April-26,E-APP-B04-BAS02-1000,Approval for Col. & Walls Conc. Dim.  & RFT DWGs (B04) (Bas 02),"E-SUB-B04-BAS02-1000, E-SUB-B04-BAS02-1000","E-SUB-B04-BAS02-1000: SS 12, E-SUB-B04-BAS02-1000: FF 10","CON-B04-BAS02-1010, CON-B04-BAS02-1020"
The Big -P.01-UP-20-April-26,E-APP-B04-BAS02-1040,Approval for Slabs Conc. Dim.  & RFT DWGs (B04) (Bas 02),"E-SUB-B04-BAS02-1040, E-SUB-B04-BAS02-1040","E-SUB-B04-BAS02-1040: SS 12, E-SUB-B04-BAS02-1040: FF 10","CON-B04-BAS02-1040, CON-B04-BAS02-1060"
The Big -P.01-UP-20-April-26,E-APP-B04-BAS02-1030,Approval for Beams Conc. Dim.  & RFT DWGs (B04) (Bas 02),"E-SUB-B04-BAS02-1030, E-SUB-B04-BAS02-1030","E-SUB-B04-BAS02-1030: SS 12, E-SUB-B04-BAS02-1030: FF 10","CON-B04-BAS02-1040, CON-B04-BAS02-1060"
The Big -P.01-UP-20-April-26,E-APP-B04-BAS02-1010,Approval for Stairs Conc. Dim.  & RFT DWGs (B04) (Bas 02),"E-SUB-B04-BAS02-1010, E-SUB-B04-BAS02-1010","E-SUB-B04-BAS02-1010: SS 12, E-SUB-B04-BAS02-1010: FF 10","CON-B04-BAS02-1050, CON-B04-BAS02-1080"
The Big -P.01-UP-20-April-26,E-APP-B04-BAS02-1020,Approval for Ramps Conc. Dim.  & RFT DWGs (B04) (Bas 02),"E-SUB-B04-BAS02-1020, E-SUB-B04-BAS02-1020","E-SUB-B04-BAS02-1020: SS 12, E-SUB-B04-BAS02-1020: FF 10","CON-B04-BAS02-1050, CON-B04-BAS02-1090"
The Big -P.01-UP-20-April-26,AB-SUB-B01-FOOT-1030,Submittal for RC Raft & Footings RFT DWGs As-Built Drawing (B01) (footing),CON-B01-FOOT-1090,CON-B01-FOOT-1090: FS,"AB-APP-B01-FOOT-1030, AB-APP-B01-FOOT-1030"
The Big -P.01-UP-20-April-26,AB-SUB-B03-BAS2-1000,Submittal for Col. & Walls Conc. Dim.  & RFT DWGs As-Built Drawing (B03) (Bas 02),CON-B03-BAS02-1030,CON-B03-BAS02-1030: FS,"AB-APP-B03-BAS2-1000, AB-APP-B03-BAS2-1000"
The Big -P.01-UP-20-April-26,AB-SUB-B03-BAS2-1020,Submittal for Slabs Conc. Dim.  & RFT DWGs As-Built Drawing (B03) (Bas 02),CON-B03-BAS02-1100,CON-B03-BAS02-1100: FS,"AB-APP-B03-BAS2-1020, AB-APP-B03-BAS2-1020"
The Big -P.01-UP-20-April-26,AB-SUB-B03-BAS2-1030,Submittal for Beams Conc. Dim.  & RFT DWGs As-Built Drawing (B03) (Bas 02),CON-B03-BAS02-1100,CON-B03-BAS02-1100: FS,"AB-APP-B03-BAS2-1030, AB-APP-B03-BAS2-1030"
The Big -P.01-UP-20-April-26,AB-SUB-B03-BAS2-1010,Submittal for Stairs Conc. Dim.  & RFT DWGs As-Built Drawing (B03) (Bas 02),CON-B03-BAS02-1080,CON-B03-BAS02-1080: FS,"AB-APP-B03-BAS2-1010, AB-APP-B03-BAS2-1010"
The Big -P.01-UP-20-April-26,AB-SUB-B04-BAS2-1000,Submittal for Col. & Walls Conc. Dim.  & RFT DWGs As-Built Drawing (B04) (Bas 02),CON-B04-BAS02-1010,CON-B04-BAS02-1010: FS,"AB-APP-B04-BAS2-1000, AB-APP-B04-BAS2-1000"
The Big -P.01-UP-20-April-26,AB-SUB-B04-BAS2-1030,Submittal for Slabs Conc. Dim.  & RFT DWGs As-Built Drawing (B04) (Bas 02),CON-B04-BAS02-1130,CON-B04-BAS02-1130: FS,"AB-APP-B04-BAS2-1030, AB-APP-B04-BAS2-1030"
The Big -P.01-UP-20-April-26,AB-SUB-B04-BAS2-1040,Submittal for Beams Conc. Dim.  & RFT DWGs As-Built Drawing (B04) (Bas 02),CON-B04-BAS02-1130,CON-B04-BAS02-1130: FS,"AB-APP-B04-BAS2-1040, AB-APP-B04-BAS2-1040"
The Big -P.01-UP-20-April-26,AB-SUB-B04-BAS2-1010,Submittal for Stairs Conc. Dim.  & RFT DWGs As-Built Drawing (B04) (Bas 02),CON-B04-BAS02-1100,CON-B04-BAS02-1100: FS,"AB-APP-B04-BAS2-1010, AB-APP-B04-BAS2-1010"
The Big -P.01-UP-20-April-26,AB-SUB-B04-BAS2-1020,Submittal for Ramps Conc. Dim.  & RFT DWGs As-Built Drawing (B04) (Bas 02),CON-B04-BAS02-1110,CON-B04-BAS02-1110: FS,"AB-APP-B04-BAS2-1020, AB-APP-B04-BAS2-1020"
The Big -P.01-UP-20-April-26,AB-SUB-B02-BAS2-1000,Submittal for Col. & Walls Conc. Dim.& RFT DWGs As-Built Drawing (B02) (Bas 02),CON-B02-BAS02-1030,CON-B02-BAS02-1030: FS,"AB-APP-B02-BAS2-1000, AB-APP-B02-BAS2-1000"
The Big -P.01-UP-20-April-26,AB-SUB-B02-BAS2-1020,Submittal for Slabs Conc. Dim.& RFT DWGs As-Built Drawing (B02) (Bas 02),CON-B02-BAS02-1100,CON-B02-BAS02-1100: FS,"AB-APP-B02-BAS2-1020, AB-APP-B02-BAS2-1020"
The Big -P.01-UP-20-April-26,AB-SUB-B02-BAS2-1030,Submittal for Beams Conc. Dim.& RFT DWGs As-Built Drawing (B02) (Bas 02),CON-B02-BAS02-1100,CON-B02-BAS02-1100: FS,"AB-APP-B02-BAS2-1030, AB-APP-B02-BAS2-1030"
The Big -P.01-UP-20-April-26,AB-SUB-B02-BAS2-1010,Submittal for Stairs Conc. Dim.& RFT DWGs As-Built Drawing (B02) (Bas 02),CON-B02-BAS02-1070,CON-B02-BAS02-1070: FS,"AB-APP-B02-BAS2-1010, AB-APP-B02-BAS2-1010"
The Big -P.01-UP-20-April-26,AB-APP-B02-BAS2-1000,Approval for Col. & Walls Conc. Dim.  & RFT DWGs As-Built Drawing (B02) (Bas 02),"AB-SUB-B02-BAS2-1000, AB-SUB-B02-BAS2-1000","AB-SUB-B02-BAS2-1000: SS 12, AB-SUB-B02-BAS2-1000: FF 6",HO-1050
The Big -P.01-UP-20-April-26,AB-APP-B02-BAS2-1020,Approval for Slabs Conc. Dim.  & RFT DWGs As-Built Drawing (B02) (Bas 02),"AB-SUB-B02-BAS2-1020, AB-SUB-B02-BAS2-1020","AB-SUB-B02-BAS2-1020: SS 12, AB-SUB-B02-BAS2-1020: FF 6",HO-1050
The Big -P.01-UP-20-April-26,AB-APP-B02-BAS2-1030,Approval for Beams Conc. Dim.  & RFT DWGs As-Built Drawing (B02) (Bas 02),"AB-SUB-B02-BAS2-1030, AB-SUB-B02-BAS2-1030","AB-SUB-B02-BAS2-1030: SS 12, AB-SUB-B02-BAS2-1030: FF 6",HO-1050
The Big -P.01-UP-20-April-26,AB-APP-B02-BAS2-1010,Approval for Stairs Conc. Dim.  & RFT DWGs As-Built Drawing (B02) (Bas 02),"AB-SUB-B02-BAS2-1010, AB-SUB-B02-BAS2-1010","AB-SUB-B02-BAS2-1010: SS 12, AB-SUB-B02-BAS2-1010: FF 6",HO-1050
The Big -P.01-UP-20-April-26,AB-APP-B01-BAS2-1000,Approval for Col. & Walls Conc. Dim.  & RFT DWGs As-Built Drawing (B01) (Bas 02),"AB-SUB-B01-BAS2-1000, AB-SUB-B01-BAS2-1000","AB-SUB-B01-BAS2-1000: SS 12, AB-SUB-B01-BAS2-1000: FF 6",HO-1050
The Big -P.01-UP-20-April-26,AB-APP-B01-BAS2-1030,Approval for Slabs Conc. Dim.  & RFT DWGs As-Built Drawing (B01) (Bas 02),"AB-SUB-B01-BAS2-1030, AB-SUB-B01-BAS2-1030","AB-SUB-B01-BAS2-1030: SS 12, AB-SUB-B01-BAS2-1030: FF 6",HO-1050
The Big -P.01-UP-20-April-26,AB-APP-B01-BAS2-1040,Approval for Beams Conc. Dim.  & RFT DWGs As-Built Drawing (B01) (Bas 02),"AB-SUB-B01-BAS2-1040, AB-SUB-B01-BAS2-1040","AB-SUB-B01-BAS2-1040: SS 12, AB-SUB-B01-BAS2-1040: FF 6",HO-1050
The Big -P.01-UP-20-April-26,AB-APP-B01-BAS2-1010,Approval for Stairs Conc. Dim.  & RFT DWGs As-Built Drawing (B01) (Bas 02),"AB-SUB-B01-BAS2-1010, AB-SUB-B01-BAS2-1010","AB-SUB-B01-BAS2-1010: SS 12, AB-SUB-B01-BAS2-1010: FF 6",HO-1050
The Big -P.01-UP-20-April-26,AB-APP-B01-BAS2-1020,Approval for Ramps Conc. Dim.  & RFT DWGs As-Built Drawing (B01) (Bas 02),"AB-SUB-B01-BAS2-1020, AB-SUB-B01-BAS2-1020","AB-SUB-B01-BAS2-1020: SS 12, AB-SUB-B01-BAS2-1020: FF 6",HO-1050
The Big -P.01-UP-20-April-26,AB-APP-B03-BAS2-1000,Approval for Col. & Walls Conc. Dim.  & RFT DWGs As-Built Drawing  (B03) (Bas 02),"AB-SUB-B03-BAS2-1000, AB-SUB-B03-BAS2-1000","AB-SUB-B03-BAS2-1000: SS 12, AB-SUB-B03-BAS2-1000: FF 6",HO-1050
The Big -P.01-UP-20-April-26,AB-APP-B03-BAS2-1020,Approval for Slabs Conc. Dim.  & RFT DWGs As-Built Drawing  (B03) (Bas 02),"AB-SUB-B03-BAS2-1020, AB-SUB-B03-BAS2-1020","AB-SUB-B03-BAS2-1020: SS 12, AB-SUB-B03-BAS2-1020: FF 6",HO-1050
The Big -P.01-UP-20-April-26,AB-APP-B03-BAS2-1030,Approval for Beams Conc. Dim.  & RFT DWGs As-Built Drawing  (B03) (Bas 02),"AB-SUB-B03-BAS2-1030, AB-SUB-B03-BAS2-1030","AB-SUB-B03-BAS2-1030: SS 12, AB-SUB-B03-BAS2-1030: FF 6",HO-1050
The Big -P.01-UP-20-April-26,AB-APP-B03-BAS2-1010,Approval for Stairs Conc. Dim.  & RFT DWGs As-Built Drawing  (B03) (Bas 02),"AB-SUB-B03-BAS2-1010, AB-SUB-B03-BAS2-1010","AB-SUB-B03-BAS2-1010: SS 12, AB-SUB-B03-BAS2-1010: FF 6",HO-1050
The Big -P.01-UP-20-April-26,AB-APP-B04-BAS2-1000,Approval for Col. & Walls Conc. Dim.  & RFT DWGs As-Built Drawing (B04) (Bas 02),"AB-SUB-B04-BAS2-1000, AB-SUB-B04-BAS2-1000","AB-SUB-B04-BAS2-1000: SS 12, AB-SUB-B04-BAS2-1000: FF 6",HO-1050
The Big -P.01-UP-20-April-26,AB-APP-B04-BAS2-1030,Approval for Slabs Conc. Dim.  & RFT DWGs As-Built Drawing (B04) (Bas 02),"AB-SUB-B04-BAS2-1030, AB-SUB-B04-BAS2-1030","AB-SUB-B04-BAS2-1030: SS 12, AB-SUB-B04-BAS2-1030: FF 6",HO-1050
The Big -P.01-UP-20-April-26,AB-APP-B04-BAS2-1040,Approval for Beams Conc. Dim.  & RFT DWGs As-Built Drawing (B04) (Bas 02),"AB-SUB-B04-BAS2-1040, AB-SUB-B04-BAS2-1040","AB-SUB-B04-BAS2-1040: SS 12, AB-SUB-B04-BAS2-1040: FF 6",HO-1050
The Big -P.01-UP-20-April-26,AB-APP-B04-BAS2-1010,Approval for Stairs Conc. Dim.  & RFT DWGs As-Built Drawing (B04) (Bas 02),"AB-SUB-B04-BAS2-1010, AB-SUB-B04-BAS2-1010","AB-SUB-B04-BAS2-1010: SS 12, AB-SUB-B04-BAS2-1010: FF 6",HO-1050
The Big -P.01-UP-20-April-26,AB-APP-B04-BAS2-1020,Approval for Ramps Conc. Dim.  & RFT DWGs As-Built Drawing (B04) (Bas 02),"AB-SUB-B04-BAS2-1020, AB-SUB-B04-BAS2-1020","AB-SUB-B04-BAS2-1020: SS 12, AB-SUB-B04-BAS2-1020: FF 6",HO-1050
The Big -P.01-UP-20-April-26,E-SUB-B03-BAS01-1000,Submittal for Col. & Walls Conc. Dim.  & RFT DWGs (B03) (Bas 01),E-DR-1000,E-DR-1000: FS 10,"E-APP-B03-BAS01-1000, E-APP-B03-BAS01-1000, E-SUB-B03-BAS01-1010"
The Big -P.01-UP-20-April-26,E-SUB-B03-BAS01-1030,Submittal for Slabs Conc. Dim.  & RFT DWGs (B03) (Bas 01),"E-DR-1000, E-SUB-B03-BAS01-1020","E-DR-1000: FS 21, E-SUB-B03-BAS01-1020: SS 3","E-APP-B03-BAS01-1030, E-APP-B03-BAS01-1030"
The Big -P.01-UP-20-April-26,E-SUB-B03-BAS01-1020,Submittal for Beams Conc. Dim.  & RFT DWGs (B03) (Bas 01),"E-DR-1000, E-SUB-B03-BAS01-1010","E-DR-1000: FS 17, E-SUB-B03-BAS01-1010: SS 3","E-APP-B03-BAS01-1020, E-APP-B03-BAS01-1020, E-SUB-B03-BAS01-1030"
The Big -P.01-UP-20-April-26,E-SUB-B03-BAS01-1010,Submittal for Stairs Conc. Dim.  & RFT DWGs (B03) (Bas 01),"E-DR-1000, E-SUB-B03-BAS01-1000","E-DR-1000: FS 14, E-SUB-B03-BAS01-1000: SS 3","E-APP-B03-BAS01-1010, E-APP-B03-BAS01-1010, E-SUB-B03-BAS01-1020"
The Big -P.01-UP-20-April-26,E-SUB-B02-BAS01-1000,Submittal for Col. & Walls Conc. Dim.  & RFT DWGs (B02) (Bas 01),E-DR-1000,E-DR-1000: FS 10,"E-APP-B02-BAS01-1000, E-APP-B02-BAS01-1000, E-SUB-B02-BAS01-1010"
The Big -P.01-UP-20-April-26,E-SUB-B02-BAS01-1030,Submittal for Slabs Conc. Dim.  & RFT DWGs (B02) (Bas 01),"E-DR-1000, E-SUB-B02-BAS01-1020","E-DR-1000: FS 21, E-SUB-B02-BAS01-1020: SS 3","E-APP-B02-BAS01-1030, E-APP-B02-BAS01-1030"
The Big -P.01-UP-20-April-26,E-SUB-B02-BAS01-1020,Submittal for Beams Conc. Dim.  & RFT DWGs (B02) (Bas 01),"E-DR-1000, E-SUB-B02-BAS01-1010","E-DR-1000: FS 17, E-SUB-B02-BAS01-1010: SS 3","E-APP-B02-BAS01-1020, E-APP-B02-BAS01-1020, E-SUB-B02-BAS01-1030"
The Big -P.01-UP-20-April-26,E-SUB-B02-BAS01-1010,Submittal for Stairs Conc. Dim.  & RFT DWGs (B02) (Bas 01),"E-DR-1000, E-SUB-B02-BAS01-1000","E-DR-1000: FS 14, E-SUB-B02-BAS01-1000: SS 3","E-APP-B02-BAS01-1010, E-APP-B02-BAS01-1010, E-SUB-B02-BAS01-1020"
The Big -P.01-UP-20-April-26,E-SUB-B04-BAS01-1000,Submittal for Col. & Walls Conc. Dim.  & RFT DWGs (B04) (Bas 01),E-DR-1000,E-DR-1000: FS 20,"E-APP-B04-BAS01-1000, E-APP-B04-BAS01-1000, E-SUB-B04-BAS01-1010"
The Big -P.01-UP-20-April-26,E-SUB-B04-BAS01-1040,Submittal for Slabs Conc. Dim.  & RFT DWGs (B04) (Bas 01),"E-DR-1000, E-SUB-B04-BAS01-1030","E-DR-1000: FS 34, E-SUB-B04-BAS01-1030: SS 3","E-APP-B04-BAS01-1040, E-APP-B04-BAS01-1040"
The Big -P.01-UP-20-April-26,E-SUB-B04-BAS01-1030,Submittal for Beams Conc. Dim.  & RFT DWGs (B04) (Bas 01),"E-DR-1000, E-SUB-B04-BAS01-1020","E-DR-1000: FS 30, E-SUB-B04-BAS01-1020: SS 3","E-APP-B04-BAS01-1030, E-APP-B04-BAS01-1030, E-SUB-B04-BAS01-1040"
The Big -P.01-UP-20-April-26,E-SUB-B04-BAS01-1010,Submittal for Stairs Conc. Dim.  & RFT DWGs (B04) (Bas 01),"E-DR-1000, E-SUB-B04-BAS01-1000","E-DR-1000: FS 23, E-SUB-B04-BAS01-1000: SS 3","E-APP-B04-BAS01-1010, E-APP-B04-BAS01-1010, E-SUB-B04-BAS01-1020"
The Big -P.01-UP-20-April-26,E-SUB-B04-BAS01-1020,Submittal for Ramps Conc. Dim.  & RFT DWGs (B04) (Bas 01),"E-DR-1000, E-SUB-B04-BAS01-1010","E-DR-1000: FS 27, E-SUB-B04-BAS01-1010: SS 3","E-APP-B04-BAS01-1020, E-APP-B04-BAS01-1020, E-SUB-B04-BAS01-1030"
The Big -P.01-UP-20-April-26,E-APP-B02-BAS01-1000,Approval for Col. & Walls Conc. Dim.  & RFT DWGs (B02) (Bas 01),"E-SUB-B02-BAS01-1000, E-SUB-B02-BAS01-1000","E-SUB-B02-BAS01-1000: SS 12, E-SUB-B02-BAS01-1000: FF 10","CON-B02-BAS01-1010, CON-B02-BAS01-1020"
The Big -P.01-UP-20-April-26,E-APP-B02-BAS01-1030,Approval for Slabs Conc. Dim.  & RFT DWGs (B02) (Bas 01),"E-SUB-B02-BAS01-1030, E-SUB-B02-BAS01-1030","E-SUB-B02-BAS01-1030: SS 12, E-SUB-B02-BAS01-1030: FF 10","CON-B02-BAS01-1040, CON-B02-BAS01-1060"
The Big -P.01-UP-20-April-26,E-APP-B02-BAS01-1020,Approval for Beams Conc. Dim.  & RFT DWGs (B02) (Bas 01),"E-SUB-B02-BAS01-1020, E-SUB-B02-BAS01-1020","E-SUB-B02-BAS01-1020: SS 12, E-SUB-B02-BAS01-1020: FF 10","CON-B02-BAS01-1040, CON-B02-BAS01-1060"
The Big -P.01-UP-20-April-26,E-APP-B02-BAS01-1010,Approval for Stairs Conc. Dim.  & RFT DWGs (B02) (Bas 01),"E-SUB-B02-BAS01-1010, E-SUB-B02-BAS01-1010","E-SUB-B02-BAS01-1010: SS 12, E-SUB-B02-BAS01-1010: FF 10","CON-B02-BAS01-1050, CON-B02-BAS01-1070"
The Big -P.01-UP-20-April-26,E-APP-B01-BAS01-1000,Approval for Col. & Walls Conc. Dim.  & RFT DWGs (B01) (Bas 01),"E-SUB-B01-BAS01-1000, E-SUB-B01-BAS01-1000","E-SUB-B01-BAS01-1000: SS 12, E-SUB-B01-BAS01-1000: FF 10","CON-B01-BAS01-1010, CON-B01-BAS01-1020"
The Big -P.01-UP-20-April-26,E-APP-B01-BAS01-1040,Approval for Slabs Conc. Dim.  & RFT DWGs (B01) (Bas 01),"E-SUB-B01-BAS01-1040, E-SUB-B01-BAS01-1040","E-SUB-B01-BAS01-1040: SS 12, E-SUB-B01-BAS01-1040: FF 10","CON-B01-BAS01-1040, CON-B01-BAS01-1060"
The Big -P.01-UP-20-April-26,E-APP-B01-BAS01-1030,Approval for Beams Conc. Dim.  & RFT DWGs (B01) (Bas 01),"E-SUB-B01-BAS01-1030, E-SUB-B01-BAS01-1030","E-SUB-B01-BAS01-1030: SS 12, E-SUB-B01-BAS01-1030: FF 10","CON-B01-BAS01-1040, CON-B01-BAS01-1060"
The Big -P.01-UP-20-April-26,E-APP-B01-BAS01-1010,Approval for Stairs Conc. Dim.  & RFT DWGs (B01) (Bas 01),"E-SUB-B01-BAS01-1010, E-SUB-B01-BAS01-1010","E-SUB-B01-BAS01-1010: SS 12, E-SUB-B01-BAS01-1010: FF 10","CON-B01-BAS01-1050, CON-B01-BAS01-1080"
The Big -P.01-UP-20-April-26,E-APP-B01-BAS01-1020,Approval for Ramps Conc. Dim.  & RFT DWGs (B01) (Bas 01),"E-SUB-B01-BAS01-1020, E-SUB-B01-BAS01-1020","E-SUB-B01-BAS01-1020: SS 12, E-SUB-B01-BAS01-1020: FF 10","CON-B01-BAS01-1090, CON-B01-BAS01-1070"
The Big -P.01-UP-20-April-26,E-APP-B03-BAS01-1000,Approval for Col. & Walls Conc. Dim.  & RFT DWGs  (B03) (Bas 01),"E-SUB-B03-BAS01-1000, E-SUB-B03-BAS01-1000","E-SUB-B03-BAS01-1000: SS 12, E-SUB-B03-BAS01-1000: FF 10","CON-B03-BAS01-1010, CON-B03-BAS01-1020"
The Big -P.01-UP-20-April-26,E-APP-B03-BAS01-1030,Approval for Slabs Conc. Dim.  & RFT DWGs  (B03) (Bas 01),"E-SUB-B03-BAS01-1030, E-SUB-B03-BAS01-1030","E-SUB-B03-BAS01-1030: SS 12, E-SUB-B03-BAS01-1030: FF 10","CON-B03-BAS01-1040, CON-B03-BAS01-1050"
The Big -P.01-UP-20-April-26,E-APP-B03-BAS01-1020,Approval for Beams Conc. Dim.  & RFT DWGs  (B03) (Bas 01),"E-SUB-B03-BAS01-1020, E-SUB-B03-BAS01-1020","E-SUB-B03-BAS01-1020: SS 12, E-SUB-B03-BAS01-1020: FF 10","CON-B03-BAS01-1040, CON-B03-BAS01-1050"
The Big -P.01-UP-20-April-26,E-APP-B03-BAS01-1010,Approval for Stairs Conc. Dim.  & RFT DWGs  (B03) (Bas 01),"E-SUB-B03-BAS01-1010, E-SUB-B03-BAS01-1010","E-SUB-B03-BAS01-1010: SS 12, E-SUB-B03-BAS01-1010: FF 10","CON-B03-BAS01-1060, CON-B03-BAS01-1070"
The Big -P.01-UP-20-April-26,E-APP-B04-BAS01-1000,Approval for Col. & Walls Conc. Dim.  & RFT DWGs (B04) (Bas 01),"E-SUB-B04-BAS01-1000, E-SUB-B04-BAS01-1000","E-SUB-B04-BAS01-1000: SS 12, E-SUB-B04-BAS01-1000: FF 10","CON-B04-BAS01-1010, CON-B04-BAS01-1020"
The Big -P.01-UP-20-April-26,E-APP-B04-BAS01-1040,Approval for Slabs Conc. Dim.  & RFT DWGs (B04) (Bas 01),"E-SUB-B04-BAS01-1040, E-SUB-B04-BAS01-1040","E-SUB-B04-BAS01-1040: SS 12, E-SUB-B04-BAS01-1040: FF 10","CON-B04-BAS01-1040, CON-B04-BAS01-1070"
The Big -P.01-UP-20-April-26,E-APP-B04-BAS01-1030,Approval for Beams Conc. Dim.  & RFT DWGs (B04) (Bas 01),"E-SUB-B04-BAS01-1030, E-SUB-B04-BAS01-1030","E-SUB-B04-BAS01-1030: SS 12, E-SUB-B04-BAS01-1030: FF 10","CON-B04-BAS01-1040, CON-B04-BAS01-1070"
The Big -P.01-UP-20-April-26,E-APP-B04-BAS01-1010,Approval for Stairs Conc. Dim.  & RFT DWGs (B04) (Bas 01),"E-SUB-B04-BAS01-1010, E-SUB-B04-BAS01-1010","E-SUB-B04-BAS01-1010: SS 12, E-SUB-B04-BAS01-1010: FF 10","CON-B04-BAS01-1060, CON-B04-BAS01-1090"
The Big -P.01-UP-20-April-26,E-APP-B04-BAS01-1020,Approval for Ramps Conc. Dim.  & RFT DWGs (B04) (Bas 01),"E-SUB-B04-BAS01-1020, E-SUB-B04-BAS01-1020","E-SUB-B04-BAS01-1020: SS 12, E-SUB-B04-BAS01-1020: FF 10","CON-B04-BAS01-1080, CON-B04-BAS01-1050"
The Big -P.01-UP-20-April-26,AB-SUB-B03-BAS1-1000,Submittal for Col. & Walls Conc. Dim.  & RFT DWGs As-Built Drawing (B03) (Bas 01),CON-B03-BAS01-1030,CON-B03-BAS01-1030: FS,"AB-APP-B03-BAS1-1000, AB-APP-B03-BAS1-1000"
The Big -P.01-UP-20-April-26,AB-SUB-B03-BAS1-1020,Submittal for Slabs Conc. Dim.  & RFT DWGs As-Built Drawing (B03) (Bas 01),CON-B03-BAS01-1090,CON-B03-BAS01-1090: FS,"AB-APP-B03-BAS1-1020, AB-APP-B03-BAS1-1020"
The Big -P.01-UP-20-April-26,AB-SUB-B03-BAS1-1030,Submittal for Beams Conc. Dim.  & RFT DWGs As-Built Drawing (B03) (Bas 01),CON-B03-BAS01-1090,CON-B03-BAS01-1090: FS,"AB-APP-B03-BAS1-1030, AB-APP-B03-BAS1-1030"
The Big -P.01-UP-20-April-26,AB-SUB-B03-BAS1-1010,Submittal for Stairs Conc. Dim.  & RFT DWGs As-Built Drawing (B03) (Bas 01),CON-B03-BAS01-1080,CON-B03-BAS01-1080: FS,"AB-APP-B03-BAS1-1010, AB-APP-B03-BAS1-1010"
The Big -P.01-UP-20-April-26,AB-SUB-B02-BAS1-1000,Submittal for Col. & Walls Conc. Dim.  & RFT DWGs As-Built Drawing (B02) (Bas 01),CON-B02-BAS01-1030,CON-B02-BAS01-1030: FS,"AB-APP-B02-BAS1-1000, AB-APP-B02-BAS1-1000"
The Big -P.01-UP-20-April-26,AB-SUB-B02-BAS1-1020,Submittal for Slabs Conc. Dim.  & RFT DWGs As-Built Drawing (B02) (Bas 01),CON-B02-BAS01-1090,CON-B02-BAS01-1090: FS,"AB-APP-B02-BAS1-1020, AB-APP-B02-BAS1-1020"
The Big -P.01-UP-20-April-26,AB-SUB-B02-BAS1-1030,Submittal for Beams Conc. Dim.  & RFT DWGs As-Built Drawing (B02) (Bas 01),CON-B02-BAS01-1090,CON-B02-BAS01-1090: FS,"AB-APP-B02-BAS1-1030, AB-APP-B02-BAS1-1030"
The Big -P.01-UP-20-April-26,AB-SUB-B02-BAS1-1010,Submittal for Stairs Conc. Dim.  & RFT DWGs As-Built Drawing (B02) (Bas 01),CON-B02-BAS01-1080,CON-B02-BAS01-1080: FS,"AB-APP-B02-BAS1-1010, AB-APP-B02-BAS1-1010"
The Big -P.01-UP-20-April-26,AB-SUB-B04-BAS1-1000,Submittal for Col. & Walls Conc. Dim.  & RFT DWGs As-Built Drawing (B04) (Bas 01),CON-B04-BAS01-1030,CON-B04-BAS01-1030: FS,"AB-APP-B04-BAS1-1000, AB-APP-B04-BAS1-1000"
The Big -P.01-UP-20-April-26,AB-SUB-B04-BAS1-1030,Submittal for Slabs Conc. Dim.  & RFT DWGs As-Built Drawing (B04) (Bas 01),CON-B04-BAS01-1120,CON-B04-BAS01-1120: FS,"AB-APP-B04-BAS1-1030, AB-APP-B04-BAS1-1030"
The Big -P.01-UP-20-April-26,AB-SUB-B04-BAS1-1040,Submittal for Beams Conc. Dim.  & RFT DWGs As-Built Drawing (B04) (Bas 01),CON-B04-BAS01-1120,CON-B04-BAS01-1120: FS,"AB-APP-B04-BAS1-1040, AB-APP-B04-BAS1-1040"
The Big -P.01-UP-20-April-26,AB-SUB-B04-BAS1-1010,Submittal for Stairs Conc. Dim.  & RFT DWGs As-Built Drawing (B04) (Bas 01),CON-B04-BAS01-1110,CON-B04-BAS01-1110: FS,"AB-APP-B04-BAS1-1010, AB-APP-B04-BAS1-1010"
The Big -P.01-UP-20-April-26,AB-SUB-B04-BAS1-1020,Submittal for Ramps Conc. Dim.  & RFT DWGs As-Built Drawing (B04) (Bas 01),CON-B04-BAS01-1110,CON-B04-BAS01-1110: FS,"AB-APP-B04-BAS1-1020, AB-APP-B04-BAS1-1020"
The Big -P.01-UP-20-April-26,AB-APP-B02-BAS1-1000,Approval for Col. & Walls Conc. Dim.  & RFT DWGs As-Built Drawing (B02) (Bas 01),"AB-SUB-B02-BAS1-1000, AB-SUB-B02-BAS1-1000","AB-SUB-B02-BAS1-1000: SS 12, AB-SUB-B02-BAS1-1000: FF 6",HO-1050
The Big -P.01-UP-20-April-26,AB-APP-B02-BAS1-1020,Approval for Slabs Conc. Dim.  & RFT DWGs As-Built Drawing (B02) (Bas 01),"AB-SUB-B02-BAS1-1020, AB-SUB-B02-BAS1-1020","AB-SUB-B02-BAS1-1020: SS 12, AB-SUB-B02-BAS1-1020: FF 6",HO-1050
The Big -P.01-UP-20-April-26,AB-APP-B02-BAS1-1030,Approval for Beams Conc. Dim.  & RFT DWGs As-Built Drawing (B02) (Bas 01),"AB-SUB-B02-BAS1-1030, AB-SUB-B02-BAS1-1030","AB-SUB-B02-BAS1-1030: SS 12, AB-SUB-B02-BAS1-1030: FF 6",HO-1050
The Big -P.01-UP-20-April-26,AB-APP-B02-BAS1-1010,Approval for Stairs Conc. Dim.  & RFT DWGs As-Built Drawing (B02) (Bas 01),"AB-SUB-B02-BAS1-1010, AB-SUB-B02-BAS1-1010","AB-SUB-B02-BAS1-1010: SS 12, AB-SUB-B02-BAS1-1010: FF 6",HO-1050
The Big -P.01-UP-20-April-26,AB-APP-B01-BAS1-1000,Approval for Col. & Walls Conc. Dim.  & RFT DWGs As-Built Drawing (B01) (Bas 01),"AB-SUB-B01-BAS1-1000, AB-SUB-B01-BAS1-1000","AB-SUB-B01-BAS1-1000: SS 12, AB-SUB-B01-BAS1-1000: FF 6",HO-1050
The Big -P.01-UP-20-April-26,AB-APP-B01-BAS1-1020,Approval for Slabs Conc. Dim.  & RFT DWGs As-Built Drawing (B01) (Bas 01),"AB-SUB-B01-BAS1-1020, AB-SUB-B01-BAS1-1020","AB-SUB-B01-BAS1-1020: SS 12, AB-SUB-B01-BAS1-1020: FF 6",HO-1050
The Big -P.01-UP-20-April-26,AB-APP-B01-BAS1-1030,Approval for Beams Conc. Dim.  & RFT DWGs As-Built Drawing (B01) (Bas 01),"AB-SUB-B01-BAS1-1030, AB-SUB-B01-BAS1-1030","AB-SUB-B01-BAS1-1030: SS 12, AB-SUB-B01-BAS1-1030: FF 6",HO-1050
The Big -P.01-UP-20-April-26,AB-APP-B01-BAS1-1010,Approval for Stairs Conc. Dim.  & RFT DWGs As-Built Drawing (B01) (Bas 01),"AB-SUB-B01-BAS1-1010, AB-SUB-B01-BAS1-1010","AB-SUB-B01-BAS1-1010: SS 12, AB-SUB-B01-BAS1-1010: FF 6",HO-1050
The Big -P.01-UP-20-April-26,AB-APP-B01-BAS1-1040,Approval for Ramps Conc. Dim.  & RFT DWGs As-Built Drawing (B01) (Bas 01),"AB-SUB-B01-BAS1-1040, AB-SUB-B01-BAS1-1040","AB-SUB-B01-BAS1-1040: SS 12, AB-SUB-B01-BAS1-1040: FF 6",HO-1050
The Big -P.01-UP-20-April-26,AB-APP-B03-BAS1-1000,Approval for Col. & Walls Conc. Dim.  & RFT DWGs As-Built Drawing  (B03) (Bas 01),"AB-SUB-B03-BAS1-1000, AB-SUB-B03-BAS1-1000","AB-SUB-B03-BAS1-1000: SS 12, AB-SUB-B03-BAS1-1000: FF 6",HO-1050
The Big -P.01-UP-20-April-26,AB-APP-B03-BAS1-1020,Approval for Slabs Conc. Dim.  & RFT DWGs As-Built Drawing  (B03) (Bas 01),"AB-SUB-B03-BAS1-1020, AB-SUB-B03-BAS1-1020","AB-SUB-B03-BAS1-1020: SS 12, AB-SUB-B03-BAS1-1020: FF 6",HO-1050
The Big -P.01-UP-20-April-26,AB-APP-B03-BAS1-1030,Approval for Beams Conc. Dim.  & RFT DWGs As-Built Drawing  (B03) (Bas 01),"AB-SUB-B03-BAS1-1030, AB-SUB-B03-BAS1-1030","AB-SUB-B03-BAS1-1030: SS 12, AB-SUB-B03-BAS1-1030: FF 6",HO-1050
The Big -P.01-UP-20-April-26,AB-APP-B03-BAS1-1010,Approval for Stairs Conc. Dim.  & RFT DWGs As-Built Drawing  (B03) (Bas 01),"AB-SUB-B03-BAS1-1010, AB-SUB-B03-BAS1-1010","AB-SUB-B03-BAS1-1010: SS 12, AB-SUB-B03-BAS1-1010: FF 6",HO-1050
The Big -P.01-UP-20-April-26,AB-APP-B04-BAS1-1000,Approval for Col. & Walls Conc. Dim.  & RFT DWGs As-Built Drawing (B04) (Bas 01),"AB-SUB-B04-BAS1-1000, AB-SUB-B04-BAS1-1000","AB-SUB-B04-BAS1-1000: SS 12, AB-SUB-B04-BAS1-1000: FF 6",HO-1050
The Big -P.01-UP-20-April-26,AB-APP-B04-BAS1-1030,Approval for Slabs Conc. Dim.  & RFT DWGs As-Built Drawing (B04) (Bas 01),"AB-SUB-B04-BAS1-1030, AB-SUB-B04-BAS1-1030","AB-SUB-B04-BAS1-1030: SS 12, AB-SUB-B04-BAS1-1030: FF 6",HO-1050
The Big -P.01-UP-20-April-26,AB-APP-B04-BAS1-1040,Approval for Beams Conc. Dim.  & RFT DWGs As-Built Drawing (B04) (Bas 01),"AB-SUB-B04-BAS1-1040, AB-SUB-B04-BAS1-1040","AB-SUB-B04-BAS1-1040: SS 12, AB-SUB-B04-BAS1-1040: FF 6",HO-1050
The Big -P.01-UP-20-April-26,AB-APP-B04-BAS1-1010,Approval for Stairs Conc. Dim.  & RFT DWGs As-Built Drawing (B04) (Bas 01),"AB-SUB-B04-BAS1-1010, AB-SUB-B04-BAS1-1010","AB-SUB-B04-BAS1-1010: SS 12, AB-SUB-B04-BAS1-1010: FF 6",HO-1050
The Big -P.01-UP-20-April-26,AB-APP-B04-BAS1-1020,Approval for Ramps Conc. Dim.  & RFT DWGs As-Built Drawing (B04) (Bas 01),"AB-SUB-B04-BAS1-1020, AB-SUB-B04-BAS1-1020","AB-SUB-B04-BAS1-1020: SS 12, AB-SUB-B04-BAS1-1020: FF 6",HO-1050
The Big -P.01-UP-20-April-26,CON-B01-GR-1010,"RFT for Walls, Col. & Cores (B01) (GR)","CON-B01-GR-1000, CON-B01-GR-1000, E-APP-B01-GR-1000, P-MDEL-1130","CON-B01-GR-1000: SS, CON-B01-GR-1000: FF, E-APP-B01-GR-1000: FS, P-MDEL-1130: FS","CON-B01-GR-1020, CON-B01-GR-1020"
The Big -P.01-UP-20-April-26,CON-B01-GR-1060,RFT for Slabs & Beams (B01) (GR),"CON-B01-GR-1040, CON-B01-GR-1040, E-APP-B01-GR-1020, E-APP-B01-GR-1030, P-MDEL-1130","CON-B01-GR-1040: SS 2, CON-B01-GR-1040: FF, E-APP-B01-GR-1020: FS, E-APP-B01-GR-1030: FS, P-MDEL-1130: FS",CON-B01-GR-1090
The Big -P.01-UP-20-April-26,CON-B01-GR-1070,RFT for Stairs  (B01) (GR),"CON-B01-GR-1050, CON-B01-GR-1050, E-APP-B01-GR-1010, P-MDEL-1130","CON-B01-GR-1050: SS 2, CON-B01-GR-1050: FF, E-APP-B01-GR-1010: FS, P-MDEL-1130: FS",CON-B01-GR-1080
The Big -P.01-UP-20-April-26,CON-B02-GR-1010,"RFT for Walls, Col. & Cores (B02) (GR)","CON-B02-GR-1000, CON-B02-GR-1000, E-APP-B02-GR-1000, P-MDEL-1130","CON-B02-GR-1000: SS, CON-B02-GR-1000: FF, E-APP-B02-GR-1000: FS, P-MDEL-1130: FS","CON-B02-GR-1020, CON-B02-GR-1020"
The Big -P.01-UP-20-April-26,CON-B02-GR-1060,RFT for Slabs & Beams (B02) (GR),"CON-B02-GR-1040, CON-B02-GR-1040, E-APP-B02-GR-1020, E-APP-B02-GR-1030, P-MDEL-1130","CON-B02-GR-1040: SS 2, CON-B02-GR-1040: FF, E-APP-B02-GR-1020: FS, E-APP-B02-GR-1030: FS, P-MDEL-1130: FS",CON-B02-GR-1100
The Big -P.01-UP-20-April-26,CON-B02-GR-1070,RFT for Stairs  (B02) (GR),"CON-B02-GR-1050, CON-B02-GR-1050, E-APP-B02-GR-1010, P-MDEL-1130","CON-B02-GR-1050: SS 2, CON-B02-GR-1050: FF, E-APP-B02-GR-1010: FS, P-MDEL-1130: FS",CON-B02-GR-1080
The Big -P.01-UP-20-April-26,CON-B04-GR-1010,"RFT for Walls, Col. & Cores (B04) (GR)","CON-B04-GR-1000, CON-B04-GR-1000, E-APP-B04-GR-1000, P-MDEL-1130","CON-B04-GR-1000: SS 2, CON-B04-GR-1000: FF, E-APP-B04-GR-1000: FS, P-MDEL-1130: FS","CON-B04-GR-1020, CON-B04-GR-1020"
The Big -P.01-UP-20-April-26,CON-B04-GR-1060,RFT for Slabs & Beams (B04) (GR),"CON-B04-GR-1040, CON-B04-GR-1040, E-APP-B04-GR-1020, E-APP-B04-GR-1030, P-MDEL-1130","CON-B04-GR-1040: SS 3, CON-B04-GR-1040: FF, E-APP-B04-GR-1020: FS, E-APP-B04-GR-1030: FS, P-MDEL-1130: FS",CON-B04-GR-1080
The Big -P.01-UP-20-April-26,CON-B04-GR-1070,RFT for Stairs  (B04) (GR),"CON-B04-GR-1050, CON-B04-GR-1050, E-APP-B04-GR-1010, P-MDEL-1130","CON-B04-GR-1050: SS 1, CON-B04-GR-1050: FF, E-APP-B04-GR-1010: FS, P-MDEL-1130: FS",CON-B04-GR-1090
The Big -P.01-UP-20-April-26,CON-B03-GR-1010,"RFT for Walls, Col. & Cores (B03) (GR)","CON-B03-GR-1000, CON-B03-GR-1000, E-APP-B03-GR-1000, P-MDEL-1130","CON-B03-GR-1000: SS, CON-B03-GR-1000: FF, E-APP-B03-GR-1000: FS, P-MDEL-1130: FS","CON-B03-GR-1020, CON-B03-GR-1020"
The Big -P.01-UP-20-April-26,CON-B03-GR-1060,RFT for Slabs & Beams (B03) (GR),"CON-B03-GR-1040, CON-B03-GR-1050, E-APP-B03-GR-1020, E-APP-B03-GR-1030, P-MDEL-1130","CON-B03-GR-1040: SS 3, CON-B03-GR-1050: FF, E-APP-B03-GR-1020: FS, E-APP-B03-GR-1030: FS, P-MDEL-1130: FS","CON-B03-GR-1070, CON-B03-GR-1080"
The Big -P.01-UP-20-April-26,CON-B03-GR-1070,RFT for Stairs  (B03) (GR),"CON-B03-GR-1050, CON-B03-GR-1040, CON-B03-GR-1060, E-APP-B03-GR-1010, P-MDEL-1130","CON-B03-GR-1050: SS 2, CON-B03-GR-1040: FF, CON-B03-GR-1060: FF, E-APP-B03-GR-1010: FS, P-MDEL-1130: FS",CON-B03-GR-1090
The Big -P.01-UP-20-April-26,CON-B04-SOG-1040,Shuttering & RFT for S.O.G (B04) (Sog),"CON-B04-SOG-1030, CON-B04-SOG-1030, CON-B03-SOG-1040, E-APP-B04-SOG-1010, E-APP-B04-SOG-1000, P-MDEL-1150","CON-B04-SOG-1030: SS 5, CON-B04-SOG-1030: FF, CON-B03-SOG-1040: SS, E-APP-B04-SOG-1010: FS, E-APP-B04-SOG-1000: FS, P-MDEL-1150: FS","CON-B04-SOG-1050, CON-B04-SOG-1050, AB-SUB-B04-SOG-1000, AB-SUB-B04-SOG-1010"
The Big -P.01-UP-20-April-26,E-SUB-B04-GR-1000,Submittal for Col. & Walls Conc. Dim.  & RFT DWGs (B04) (GF),E-DR-1000,E-DR-1000: FS 35,"E-APP-B04-GR-1000, E-APP-B04-GR-1000, E-SUB-B04-GR-1010"
The Big -P.01-UP-20-April-26,E-SUB-B04-GR-1030,Submittal for Slabs Conc. Dim.  & RFT DWGs (B04) (GF),"E-DR-1000, E-SUB-B04-GR-1020","E-DR-1000: FS 45, E-SUB-B04-GR-1020: SS 3","E-APP-B04-GR-1030, E-APP-B04-GR-1030"
The Big -P.01-UP-20-April-26,E-SUB-B04-GR-1020,Submittal for Beams Conc. Dim.  & RFT DWGs (B04) (GF),"E-DR-1000, E-SUB-B04-GR-1010","E-DR-1000: FS 42, E-SUB-B04-GR-1010: SS 3","E-APP-B04-GR-1020, E-APP-B04-GR-1020, E-SUB-B04-GR-1030"
The Big -P.01-UP-20-April-26,E-SUB-B04-GR-1010,Submittal for Stairs Conc. Dim.  & RFT DWGs (B04) (GF),"E-DR-1000, E-SUB-B04-GR-1000","E-DR-1000: FS 38, E-SUB-B04-GR-1000: SS 3","E-APP-B04-GR-1010, E-APP-B04-GR-1010, E-SUB-B04-GR-1020"
The Big -P.01-UP-20-April-26,E-SUB-B03-GR-1000,Submittal for Col. & Walls Conc. Dim.  & RFT DWGs (B03) (GF),E-DR-1000,E-DR-1000: FS 20,"E-APP-B03-GR-1000, E-APP-B03-GR-1000, E-SUB-B03-GR-1010"
The Big -P.01-UP-20-April-26,E-SUB-B03-GR-1030,Submittal for Slabs Conc. Dim.  & RFT DWGs (B03) (GF),"E-DR-1000, E-SUB-B03-GR-1020","E-DR-1000: FS 30, E-SUB-B03-GR-1020: SS 3","E-APP-B03-GR-1030, E-APP-B03-GR-1030"
The Big -P.01-UP-20-April-26,E-SUB-B03-GR-1020,Submittal for Beams Conc. Dim.  & RFT DWGs (B03) (GF),"E-DR-1000, E-SUB-B03-GR-1010","E-DR-1000: FS 27, E-SUB-B03-GR-1010: SS 3","E-APP-B03-GR-1020, E-APP-B03-GR-1020, E-SUB-B03-GR-1030"
The Big -P.01-UP-20-April-26,E-SUB-B03-GR-1010,Submittal for Stairs Conc. Dim.  & RFT DWGs (B03) (GF),"E-DR-1000, E-SUB-B03-GR-1000","E-DR-1000: FS 23, E-SUB-B03-GR-1000: SS 3","E-APP-B03-GR-1010, E-APP-B03-GR-1010, E-SUB-B03-GR-1020"
The Big -P.01-UP-20-April-26,E-SUB-B02-GR-1000,Submittal for Col. & Walls Conc. Dim.  & RFT DWGs (B02) (GF),E-DR-1000,E-DR-1000: FS 15,"E-APP-B02-GR-1000, E-APP-B02-GR-1000, E-SUB-B02-GR-1010"
The Big -P.01-UP-20-April-26,E-SUB-B02-GR-1030,Submittal for Slabs Conc. Dim.  & RFT DWGs (B02) (GF),"E-DR-1000, E-SUB-B02-GR-1020","E-DR-1000: FS 26, E-SUB-B02-GR-1020: SS 3","E-APP-B02-GR-1030, E-APP-B02-GR-1030"
The Big -P.01-UP-20-April-26,E-SUB-B02-GR-1020,Submittal for Beams Conc. Dim.  & RFT DWGs (B02) (GF),"E-DR-1000, E-SUB-B02-GR-1010","E-DR-1000: FS 22, E-SUB-B02-GR-1010: SS 3","E-APP-B02-GR-1020, E-APP-B02-GR-1020, E-SUB-B02-GR-1030"
The Big -P.01-UP-20-April-26,E-SUB-B02-GR-1010,Submittal for Stairs Conc. Dim.  & RFT DWGs (B02) (GF),"E-DR-1000, E-SUB-B02-GR-1000","E-DR-1000: FS 19, E-SUB-B02-GR-1000: SS 3","E-APP-B02-GR-1010, E-APP-B02-GR-1010, E-SUB-B02-GR-1020"
The Big -P.01-UP-20-April-26,E-SUB-B01-GR-1000,Submittal for Col. & Walls Conc. Dim.  & RFT DWGs (B01),E-DR-1000,E-DR-1000: FS 10,"E-APP-B01-GR-1000, E-APP-B01-GR-1000, E-SUB-B01-GR-1010"
The Big -P.01-UP-20-April-26,E-SUB-B01-GR-1030,Submittal for Slabs Conc. Dim.  & RFT DWGs (B01),"E-DR-1000, E-SUB-B01-GR-1020","E-DR-1000: FS 21, E-SUB-B01-GR-1020: SS 3","E-APP-B01-GR-1030, E-APP-B01-GR-1030"
The Big -P.01-UP-20-April-26,E-SUB-B01-GR-1020,Submittal for Beams Conc. Dim.  & RFT DWGs (B01),"E-DR-1000, E-SUB-B01-GR-1010","E-DR-1000: FS 17, E-SUB-B01-GR-1010: SS 3","E-APP-B01-GR-1020, E-APP-B01-GR-1020, E-SUB-B01-GR-1030"
The Big -P.01-UP-20-April-26,E-SUB-B01-GR-1010,Submittal for Stairs Conc. Dim.  & RFT DWGs (B01),"E-DR-1000, E-SUB-B01-GR-1000","E-DR-1000: FS 14, E-SUB-B01-GR-1000: SS 3","E-APP-B01-GR-1010, E-APP-B01-GR-1010, E-SUB-B01-GR-1020"
The Big -P.01-UP-20-April-26,E-APP-B02-GR-1000,Approval for Col. & Walls Conc. Dim.  & RFT DWGs (B02) (GF),"E-SUB-B02-GR-1000, E-SUB-B02-GR-1000","E-SUB-B02-GR-1000: SS 12, E-SUB-B02-GR-1000: FF 10","CON-B02-GR-1010, CON-B02-GR-1020"
The Big -P.01-UP-20-April-26,E-APP-B02-GR-1030,Approval for Slabs Conc. Dim.  & RFT DWGs (B02) (GF),"E-SUB-B02-GR-1030, E-SUB-B02-GR-1030","E-SUB-B02-GR-1030: SS 12, E-SUB-B02-GR-1030: FF 10","CON-B02-GR-1040, CON-B02-GR-1060"
The Big -P.01-UP-20-April-26,E-APP-B02-GR-1020,Approval for Beams Conc. Dim.  & RFT DWGs (B02) (GF),"E-SUB-B02-GR-1020, E-SUB-B02-GR-1020","E-SUB-B02-GR-1020: SS 12, E-SUB-B02-GR-1020: FF 10","CON-B02-GR-1060, CON-B02-GR-1040"
The Big -P.01-UP-20-April-26,E-APP-B02-GR-1010,Approval for Stairs Conc. Dim.  & RFT DWGs (B02) (GF),"E-SUB-B02-GR-1010, E-SUB-B02-GR-1010","E-SUB-B02-GR-1010: SS 12, E-SUB-B02-GR-1010: FF 10","CON-B02-GR-1070, CON-B02-GR-1050"
The Big -P.01-UP-20-April-26,E-APP-B01-GR-1000,Approval for Col. & Walls Conc. Dim.  & RFT DWGs (B01)  (GF),"E-SUB-B01-GR-1000, E-SUB-B01-GR-1000","E-SUB-B01-GR-1000: SS 12, E-SUB-B01-GR-1000: FF 10","CON-B01-GR-1010, CON-B01-GR-1020"
The Big -P.01-UP-20-April-26,E-APP-B01-GR-1030,Approval for Slabs Conc. Dim.  & RFT DWGs (B01)  (GF),"E-SUB-B01-GR-1030, E-SUB-B01-GR-1030","E-SUB-B01-GR-1030: SS 12, E-SUB-B01-GR-1030: FF 10","CON-B01-GR-1040, CON-B01-GR-1060"
The Big -P.01-UP-20-April-26,E-APP-B01-GR-1020,Approval for Beams Conc. Dim.  & RFT DWGs (B01)  (GF),"E-SUB-B01-GR-1020, E-SUB-B01-GR-1020","E-SUB-B01-GR-1020: SS 12, E-SUB-B01-GR-1020: FF 10","CON-B01-GR-1040, CON-B01-GR-1060"
The Big -P.01-UP-20-April-26,E-APP-B01-GR-1010,Approval for Stairs Conc. Dim.  & RFT DWGs (B01)  (GF),"E-SUB-B01-GR-1010, E-SUB-B01-GR-1010","E-SUB-B01-GR-1010: SS 12, E-SUB-B01-GR-1010: FF 10","CON-B01-GR-1050, CON-B01-GR-1070"
The Big -P.01-UP-20-April-26,E-APP-B04-GR-1000,Approval for Col. & Walls Conc. Dim.  & RFT DWGs (B04) (GF),"E-SUB-B04-GR-1000, E-SUB-B04-GR-1000","E-SUB-B04-GR-1000: SS 12, E-SUB-B04-GR-1000: FF 10","CON-B04-GR-1010, CON-B04-GR-1020"
The Big -P.01-UP-20-April-26,E-APP-B04-GR-1030,Approval for Slabs Conc. Dim.  & RFT DWGs (B04) (GF),"E-SUB-B04-GR-1030, E-SUB-B04-GR-1030","E-SUB-B04-GR-1030: SS 12, E-SUB-B04-GR-1030: FF 10","CON-B04-GR-1040, CON-B04-GR-1060"
The Big -P.01-UP-20-April-26,E-APP-B04-GR-1020,Approval for Beams Conc. Dim.  & RFT DWGs (B04) (GF),"E-SUB-B04-GR-1020, E-SUB-B04-GR-1020","E-SUB-B04-GR-1020: SS 12, E-SUB-B04-GR-1020: FF 10","CON-B04-GR-1040, CON-B04-GR-1060"
The Big -P.01-UP-20-April-26,E-APP-B04-GR-1010,Approval for Stairs Conc. Dim.  & RFT DWGs (B04) (GF),"E-SUB-B04-GR-1010, E-SUB-B04-GR-1010","E-SUB-B04-GR-1010: SS 12, E-SUB-B04-GR-1010: FF 10","CON-B04-GR-1050, CON-B04-GR-1070"
The Big -P.01-UP-20-April-26,E-APP-B03-GR-1000,Approval for Col. & Walls Conc. Dim.  & RFT DWGs  (B03) (GF),"E-SUB-B03-GR-1000, E-SUB-B03-GR-1000","E-SUB-B03-GR-1000: SS 12, E-SUB-B03-GR-1000: FF 10","CON-B03-GR-1010, CON-B03-GR-1020"
The Big -P.01-UP-20-April-26,E-APP-B03-GR-1030,Approval for Slabs Conc. Dim.  & RFT DWGs  (B03) (GF),"E-SUB-B03-GR-1030, E-SUB-B03-GR-1030","E-SUB-B03-GR-1030: SS 12, E-SUB-B03-GR-1030: FF 10","CON-B03-GR-1040, CON-B03-GR-1060"
The Big -P.01-UP-20-April-26,E-APP-B03-GR-1020,Approval for Beams Conc. Dim.  & RFT DWGs  (B03) (GF),"E-SUB-B03-GR-1020, E-SUB-B03-GR-1020","E-SUB-B03-GR-1020: SS 12, E-SUB-B03-GR-1020: FF 10","CON-B03-GR-1040, CON-B03-GR-1060"
The Big -P.01-UP-20-April-26,E-APP-B03-GR-1010,Approval for Stairs Conc. Dim.  & RFT DWGs  (B03) (GF),"E-SUB-B03-GR-1010, E-SUB-B03-GR-1010","E-SUB-B03-GR-1010: SS 12, E-SUB-B03-GR-1010: FF 10","CON-B03-GR-1050, CON-B03-GR-1070"
The Big -P.01-UP-20-April-26,AB-SUB-B04-GR-1000,Submittal for Col. & Walls Conc. Dim.  & RFT DWGs As-Built Drawing (B04) (GF),CON-B04-GR-1030,CON-B04-GR-1030: FS,"AB-APP-B04-GR-1000, AB-APP-B04-GR-1000"
The Big -P.01-UP-20-April-26,AB-SUB-B04-GR-1010,Submittal for Slabs Conc. Dim.  & RFT DWGs As-Built Drawing (B04) (GF),CON-B04-GR-1080,CON-B04-GR-1080: FS,"AB-APP-B04-GR-1010, AB-APP-B04-GR-1010"
The Big -P.01-UP-20-April-26,AB-SUB-B04-GR-1020,Submittal for Beams Conc. Dim.  & RFT DWGs As-Built Drawing (B04) (GF),CON-B04-GR-1080,CON-B04-GR-1080: FS,"AB-APP-B04-GR-1020, AB-APP-B04-GR-1020"
The Big -P.01-UP-20-April-26,AB-SUB-B04-GR-1030,Submittal for Stairs Conc. Dim.  & RFT DWGs As-Built Drawing (B04) (GF),CON-B04-GR-1090,CON-B04-GR-1090: FS,"AB-APP-B04-GR-1030, AB-APP-B04-GR-1030"
The Big -P.01-UP-20-April-26,AB-SUB-B03-GR-1000,Submittal for Col. & Walls Conc. Dim.  & RFT DWGs As-Built Drawing (B03) (GF),CON-B03-GR-1030,CON-B03-GR-1030: FS,"AB-APP-B03-GR-1000, AB-APP-B03-GR-1000"
The Big -P.01-UP-20-April-26,AB-SUB-B03-GR-1010,Submittal for Slabs Conc. Dim.  & RFT DWGs As-Built Drawing (B03) (GF),CON-B03-GR-1080,CON-B03-GR-1080: FS,"AB-APP-B03-GR-1010, AB-APP-B03-GR-1010"
The Big -P.01-UP-20-April-26,AB-SUB-B03-GR-1020,Submittal for Beams Conc. Dim.  & RFT DWGs As-Built Drawing (B03) (GF),CON-B03-GR-1080,CON-B03-GR-1080: FS,"AB-APP-B03-GR-1020, AB-APP-B03-GR-1020"
The Big -P.01-UP-20-April-26,AB-SUB-B03-GR-1030,Submittal for Stairs Conc. Dim.  & RFT DWGs As-Built Drawing (B03) (GF),CON-B03-GR-1090,CON-B03-GR-1090: FS,"AB-APP-B03-GR-1030, AB-APP-B03-GR-1030"
The Big -P.01-UP-20-April-26,AB-SUB-B02-GR-1000,Submittal for Col. & Walls Conc. Dim.  & RFT DWGs As-Built Drawing (B02) (GF),CON-B02-GR-1030,CON-B02-GR-1030: FS,"AB-APP-B02-GR-1000, AB-APP-B02-GR-1000"
The Big -P.01-UP-20-April-26,AB-SUB-B02-GR-1020,Submittal for Slabs Conc. Dim.  & RFT DWGs As-Built Drawing (B02) (GF),CON-B02-GR-1100,CON-B02-GR-1100: FS,"AB-APP-B02-GR-1020, AB-APP-B02-GR-1020"
The Big -P.01-UP-20-April-26,AB-SUB-B02-GR-1030,Submittal for Beams Conc. Dim.  & RFT DWGs As-Built Drawing (B02) (GF),CON-B02-GR-1100,CON-B02-GR-1100: FS,"AB-APP-B02-GR-1030, AB-APP-B02-GR-1030"
The Big -P.01-UP-20-April-26,AB-SUB-B02-GR-1010,Submittal for Stairs Conc. Dim.  & RFT DWGs As-Built Drawing (B02) (GF),CON-B02-GR-1080,CON-B02-GR-1080: FS,"AB-APP-B02-GR-1010, AB-APP-B02-GR-1010"
The Big -P.01-UP-20-April-26,AB-SUB-B01-GR-1000,Submittal for Col. & Walls Conc. Dim.  & RFT DWGs As-Built Drawing (B01),CON-B01-GR-1030,CON-B01-GR-1030: FS,"AB-APP-B01-GR-1000, AB-APP-B01-GR-1000"
The Big -P.01-UP-20-April-26,AB-SUB-B01-GR-1020,Submittal for Slabs Conc. Dim.  & RFT DWGs As-Built Drawing (B01),CON-B01-GR-1090,CON-B01-GR-1090: FS,"AB-APP-B01-GR-1020, AB-APP-B01-GR-1020"
The Big -P.01-UP-20-April-26,AB-SUB-B01-GR-1030,Submittal for Beams Conc. Dim.  & RFT DWGs As-Built Drawing (B01),CON-B01-GR-1090,CON-B01-GR-1090: FS,"AB-APP-B01-GR-1030, AB-APP-B01-GR-1030"
The Big -P.01-UP-20-April-26,AB-SUB-B01-GR-1010,Submittal for Stairs Conc. Dim.  & RFT DWGs As-Built Drawing (B01),CON-B01-GR-1080,CON-B01-GR-1080: FS,"AB-APP-B01-GR-1010, AB-APP-B01-GR-1010"
The Big -P.01-UP-20-April-26,AB-APP-B02-GR-1000,Approval for Col. & Walls Conc. Dim.  & RFT DWGs As-Built Drawing (B02) (GF),"AB-SUB-B02-GR-1000, AB-SUB-B02-GR-1000","AB-SUB-B02-GR-1000: SS 12, AB-SUB-B02-GR-1000: FF 6",HO-1050
The Big -P.01-UP-20-April-26,AB-APP-B02-GR-1020,Approval for Slabs Conc. Dim.  & RFT DWGs As-Built Drawing (B02) (GF),"AB-SUB-B02-GR-1020, AB-SUB-B02-GR-1020","AB-SUB-B02-GR-1020: SS 12, AB-SUB-B02-GR-1020: FF 6",HO-1050
The Big -P.01-UP-20-April-26,AB-APP-B02-GR-1030,Approval for Beams Conc. Dim.  & RFT DWGs As-Built Drawing (B02) (GF),"AB-SUB-B02-GR-1030, AB-SUB-B02-GR-1030","AB-SUB-B02-GR-1030: SS 12, AB-SUB-B02-GR-1030: FF 6",HO-1050
The Big -P.01-UP-20-April-26,AB-APP-B02-GR-1010,Approval for Stairs Conc. Dim.  & RFT DWGs As-Built Drawing (B02) (GF),"AB-SUB-B02-GR-1010, AB-SUB-B02-GR-1010","AB-SUB-B02-GR-1010: SS 12, AB-SUB-B02-GR-1010: FF 6",HO-1050
The Big -P.01-UP-20-April-26,AB-APP-B01-GR-1000,Approval for Col. & Walls Conc. Dim.  & RFT DWGs As-Built Drawing (B01)  (GF),"AB-SUB-B01-GR-1000, AB-SUB-B01-GR-1000","AB-SUB-B01-GR-1000: SS 12, AB-SUB-B01-GR-1000: FF 6",HO-1050
The Big -P.01-UP-20-April-26,AB-APP-B01-GR-1020,Approval for Slabs Conc. Dim.  & RFT DWGs As-Built Drawing (B01)  (GF),"AB-SUB-B01-GR-1020, AB-SUB-B01-GR-1020","AB-SUB-B01-GR-1020: SS 12, AB-SUB-B01-GR-1020: FF 6",HO-1050
The Big -P.01-UP-20-April-26,AB-APP-B01-GR-1030,Approval for Beams Conc. Dim.  & RFT DWGs As-Built Drawing (B01)  (GF),"AB-SUB-B01-GR-1030, AB-SUB-B01-GR-1030","AB-SUB-B01-GR-1030: SS 12, AB-SUB-B01-GR-1030: FF 6",HO-1050
The Big -P.01-UP-20-April-26,AB-APP-B01-GR-1010,Approval for Stairs Conc. Dim.  & RFT DWGs As-Built Drawing (B01)  (GF),"AB-SUB-B01-GR-1010, AB-SUB-B01-GR-1010","AB-SUB-B01-GR-1010: SS 12, AB-SUB-B01-GR-1010: FF 6",HO-1050
The Big -P.01-UP-20-April-26,AB-APP-B04-GR-1000,Approval for Col. & Walls Conc. Dim.  & RFT DWGs As-Built Drawing (B04) (GF),"AB-SUB-B04-GR-1000, AB-SUB-B04-GR-1000","AB-SUB-B04-GR-1000: SS 12, AB-SUB-B04-GR-1000: FF 6",HO-1050
The Big -P.01-UP-20-April-26,AB-APP-B04-GR-1010,Approval for Slabs Conc. Dim.  & RFT DWGs As-Built Drawing (B04) (GF),"AB-SUB-B04-GR-1010, AB-SUB-B04-GR-1010","AB-SUB-B04-GR-1010: SS 12, AB-SUB-B04-GR-1010: FF 6",HO-1050
The Big -P.01-UP-20-April-26,AB-APP-B04-GR-1020,Approval for Beams Conc. Dim.  & RFT DWGs As-Built Drawing (B04) (GF),"AB-SUB-B04-GR-1020, AB-SUB-B04-GR-1020","AB-SUB-B04-GR-1020: SS 12, AB-SUB-B04-GR-1020: FF 6",HO-1050
The Big -P.01-UP-20-April-26,AB-APP-B04-GR-1030,Approval for Stairs Conc. Dim.  & RFT DWGs As-Built Drawing (B04) (GF),"AB-SUB-B04-GR-1030, AB-SUB-B04-GR-1030","AB-SUB-B04-GR-1030: SS 12, AB-SUB-B04-GR-1030: FF 6",HO-1050
The Big -P.01-UP-20-April-26,AB-APP-B03-GR-1000,Approval for Col. & Walls Conc. Dim.  & RFT DWGs As-Built Drawing  (B03) (GF),"AB-SUB-B03-GR-1000, AB-SUB-B03-GR-1000","AB-SUB-B03-GR-1000: SS 12, AB-SUB-B03-GR-1000: FF 6",HO-1050
The Big -P.01-UP-20-April-26,AB-APP-B03-GR-1010,Approval for Slabs Conc. Dim.  & RFT DWGs As-Built Drawing  (B03) (GF),"AB-SUB-B03-GR-1010, AB-SUB-B03-GR-1010","AB-SUB-B03-GR-1010: SS 12, AB-SUB-B03-GR-1010: FF 6",HO-1050
The Big -P.01-UP-20-April-26,AB-APP-B03-GR-1020,Approval for Beams Conc. Dim.  & RFT DWGs As-Built Drawing  (B03) (GF),"AB-SUB-B03-GR-1020, AB-SUB-B03-GR-1020","AB-SUB-B03-GR-1020: SS 12, AB-SUB-B03-GR-1020: FF 6",HO-1050
The Big -P.01-UP-20-April-26,AB-APP-B03-GR-1030,Approval for Stairs Conc. Dim.  & RFT DWGs As-Built Drawing  (B03) (GF),"AB-SUB-B03-GR-1030, AB-SUB-B03-GR-1030","AB-SUB-B03-GR-1030: SS 12, AB-SUB-B03-GR-1030: FF 6",HO-1050
The Big -P.01-UP-20-April-26,E-SUB-B01-BAS02-1000,Submittal for Col. & Walls Conc. Dim.  & RFT DWGs (B01) (Bas 02),E-DR-1000,E-DR-1000: FS,"E-APP-B01-BAS02-1000, E-APP-B01-BAS02-1000, E-SUB-B01-BAS02-1010"
The Big -P.01-UP-20-April-26,E-SUB-B01-BAS02-1040,Submittal for Slabs Conc. Dim.  & RFT DWGs (B01) (Bas 02),"E-DR-1000, E-SUB-B01-BAS02-1030","E-DR-1000: FS 14, E-SUB-B01-BAS02-1030: SS 3","E-APP-B01-BAS02-1040, E-APP-B01-BAS02-1040"
The Big -P.01-UP-20-April-26,E-SUB-B01-BAS02-1030,Submittal for Beams Conc. Dim.  & RFT DWGs (B01) (Bas 02),"E-DR-1000, E-SUB-B01-BAS02-1020","E-DR-1000: FS 10, E-SUB-B01-BAS02-1020: SS 3","E-APP-B01-BAS02-1030, E-APP-B01-BAS02-1030, E-SUB-B01-BAS02-1040"
The Big -P.01-UP-20-April-26,E-SUB-B01-BAS02-1010,Submittal for Stairs Conc. Dim.  & RFT DWGs (B01) (Bas 02),"E-DR-1000, E-SUB-B01-BAS02-1000","E-DR-1000: FS 3, E-SUB-B01-BAS02-1000: SS 3","E-APP-B01-BAS02-1010, E-APP-B01-BAS02-1010, E-SUB-B01-BAS02-1020"
The Big -P.01-UP-20-April-26,E-SUB-B01-BAS02-1020,Submittal for Ramps Conc. Dim.  & RFT DWGs (B01) (Bas 02),"E-DR-1000, E-SUB-B01-BAS02-1010","E-DR-1000: FS 7, E-SUB-B01-BAS02-1010: SS 3","E-APP-B01-BAS02-1020, E-APP-B01-BAS02-1020, E-SUB-B01-BAS02-1030"
The Big -P.01-UP-20-April-26,AB-SUB-B01-BAS2-1000,Submittal for Col. & Walls Conc. Dim.  & RFT DWGs As-Built Drawing (B01) (Bas 02),CON-B01-BAS02-1030,CON-B01-BAS02-1030: FS,"AB-APP-B01-BAS2-1000, AB-APP-B01-BAS2-1000"
The Big -P.01-UP-20-April-26,AB-SUB-B01-BAS2-1030,Submittal for Slabs Conc. Dim.  & RFT DWGs As-Built Drawing (B01) (Bas 02),CON-B01-BAS02-1130,CON-B01-BAS02-1130: FS,"AB-APP-B01-BAS2-1030, AB-APP-B01-BAS2-1030"
The Big -P.01-UP-20-April-26,AB-SUB-B01-BAS2-1040,Submittal for Beams Conc. Dim.  & RFT DWGs As-Built Drawing (B01) (Bas 02),CON-B01-BAS02-1130,CON-B01-BAS02-1130: FS,"AB-APP-B01-BAS2-1040, AB-APP-B01-BAS2-1040"
The Big -P.01-UP-20-April-26,AB-SUB-B01-BAS2-1010,Submittal for Stairs Conc. Dim.  & RFT DWGs As-Built Drawing (B01) (Bas 02),CON-B01-BAS02-1100,CON-B01-BAS02-1100: FS,"AB-APP-B01-BAS2-1010, AB-APP-B01-BAS2-1010"
The Big -P.01-UP-20-April-26,AB-SUB-B01-BAS2-1020,Submittal for Ramps Conc. Dim.  & RFT DWGs As-Built Drawing (B01) (Bas 02),CON-B01-BAS02-1110,CON-B01-BAS02-1110: FS,"AB-APP-B01-BAS2-1020, AB-APP-B01-BAS2-1020"
The Big -P.01-UP-20-April-26,CON-B01-1ST-1010,"RFT for Walls, Col. & Cores (B01) (1st)","CON-B01-1ST-1000, CON-B01-1ST-1000, E-APP-B01-1ST-1000, P-MDEL-1120","CON-B01-1ST-1000: SS 3, CON-B01-1ST-1000: FF, E-APP-B01-1ST-1000: FS, P-MDEL-1120: FS","CON-B01-1ST-1020, CON-B01-1ST-1020"
The Big -P.01-UP-20-April-26,CON-B01-1ST-1050,"RFT for Slabs, Beams & Stairs(B01) (1st)","CON-B01-1ST-1040, CON-B01-1ST-1040, E-APP-B01-1ST-1010, E-APP-B01-1ST-1020, E-APP-B01-1ST-1030, P-MDEL-1120","CON-B01-1ST-1040: SS 4, CON-B01-1ST-1040: FF, E-APP-B01-1ST-1010: FS, E-APP-B01-1ST-1020: FS, E-APP-B01-1ST-1030: FS, P-MDEL-1120: FS",CON-B01-1ST-1060
The Big -P.01-UP-20-April-26,CON-B02-1ST-1010,"RFT for Walls, Col. & Cores (B02) (1st)","CON-B02-1ST-1000, CON-B02-1ST-1000, E-APP-B02-1ST-1000, P-MDEL-1120","CON-B02-1ST-1000: SS 3, CON-B02-1ST-1000: FF, E-APP-B02-1ST-1000: FS, P-MDEL-1120: FS","CON-B02-1ST-1020, CON-B02-1ST-1020"
The Big -P.01-UP-20-April-26,CON-B02-1ST-1050,"RFT for Slabs, Beams & Stairs (B02) (1st)","CON-B02-1ST-1040, CON-B02-1ST-1040, E-APP-B02-1ST-1010, E-APP-B02-1ST-1020, E-APP-B02-1ST-1030, P-MDEL-1120","CON-B02-1ST-1040: SS 4, CON-B02-1ST-1040: FF, E-APP-B02-1ST-1010: FS, E-APP-B02-1ST-1020: FS, E-APP-B02-1ST-1030: FS, P-MDEL-1120: FS",CON-B02-1ST-1060
The Big -P.01-UP-20-April-26,CON-B03-1ST-1010,"RFT for Walls, Col. & Cores (B03) (1st)","CON-B03-1ST-1000, CON-B03-1ST-1000, E-APP-B03-1ST-1000, P-MDEL-1120","CON-B03-1ST-1000: SS 3, CON-B03-1ST-1000: FF, E-APP-B03-1ST-1000: FS, P-MDEL-1120: FS","CON-B03-1ST-1020, CON-B03-1ST-1020"
The Big -P.01-UP-20-April-26,CON-B03-1ST-1050,"RFT for Slabs, Beams & Stairs (B03) (1st)","CON-B03-1ST-1040, CON-B03-1ST-1040, E-APP-B03-1ST-1010, E-APP-B03-1ST-1020, E-APP-B03-1ST-1030, P-MDEL-1120","CON-B03-1ST-1040: SS 4, CON-B03-1ST-1040: FF, E-APP-B03-1ST-1010: FS, E-APP-B03-1ST-1020: FS, E-APP-B03-1ST-1030: FS, P-MDEL-1120: FS",CON-B03-1ST-1060
The Big -P.01-UP-20-April-26,CON-B04-1ST-1010,"RFT for Walls, Col. & Cores (B04) (1st)","CON-B04-1ST-1000, CON-B04-1ST-1000, E-APP-B04-1ST-1000, P-MDEL-1120","CON-B04-1ST-1000: SS 3, CON-B04-1ST-1000: FF, E-APP-B04-1ST-1000: FS, P-MDEL-1120: FS","CON-B04-1ST-1020, CON-B04-1ST-1020"
The Big -P.01-UP-20-April-26,CON-B04-1ST-1050,"RFT for Slabs, Beams & Stairs (B04) (1st)","CON-B04-1ST-1040, CON-B04-1ST-1040, E-APP-B04-1ST-1010, E-APP-B04-1ST-1020, E-APP-B04-1ST-1030, P-MDEL-1120","CON-B04-1ST-1040: SS 4, CON-B04-1ST-1040: FF, E-APP-B04-1ST-1010: FS, E-APP-B04-1ST-1020: FS, E-APP-B04-1ST-1030: FS, P-MDEL-1120: FS",CON-B04-1ST-1060
The Big -P.01-UP-20-April-26,CON-B01-2ND-1010,"RFT for Walls, Col. & Cores (B01) (2nd)","CON-B01-2ND-1000, CON-B01-2ND-1000, E-APP-B01-2ND-1000, P-MDEL-1110","CON-B01-2ND-1000: SS 2, CON-B01-2ND-1000: FF, E-APP-B01-2ND-1000: FS, P-MDEL-1110: FS","CON-B01-2ND-1020, CON-B01-2ND-1020"
The Big -P.01-UP-20-April-26,CON-B01-2ND-1050,"RFT for Slabs, Beams & Stairs (B01) (2nd)","CON-B01-2ND-1040, CON-B01-2ND-1040, E-APP-B01-2ND-1010, E-APP-B01-2ND-1020, E-APP-B01-2ND-1030, P-MDEL-1110","CON-B01-2ND-1040: SS 4, CON-B01-2ND-1040: FF, E-APP-B01-2ND-1010: FS, E-APP-B01-2ND-1020: FS, E-APP-B01-2ND-1030: FS, P-MDEL-1110: FS",CON-B01-2ND-1060
The Big -P.01-UP-20-April-26,CON-B02-2ND-1010,"RFT for Walls, Col. & Cores (B02) (2nd)","CON-B02-2ND-1000, CON-B02-2ND-1000, E-APP-B02-2ND-1000, P-MDEL-1110","CON-B02-2ND-1000: SS 2, CON-B02-2ND-1000: FF, E-APP-B02-2ND-1000: FS, P-MDEL-1110: FS","CON-B02-2ND-1020, CON-B02-2ND-1020"
The Big -P.01-UP-20-April-26,CON-B02-2ND-1050,"RFT for Slabs, Beams & Stairs (B02) (2nd)","CON-B02-2ND-1040, CON-B02-2ND-1040, E-APP-B02-2ND-1010, E-APP-B02-2ND-1020, E-APP-B02-2ND-1030, P-MDEL-1110","CON-B02-2ND-1040: SS 4, CON-B02-2ND-1040: FF, E-APP-B02-2ND-1010: FS, E-APP-B02-2ND-1020: FS, E-APP-B02-2ND-1030: FS, P-MDEL-1110: FS",CON-B02-2ND-1060
The Big -P.01-UP-20-April-26,CON-B03-2ND-1010,"RFT for Walls, Col. & Cores (B03) (2nd)","CON-B03-2ND-1000, CON-B03-2ND-1000, E-APP-B03-2ND-1000, P-MDEL-1110","CON-B03-2ND-1000: SS 3, CON-B03-2ND-1000: FF, E-APP-B03-2ND-1000: FS, P-MDEL-1110: FS","CON-B03-2ND-1020, CON-B03-2ND-1020"
The Big -P.01-UP-20-April-26,CON-B03-2ND-1050,"RFT for Slabs, Beams & Stairs(B03) (2nd)","CON-B03-2ND-1040, CON-B03-2ND-1040, E-APP-B03-2ND-1010, E-APP-B03-2ND-1020, E-APP-B03-2ND-1030, P-MDEL-1110","CON-B03-2ND-1040: SS 4, CON-B03-2ND-1040: FF, E-APP-B03-2ND-1010: FS, E-APP-B03-2ND-1020: FS, E-APP-B03-2ND-1030: FS, P-MDEL-1110: FS",CON-B03-2ND-1060
The Big -P.01-UP-20-April-26,CON-B04-2ND-1010,"RFT for Walls, Col. & Cores (B04) (2nd)","CON-B04-2ND-1000, CON-B04-2ND-1000, E-APP-B04-2ND-1000, P-MDEL-1110","CON-B04-2ND-1000: SS 3, CON-B04-2ND-1000: FF, E-APP-B04-2ND-1000: FS, P-MDEL-1110: FS","CON-B04-2ND-1020, CON-B04-2ND-1020"
The Big -P.01-UP-20-April-26,CON-B04-2ND-1050,"RFT for Slabs, Beams & Stairs (B04) (2nd)","CON-B04-2ND-1040, CON-B04-2ND-1040, E-APP-B04-2ND-1010, E-APP-B04-2ND-1020, E-APP-B04-2ND-1030, P-MDEL-1110","CON-B04-2ND-1040: SS 4, CON-B04-2ND-1040: FF, E-APP-B04-2ND-1010: FS, E-APP-B04-2ND-1020: FS, E-APP-B04-2ND-1030: FS, P-MDEL-1110: FS",CON-B04-2ND-1060
The Big -P.01-UP-20-April-26,CON-B01-3RD-1010,"RFT for Walls, Col. & Cores (B01) (3rd)","CON-B01-3RD-1000, CON-B01-3RD-1000, E-APP-B01-3ED-1000, E-APP-B01-3ED-1010, E-APP-B01-3ED-1020, E-APP-B01-3ED-1030, P-MDEL-1100","CON-B01-3RD-1000: SS 3, CON-B01-3RD-1000: FF, E-APP-B01-3ED-1000: FS, E-APP-B01-3ED-1010: FS, E-APP-B01-3ED-1020: FS, E-APP-B01-3ED-1030: FS, P-MDEL-1100: FS","CON-B01-3RD-1020, CON-B01-3RD-1020"
The Big -P.01-UP-20-April-26,CON-B01-3RD-1050,"RFT for Slabs, Beams & Stairs (B01) (3rd)","CON-B01-3RD-1040, CON-B01-3RD-1040, P-MDEL-1100","CON-B01-3RD-1040: SS 4, CON-B01-3RD-1040: FF, P-MDEL-1100: FS",CON-B01-3RD-1060
The Big -P.01-UP-20-April-26,CON-B02-3RD-1010,"RFT for Walls, Col. & Cores (B02) (3rd)","CON-B02-3RD-1000, CON-B02-3RD-1000, E-APP-B02-3RD-1000, P-MDEL-1100","CON-B02-3RD-1000: SS 2, CON-B02-3RD-1000: FF, E-APP-B02-3RD-1000: FS, P-MDEL-1100: FS","CON-B02-3RD-1020, CON-B02-3RD-1020"
The Big -P.01-UP-20-April-26,CON-B02-3RD-1050,"RFT for Slabs, Beams & Stairs (B02) (3rd)","CON-B02-3RD-1040, CON-B02-3RD-1040, E-APP-B02-3RD-1010, E-APP-B02-3RD-1020, E-APP-B02-3RD-1030, P-MDEL-1100","CON-B02-3RD-1040: SS 4, CON-B02-3RD-1040: FF, E-APP-B02-3RD-1010: FS, E-APP-B02-3RD-1020: FS, E-APP-B02-3RD-1030: FS, P-MDEL-1100: FS",CON-B02-3RD-1060
The Big -P.01-UP-20-April-26,CON-B03-3RD-1010,"RFT for Walls, Col. & Cores (B03) (3rd)","CON-B03-3RD-1000, CON-B03-3RD-1000, E-APP-B03-3RD-1000, P-MDEL-1100","CON-B03-3RD-1000: SS 3, CON-B03-3RD-1000: FF, E-APP-B03-3RD-1000: FS, P-MDEL-1100: FS","CON-B03-3RD-1020, CON-B03-3RD-1020"
The Big -P.01-UP-20-April-26,CON-B03-3RD-1050,"RFT for Slabs, Beams & Stairs (B03) (3rd)","CON-B03-3RD-1040, CON-B03-3RD-1040, E-APP-B03-3RD-1010, E-APP-B03-3RD-1020, E-APP-B03-3RD-1030, P-MDEL-1100","CON-B03-3RD-1040: SS 4, CON-B03-3RD-1040: FF, E-APP-B03-3RD-1010: FS, E-APP-B03-3RD-1020: FS, E-APP-B03-3RD-1030: FS, P-MDEL-1100: FS",CON-B03-3RD-1060
The Big -P.01-UP-20-April-26,CON-B04-3RD-1010,"RFT for Walls, Col. & Cores (B04) (3rd)","CON-B04-3RD-1000, CON-B04-3RD-1000, E-APP-B04-2RD-1000, P-MDEL-1100","CON-B04-3RD-1000: SS 3, CON-B04-3RD-1000: FF, E-APP-B04-2RD-1000: FS, P-MDEL-1100: FS","CON-B04-3RD-1020, CON-B04-3RD-1020"
The Big -P.01-UP-20-April-26,CON-B04-3RD-1050,"RFT for Slabs, Beams & Stairs (B04) (3rd)","CON-B04-3RD-1040, CON-B04-3RD-1040, E-APP-B04-2RD-1010, E-APP-B04-2RD-1020, E-APP-B04-2RD-1030, P-MDEL-1100","CON-B04-3RD-1040: SS 4, CON-B04-3RD-1040: FF, E-APP-B04-2RD-1010: FS, E-APP-B04-2RD-1020: FS, E-APP-B04-2RD-1030: FS, P-MDEL-1100: FS",CON-B04-3RD-1060
The Big -P.01-UP-20-April-26,CON-B01-4TH-1010,"RFT for Walls, Col. & Cores (B01) (4th)","CON-B01-4TH-1000, CON-B01-4TH-1000, E-APP-B01-4TH-1000, E-APP-B01-4TH-1010, E-APP-B01-4TH-1020, E-APP-B01-4TH-1030, P-MDEL-1090","CON-B01-4TH-1000: SS 3, CON-B01-4TH-1000: FF, E-APP-B01-4TH-1000: FS, E-APP-B01-4TH-1010: FS, E-APP-B01-4TH-1020: FS, E-APP-B01-4TH-1030: FS, P-MDEL-1090: FS","CON-B01-4TH-1020, CON-B01-4TH-1020"
The Big -P.01-UP-20-April-26,CON-B01-4TH-1050,"RFT for Slabs, Beams & Stairs (B01) (4th)","CON-B01-4TH-1040, CON-B01-4TH-1040, P-MDEL-1090","CON-B01-4TH-1040: SS 4, CON-B01-4TH-1040: FF, P-MDEL-1090: FS",CON-B01-4TH-1060
The Big -P.01-UP-20-April-26,CON-B02-4TH-1010,"RFT for Walls, Col. & Cores (B02) (4th)","CON-B02-4TH-1000, CON-B02-4TH-1000, E-APP-B02-4TH-1000, P-MDEL-1090","CON-B02-4TH-1000: SS 2, CON-B02-4TH-1000: FF, E-APP-B02-4TH-1000: FS, P-MDEL-1090: FS","CON-B02-4TH-1020, CON-B02-4TH-1020"
The Big -P.01-UP-20-April-26,CON-B02-4TH-1050,"RFT for Slabs, Beams & Stairs (B02) (4th)","CON-B02-4TH-1040, CON-B02-4TH-1040, E-APP-B02-4TH-1010, E-APP-B02-4TH-1020, E-APP-B02-4TH-1030, P-MDEL-1090","CON-B02-4TH-1040: SS 3, CON-B02-4TH-1040: FF, E-APP-B02-4TH-1010: FS, E-APP-B02-4TH-1020: FS, E-APP-B02-4TH-1030: FS, P-MDEL-1090: FS",CON-B02-4TH-1060
The Big -P.01-UP-20-April-26,CON-B03-4TH-1010,"RFT for Walls, Col. & Cores (B03) (4th)","CON-B03-4TH-1000, CON-B03-4TH-1000, E-APP-B03-4TH-1000, P-MDEL-1090","CON-B03-4TH-1000: SS 3, CON-B03-4TH-1000: FF, E-APP-B03-4TH-1000: FS, P-MDEL-1090: FS","CON-B03-4TH-1020, CON-B03-4TH-1020"
The Big -P.01-UP-20-April-26,CON-B03-4TH-1050,"RFT for Slabs, Beams & Stairs (B03) (4th)","CON-B03-4TH-1040, CON-B03-4TH-1040, E-APP-B03-4TH-1010, E-APP-B03-4TH-1020, E-APP-B03-4TH-1030, P-MDEL-1090","CON-B03-4TH-1040: SS 4, CON-B03-4TH-1040: FF, E-APP-B03-4TH-1010: FS, E-APP-B03-4TH-1020: FS, E-APP-B03-4TH-1030: FS, P-MDEL-1090: FS",CON-B03-4TH-1060
The Big -P.01-UP-20-April-26,CON-B04-4TH-1010,"RFT for Walls, Col. & Cores (B04) (4th)","CON-B04-4TH-1000, CON-B04-4TH-1000, E-APP-B04-4TH-1000, P-MDEL-1090","CON-B04-4TH-1000: SS 3, CON-B04-4TH-1000: FF, E-APP-B04-4TH-1000: FS, P-MDEL-1090: FS","CON-B04-4TH-1020, CON-B04-4TH-1020"
The Big -P.01-UP-20-April-26,CON-B04-4TH-1050,"RFT for Slabs, Beams & Stairs (B04) (4th)","CON-B04-4TH-1040, CON-B04-4TH-1040, E-APP-B04-4TH-1010, E-APP-B04-4TH-1020, E-APP-B04-4TH-1030, P-MDEL-1090","CON-B04-4TH-1040: SS 4, CON-B04-4TH-1040: FF, E-APP-B04-4TH-1010: FS, E-APP-B04-4TH-1020: FS, E-APP-B04-4TH-1030: FS, P-MDEL-1090: FS",CON-B04-4TH-1060
The Big -P.01-UP-20-April-26,CON-B01-5TH-1010,"RFT for Walls, Col. & Cores (B01) (5th)","CON-B01-5TH-1000, CON-B01-5TH-1000, E-APP-B01-5TH-1000, P-MDEL-1080","CON-B01-5TH-1000: SS 3, CON-B01-5TH-1000: FF, E-APP-B01-5TH-1000: FS, P-MDEL-1080: FS","CON-B01-5TH-1020, CON-B01-5TH-1020"
The Big -P.01-UP-20-April-26,CON-B01-5TH-1050,"RFT for Slabs, Beams & Stairs (B01) (5th)","CON-B01-5TH-1040, CON-B01-5TH-1040, E-APP-B01-5TH-1010, E-APP-B01-5TH-1020, E-APP-B01-5TH-1030, P-MDEL-1080","CON-B01-5TH-1040: SS 4, CON-B01-5TH-1040: FF, E-APP-B01-5TH-1010: FS, E-APP-B01-5TH-1020: FS, E-APP-B01-5TH-1030: FS, P-MDEL-1080: FS",CON-B01-5TH-1060
The Big -P.01-UP-20-April-26,CON-B04-5TH-1010,"RFT for Walls, Col. & Cores (B04) (5th)","CON-B04-5TH-1000, CON-B04-5TH-1000, E-APP-B04-5TH-1000, P-MDEL-1080","CON-B04-5TH-1000: SS 3, CON-B04-5TH-1000: FF, E-APP-B04-5TH-1000: FS, P-MDEL-1080: FS","CON-B04-5TH-1020, CON-B04-5TH-1020"
The Big -P.01-UP-20-April-26,CON-B04-5TH-1050,"RFT for Slabs, Beams & Stairs (B04) (5th)","CON-B04-5TH-1040, CON-B04-5TH-1040, E-APP-B04-5TH-1010, E-APP-B04-5TH-1020, E-APP-B04-5TH-1030, P-MDEL-1080","CON-B04-5TH-1040: SS 3, CON-B04-5TH-1040: FF, E-APP-B04-5TH-1010: FS, E-APP-B04-5TH-1020: FS, E-APP-B04-5TH-1030: FS, P-MDEL-1080: FS",CON-B04-5TH-1060
The Big -P.01-UP-20-April-26,CON-B01-6TH-1010,"RFT for Walls, Col. & Cores (B01) (6th)","CON-B01-6TH-1000, CON-B01-6TH-1000, E-APP-B01-6TH-1000, P-MDEL-1070","CON-B01-6TH-1000: SS 3, CON-B01-6TH-1000: FF, E-APP-B01-6TH-1000: FS, P-MDEL-1070: FS","CON-B01-6TH-1020, CON-B01-6TH-1020"
The Big -P.01-UP-20-April-26,CON-B01-6TH-1050,"RFT for Slabs, Beams & Stairs (B01) (6th)","CON-B01-6TH-1040, CON-B01-6TH-1040, E-APP-B01-6TH-1010, E-APP-B01-6TH-1020, E-APP-B01-6TH-1030, P-MDEL-1070","CON-B01-6TH-1040: SS 4, CON-B01-6TH-1040: FF, E-APP-B01-6TH-1010: FS, E-APP-B01-6TH-1020: FS, E-APP-B01-6TH-1030: FS, P-MDEL-1070: FS",CON-B01-6TH-1060
The Big -P.01-UP-20-April-26,CON-B04-6TH-1010,"RFT for Walls, Col. & Cores (B04) (6th)","CON-B04-6TH-1000, CON-B04-6TH-1000, E-APP-B04-6TH-1000, P-MDEL-1070","CON-B04-6TH-1000: SS 3, CON-B04-6TH-1000: FF, E-APP-B04-6TH-1000: FS, P-MDEL-1070: FS","CON-B04-6TH-1020, CON-B04-6TH-1020"
The Big -P.01-UP-20-April-26,CON-B04-6TH-1050,"RFT for Slabs, Beams & Stairs (B04) (6th)","CON-B04-6TH-1040, CON-B04-6TH-1040, E-APP-B04-6TH-1010, E-APP-B04-6TH-1020, E-APP-B04-6TH-1030, P-MDEL-1070","CON-B04-6TH-1040: SS 3, CON-B04-6TH-1040: FF, E-APP-B04-6TH-1010: FS, E-APP-B04-6TH-1020: FS, E-APP-B04-6TH-1030: FS, P-MDEL-1070: FS",CON-B04-6TH-1060
The Big -P.01-UP-20-April-26,E-SUB-B04-1ST-1000,Submittal for Col. & Walls Conc. Dim.  & RFT DWGs (B04) (1st),E-DR-1000,E-DR-1000: FS 45,"E-APP-B04-1ST-1000, E-APP-B04-1ST-1000, E-SUB-B04-1ST-1010"
The Big -P.01-UP-20-April-26,E-SUB-B04-1ST-1030,Submittal for Slabs Conc. Dim.  & RFT DWGs (B04) (1st),"E-DR-1000, E-SUB-B04-1ST-1020","E-DR-1000: FS 56, E-SUB-B04-1ST-1020: SS 3","E-APP-B04-1ST-1030, E-APP-B04-1ST-1030"
The Big -P.01-UP-20-April-26,E-SUB-B04-1ST-1020,Submittal for Beams Conc. Dim.  & RFT DWGs (B04) (1st),"E-DR-1000, E-SUB-B04-1ST-1010","E-DR-1000: FS 52, E-SUB-B04-1ST-1010: SS 3","E-APP-B04-1ST-1020, E-APP-B04-1ST-1020, E-SUB-B04-1ST-1030"
The Big -P.01-UP-20-April-26,E-SUB-B04-1ST-1010,Submittal for Stairs Conc. Dim.  & RFT DWGs (B04) (1st),"E-DR-1000, E-SUB-B04-1ST-1000","E-DR-1000: FS 49, E-SUB-B04-1ST-1000: SS 3","E-APP-B04-1ST-1010, E-APP-B04-1ST-1010, E-SUB-B04-1ST-1020"
The Big -P.01-UP-20-April-26,E-SUB-B03-1ST-1000,Submittal for Col. & Walls Conc. Dim.  & RFT DWGs (B03) (1st),E-DR-1000,E-DR-1000: FS 30,"E-APP-B03-1ST-1000, E-APP-B03-1ST-1000, E-SUB-B03-1ST-1010"
The Big -P.01-UP-20-April-26,E-SUB-B03-1ST-1030,Submittal for Slabs Conc. Dim.  & RFT DWGs (B03) (1st),"E-DR-1000, E-SUB-B03-1ST-1020","E-DR-1000: FS 40, E-SUB-B03-1ST-1020: SS 3","E-APP-B03-1ST-1030, E-APP-B03-1ST-1030"
The Big -P.01-UP-20-April-26,E-SUB-B03-1ST-1020,Submittal for Beams Conc. Dim.  & RFT DWGs (B03) (1st),"E-DR-1000, E-SUB-B03-1ST-1010","E-DR-1000: FS 37, E-SUB-B03-1ST-1010: SS 3","E-APP-B03-1ST-1020, E-APP-B03-1ST-1020, E-SUB-B03-1ST-1030"
The Big -P.01-UP-20-April-26,E-SUB-B03-1ST-1010,Submittal for Stairs Conc. Dim.  & RFT DWGs (B03) (1st),"E-DR-1000, E-SUB-B03-1ST-1000","E-DR-1000: FS 34, E-SUB-B03-1ST-1000: SS 3","E-APP-B03-1ST-1010, E-APP-B03-1ST-1010, E-SUB-B03-1ST-1020"
The Big -P.01-UP-20-April-26,E-SUB-B02-1ST-1000,Submittal for Col. & Walls Conc. Dim.  & RFT DWGs (B02) (1st),E-DR-1000,E-DR-1000: FS 35,"E-APP-B02-1ST-1000, E-APP-B02-1ST-1000, E-SUB-B02-1ST-1010"
The Big -P.01-UP-20-April-26,E-SUB-B02-1ST-1030,Submittal for Slabs Conc. Dim.  & RFT DWGs (B02) (1st),"E-DR-1000, E-SUB-B02-1ST-1020","E-DR-1000: FS 45, E-SUB-B02-1ST-1020: SS 3","E-APP-B02-1ST-1030, E-APP-B02-1ST-1030"
The Big -P.01-UP-20-April-26,E-SUB-B02-1ST-1020,Submittal for Beams Conc. Dim.  & RFT DWGs (B02) (1st),"E-DR-1000, E-SUB-B02-1ST-1010","E-DR-1000: FS 42, E-SUB-B02-1ST-1010: SS 3","E-APP-B02-1ST-1020, E-APP-B02-1ST-1020, E-SUB-B02-1ST-1030"
The Big -P.01-UP-20-April-26,E-SUB-B02-1ST-1010,Submittal for Stairs Conc. Dim.  & RFT DWGs (B02) (1st),"E-DR-1000, E-SUB-B02-1ST-1000","E-DR-1000: FS 38, E-SUB-B02-1ST-1000: SS 3","E-APP-B02-1ST-1010, E-APP-B02-1ST-1010, E-SUB-B02-1ST-1020"
The Big -P.01-UP-20-April-26,E-SUB-B01-1ST-1000,Submittal for Col. & Walls Conc. Dim.  & RFT DWGs (B01) (1st),E-DR-1000,E-DR-1000: FS 30,"E-APP-B01-1ST-1000, E-APP-B01-1ST-1000, E-SUB-B01-1ST-1010"
The Big -P.01-UP-20-April-26,E-SUB-B01-1ST-1030,Submittal for Slabs Conc. Dim.  & RFT DWGs (B01) (1st),"E-DR-1000, E-SUB-B01-1ST-1020","E-DR-1000: FS 40, E-SUB-B01-1ST-1020: SS 2","E-APP-B01-1ST-1030, E-APP-B01-1ST-1030"
The Big -P.01-UP-20-April-26,E-SUB-B01-1ST-1020,Submittal for Beams Conc. Dim.  & RFT DWGs (B01) (1st),"E-DR-1000, E-SUB-B01-1ST-1010","E-DR-1000: FS 37, E-SUB-B01-1ST-1010: SS 3","E-APP-B01-1ST-1020, E-APP-B01-1ST-1020, E-SUB-B01-1ST-1030"
The Big -P.01-UP-20-April-26,E-SUB-B01-1ST-1010,Submittal for Stairs Conc. Dim.  & RFT DWGs (B01) (1st),"E-DR-1000, E-SUB-B01-1ST-1000","E-DR-1000: FS 34, E-SUB-B01-1ST-1000: SS 3","E-APP-B01-1ST-1010, E-APP-B01-1ST-1010, E-SUB-B01-1ST-1020"
The Big -P.01-UP-20-April-26,E-APP-B02-1ST-1000,Approval for Col. & Walls Conc. Dim.  & RFT DWGs (B02) (1st),"E-SUB-B02-1ST-1000, E-SUB-B02-1ST-1000","E-SUB-B02-1ST-1000: SS 12, E-SUB-B02-1ST-1000: FF 10","CON-B02-1ST-1010, CON-B02-1ST-1020"
The Big -P.01-UP-20-April-26,E-APP-B02-1ST-1030,Approval for Slabs Conc. Dim.  & RFT DWGs (B02) (1st),"E-SUB-B02-1ST-1030, E-SUB-B02-1ST-1030","E-SUB-B02-1ST-1030: SS 12, E-SUB-B02-1ST-1030: FF 10","CON-B02-1ST-1040, CON-B02-1ST-1050"
The Big -P.01-UP-20-April-26,E-APP-B02-1ST-1020,Approval for Beams Conc. Dim.  & RFT DWGs (B02) (1st),"E-SUB-B02-1ST-1020, E-SUB-B02-1ST-1020","E-SUB-B02-1ST-1020: SS 12, E-SUB-B02-1ST-1020: FF 10","CON-B02-1ST-1040, CON-B02-1ST-1050"
The Big -P.01-UP-20-April-26,E-APP-B02-1ST-1010,Approval for Stairs Conc. Dim.  & RFT DWGs (B02) (1st),"E-SUB-B02-1ST-1010, E-SUB-B02-1ST-1010","E-SUB-B02-1ST-1010: SS 12, E-SUB-B02-1ST-1010: FF 10","CON-B02-1ST-1040, CON-B02-1ST-1050"
The Big -P.01-UP-20-April-26,E-APP-B01-1ST-1000,Approval for Col. & Walls Conc. Dim.  & RFT DWGs (B01) (1st),"E-SUB-B01-1ST-1000, E-SUB-B01-1ST-1000","E-SUB-B01-1ST-1000: SS 12, E-SUB-B01-1ST-1000: FF 10","CON-B01-1ST-1010, CON-B01-1ST-1020"
The Big -P.01-UP-20-April-26,E-APP-B01-1ST-1030,Approval for Slabs Conc. Dim.  & RFT DWGs (B01) (1st),"E-SUB-B01-1ST-1030, E-SUB-B01-1ST-1030","E-SUB-B01-1ST-1030: SS 12, E-SUB-B01-1ST-1030: FF 10","CON-B01-1ST-1040, CON-B01-1ST-1050"
The Big -P.01-UP-20-April-26,E-APP-B01-1ST-1020,Approval for Beams Conc. Dim.  & RFT DWGs (B01) (1st),"E-SUB-B01-1ST-1020, E-SUB-B01-1ST-1020","E-SUB-B01-1ST-1020: SS 12, E-SUB-B01-1ST-1020: FF 10","CON-B01-1ST-1040, CON-B01-1ST-1050"
The Big -P.01-UP-20-April-26,E-APP-B01-1ST-1010,Approval for Stairs Conc. Dim.  & RFT DWGs (B01) (1st),"E-SUB-B01-1ST-1010, E-SUB-B01-1ST-1010","E-SUB-B01-1ST-1010: SS 12, E-SUB-B01-1ST-1010: FF 10","CON-B01-1ST-1040, CON-B01-1ST-1050, CON-B01-1ST-1040"
The Big -P.01-UP-20-April-26,E-APP-B04-1ST-1000,Approval for Col. & Walls Conc. Dim.  & RFT DWGs (B04) (1st),"E-SUB-B04-1ST-1000, E-SUB-B04-1ST-1000","E-SUB-B04-1ST-1000: SS 12, E-SUB-B04-1ST-1000: FF 10","CON-B04-1ST-1010, CON-B04-1ST-1020"
The Big -P.01-UP-20-April-26,E-APP-B04-1ST-1030,Approval for Slabs Conc. Dim.  & RFT DWGs (B04) (1st),"E-SUB-B04-1ST-1030, E-SUB-B04-1ST-1030","E-SUB-B04-1ST-1030: SS 12, E-SUB-B04-1ST-1030: FF 10","CON-B04-1ST-1040, CON-B04-1ST-1050"
The Big -P.01-UP-20-April-26,E-APP-B04-1ST-1020,Approval for Beams Conc. Dim.  & RFT DWGs (B04) (1st),"E-SUB-B04-1ST-1020, E-SUB-B04-1ST-1020","E-SUB-B04-1ST-1020: SS 12, E-SUB-B04-1ST-1020: FF 10","CON-B04-1ST-1040, CON-B04-1ST-1050"
The Big -P.01-UP-20-April-26,E-APP-B04-1ST-1010,Approval for Stairs Conc. Dim.  & RFT DWGs (B04) (1st),"E-SUB-B04-1ST-1010, E-SUB-B04-1ST-1010","E-SUB-B04-1ST-1010: SS 12, E-SUB-B04-1ST-1010: FF 10","CON-B04-1ST-1040, CON-B04-1ST-1050"
The Big -P.01-UP-20-April-26,E-APP-B03-1ST-1000,Approval for Col. & Walls Conc. Dim.  & RFT DWGs  (B03) (1st),"E-SUB-B03-1ST-1000, E-SUB-B03-1ST-1000","E-SUB-B03-1ST-1000: SS 12, E-SUB-B03-1ST-1000: FF 10","CON-B03-1ST-1010, CON-B03-1ST-1020"
The Big -P.01-UP-20-April-26,E-APP-B03-1ST-1030,Approval for Slabs Conc. Dim.  & RFT DWGs  (B03) (1st),"E-SUB-B03-1ST-1030, E-SUB-B03-1ST-1030","E-SUB-B03-1ST-1030: SS 12, E-SUB-B03-1ST-1030: FF 10","CON-B03-1ST-1040, CON-B03-1ST-1050"
The Big -P.01-UP-20-April-26,E-APP-B03-1ST-1020,Approval for Beams Conc. Dim.  & RFT DWGs  (B03) (1st),"E-SUB-B03-1ST-1020, E-SUB-B03-1ST-1020","E-SUB-B03-1ST-1020: SS 12, E-SUB-B03-1ST-1020: FF 10","CON-B03-1ST-1040, CON-B03-1ST-1050"
The Big -P.01-UP-20-April-26,E-APP-B03-1ST-1010,Approval for Stairs Conc. Dim.  & RFT DWGs  (B03) (1st),"E-SUB-B03-1ST-1010, E-SUB-B03-1ST-1010","E-SUB-B03-1ST-1010: SS 12, E-SUB-B03-1ST-1010: FF 10","CON-B03-1ST-1040, CON-B03-1ST-1050"
The Big -P.01-UP-20-April-26,AB-SUB-B04-1ST-1000,Submittal for Col. & Walls Conc. Dim.  & RFT DWGs As-Built Drawing (B04) (1st),CON-B04-1ST-1030,CON-B04-1ST-1030: FS,"AB-APP-B04-1ST-1000, AB-APP-B04-1ST-1000"
The Big -P.01-UP-20-April-26,AB-SUB-B04-1ST-1010,Submittal for Slabs Conc. Dim.  & RFT DWGs As-Built Drawing (B04) (1st),CON-B04-1ST-1060,CON-B04-1ST-1060: FS,"AB-APP-B04-1ST-1010, AB-APP-B04-1ST-1010"
The Big -P.01-UP-20-April-26,AB-SUB-B04-1ST-1020,Submittal for Beams Conc. Dim.  & RFT DWGs As-Built Drawing (B04) (1st),CON-B04-1ST-1060,CON-B04-1ST-1060: FS,"AB-APP-B04-1ST-1020, AB-APP-B04-1ST-1020"
The Big -P.01-UP-20-April-26,AB-SUB-B04-1ST-1030,Submittal for Stairs Conc. Dim.  & RFT DWGs As-Built Drawing (B04) (1st),CON-B04-1ST-1060,CON-B04-1ST-1060: FS,"AB-APP-B04-1ST-1030, AB-APP-B04-1ST-1030"
The Big -P.01-UP-20-April-26,AB-SUB-B03-1ST-1000,Submittal for Col. & Walls Conc. Dim.  & RFT DWGs As-Built Drawing (B03) (1st),CON-B03-1ST-1030,CON-B03-1ST-1030: FS,"AB-APP-B03-1ST-1000, AB-APP-B03-1ST-1000"
The Big -P.01-UP-20-April-26,AB-SUB-B03-1ST-1010,Submittal for Slabs Conc. Dim.  & RFT DWGs As-Built Drawing (B03) (1st),CON-B03-1ST-1060,CON-B03-1ST-1060: FS,"AB-APP-B03-1ST-1010, AB-APP-B03-1ST-1010"
The Big -P.01-UP-20-April-26,AB-SUB-B03-1ST-1020,Submittal for Beams Conc. Dim.  & RFT DWGs As-Built Drawing (B03) (1st),CON-B03-1ST-1060,CON-B03-1ST-1060: FS,"AB-APP-B03-1ST-1020, AB-APP-B03-1ST-1020"
The Big -P.01-UP-20-April-26,AB-SUB-B03-1ST-1030,Submittal for Stairs Conc. Dim.  & RFT DWGs As-Built Drawing (B03) (1st),CON-B03-1ST-1060,CON-B03-1ST-1060: FS,"AB-APP-B03-1ST-1030, AB-APP-B03-1ST-1030"
The Big -P.01-UP-20-April-26,AB-SUB-B02-1ST-1000,Submittal for Col. & Walls Conc. Dim.  & RFT DWGs As-Built Drawing (B02) (1st),CON-B02-1ST-1030,CON-B02-1ST-1030: FS,"AB-APP-B02-1ST-1000, AB-APP-B02-1ST-1000"
The Big -P.01-UP-20-April-26,AB-SUB-B02-1ST-1010,Submittal for Slabs Conc. Dim.  & RFT DWGs As-Built Drawing (B02) (1st),CON-B02-1ST-1060,CON-B02-1ST-1060: FS,"AB-APP-B02-1ST-1010, AB-APP-B02-1ST-1010"
The Big -P.01-UP-20-April-26,AB-SUB-B02-1ST-1020,Submittal for Beams Conc. Dim.  & RFT DWGs As-Built Drawing (B02) (1st),CON-B02-1ST-1060,CON-B02-1ST-1060: FS,"AB-APP-B02-1ST-1020, AB-APP-B02-1ST-1020"
The Big -P.01-UP-20-April-26,AB-SUB-B02-1ST-1030,Submittal for Stairs Conc. Dim.  & RFT DWGs As-Built Drawing (B02) (1st),CON-B02-1ST-1060,CON-B02-1ST-1060: FS,"AB-APP-B02-1ST-1030, AB-APP-B02-1ST-1030"
The Big -P.01-UP-20-April-26,AB-SUB-B01-1ST-1000,Submittal for Col. & Walls Conc. Dim.  & RFT DWGs As-Built Drawing (B01) (1st),CON-B01-1ST-1030,CON-B01-1ST-1030: FS,"AB-APP-B01-1ST-1000, AB-APP-B01-1ST-1000"
The Big -P.01-UP-20-April-26,AB-SUB-B01-1ST-1010,Submittal for Slabs Conc. Dim.  & RFT DWGs As-Built Drawing (B01) (1st),CON-B01-1ST-1060,CON-B01-1ST-1060: FS,"AB-APP-B01-1ST-1010, AB-APP-B01-1ST-1010"
The Big -P.01-UP-20-April-26,AB-SUB-B01-1ST-1020,Submittal for Beams Conc. Dim.  & RFT DWGs As-Built Drawing (B01) (1st),CON-B01-1ST-1060,CON-B01-1ST-1060: FS,"AB-APP-B01-1ST-1020, AB-APP-B01-1ST-1020"
The Big -P.01-UP-20-April-26,AB-SUB-B01-1ST-1030,Submittal for Stairs Conc. Dim.  & RFT DWGs As-Built Drawing (B01) (1st),CON-B01-1ST-1060,CON-B01-1ST-1060: FS,"AB-APP-B01-1ST-1030, AB-APP-B01-1ST-1030"
The Big -P.01-UP-20-April-26,AB-APP-B02-1ST-1000,Approval for Col. & Walls Conc. Dim.  & RFT DWGs As-Built Drawing (B02) (1st),"AB-SUB-B02-1ST-1000, AB-SUB-B02-1ST-1000","AB-SUB-B02-1ST-1000: SS 12, AB-SUB-B02-1ST-1000: FF 6",HO-1050
The Big -P.01-UP-20-April-26,AB-APP-B02-1ST-1010,Approval for Slabs Conc. Dim.  & RFT DWGs As-Built Drawing (B02) (1st),"AB-SUB-B02-1ST-1010, AB-SUB-B02-1ST-1010","AB-SUB-B02-1ST-1010: SS 12, AB-SUB-B02-1ST-1010: FF 6",HO-1050
The Big -P.01-UP-20-April-26,AB-APP-B02-1ST-1020,Approval for Beams Conc. Dim.  & RFT DWGs As-Built Drawing (B02) (1st),"AB-SUB-B02-1ST-1020, AB-SUB-B02-1ST-1020","AB-SUB-B02-1ST-1020: SS 12, AB-SUB-B02-1ST-1020: FF 6",HO-1050
The Big -P.01-UP-20-April-26,AB-APP-B02-1ST-1030,Approval for Stairs Conc. Dim.  & RFT DWGs As-Built Drawing (B02) (1st),"AB-SUB-B02-1ST-1030, AB-SUB-B02-1ST-1030","AB-SUB-B02-1ST-1030: SS 12, AB-SUB-B02-1ST-1030: FF 6",HO-1050
The Big -P.01-UP-20-April-26,AB-APP-B01-1ST-1000,Approval for Col. & Walls Conc. Dim.  & RFT DWGs As-Built Drawing (B01) (1st),"AB-SUB-B01-1ST-1000, AB-SUB-B01-1ST-1000","AB-SUB-B01-1ST-1000: SS 12, AB-SUB-B01-1ST-1000: FF 6",HO-1050
The Big -P.01-UP-20-April-26,AB-APP-B01-1ST-1010,Approval for Slabs Conc. Dim.  & RFT DWGs As-Built Drawing (B01) (1st),"AB-SUB-B01-1ST-1010, AB-SUB-B01-1ST-1010","AB-SUB-B01-1ST-1010: SS 12, AB-SUB-B01-1ST-1010: FF 6",HO-1050
The Big -P.01-UP-20-April-26,AB-APP-B01-1ST-1020,Approval for Beams Conc. Dim.  & RFT DWGs As-Built Drawing (B01) (1st),"AB-SUB-B01-1ST-1020, AB-SUB-B01-1ST-1020","AB-SUB-B01-1ST-1020: SS 12, AB-SUB-B01-1ST-1020: FF 6",HO-1050
The Big -P.01-UP-20-April-26,AB-APP-B01-1ST-1030,Approval for Stairs Conc. Dim.  & RFT DWGs As-Built Drawing (B01) (1st),"AB-SUB-B01-1ST-1030, AB-SUB-B01-1ST-1030","AB-SUB-B01-1ST-1030: SS 12, AB-SUB-B01-1ST-1030: FF 6",HO-1050
The Big -P.01-UP-20-April-26,AB-APP-B04-1ST-1000,Approval for Col. & Walls Conc. Dim.  & RFT DWGs As-Built Drawing (B04) (1st),"AB-SUB-B04-1ST-1000, AB-SUB-B04-1ST-1000","AB-SUB-B04-1ST-1000: SS 12, AB-SUB-B04-1ST-1000: FF 6",HO-1050
The Big -P.01-UP-20-April-26,AB-APP-B04-1ST-1010,Approval for Slabs Conc. Dim.  & RFT DWGs As-Built Drawing (B04) (1st),"AB-SUB-B04-1ST-1010, AB-SUB-B04-1ST-1010","AB-SUB-B04-1ST-1010: SS 12, AB-SUB-B04-1ST-1010: FF 6",HO-1050
The Big -P.01-UP-20-April-26,AB-APP-B04-1ST-1020,Approval for Beams Conc. Dim.  & RFT DWGs As-Built Drawing (B04) (1st),"AB-SUB-B04-1ST-1020, AB-SUB-B04-1ST-1020","AB-SUB-B04-1ST-1020: SS 12, AB-SUB-B04-1ST-1020: FF 6",HO-1050
The Big -P.01-UP-20-April-26,AB-APP-B04-1ST-1030,Approval for Stairs Conc. Dim.  & RFT DWGs As-Built Drawing (B04) (1st),"AB-SUB-B04-1ST-1030, AB-SUB-B04-1ST-1030","AB-SUB-B04-1ST-1030: SS 12, AB-SUB-B04-1ST-1030: FF 6",HO-1050
The Big -P.01-UP-20-April-26,AB-APP-B03-1ST-1000,Approval for Col. & Walls Conc. Dim.  & RFT DWGs As-Built Drawing  (B03) (1st),"AB-SUB-B03-1ST-1000, AB-SUB-B03-1ST-1000","AB-SUB-B03-1ST-1000: SS 12, AB-SUB-B03-1ST-1000: FF 6",HO-1050
The Big -P.01-UP-20-April-26,AB-APP-B03-1ST-1010,Approval for Slabs Conc. Dim.  & RFT DWGs As-Built Drawing  (B03) (1st),"AB-SUB-B03-1ST-1010, AB-SUB-B03-1ST-1010","AB-SUB-B03-1ST-1010: SS 12, AB-SUB-B03-1ST-1010: FF 6",HO-1050
The Big -P.01-UP-20-April-26,AB-APP-B03-1ST-1020,Approval for Beams Conc. Dim.  & RFT DWGs As-Built Drawing  (B03) (1st),"AB-SUB-B03-1ST-1020, AB-SUB-B03-1ST-1020","AB-SUB-B03-1ST-1020: SS 12, AB-SUB-B03-1ST-1020: FF 6",HO-1050
The Big -P.01-UP-20-April-26,AB-APP-B03-1ST-1030,Approval for Stairs Conc. Dim.  & RFT DWGs As-Built Drawing  (B03) (1st),"AB-SUB-B03-1ST-1030, AB-SUB-B03-1ST-1030","AB-SUB-B03-1ST-1030: SS 12, AB-SUB-B03-1ST-1030: FF 6",HO-1050
The Big -P.01-UP-20-April-26,E-SUB-B01-BAS01-1000,Submittal for Col. & Walls Conc. Dim.  & RFT DWGs (B01) (Bas 01),E-DR-1000,E-DR-1000: FS 7,"E-APP-B01-BAS01-1000, E-APP-B01-BAS01-1000, E-SUB-B01-BAS01-1010"
The Big -P.01-UP-20-April-26,E-SUB-B01-BAS01-1040,Submittal for Slabs Conc. Dim.  & RFT DWGs (B01) (Bas 01),"E-DR-1000, E-SUB-B01-BAS01-1030","E-DR-1000: FS 21, E-SUB-B01-BAS01-1030: SS 3","E-APP-B01-BAS01-1040, E-APP-B01-BAS01-1040"
The Big -P.01-UP-20-April-26,E-SUB-B01-BAS01-1030,Submittal for Beams Conc. Dim.  & RFT DWGs (B01) (Bas 01),"E-DR-1000, E-SUB-B01-BAS01-1020","E-DR-1000: FS 17, E-SUB-B01-BAS01-1020: SS 3","E-APP-B01-BAS01-1030, E-APP-B01-BAS01-1030, E-SUB-B01-BAS01-1040"
The Big -P.01-UP-20-April-26,E-SUB-B01-BAS01-1010,Submittal for Stairs Conc. Dim.  & RFT DWGs (B01) (Bas 01),"E-DR-1000, E-SUB-B01-BAS01-1000","E-DR-1000: FS 10, E-SUB-B01-BAS01-1000: SS 3","E-APP-B01-BAS01-1010, E-APP-B01-BAS01-1010, E-SUB-B01-BAS01-1020"
The Big -P.01-UP-20-April-26,E-SUB-B01-BAS01-1020,Submittal for Ramps Conc. Dim.  & RFT DWGs (B01) (Bas 01),"E-DR-1000, E-SUB-B01-BAS01-1010","E-DR-1000: FS 14, E-SUB-B01-BAS01-1010: SS 3","E-APP-B01-BAS01-1020, E-APP-B01-BAS01-1020, E-SUB-B01-BAS01-1030"
The Big -P.01-UP-20-April-26,E-SUB-B04-2ND-1000,Submittal for Col. & Walls Conc. Dim.  & RFT DWGs (B04) (2nd),E-DR-1000,E-DR-1000: FS 60,"E-APP-B04-2ND-1000, E-APP-B04-2ND-1000, E-SUB-B04-2ND-1010"
The Big -P.01-UP-20-April-26,E-SUB-B04-2ND-1030,Submittal for Slabs Conc. Dim.  & RFT DWGs (B04) (2nd),"E-DR-1000, E-SUB-B04-2ND-1020","E-DR-1000: FS 71, E-SUB-B04-2ND-1020: SS 3","E-APP-B04-2ND-1030, E-APP-B04-2ND-1030"
The Big -P.01-UP-20-April-26,E-SUB-B04-2ND-1020,Submittal for Beams Conc. Dim.  & RFT DWGs (B04) (2nd),"E-DR-1000, E-SUB-B04-2ND-1010","E-DR-1000: FS 67, E-SUB-B04-2ND-1010: SS 3","E-APP-B04-2ND-1020, E-APP-B04-2ND-1020, E-SUB-B04-2ND-1030"
The Big -P.01-UP-20-April-26,E-SUB-B04-2ND-1010,Submittal for Stairs Conc. Dim.  & RFT DWGs (B04) (2nd),"E-DR-1000, E-SUB-B04-2ND-1000","E-DR-1000: FS 64, E-SUB-B04-2ND-1000: SS 3","E-APP-B04-2ND-1010, E-APP-B04-2ND-1010, E-SUB-B04-2ND-1020"
The Big -P.01-UP-20-April-26,E-SUB-B03-2ND-1000,Submittal for Col. & Walls Conc. Dim.  & RFT DWGs (B03) (2nd),E-DR-1000,E-DR-1000: FS 40,"E-APP-B03-2ND-1000, E-APP-B03-2ND-1000, E-SUB-B03-2ND-1010"
The Big -P.01-UP-20-April-26,E-SUB-B03-2ND-1030,Submittal for Slabs Conc. Dim.  & RFT DWGs (B03) (2nd),"E-DR-1000, E-SUB-B03-2ND-1020","E-DR-1000: FS 50, E-SUB-B03-2ND-1020: SS 3","E-APP-B03-2ND-1030, E-APP-B03-2ND-1030"
The Big -P.01-UP-20-April-26,E-SUB-B03-2ND-1020,Submittal for Beams Conc. Dim.  & RFT DWGs (B03) (2nd),"E-DR-1000, E-SUB-B03-2ND-1010","E-DR-1000: FS 46, E-SUB-B03-2ND-1010: SS 3","E-APP-B03-2ND-1020, E-APP-B03-2ND-1020, E-SUB-B03-2ND-1030"
The Big -P.01-UP-20-April-26,E-SUB-B03-2ND-1010,Submittal for Stairs Conc. Dim.  & RFT DWGs (B03) (2nd),"E-DR-1000, E-SUB-B03-2ND-1000","E-DR-1000: FS 43, E-SUB-B03-2ND-1000: SS 3","E-APP-B03-2ND-1010, E-APP-B03-2ND-1010, E-SUB-B03-2ND-1020"
The Big -P.01-UP-20-April-26,E-SUB-B02-2ND-1000,Submittal for Col. & Walls Conc. Dim.  & RFT DWGs (B02) (2nd),E-DR-1000,E-DR-1000: FS 45,"E-APP-B02-2ND-1000, E-APP-B02-2ND-1000, E-SUB-B02-2ND-1010"
The Big -P.01-UP-20-April-26,E-SUB-B02-2ND-1030,Submittal for Slabs Conc. Dim.  & RFT DWGs (B02) (2nd),"E-DR-1000, E-SUB-B02-2ND-1020","E-DR-1000: FS 56, E-SUB-B02-2ND-1020: SS 3","E-APP-B02-2ND-1030, E-APP-B02-2ND-1030"
The Big -P.01-UP-20-April-26,E-SUB-B02-2ND-1020,Submittal for Beams Conc. Dim.  & RFT DWGs (B02) (2nd),"E-DR-1000, E-SUB-B02-2ND-1010","E-DR-1000: FS 52, E-SUB-B02-2ND-1010: SS 3","E-APP-B02-2ND-1020, E-APP-B02-2ND-1020, E-SUB-B02-2ND-1030"
The Big -P.01-UP-20-April-26,E-SUB-B02-2ND-1010,Submittal for Stairs Conc. Dim.  & RFT DWGs (B02) (2nd),"E-DR-1000, E-SUB-B02-2ND-1000","E-DR-1000: FS 49, E-SUB-B02-2ND-1000: SS 3","E-APP-B02-2ND-1010, E-APP-B02-2ND-1010, E-SUB-B02-2ND-1020"
The Big -P.01-UP-20-April-26,E-SUB-B01-2ND-1000,Submittal for Col. & Walls Conc. Dim.  & RFT DWGs (B01) (2nd),E-DR-1000,E-DR-1000: FS 40,"E-APP-B01-2ND-1000, E-APP-B01-2ND-1000, E-SUB-B01-2ND-1010"
The Big -P.01-UP-20-April-26,E-SUB-B01-2ND-1030,Submittal for Slabs Conc. Dim.  & RFT DWGs (B01) (2nd),"E-DR-1000, E-SUB-B01-2ND-1020","E-DR-1000: FS 50, E-SUB-B01-2ND-1020: SS 3","E-APP-B01-2ND-1030, E-APP-B01-2ND-1030"
The Big -P.01-UP-20-April-26,E-SUB-B01-2ND-1020,Submittal for Beams Conc. Dim.  & RFT DWGs (B01) (2nd),"E-DR-1000, E-SUB-B01-2ND-1010","E-DR-1000: FS 46, E-SUB-B01-2ND-1010: SS 3","E-APP-B01-2ND-1020, E-APP-B01-2ND-1020, E-SUB-B01-2ND-1030"
The Big -P.01-UP-20-April-26,E-SUB-B01-2ND-1010,Submittal for Stairs Conc. Dim.  & RFT DWGs (B01) (2nd),"E-DR-1000, E-SUB-B01-2ND-1000","E-DR-1000: FS 43, E-SUB-B01-2ND-1000: SS 3","E-APP-B01-2ND-1010, E-APP-B01-2ND-1010, E-SUB-B01-2ND-1020"
The Big -P.01-UP-20-April-26,E-APP-B02-2ND-1000,Approval for Col. & Walls Conc. Dim.  & RFT DWGs (B02) (2nd),"E-SUB-B02-2ND-1000, E-SUB-B02-2ND-1000","E-SUB-B02-2ND-1000: SS 12, E-SUB-B02-2ND-1000: FF 10","CON-B02-2ND-1010, CON-B02-2ND-1020"
The Big -P.01-UP-20-April-26,E-APP-B02-2ND-1030,Approval for Slabs Conc. Dim.  & RFT DWGs (B02) (2nd),"E-SUB-B02-2ND-1030, E-SUB-B02-2ND-1030","E-SUB-B02-2ND-1030: SS 12, E-SUB-B02-2ND-1030: FF 10","CON-B02-2ND-1040, CON-B02-2ND-1050"
The Big -P.01-UP-20-April-26,E-APP-B02-2ND-1020,Approval for Beams Conc. Dim.  & RFT DWGs (B02) (2nd),"E-SUB-B02-2ND-1020, E-SUB-B02-2ND-1020","E-SUB-B02-2ND-1020: SS 12, E-SUB-B02-2ND-1020: FF 10","CON-B02-2ND-1040, CON-B02-2ND-1050"
The Big -P.01-UP-20-April-26,E-APP-B02-2ND-1010,Approval for Stairs Conc. Dim.  & RFT DWGs (B02) (2nd),"E-SUB-B02-2ND-1010, E-SUB-B02-2ND-1010","E-SUB-B02-2ND-1010: SS 12, E-SUB-B02-2ND-1010: FF 10","CON-B02-2ND-1040, CON-B02-2ND-1050"
The Big -P.01-UP-20-April-26,E-APP-B01-2ND-1000,Approval for Col. & Walls Conc. Dim.  & RFT DWGs (B01) (2nd),"E-SUB-B01-2ND-1000, E-SUB-B01-2ND-1000","E-SUB-B01-2ND-1000: SS 12, E-SUB-B01-2ND-1000: FF 10","CON-B01-2ND-1010, CON-B01-2ND-1020"
The Big -P.01-UP-20-April-26,E-APP-B01-2ND-1030,Approval for Slabs Conc. Dim.  & RFT DWGs (B01) (2nd),"E-SUB-B01-2ND-1030, E-SUB-B01-2ND-1030","E-SUB-B01-2ND-1030: SS 12, E-SUB-B01-2ND-1030: FF 10","CON-B01-2ND-1040, CON-B01-2ND-1050"
The Big -P.01-UP-20-April-26,E-APP-B01-2ND-1020,Approval for Beams Conc. Dim.  & RFT DWGs (B01) (2nd),"E-SUB-B01-2ND-1020, E-SUB-B01-2ND-1020","E-SUB-B01-2ND-1020: SS 12, E-SUB-B01-2ND-1020: FF 10","CON-B01-2ND-1040, CON-B01-2ND-1050"
The Big -P.01-UP-20-April-26,E-APP-B01-2ND-1010,Approval for Stairs Conc. Dim.  & RFT DWGs (B01) (2nd),"E-SUB-B01-2ND-1010, E-SUB-B01-2ND-1010","E-SUB-B01-2ND-1010: SS 12, E-SUB-B01-2ND-1010: FF 10","CON-B01-2ND-1040, CON-B01-2ND-1050"
The Big -P.01-UP-20-April-26,E-APP-B04-2ND-1000,Approval for Col. & Walls Conc. Dim.  & RFT DWGs (B04) (2nd),"E-SUB-B04-2ND-1000, E-SUB-B04-2ND-1000","E-SUB-B04-2ND-1000: SS 12, E-SUB-B04-2ND-1000: FF 10","CON-B04-2ND-1010, CON-B04-2ND-1020"
The Big -P.01-UP-20-April-26,E-APP-B04-2ND-1030,Approval for Slabs Conc. Dim.  & RFT DWGs (B04) (2nd),"E-SUB-B04-2ND-1030, E-SUB-B04-2ND-1030","E-SUB-B04-2ND-1030: SS 12, E-SUB-B04-2ND-1030: FF 10","CON-B04-2ND-1040, CON-B04-2ND-1050"
The Big -P.01-UP-20-April-26,E-APP-B04-2ND-1020,Approval for Beams Conc. Dim.  & RFT DWGs (B04) (2nd),"E-SUB-B04-2ND-1020, E-SUB-B04-2ND-1020","E-SUB-B04-2ND-1020: SS 12, E-SUB-B04-2ND-1020: FF 10","CON-B04-2ND-1040, CON-B04-2ND-1050"
The Big -P.01-UP-20-April-26,E-APP-B04-2ND-1010,Approval for Stairs Conc. Dim.  & RFT DWGs (B04) (2nd),"E-SUB-B04-2ND-1010, E-SUB-B04-2ND-1010","E-SUB-B04-2ND-1010: SS 12, E-SUB-B04-2ND-1010: FF 10","CON-B04-2ND-1040, CON-B04-2ND-1050"
The Big -P.01-UP-20-April-26,E-APP-B03-2ND-1000,Approval for Col. & Walls Conc. Dim.  & RFT DWGs  (B03) (2nd),"E-SUB-B03-2ND-1000, E-SUB-B03-2ND-1000","E-SUB-B03-2ND-1000: SS 12, E-SUB-B03-2ND-1000: FF 10","CON-B03-2ND-1010, CON-B03-2ND-1020"
The Big -P.01-UP-20-April-26,E-APP-B03-2ND-1030,Approval for Slabs Conc. Dim.  & RFT DWGs  (B03) (2nd),"E-SUB-B03-2ND-1030, E-SUB-B03-2ND-1030","E-SUB-B03-2ND-1030: SS 12, E-SUB-B03-2ND-1030: FF 10","CON-B03-2ND-1040, CON-B03-2ND-1050"
The Big -P.01-UP-20-April-26,E-APP-B03-2ND-1020,Approval for Beams Conc. Dim.  & RFT DWGs  (B03) (2nd),"E-SUB-B03-2ND-1020, E-SUB-B03-2ND-1020","E-SUB-B03-2ND-1020: SS 12, E-SUB-B03-2ND-1020: FF 10","CON-B03-2ND-1040, CON-B03-2ND-1050"
The Big -P.01-UP-20-April-26,E-APP-B03-2ND-1010,Approval for Stairs Conc. Dim.  & RFT DWGs  (B03) (2nd),"E-SUB-B03-2ND-1010, E-SUB-B03-2ND-1010","E-SUB-B03-2ND-1010: SS 12, E-SUB-B03-2ND-1010: FF 10","CON-B03-2ND-1040, CON-B03-2ND-1050"
The Big -P.01-UP-20-April-26,AB-SUB-B01-BAS1-1000,Submittal for Col. & Walls Conc. Dim.  & RFT DWGs As-Built Drawing (B01) (Bas 01),CON-B01-BAS01-1030,CON-B01-BAS01-1030: FS,"AB-APP-B01-BAS1-1000, AB-APP-B01-BAS1-1000"
The Big -P.01-UP-20-April-26,AB-SUB-B01-BAS1-1020,Submittal for Slabs Conc. Dim.  & RFT DWGs As-Built Drawing (B01) (Bas 01),CON-B01-BAS01-1110,CON-B01-BAS01-1110: FS,"AB-APP-B01-BAS1-1020, AB-APP-B01-BAS1-1020"
The Big -P.01-UP-20-April-26,AB-SUB-B01-BAS1-1030,Submittal for Beams Conc. Dim.  & RFT DWGs As-Built Drawing (B01) (Bas 01),CON-B01-BAS01-1110,CON-B01-BAS01-1110: FS,"AB-APP-B01-BAS1-1030, AB-APP-B01-BAS1-1030"
The Big -P.01-UP-20-April-26,AB-SUB-B01-BAS1-1010,Submittal for Stairs Conc. Dim.  & RFT DWGs As-Built Drawing (B01) (Bas 01),CON-B01-BAS01-1100,CON-B01-BAS01-1100: FS,"AB-APP-B01-BAS1-1010, AB-APP-B01-BAS1-1010"
The Big -P.01-UP-20-April-26,AB-SUB-B01-BAS1-1040,Submittal for Ramps Conc. Dim.  & RFT DWGs As-Built Drawing (B01) (Bas 01),CON-B01-BAS01-1130,CON-B01-BAS01-1130: FS,"AB-APP-B01-BAS1-1040, AB-APP-B01-BAS1-1040"
The Big -P.01-UP-20-April-26,AB-SUB-B04-2ND-1000,Submittal for Col. & Walls Conc. Dim.  & RFT DWGs As-Built Drawing (B04) (2nd),CON-B04-2ND-1030,CON-B04-2ND-1030: FS,"AB-APP-B04-2ND-1000, AB-APP-B04-2ND-1000"
The Big -P.01-UP-20-April-26,AB-SUB-B04-2ND-1010,Submittal for Slabs Conc. Dim.  & RFT DWGs As-Built Drawing (B04) (2nd),CON-B04-2ND-1060,CON-B04-2ND-1060: FS,"AB-APP-B04-2ND-1010, AB-APP-B04-2ND-1010"
The Big -P.01-UP-20-April-26,AB-SUB-B04-2ND-1020,Submittal for Beams Conc. Dim.  & RFT DWGs As-Built Drawing (B04) (2nd),CON-B04-2ND-1060,CON-B04-2ND-1060: FS,"AB-APP-B04-2ND-1020, AB-APP-B04-2ND-1020"
The Big -P.01-UP-20-April-26,AB-SUB-B04-2ND-1030,Submittal for Stairs Conc. Dim.  & RFT DWGs As-Built Drawing (B04) (2nd),CON-B04-2ND-1060,CON-B04-2ND-1060: FS,"AB-APP-B04-2ND-1030, AB-APP-B04-2ND-1030"
The Big -P.01-UP-20-April-26,AB-SUB-B03-2ND-1000,Submittal for Col. & Walls Conc. Dim.  & RFT DWGs As-Built Drawing (B03) (2nd),CON-B03-2ND-1030,CON-B03-2ND-1030: FS,"AB-APP-B03-2ND-1000, AB-APP-B03-2ND-1000"
The Big -P.01-UP-20-April-26,AB-SUB-B03-2ND-1010,Submittal for Slabs Conc. Dim.  & RFT DWGs As-Built Drawing (B03) (2nd),CON-B03-2ND-1060,CON-B03-2ND-1060: FS,"AB-APP-B03-2ND-1010, AB-APP-B03-2ND-1010"
The Big -P.01-UP-20-April-26,AB-SUB-B03-2ND-1020,Submittal for Beams Conc. Dim.  & RFT DWGs As-Built Drawing (B03) (2nd),CON-B03-2ND-1060,CON-B03-2ND-1060: FS,"AB-APP-B03-2ND-1020, AB-APP-B03-2ND-1020"
The Big -P.01-UP-20-April-26,AB-SUB-B03-2ND-1030,Submittal for Stairs Conc. Dim.  & RFT DWGs As-Built Drawing (B03) (2nd),CON-B03-2ND-1060,CON-B03-2ND-1060: FS,"AB-APP-B03-2ND-1030, AB-APP-B03-2ND-1030"
The Big -P.01-UP-20-April-26,AB-SUB-B02-2ND-1000,Submittal for Col. & Walls Conc. Dim.  & RFT DWGs As-Built Drawing (B02) (2nd),CON-B02-2ND-1030,CON-B02-2ND-1030: FS,"AB-APP-B02-2ND-1000, AB-APP-B02-2ND-1000"
The Big -P.01-UP-20-April-26,AB-SUB-B02-2ND-1010,Submittal for Slabs Conc. Dim.  & RFT DWGs As-Built Drawing (B02) (2nd),CON-B02-2ND-1060,CON-B02-2ND-1060: FS,"AB-APP-B02-2ND-1010, AB-APP-B02-2ND-1010"
The Big -P.01-UP-20-April-26,AB-SUB-B02-2ND-1020,Submittal for Beams Conc. Dim.  & RFT DWGs As-Built Drawing (B02) (2nd),CON-B02-2ND-1060,CON-B02-2ND-1060: FS,"AB-APP-B02-2ND-1020, AB-APP-B02-2ND-1020"
The Big -P.01-UP-20-April-26,AB-SUB-B02-2ND-1030,Submittal for Stairs Conc. Dim.  & RFT DWGs As-Built Drawing (B02) (2nd),CON-B02-2ND-1060,CON-B02-2ND-1060: FS,"AB-APP-B02-2ND-1030, AB-APP-B02-2ND-1030"
The Big -P.01-UP-20-April-26,AB-SUB-B01-2ND-1000,Submittal for Col. & Walls Conc. Dim.  & RFT DWGs As-Built Drawing (B01) (2nd),CON-B01-2ND-1030,CON-B01-2ND-1030: FS,"AB-APP-B01-2ND-1000, AB-APP-B01-2ND-1000"
The Big -P.01-UP-20-April-26,AB-SUB-B01-2ND-1010,Submittal for Slabs Conc. Dim.  & RFT DWGs As-Built Drawing (B01) (2nd),CON-B01-2ND-1060,CON-B01-2ND-1060: FS,"AB-APP-B01-2ND-1010, AB-APP-B01-2ND-1010"
The Big -P.01-UP-20-April-26,AB-SUB-B01-2ND-1020,Submittal for Beams Conc. Dim.  & RFT DWGs As-Built Drawing (B01) (2nd),CON-B01-2ND-1060,CON-B01-2ND-1060: FS,"AB-APP-B01-2ND-1020, AB-APP-B01-2ND-1020"
The Big -P.01-UP-20-April-26,AB-SUB-B01-2ND-1030,Submittal for Stairs Conc. Dim.  & RFT DWGs As-Built Drawing (B01) (2nd),CON-B01-2ND-1060,CON-B01-2ND-1060: FS,"AB-APP-B01-2ND-1030, AB-APP-B01-2ND-1030"
The Big -P.01-UP-20-April-26,AB-APP-B02-2ND-1000,Approval for Col. & Walls Conc. Dim.  & RFT DWGs As-Built Drawing (B02) (2nd),"AB-SUB-B02-2ND-1000, AB-SUB-B02-2ND-1000","AB-SUB-B02-2ND-1000: SS 12, AB-SUB-B02-2ND-1000: FF 6",HO-1050
The Big -P.01-UP-20-April-26,AB-APP-B02-2ND-1010,Approval for Slabs Conc. Dim.  & RFT DWGs As-Built Drawing (B02) (2nd),"AB-SUB-B02-2ND-1010, AB-SUB-B02-2ND-1010","AB-SUB-B02-2ND-1010: SS 12, AB-SUB-B02-2ND-1010: FF 6",HO-1050
The Big -P.01-UP-20-April-26,AB-APP-B02-2ND-1020,Approval for Beams Conc. Dim.  & RFT DWGs As-Built Drawing (B02) (2nd),"AB-SUB-B02-2ND-1020, AB-SUB-B02-2ND-1020","AB-SUB-B02-2ND-1020: SS 12, AB-SUB-B02-2ND-1020: FF 6",HO-1050
The Big -P.01-UP-20-April-26,AB-APP-B02-2ND-1030,Approval for Stairs Conc. Dim.  & RFT DWGs As-Built Drawing (B02) (2nd),"AB-SUB-B02-2ND-1030, AB-SUB-B02-2ND-1030","AB-SUB-B02-2ND-1030: SS 12, AB-SUB-B02-2ND-1030: FF 6",HO-1050
The Big -P.01-UP-20-April-26,AB-APP-B01-2ND-1000,Approval for Col. & Walls Conc. Dim.  & RFT DWGs As-Built Drawing (B01) (2nd),"AB-SUB-B01-2ND-1000, AB-SUB-B01-2ND-1000","AB-SUB-B01-2ND-1000: SS 12, AB-SUB-B01-2ND-1000: FF 6",HO-1050
The Big -P.01-UP-20-April-26,AB-APP-B01-2ND-1010,Approval for Slabs Conc. Dim.  & RFT DWGs As-Built Drawing (B01) (2nd),"AB-SUB-B01-2ND-1010, AB-SUB-B01-2ND-1010","AB-SUB-B01-2ND-1010: SS 12, AB-SUB-B01-2ND-1010: FF 6",HO-1050
The Big -P.01-UP-20-April-26,AB-APP-B01-2ND-1020,Approval for Beams Conc. Dim.  & RFT DWGs As-Built Drawing (B01) (2nd),"AB-SUB-B01-2ND-1020, AB-SUB-B01-2ND-1020","AB-SUB-B01-2ND-1020: SS 12, AB-SUB-B01-2ND-1020: FF 6",HO-1050
The Big -P.01-UP-20-April-26,AB-APP-B01-2ND-1030,Approval for Stairs Conc. Dim.  & RFT DWGs As-Built Drawing (B01) (2nd),"AB-SUB-B01-2ND-1030, AB-SUB-B01-2ND-1030","AB-SUB-B01-2ND-1030: SS 12, AB-SUB-B01-2ND-1030: FF 6",HO-1050
The Big -P.01-UP-20-April-26,AB-APP-B04-2ND-1000,Approval for Col. & Walls Conc. Dim.  & RFT DWGs As-Built Drawing (B04) (2nd),"AB-SUB-B04-2ND-1000, AB-SUB-B04-2ND-1000","AB-SUB-B04-2ND-1000: SS 12, AB-SUB-B04-2ND-1000: FF 6",HO-1050
The Big -P.01-UP-20-April-26,AB-APP-B04-2ND-1010,Approval for Slabs Conc. Dim.  & RFT DWGs As-Built Drawing (B04) (2nd),"AB-SUB-B04-2ND-1010, AB-SUB-B04-2ND-1010","AB-SUB-B04-2ND-1010: SS 12, AB-SUB-B04-2ND-1010: FF 6",HO-1050
The Big -P.01-UP-20-April-26,AB-APP-B04-2ND-1020,Approval for Beams Conc. Dim.  & RFT DWGs As-Built Drawing (B04) (2nd),"AB-SUB-B04-2ND-1020, AB-SUB-B04-2ND-1020","AB-SUB-B04-2ND-1020: SS 12, AB-SUB-B04-2ND-1020: FF 6",HO-1050
The Big -P.01-UP-20-April-26,AB-APP-B04-2ND-1030,Approval for Stairs Conc. Dim.  & RFT DWGs As-Built Drawing (B04) (2nd),"AB-SUB-B04-2ND-1030, AB-SUB-B04-2ND-1030","AB-SUB-B04-2ND-1030: SS 12, AB-SUB-B04-2ND-1030: FF 6",HO-1050
The Big -P.01-UP-20-April-26,AB-APP-B03-2ND-1000,Approval for Col. & Walls Conc. Dim.  & RFT DWGs As-Built Drawing  (B03) (2nd),"AB-SUB-B03-2ND-1000, AB-SUB-B03-2ND-1000","AB-SUB-B03-2ND-1000: SS 12, AB-SUB-B03-2ND-1000: FF 6",HO-1050
The Big -P.01-UP-20-April-26,AB-APP-B03-2ND-1010,Approval for Slabs Conc. Dim.  & RFT DWGs As-Built Drawing  (B03) (2nd),"AB-SUB-B03-2ND-1010, AB-SUB-B03-2ND-1010","AB-SUB-B03-2ND-1010: SS 12, AB-SUB-B03-2ND-1010: FF 6",HO-1050
The Big -P.01-UP-20-April-26,AB-APP-B03-2ND-1020,Approval for Beams Conc. Dim.  & RFT DWGs As-Built Drawing  (B03) (2nd),"AB-SUB-B03-2ND-1020, AB-SUB-B03-2ND-1020","AB-SUB-B03-2ND-1020: SS 12, AB-SUB-B03-2ND-1020: FF 6",HO-1050
The Big -P.01-UP-20-April-26,AB-APP-B03-2ND-1030,Approval for Stairs Conc. Dim.  & RFT DWGs As-Built Drawing  (B03) (2nd),"AB-SUB-B03-2ND-1030, AB-SUB-B03-2ND-1030","AB-SUB-B03-2ND-1030: SS 12, AB-SUB-B03-2ND-1030: FF 6",HO-1050
The Big -P.01-UP-20-April-26,E-SUB-B04-3RD-1000,Submittal for Col. & Walls Conc. Dim.  & RFT DWGs (B04) (3rd),E-DR-1000,E-DR-1000: FS 75,"E-APP-B04-2RD-1000, E-APP-B04-2RD-1000, E-SUB-B04-3RD-1010"
The Big -P.01-UP-20-April-26,E-SUB-B04-3RD-1030,Submittal for Slabs Conc. Dim.  & RFT DWGs (B04) (3rd),"E-DR-1000, E-SUB-B04-3RD-1020","E-DR-1000: FS 86, E-SUB-B04-3RD-1020: SS 3","E-APP-B04-2RD-1030, E-APP-B04-2RD-1030"
The Big -P.01-UP-20-April-26,E-SUB-B04-3RD-1020,Submittal for Beams Conc. Dim.  & RFT DWGs (B04) (3rd),"E-DR-1000, E-SUB-B04-3RD-1010","E-DR-1000: FS 83, E-SUB-B04-3RD-1010: SS 3","E-APP-B04-2RD-1020, E-APP-B04-2RD-1020, E-SUB-B04-3RD-1030"
The Big -P.01-UP-20-April-26,E-SUB-B04-3RD-1010,Submittal for Stairs Conc. Dim.  & RFT DWGs (B04) (3rd),"E-DR-1000, E-SUB-B04-3RD-1000","E-DR-1000: FS 79, E-SUB-B04-3RD-1000: SS 3","E-APP-B04-2RD-1010, E-APP-B04-2RD-1010, E-SUB-B04-3RD-1020"
The Big -P.01-UP-20-April-26,E-SUB-B03-3RD-1000,Submittal for Col. & Walls Conc. Dim.  & RFT DWGs (B03) (3rd),E-DR-1000,E-DR-1000: FS 50,"E-APP-B03-3RD-1000, E-APP-B03-3RD-1000, E-SUB-B03-3RD-1010"
The Big -P.01-UP-20-April-26,E-SUB-B03-3RD-1030,Submittal for Slabs Conc. Dim.  & RFT DWGs (B03) (3rd),"E-DR-1000, E-SUB-B03-3RD-1020","E-DR-1000: FS 62, E-SUB-B03-3RD-1020: SS 3","E-APP-B03-3RD-1030, E-APP-B03-3RD-1030"
The Big -P.01-UP-20-April-26,E-SUB-B03-3RD-1020,Submittal for Beams Conc. Dim.  & RFT DWGs (B03) (3rd),"E-DR-1000, E-SUB-B03-3RD-1010","E-DR-1000: FS 57, E-SUB-B03-3RD-1010: SS 3","E-APP-B03-3RD-1020, E-APP-B03-3RD-1020, E-SUB-B03-3RD-1030"
The Big -P.01-UP-20-April-26,E-SUB-B03-3RD-1010,Submittal for Stairs Conc. Dim.  & RFT DWGs (B03) (3rd),"E-DR-1000, E-SUB-B03-3RD-1000","E-DR-1000: FS 53, E-SUB-B03-3RD-1000: SS 3","E-APP-B03-3RD-1010, E-APP-B03-3RD-1010, E-SUB-B03-3RD-1020"
The Big -P.01-UP-20-April-26,E-SUB-B02-3RD-1000,Submittal for Col. & Walls Conc. Dim.  & RFT DWGs (B02) (3rd),E-DR-1000,E-DR-1000: FS 65,"E-APP-B02-3RD-1000, E-APP-B02-3RD-1000, E-SUB-B02-3RD-1010"
The Big -P.01-UP-20-April-26,E-SUB-B02-3RD-1030,Submittal for Slabs Conc. Dim.  & RFT DWGs (B02) (3rd),"E-DR-1000, E-SUB-B02-3RD-1020","E-DR-1000: FS 76, E-SUB-B02-3RD-1020: SS 3","E-APP-B02-3RD-1030, E-APP-B02-3RD-1030"
The Big -P.01-UP-20-April-26,E-SUB-B02-3RD-1020,Submittal for Beams Conc. Dim.  & RFT DWGs (B02) (3rd),"E-DR-1000, E-SUB-B02-3RD-1010","E-DR-1000: FS 72, E-SUB-B02-3RD-1010: SS 3","E-APP-B02-3RD-1020, E-APP-B02-3RD-1020, E-SUB-B02-3RD-1030"
The Big -P.01-UP-20-April-26,E-SUB-B02-3RD-1010,Submittal for Stairs Conc. Dim.  & RFT DWGs (B02) (3rd),"E-DR-1000, E-SUB-B02-3RD-1000","E-DR-1000: FS 69, E-SUB-B02-3RD-1000: SS 3","E-APP-B02-3RD-1010, E-APP-B02-3RD-1010, E-SUB-B02-3RD-1020"
The Big -P.01-UP-20-April-26,E-SUB-B01-3RD-1000,Submittal for Col. & Walls Conc. Dim.  & RFT DWGs (B01) (3rd),E-DR-1000,E-DR-1000: FS 50,"E-APP-B01-3ED-1000, E-APP-B01-3ED-1000, E-SUB-B01-3RD-1010"
The Big -P.01-UP-20-April-26,E-SUB-B01-3RD-1030,Submittal for Slabs Conc. Dim.  & RFT DWGs (B01) (3rd),"E-DR-1000, E-SUB-B01-3RD-1020","E-DR-1000: FS 62, E-SUB-B01-3RD-1020: SS 3","E-APP-B01-3ED-1030, E-APP-B01-3ED-1030"
The Big -P.01-UP-20-April-26,E-SUB-B01-3RD-1020,Submittal for Beams Conc. Dim.  & RFT DWGs (B01) (3rd),"E-DR-1000, E-SUB-B01-3RD-1010","E-DR-1000: FS 57, E-SUB-B01-3RD-1010: SS 3","E-APP-B01-3ED-1020, E-APP-B01-3ED-1020, E-SUB-B01-3RD-1030"
The Big -P.01-UP-20-April-26,E-SUB-B01-3RD-1010,Submittal for Stairs Conc. Dim.  & RFT DWGs (B01) (3rd),"E-DR-1000, E-SUB-B01-3RD-1000","E-DR-1000: FS 53, E-SUB-B01-3RD-1000: SS 3","E-APP-B01-3ED-1010, E-APP-B01-3ED-1010, E-SUB-B01-3RD-1020"
The Big -P.01-UP-20-April-26,E-APP-B02-3RD-1000,Approval for Col. & Walls Conc. Dim.  & RFT DWGs (B02) (3rd),"E-SUB-B02-3RD-1000, E-SUB-B02-3RD-1000","E-SUB-B02-3RD-1000: SS 12, E-SUB-B02-3RD-1000: FF 10","CON-B02-3RD-1010, CON-B02-3RD-1020"
The Big -P.01-UP-20-April-26,E-APP-B02-3RD-1030,Approval for Slabs Conc. Dim.  & RFT DWGs (B02) (3rd),"E-SUB-B02-3RD-1030, E-SUB-B02-3RD-1030","E-SUB-B02-3RD-1030: SS 12, E-SUB-B02-3RD-1030: FF 10","CON-B02-3RD-1040, CON-B02-3RD-1050"
The Big -P.01-UP-20-April-26,E-APP-B02-3RD-1020,Approval for Beams Conc. Dim.  & RFT DWGs (B02) (3rd),"E-SUB-B02-3RD-1020, E-SUB-B02-3RD-1020","E-SUB-B02-3RD-1020: SS 12, E-SUB-B02-3RD-1020: FF 10","CON-B02-3RD-1040, CON-B02-3RD-1050"
The Big -P.01-UP-20-April-26,E-APP-B02-3RD-1010,Approval for Stairs Conc. Dim.  & RFT DWGs (B02) (3rd),"E-SUB-B02-3RD-1010, E-SUB-B02-3RD-1010","E-SUB-B02-3RD-1010: SS 12, E-SUB-B02-3RD-1010: FF 10","CON-B02-3RD-1040, CON-B02-3RD-1050"
The Big -P.01-UP-20-April-26,E-APP-B01-3ED-1000,Approval for Col. & Walls Conc. Dim.  & RFT DWGs (B01) (3rd),"E-SUB-B01-3RD-1000, E-SUB-B01-3RD-1000","E-SUB-B01-3RD-1000: SS 12, E-SUB-B01-3RD-1000: FF 10","CON-B01-3RD-1010, CON-B01-3RD-1020"
The Big -P.01-UP-20-April-26,E-APP-B01-3ED-1030,Approval for Slabs Conc. Dim.  & RFT DWGs (B01) (3rd),"E-SUB-B01-3RD-1030, E-SUB-B01-3RD-1030","E-SUB-B01-3RD-1030: SS 12, E-SUB-B01-3RD-1030: FF 10","CON-B01-3RD-1040, CON-B01-3RD-1010"
The Big -P.01-UP-20-April-26,E-APP-B01-3ED-1020,Approval for Beams Conc. Dim.  & RFT DWGs (B01) (3rd),"E-SUB-B01-3RD-1020, E-SUB-B01-3RD-1020","E-SUB-B01-3RD-1020: SS 12, E-SUB-B01-3RD-1020: FF 10","CON-B01-3RD-1040, CON-B01-3RD-1010"
The Big -P.01-UP-20-April-26,E-APP-B01-3ED-1010,Approval for Stairs Conc. Dim.  & RFT DWGs (B01) (3rd),"E-SUB-B01-3RD-1010, E-SUB-B01-3RD-1010","E-SUB-B01-3RD-1010: SS 12, E-SUB-B01-3RD-1010: FF 10","CON-B01-3RD-1040, CON-B01-3RD-1010"
The Big -P.01-UP-20-April-26,E-APP-B04-2RD-1000,Approval for Col. & Walls Conc. Dim.  & RFT DWGs (B04) (3rd),"E-SUB-B04-3RD-1000, E-SUB-B04-3RD-1000","E-SUB-B04-3RD-1000: SS 12, E-SUB-B04-3RD-1000: FF 10","CON-B04-3RD-1010, CON-B04-3RD-1020"
The Big -P.01-UP-20-April-26,E-APP-B04-2RD-1030,Approval for Slabs Conc. Dim.  & RFT DWGs (B04) (3rd),"E-SUB-B04-3RD-1030, E-SUB-B04-3RD-1030","E-SUB-B04-3RD-1030: SS 12, E-SUB-B04-3RD-1030: FF 10","CON-B04-3RD-1040, CON-B04-3RD-1050"
The Big -P.01-UP-20-April-26,E-APP-B04-2RD-1020,Approval for Beams Conc. Dim.  & RFT DWGs (B04) (3rd),"E-SUB-B04-3RD-1020, E-SUB-B04-3RD-1020","E-SUB-B04-3RD-1020: SS 12, E-SUB-B04-3RD-1020: FF 10","CON-B04-3RD-1040, CON-B04-3RD-1050"
The Big -P.01-UP-20-April-26,E-APP-B04-2RD-1010,Approval for Stairs Conc. Dim.  & RFT DWGs (B04) (3rd),"E-SUB-B04-3RD-1010, E-SUB-B04-3RD-1010","E-SUB-B04-3RD-1010: SS 12, E-SUB-B04-3RD-1010: FF 10","CON-B04-3RD-1040, CON-B04-3RD-1050"
The Big -P.01-UP-20-April-26,E-APP-B03-3RD-1000,Approval for Col. & Walls Conc. Dim.  & RFT DWGs  (B03) (3rd),"E-SUB-B03-3RD-1000, E-SUB-B03-3RD-1000","E-SUB-B03-3RD-1000: SS 12, E-SUB-B03-3RD-1000: FF 10","CON-B03-3RD-1010, CON-B03-3RD-1020"
The Big -P.01-UP-20-April-26,E-APP-B03-3RD-1030,Approval for Slabs Conc. Dim.  & RFT DWGs  (B03) (3rd),"E-SUB-B03-3RD-1030, E-SUB-B03-3RD-1030","E-SUB-B03-3RD-1030: SS 12, E-SUB-B03-3RD-1030: FF 10","CON-B03-3RD-1040, CON-B03-3RD-1050"
The Big -P.01-UP-20-April-26,E-APP-B03-3RD-1020,Approval for Beams Conc. Dim.  & RFT DWGs  (B03) (3rd),"E-SUB-B03-3RD-1020, E-SUB-B03-3RD-1020","E-SUB-B03-3RD-1020: SS 12, E-SUB-B03-3RD-1020: FF 10","CON-B03-3RD-1040, CON-B03-3RD-1050"
The Big -P.01-UP-20-April-26,E-APP-B03-3RD-1010,Approval for Stairs Conc. Dim.  & RFT DWGs  (B03) (3rd),"E-SUB-B03-3RD-1010, E-SUB-B03-3RD-1010","E-SUB-B03-3RD-1010: SS 12, E-SUB-B03-3RD-1010: FF 10","CON-B03-3RD-1040, CON-B03-3RD-1050"
The Big -P.01-UP-20-April-26,AB-SUB-B04-3RD-1000,Submittal for Col. & Walls Conc. Dim.  & RFT DWGs As-Built Drawing (B04) (3rd),CON-B04-3RD-1030,CON-B04-3RD-1030: FS,"AB-APP-B04-3TH-1000, AB-APP-B04-3TH-1000"
The Big -P.01-UP-20-April-26,AB-SUB-B04-3RD-1010,Submittal for Slabs Conc. Dim.  & RFT DWGs As-Built Drawing (B04) (3rd),CON-B04-3RD-1060,CON-B04-3RD-1060: FS,"AB-APP-B04-3TH-1010, AB-APP-B04-3TH-1010"
The Big -P.01-UP-20-April-26,AB-SUB-B04-3RD-1020,Submittal for Beams Conc. Dim.  & RFT DWGs As-Built Drawing (B04) (3rd),CON-B04-3RD-1060,CON-B04-3RD-1060: FS,"AB-APP-B04-3TH-1020, AB-APP-B04-3TH-1020"
The Big -P.01-UP-20-April-26,AB-SUB-B04-3RD-1030,Submittal for Stairs Conc. Dim.  & RFT DWGs As-Built Drawing (B04) (3rd),CON-B04-3RD-1060,CON-B04-3RD-1060: FS,"AB-APP-B04-3TH-1030, AB-APP-B04-3TH-1030"
The Big -P.01-UP-20-April-26,AB-SUB-B03-3RD-1000,Submittal for Col. & Walls Conc. Dim.  & RFT DWGs As-Built Drawing (B03) (3rd),CON-B03-3RD-1030,CON-B03-3RD-1030: FS,"AB-APP-B03-3RD-1000, AB-APP-B03-3RD-1000"
The Big -P.01-UP-20-April-26,AB-SUB-B03-3RD-1010,Submittal for Slabs Conc. Dim.  & RFT DWGs As-Built Drawing (B03) (3rd),CON-B03-3RD-1060,CON-B03-3RD-1060: FS,"AB-APP-B03-3RD-1010, AB-APP-B03-3RD-1010"
The Big -P.01-UP-20-April-26,AB-SUB-B03-3RD-1020,Submittal for Beams Conc. Dim.  & RFT DWGs As-Built Drawing (B03) (3rd),CON-B03-3RD-1060,CON-B03-3RD-1060: FS,"AB-APP-B03-3RD-1020, AB-APP-B03-3RD-1020"
The Big -P.01-UP-20-April-26,AB-SUB-B03-3RD-1030,Submittal for Stairs Conc. Dim.  & RFT DWGs As-Built Drawing (B03) (3rd),CON-B03-3RD-1060,CON-B03-3RD-1060: FS,"AB-APP-B03-3RD-1030, AB-APP-B03-3RD-1030"
The Big -P.01-UP-20-April-26,AB-SUB-B02-3RD-1000,Submittal for Col. & Walls Conc. Dim.  & RFT DWGs As-Built Drawing (B02) (3rd),CON-B02-3RD-1030,CON-B02-3RD-1030: FS,"AB-APP-B02-3RD-1000, AB-APP-B02-3RD-1000"
The Big -P.01-UP-20-April-26,AB-SUB-B02-3RD-1010,Submittal for Slabs Conc. Dim.  & RFT DWGs As-Built Drawing (B02) (3rd),CON-B02-3RD-1060,CON-B02-3RD-1060: FS,"AB-APP-B02-3RD-1010, AB-APP-B02-3RD-1010"
The Big -P.01-UP-20-April-26,AB-SUB-B02-3RD-1020,Submittal for Beams Conc. Dim.  & RFT DWGs As-Built Drawing (B02) (3rd),CON-B02-3RD-1060,CON-B02-3RD-1060: FS,"AB-APP-B02-3RD-1020, AB-APP-B02-3RD-1020"
The Big -P.01-UP-20-April-26,AB-SUB-B02-3RD-1030,Submittal for Stairs Conc. Dim.  & RFT DWGs As-Built Drawing (B02) (3rd),CON-B02-3RD-1060,CON-B02-3RD-1060: FS,"AB-APP-B02-3RD-1030, AB-APP-B02-3RD-1030"
The Big -P.01-UP-20-April-26,AB-SUB-B01-3RD-1000,Submittal for Col. & Walls Conc. Dim.  & RFT DWGs As-Built Drawing (B01) (3rd),CON-B01-3RD-1030,CON-B01-3RD-1030: FS,"AB-APP-B01-3RD-1000, AB-APP-B01-3RD-1000"
The Big -P.01-UP-20-April-26,AB-SUB-B01-3RD-1010,Submittal for Slabs Conc. Dim.  & RFT DWGs As-Built Drawing (B01) (3rd),CON-B01-3RD-1060,CON-B01-3RD-1060: FS,"AB-APP-B01-3RD-1010, AB-APP-B01-3RD-1010"
The Big -P.01-UP-20-April-26,AB-SUB-B01-3RD-1020,Submittal for Beams Conc. Dim.  & RFT DWGs As-Built Drawing (B01) (3rd),CON-B01-3RD-1060,CON-B01-3RD-1060: FS,"AB-APP-B01-3RD-1020, AB-APP-B01-3RD-1020"
The Big -P.01-UP-20-April-26,AB-SUB-B01-3RD-1030,Submittal for Stairs Conc. Dim.  & RFT DWGs As-Built Drawing (B01) (3rd),CON-B01-3RD-1060,CON-B01-3RD-1060: FS,"AB-APP-B01-3RD-1030, AB-APP-B01-3RD-1030"
The Big -P.01-UP-20-April-26,AB-APP-B02-3RD-1000,Approval for Col. & Walls Conc. Dim.  & RFT DWGs As-Built Drawing (B02) (3rd),"AB-SUB-B02-3RD-1000, AB-SUB-B02-3RD-1000","AB-SUB-B02-3RD-1000: SS 12, AB-SUB-B02-3RD-1000: FF 6",HO-1050
The Big -P.01-UP-20-April-26,AB-APP-B02-3RD-1010,Approval for Slabs Conc. Dim.  & RFT DWGs As-Built Drawing (B02) (3rd),"AB-SUB-B02-3RD-1010, AB-SUB-B02-3RD-1010","AB-SUB-B02-3RD-1010: SS 12, AB-SUB-B02-3RD-1010: FF 6",HO-1050
The Big -P.01-UP-20-April-26,AB-APP-B02-3RD-1020,Approval for Beams Conc. Dim.  & RFT DWGs As-Built Drawing (B02) (3rd),"AB-SUB-B02-3RD-1020, AB-SUB-B02-3RD-1020","AB-SUB-B02-3RD-1020: SS 12, AB-SUB-B02-3RD-1020: FF 6",HO-1050
The Big -P.01-UP-20-April-26,AB-APP-B02-3RD-1030,Approval for Stairs Conc. Dim.  & RFT DWGs As-Built Drawing (B02) (3rd),"AB-SUB-B02-3RD-1030, AB-SUB-B02-3RD-1030","AB-SUB-B02-3RD-1030: SS 12, AB-SUB-B02-3RD-1030: FF 6",HO-1050
The Big -P.01-UP-20-April-26,AB-APP-B01-3RD-1000,Approval for Col. & Walls Conc. Dim.  & RFT DWGs As-Built Drawing (B01) (3rd),"AB-SUB-B01-3RD-1000, AB-SUB-B01-3RD-1000","AB-SUB-B01-3RD-1000: SS 12, AB-SUB-B01-3RD-1000: FF 6",HO-1050
The Big -P.01-UP-20-April-26,AB-APP-B01-3RD-1010,Approval for Slabs Conc. Dim.  & RFT DWGs As-Built Drawing (B01) (3rd),"AB-SUB-B01-3RD-1010, AB-SUB-B01-3RD-1010","AB-SUB-B01-3RD-1010: SS 12, AB-SUB-B01-3RD-1010: FF 6",HO-1050
The Big -P.01-UP-20-April-26,AB-APP-B01-3RD-1020,Approval for Beams Conc. Dim.  & RFT DWGs As-Built Drawing (B01) (3rd),"AB-SUB-B01-3RD-1020, AB-SUB-B01-3RD-1020","AB-SUB-B01-3RD-1020: SS 12, AB-SUB-B01-3RD-1020: FF 6",HO-1050
The Big -P.01-UP-20-April-26,AB-APP-B01-3RD-1030,Approval for Stairs Conc. Dim.  & RFT DWGs As-Built Drawing (B01) (3rd),"AB-SUB-B01-3RD-1030, AB-SUB-B01-3RD-1030","AB-SUB-B01-3RD-1030: SS 12, AB-SUB-B01-3RD-1030: FF 6",HO-1050
The Big -P.01-UP-20-April-26,AB-APP-B04-3TH-1000,Approval for Col. & Walls Conc. Dim.  & RFT DWGs As-Built Drawing (B04) (3rd),"AB-SUB-B04-3RD-1000, AB-SUB-B04-3RD-1000","AB-SUB-B04-3RD-1000: SS 12, AB-SUB-B04-3RD-1000: FF 6",HO-1050
The Big -P.01-UP-20-April-26,AB-APP-B04-3TH-1010,Approval for Slabs Conc. Dim.  & RFT DWGs As-Built Drawing (B04) (3rd),"AB-SUB-B04-3RD-1010, AB-SUB-B04-3RD-1010","AB-SUB-B04-3RD-1010: SS 12, AB-SUB-B04-3RD-1010: FF 6",HO-1050
The Big -P.01-UP-20-April-26,AB-APP-B04-3TH-1020,Approval for Beams Conc. Dim.  & RFT DWGs As-Built Drawing (B04) (3rd),"AB-SUB-B04-3RD-1020, AB-SUB-B04-3RD-1020","AB-SUB-B04-3RD-1020: SS 12, AB-SUB-B04-3RD-1020: FF 6",HO-1050
The Big -P.01-UP-20-April-26,AB-APP-B04-3TH-1030,Approval for Stairs Conc. Dim.  & RFT DWGs As-Built Drawing (B04) (3rd),"AB-SUB-B04-3RD-1030, AB-SUB-B04-3RD-1030","AB-SUB-B04-3RD-1030: SS 12, AB-SUB-B04-3RD-1030: FF 6",HO-1050
The Big -P.01-UP-20-April-26,AB-APP-B03-3RD-1000,Approval for Col. & Walls Conc. Dim.  & RFT DWGs As-Built Drawing  (B03) (3rd),"AB-SUB-B03-3RD-1000, AB-SUB-B03-3RD-1000","AB-SUB-B03-3RD-1000: SS 12, AB-SUB-B03-3RD-1000: FF 6",HO-1050
The Big -P.01-UP-20-April-26,AB-APP-B03-3RD-1010,Approval for Slabs Conc. Dim.  & RFT DWGs As-Built Drawing  (B03) (3rd),"AB-SUB-B03-3RD-1010, AB-SUB-B03-3RD-1010","AB-SUB-B03-3RD-1010: SS 12, AB-SUB-B03-3RD-1010: FF 6",HO-1050
The Big -P.01-UP-20-April-26,AB-APP-B03-3RD-1020,Approval for Beams Conc. Dim.  & RFT DWGs As-Built Drawing  (B03) (3rd),"AB-SUB-B03-3RD-1020, AB-SUB-B03-3RD-1020","AB-SUB-B03-3RD-1020: SS 12, AB-SUB-B03-3RD-1020: FF 6",HO-1050
The Big -P.01-UP-20-April-26,AB-APP-B03-3RD-1030,Approval for Stairs Conc. Dim.  & RFT DWGs As-Built Drawing  (B03) (3rd),"AB-SUB-B03-3RD-1030, AB-SUB-B03-3RD-1030","AB-SUB-B03-3RD-1030: SS 12, AB-SUB-B03-3RD-1030: FF 6",HO-1050
The Big -P.01-UP-20-April-26,E-SUB-B04-4TH-1000,Submittal for Col. & Walls Conc. Dim.  & RFT DWGs (B04) (4th),E-DR-1000,E-DR-1000: FS 90,"E-APP-B04-4TH-1000, E-APP-B04-4TH-1000, E-SUB-B04-4TH-1010"
The Big -P.01-UP-20-April-26,E-SUB-B04-4TH-1030,Submittal for Slabs Conc. Dim.  & RFT DWGs (B04) (4th),"E-DR-1000, E-SUB-B04-4TH-1020","E-DR-1000: FS 100, E-SUB-B04-4TH-1020: SS 3","E-APP-B04-4TH-1030, E-APP-B04-4TH-1030"
The Big -P.01-UP-20-April-26,E-SUB-B04-4TH-1020,Submittal for Beams Conc. Dim.  & RFT DWGs (B04) (4th),"E-DR-1000, E-SUB-B04-4TH-1010","E-DR-1000: FS 97, E-SUB-B04-4TH-1010: SS 3","E-APP-B04-4TH-1020, E-APP-B04-4TH-1020, E-SUB-B04-4TH-1030"
The Big -P.01-UP-20-April-26,E-SUB-B04-4TH-1010,Submittal for Stairs Conc. Dim.  & RFT DWGs (B04) (4th),"E-DR-1000, E-SUB-B04-4TH-1000","E-DR-1000: FS 93, E-SUB-B04-4TH-1000: SS 3","E-APP-B04-4TH-1010, E-APP-B04-4TH-1010, E-SUB-B04-4TH-1020"
The Big -P.01-UP-20-April-26,E-SUB-B03-4TH-1000,Submittal for Col. & Walls Conc. Dim.  & RFT DWGs (B03) (4th),E-DR-1000,E-DR-1000: FS 70,"E-APP-B03-4TH-1000, E-APP-B03-4TH-1000, E-SUB-B03-4TH-1010"
The Big -P.01-UP-20-April-26,E-SUB-B03-4TH-1030,Submittal for Slabs Conc. Dim.  & RFT DWGs (B03) (4th),"E-DR-1000, E-SUB-B03-4TH-1020","E-DR-1000: FS 82, E-SUB-B03-4TH-1020: SS 3","E-APP-B03-4TH-1030, E-APP-B03-4TH-1030"
The Big -P.01-UP-20-April-26,E-SUB-B03-4TH-1020,Submittal for Beams Conc. Dim.  & RFT DWGs (B03) (4th),"E-DR-1000, E-SUB-B03-4TH-1010","E-DR-1000: FS 78, E-SUB-B03-4TH-1010: SS 3","E-APP-B03-4TH-1020, E-APP-B03-4TH-1020, E-SUB-B03-4TH-1030"
The Big -P.01-UP-20-April-26,E-SUB-B03-4TH-1010,Submittal for Stairs Conc. Dim.  & RFT DWGs (B03) (4th),"E-DR-1000, E-SUB-B03-4TH-1000","E-DR-1000: FS 73, E-SUB-B03-4TH-1000: SS 3","E-APP-B03-4TH-1010, E-APP-B03-4TH-1010, E-SUB-B03-4TH-1020"
The Big -P.01-UP-20-April-26,E-SUB-B02-4TH-1000,Submittal for Col. & Walls Conc. Dim.  & RFT DWGs (B02) (4th),E-DR-1000,E-DR-1000: FS 80,"E-APP-B02-4TH-1000, E-APP-B02-4TH-1000, E-SUB-B02-4TH-1010"
The Big -P.01-UP-20-April-26,E-SUB-B02-4TH-1030,Submittal for Slabs Conc. Dim.  & RFT DWGs (B02) (4th),"E-DR-1000, E-SUB-B02-4TH-1020","E-DR-1000: FS 91, E-SUB-B02-4TH-1020: SS 3","E-APP-B02-4TH-1030, E-APP-B02-4TH-1030"
The Big -P.01-UP-20-April-26,E-SUB-B02-4TH-1020,Submittal for Beams Conc. Dim.  & RFT DWGs (B02) (4th),"E-DR-1000, E-SUB-B02-4TH-1010","E-DR-1000: FS 87, E-SUB-B02-4TH-1010: SS 3","E-APP-B02-4TH-1020, E-APP-B02-4TH-1020, E-SUB-B02-4TH-1030"
The Big -P.01-UP-20-April-26,E-SUB-B02-4TH-1010,Submittal for Stairs Conc. Dim.  & RFT DWGs (B02) (4th),"E-DR-1000, E-SUB-B02-4TH-1000","E-DR-1000: FS 84, E-SUB-B02-4TH-1000: SS 3","E-APP-B02-4TH-1010, E-APP-B02-4TH-1010, E-SUB-B02-4TH-1020"
The Big -P.01-UP-20-April-26,E-SUB-B01-4TH-1000,Submittal for Col. & Walls Conc. Dim.  & RFT DWGs (B01) (4th),E-DR-1000,E-DR-1000: FS 65,"E-APP-B01-4TH-1000, E-APP-B01-4TH-1000, E-SUB-B01-4TH-1010"
The Big -P.01-UP-20-April-26,E-SUB-B01-4TH-1030,Submittal for Slabs Conc. Dim.  & RFT DWGs (B01) (4th),"E-DR-1000, E-SUB-B01-4TH-1020","E-DR-1000: FS 77, E-SUB-B01-4TH-1020: SS 3","E-APP-B01-4TH-1030, E-APP-B01-4TH-1030"
The Big -P.01-UP-20-April-26,E-SUB-B01-4TH-1020,Submittal for Beams Conc. Dim.  & RFT DWGs (B01) (4th),"E-DR-1000, E-SUB-B01-4TH-1010","E-DR-1000: FS 72, E-SUB-B01-4TH-1010: SS 3","E-APP-B01-4TH-1020, E-APP-B01-4TH-1020, E-SUB-B01-4TH-1030"
The Big -P.01-UP-20-April-26,E-SUB-B01-4TH-1010,Submittal for Stairs Conc. Dim.  & RFT DWGs (B01) (4th),"E-DR-1000, E-SUB-B01-4TH-1000","E-DR-1000: FS 69, E-SUB-B01-4TH-1000: SS 3","E-APP-B01-4TH-1010, E-APP-B01-4TH-1010, E-SUB-B01-4TH-1020"
The Big -P.01-UP-20-April-26,E-APP-B02-4TH-1000,Approval for Col. & Walls Conc. Dim.  & RFT DWGs (B02) (4th),"E-SUB-B02-4TH-1000, E-SUB-B02-4TH-1000","E-SUB-B02-4TH-1000: SS 12, E-SUB-B02-4TH-1000: FF 10","CON-B02-4TH-1010, CON-B02-4TH-1020"
The Big -P.01-UP-20-April-26,E-APP-B02-4TH-1030,Approval for Slabs Conc. Dim.  & RFT DWGs (B02) (4th),"E-SUB-B02-4TH-1030, E-SUB-B02-4TH-1030","E-SUB-B02-4TH-1030: SS 12, E-SUB-B02-4TH-1030: FF 10","CON-B02-4TH-1040, CON-B02-4TH-1050"
The Big -P.01-UP-20-April-26,E-APP-B02-4TH-1020,Approval for Beams Conc. Dim.  & RFT DWGs (B02) (4th),"E-SUB-B02-4TH-1020, E-SUB-B02-4TH-1020","E-SUB-B02-4TH-1020: SS 12, E-SUB-B02-4TH-1020: FF 10","CON-B02-4TH-1040, CON-B02-4TH-1050"
The Big -P.01-UP-20-April-26,E-APP-B02-4TH-1010,Approval for Stairs Conc. Dim.  & RFT DWGs (B02) (4th),"E-SUB-B02-4TH-1010, E-SUB-B02-4TH-1010","E-SUB-B02-4TH-1010: SS 12, E-SUB-B02-4TH-1010: FF 10","CON-B02-4TH-1040, CON-B02-4TH-1050"
The Big -P.01-UP-20-April-26,E-APP-B01-4TH-1000,Approval for Col. & Walls Conc. Dim.  & RFT DWGs (B01) (4th),"E-SUB-B01-4TH-1000, E-SUB-B01-4TH-1000","E-SUB-B01-4TH-1000: SS 12, E-SUB-B01-4TH-1000: FF 10","CON-B01-4TH-1010, CON-B01-4TH-1020"
The Big -P.01-UP-20-April-26,E-APP-B01-4TH-1030,Approval for Slabs Conc. Dim.  & RFT DWGs (B01) (4th),"E-SUB-B01-4TH-1030, E-SUB-B01-4TH-1030","E-SUB-B01-4TH-1030: SS 12, E-SUB-B01-4TH-1030: FF 10","CON-B01-4TH-1040, CON-B01-4TH-1010"
The Big -P.01-UP-20-April-26,E-APP-B01-4TH-1020,Approval for Beams Conc. Dim.  & RFT DWGs (B01) (4th),"E-SUB-B01-4TH-1020, E-SUB-B01-4TH-1020","E-SUB-B01-4TH-1020: SS 12, E-SUB-B01-4TH-1020: FF 10","CON-B01-4TH-1040, CON-B01-4TH-1010"
The Big -P.01-UP-20-April-26,E-APP-B01-4TH-1010,Approval for Stairs Conc. Dim.  & RFT DWGs (B01) (4th),"E-SUB-B01-4TH-1010, E-SUB-B01-4TH-1010","E-SUB-B01-4TH-1010: SS 12, E-SUB-B01-4TH-1010: FF 10","CON-B01-4TH-1040, CON-B01-4TH-1010"
The Big -P.01-UP-20-April-26,E-APP-B04-4TH-1000,Approval for Col. & Walls Conc. Dim.  & RFT DWGs (B04) (4th),"E-SUB-B04-4TH-1000, E-SUB-B04-4TH-1000","E-SUB-B04-4TH-1000: SS 12, E-SUB-B04-4TH-1000: FF 10","CON-B04-4TH-1010, CON-B04-4TH-1020"
The Big -P.01-UP-20-April-26,E-APP-B04-4TH-1030,Approval for Slabs Conc. Dim.  & RFT DWGs (B04) (4th),"E-SUB-B04-4TH-1030, E-SUB-B04-4TH-1030","E-SUB-B04-4TH-1030: SS 12, E-SUB-B04-4TH-1030: FF 10","CON-B04-4TH-1040, CON-B04-4TH-1050"
The Big -P.01-UP-20-April-26,E-APP-B04-4TH-1020,Approval for Beams Conc. Dim.  & RFT DWGs (B04) (4th),"E-SUB-B04-4TH-1020, E-SUB-B04-4TH-1020","E-SUB-B04-4TH-1020: SS 12, E-SUB-B04-4TH-1020: FF 10","CON-B04-4TH-1040, CON-B04-4TH-1050"
The Big -P.01-UP-20-April-26,E-APP-B04-4TH-1010,Approval for Stairs Conc. Dim.  & RFT DWGs (B04) (4th),"E-SUB-B04-4TH-1010, E-SUB-B04-4TH-1010","E-SUB-B04-4TH-1010: SS 12, E-SUB-B04-4TH-1010: FF 10","CON-B04-4TH-1040, CON-B04-4TH-1050"
The Big -P.01-UP-20-April-26,E-APP-B03-4TH-1000,Approval for Col. & Walls Conc. Dim.  & RFT DWGs  (B03) (4th),"E-SUB-B03-4TH-1000, E-SUB-B03-4TH-1000","E-SUB-B03-4TH-1000: SS 12, E-SUB-B03-4TH-1000: FF 10","CON-B03-4TH-1010, CON-B03-4TH-1020"
The Big -P.01-UP-20-April-26,E-APP-B03-4TH-1030,Approval for Slabs Conc. Dim.  & RFT DWGs  (B03) (4th),"E-SUB-B03-4TH-1030, E-SUB-B03-4TH-1030","E-SUB-B03-4TH-1030: SS 12, E-SUB-B03-4TH-1030: FF 10","CON-B03-4TH-1040, CON-B03-4TH-1050"
The Big -P.01-UP-20-April-26,E-APP-B03-4TH-1020,Approval for Beams Conc. Dim.  & RFT DWGs  (B03) (4th),"E-SUB-B03-4TH-1020, E-SUB-B03-4TH-1020","E-SUB-B03-4TH-1020: SS 12, E-SUB-B03-4TH-1020: FF 10","CON-B03-4TH-1040, CON-B03-4TH-1050"
The Big -P.01-UP-20-April-26,E-APP-B03-4TH-1010,Approval for Stairs Conc. Dim.  & RFT DWGs  (B03) (4th),"E-SUB-B03-4TH-1010, E-SUB-B03-4TH-1010","E-SUB-B03-4TH-1010: SS 12, E-SUB-B03-4TH-1010: FF 10","CON-B03-4TH-1040, CON-B03-4TH-1050"
The Big -P.01-UP-20-April-26,AB-SUB-B04-4TH-1000,Submittal for Col. & Walls Conc. Dim.  & RFT DWGs As-Built Drawing (B04) (4th),CON-B04-4TH-1030,CON-B04-4TH-1030: FS,"AB-APP-B04-4TH-1000, AB-APP-B04-4TH-1000"
The Big -P.01-UP-20-April-26,AB-SUB-B04-4TH-1010,Submittal for Slabs Conc. Dim.  & RFT DWGs As-Built Drawing (B04) (4th),CON-B04-4TH-1060,CON-B04-4TH-1060: FS,"AB-APP-B04-4TH-1010, AB-APP-B04-4TH-1010"
The Big -P.01-UP-20-April-26,AB-SUB-B04-4TH-1020,Submittal for Beams Conc. Dim.  & RFT DWGs As-Built Drawing (B04) (4th),CON-B04-4TH-1060,CON-B04-4TH-1060: FS,"AB-APP-B04-4TH-1020, AB-APP-B04-4TH-1020"
The Big -P.01-UP-20-April-26,AB-SUB-B04-4TH-1030,Submittal for Stairs Conc. Dim.  & RFT DWGs As-Built Drawing (B04) (4th),CON-B04-4TH-1060,CON-B04-4TH-1060: FS,"AB-APP-B04-4TH-1030, AB-APP-B04-4TH-1030"
The Big -P.01-UP-20-April-26,AB-SUB-B03-4TH-1000,Submittal for Col. & Walls Conc. Dim.  & RFT DWGs As-Built Drawing (B03) (4th),CON-B03-4TH-1030,CON-B03-4TH-1030: FS,"AB-APP-B03-4TH-1000, AB-APP-B03-4TH-1000"
The Big -P.01-UP-20-April-26,AB-SUB-B03-4TH-1010,Submittal for Slabs Conc. Dim.  & RFT DWGs As-Built Drawing (B03) (4th),CON-B03-4TH-1060,CON-B03-4TH-1060: FS,"AB-APP-B03-4TH-1010, AB-APP-B03-4TH-1010"
The Big -P.01-UP-20-April-26,AB-SUB-B03-4TH-1020,Submittal for Beams Conc. Dim.  & RFT DWGs As-Built Drawing (B03) (4th),CON-B03-4TH-1060,CON-B03-4TH-1060: FS,"AB-APP-B03-4TH-1020, AB-APP-B03-4TH-1020"
The Big -P.01-UP-20-April-26,AB-SUB-B03-4TH-1030,Submittal for Stairs Conc. Dim.  & RFT DWGs As-Built Drawing (B03) (4th),CON-B03-4TH-1060,CON-B03-4TH-1060: FS,"AB-APP-B03-4TH-1030, AB-APP-B03-4TH-1030"
The Big -P.01-UP-20-April-26,AB-SUB-B02-4TH-1000,Submittal for Col. & Walls Conc. Dim.  & RFT DWGs As-Built Drawing (B02) (4th),CON-B02-4TH-1030,CON-B02-4TH-1030: FS,"AB-APP-B02-4TH-1000, AB-APP-B02-4TH-1000"
The Big -P.01-UP-20-April-26,AB-SUB-B02-4TH-1010,Submittal for Slabs Conc. Dim.  & RFT DWGs As-Built Drawing (B02) (4th),CON-B02-4TH-1060,CON-B02-4TH-1060: FS,"AB-APP-B02-4TH-1010, AB-APP-B02-4TH-1010"
The Big -P.01-UP-20-April-26,AB-SUB-B02-4TH-1020,Submittal for Beams Conc. Dim.  & RFT DWGs As-Built Drawing (B02) (4th),CON-B02-4TH-1060,CON-B02-4TH-1060: FS,"AB-APP-B02-4TH-1020, AB-APP-B02-4TH-1020"
The Big -P.01-UP-20-April-26,AB-SUB-B02-4TH-1030,Submittal for Stairs Conc. Dim.  & RFT DWGs As-Built Drawing (B02) (4th),CON-B02-4TH-1060,CON-B02-4TH-1060: FS,"AB-APP-B02-4TH-1030, AB-APP-B02-4TH-1030"
The Big -P.01-UP-20-April-26,AB-SUB-B01-4TH-1000,Submittal for Col. & Walls Conc. Dim.  & RFT DWGs As-Built Drawing (B01) (4th),CON-B01-4TH-1030,CON-B01-4TH-1030: FS,"AB-APP-B01-4TH-1000, AB-APP-B01-4TH-1000"
The Big -P.01-UP-20-April-26,AB-SUB-B01-4TH-1010,Submittal for Slabs Conc. Dim.  & RFT DWGs As-Built Drawing (B01) (4th),CON-B01-4TH-1060,CON-B01-4TH-1060: FS,"AB-APP-B01-4TH-1010, AB-APP-B01-4TH-1010"
The Big -P.01-UP-20-April-26,AB-SUB-B01-4TH-1020,Submittal for Beams Conc. Dim.  & RFT DWGs As-Built Drawing (B01) (4th),CON-B01-4TH-1060,CON-B01-4TH-1060: FS,"AB-APP-B01-4TH-1020, AB-APP-B01-4TH-1020"
The Big -P.01-UP-20-April-26,AB-SUB-B01-4TH-1030,Submittal for Stairs Conc. Dim.  & RFT DWGs As-Built Drawing (B01) (4th),CON-B01-4TH-1060,CON-B01-4TH-1060: FS,"AB-APP-B01-4TH-1030, AB-APP-B01-4TH-1030"
The Big -P.01-UP-20-April-26,AB-APP-B02-4TH-1000,Approval for Col. & Walls Conc. Dim.  & RFT DWGs As-Built Drawing (B02) (4th),"AB-SUB-B02-4TH-1000, AB-SUB-B02-4TH-1000","AB-SUB-B02-4TH-1000: SS 12, AB-SUB-B02-4TH-1000: FF 6",HO-1050
The Big -P.01-UP-20-April-26,AB-APP-B02-4TH-1010,Approval for Slabs Conc. Dim.  & RFT DWGs As-Built Drawing (B02) (4th),"AB-SUB-B02-4TH-1010, AB-SUB-B02-4TH-1010","AB-SUB-B02-4TH-1010: SS 12, AB-SUB-B02-4TH-1010: FF 6",HO-1050
The Big -P.01-UP-20-April-26,AB-APP-B02-4TH-1020,Approval for Beams Conc. Dim.  & RFT DWGs As-Built Drawing (B02) (4th),"AB-SUB-B02-4TH-1020, AB-SUB-B02-4TH-1020","AB-SUB-B02-4TH-1020: SS 12, AB-SUB-B02-4TH-1020: FF 6",HO-1050
The Big -P.01-UP-20-April-26,AB-APP-B02-4TH-1030,Approval for Stairs Conc. Dim.  & RFT DWGs As-Built Drawing (B02) (4th),"AB-SUB-B02-4TH-1030, AB-SUB-B02-4TH-1030","AB-SUB-B02-4TH-1030: SS 12, AB-SUB-B02-4TH-1030: FF 6",HO-1050
The Big -P.01-UP-20-April-26,AB-APP-B01-4TH-1000,Approval for Col. & Walls Conc. Dim.  & RFT DWGs As-Built Drawing (B01) (4th),"AB-SUB-B01-4TH-1000, AB-SUB-B01-4TH-1000","AB-SUB-B01-4TH-1000: SS 12, AB-SUB-B01-4TH-1000: FF 6",HO-1050
The Big -P.01-UP-20-April-26,AB-APP-B01-4TH-1010,Approval for Slabs Conc. Dim.  & RFT DWGs As-Built Drawing (B01) (4th),"AB-SUB-B01-4TH-1010, AB-SUB-B01-4TH-1010","AB-SUB-B01-4TH-1010: SS 12, AB-SUB-B01-4TH-1010: FF 6",HO-1050
The Big -P.01-UP-20-April-26,AB-APP-B01-4TH-1020,Approval for Beams Conc. Dim.  & RFT DWGs As-Built Drawing (B01) (4th),"AB-SUB-B01-4TH-1020, AB-SUB-B01-4TH-1020","AB-SUB-B01-4TH-1020: SS 12, AB-SUB-B01-4TH-1020: FF 6",HO-1050
The Big -P.01-UP-20-April-26,AB-APP-B01-4TH-1030,Approval for Stairs Conc. Dim.  & RFT DWGs As-Built Drawing (B01) (4th),"AB-SUB-B01-4TH-1030, AB-SUB-B01-4TH-1030","AB-SUB-B01-4TH-1030: SS 12, AB-SUB-B01-4TH-1030: FF 6",HO-1050
The Big -P.01-UP-20-April-26,AB-APP-B04-4TH-1000,Approval for Col. & Walls Conc. Dim.  & RFT DWGs As-Built Drawing (B04) (4th),"AB-SUB-B04-4TH-1000, AB-SUB-B04-4TH-1000","AB-SUB-B04-4TH-1000: SS 12, AB-SUB-B04-4TH-1000: FF 6",HO-1050
The Big -P.01-UP-20-April-26,AB-APP-B04-4TH-1010,Approval for Slabs Conc. Dim.  & RFT DWGs As-Built Drawing (B04) (4th),"AB-SUB-B04-4TH-1010, AB-SUB-B04-4TH-1010","AB-SUB-B04-4TH-1010: SS 12, AB-SUB-B04-4TH-1010: FF 6",HO-1050
The Big -P.01-UP-20-April-26,AB-APP-B04-4TH-1020,Approval for Beams Conc. Dim.  & RFT DWGs As-Built Drawing (B04) (4th),"AB-SUB-B04-4TH-1020, AB-SUB-B04-4TH-1020","AB-SUB-B04-4TH-1020: SS 12, AB-SUB-B04-4TH-1020: FF 6",HO-1050
The Big -P.01-UP-20-April-26,AB-APP-B04-4TH-1030,Approval for Stairs Conc. Dim.  & RFT DWGs As-Built Drawing (B04) (4th),"AB-SUB-B04-4TH-1030, AB-SUB-B04-4TH-1030","AB-SUB-B04-4TH-1030: SS 12, AB-SUB-B04-4TH-1030: FF 6",HO-1050
The Big -P.01-UP-20-April-26,AB-APP-B03-4TH-1000,Approval for Col. & Walls Conc. Dim.  & RFT DWGs As-Built Drawing  (B03) (4th),"AB-SUB-B03-4TH-1000, AB-SUB-B03-4TH-1000","AB-SUB-B03-4TH-1000: SS 12, AB-SUB-B03-4TH-1000: FF 6",HO-1050
The Big -P.01-UP-20-April-26,AB-APP-B03-4TH-1010,Approval for Slabs Conc. Dim.  & RFT DWGs As-Built Drawing  (B03) (4th),"AB-SUB-B03-4TH-1010, AB-SUB-B03-4TH-1010","AB-SUB-B03-4TH-1010: SS 12, AB-SUB-B03-4TH-1010: FF 6",HO-1050
The Big -P.01-UP-20-April-26,AB-APP-B03-4TH-1020,Approval for Beams Conc. Dim.  & RFT DWGs As-Built Drawing  (B03) (4th),"AB-SUB-B03-4TH-1020, AB-SUB-B03-4TH-1020","AB-SUB-B03-4TH-1020: SS 12, AB-SUB-B03-4TH-1020: FF 6",HO-1050
The Big -P.01-UP-20-April-26,AB-APP-B03-4TH-1030,Approval for Stairs Conc. Dim.  & RFT DWGs As-Built Drawing  (B03) (4th),"AB-SUB-B03-4TH-1030, AB-SUB-B03-4TH-1030","AB-SUB-B03-4TH-1030: SS 12, AB-SUB-B03-4TH-1030: FF 6",HO-1050
The Big -P.01-UP-20-April-26,E-SUB-B04-5TH-1000,Submittal for Col. & Walls Conc. Dim.  & RFT DWGs (B04) (5th),E-DR-1000,E-DR-1000: FS 110,"E-APP-B04-5TH-1000, E-APP-B04-5TH-1000, E-SUB-B04-5TH-1010"
The Big -P.01-UP-20-April-26,E-SUB-B04-5TH-1030,Submittal for Slabs Conc. Dim.  & RFT DWGs (B04) (5th),"E-DR-1000, E-SUB-B04-5TH-1020","E-DR-1000: FS 120, E-SUB-B04-5TH-1020: SS 3","E-APP-B04-5TH-1030, E-APP-B04-5TH-1030"
The Big -P.01-UP-20-April-26,E-SUB-B04-5TH-1020,Submittal for Beams Conc. Dim.  & RFT DWGs (B04) (5th),"E-DR-1000, E-SUB-B04-5TH-1010","E-DR-1000: FS 117, E-SUB-B04-5TH-1010: SS 3","E-APP-B04-5TH-1020, E-APP-B04-5TH-1020, E-SUB-B04-5TH-1030"
The Big -P.01-UP-20-April-26,E-SUB-B04-5TH-1010,Submittal for Stairs Conc. Dim.  & RFT DWGs (B04) (5th),"E-DR-1000, E-SUB-B04-5TH-1000","E-DR-1000: FS 113, E-SUB-B04-5TH-1000: SS 3","E-APP-B04-5TH-1010, E-APP-B04-5TH-1010, E-SUB-B04-5TH-1020"
The Big -P.01-UP-20-April-26,E-SUB-B01-5TH-1000,Submittal for Col. & Walls Conc. Dim.  & RFT DWGs (B01) (5th),E-DR-1000,E-DR-1000: FS 75,"E-APP-B01-5TH-1000, E-APP-B01-5TH-1000, E-SUB-B01-5TH-1010"
The Big -P.01-UP-20-April-26,E-SUB-B01-5TH-1030,Submittal for Slabs Conc. Dim.  & RFT DWGs (B01) (5th),"E-DR-1000, E-SUB-B01-5TH-1020","E-DR-1000: FS 86, E-SUB-B01-5TH-1020: SS 3","E-APP-B01-5TH-1030, E-APP-B01-5TH-1030"
The Big -P.01-UP-20-April-26,E-SUB-B01-5TH-1020,Submittal for Beams Conc. Dim.  & RFT DWGs (B01) (5th),"E-DR-1000, E-SUB-B01-5TH-1010","E-DR-1000: FS 83, E-SUB-B01-5TH-1010: SS 3","E-APP-B01-5TH-1020, E-APP-B01-5TH-1020, E-SUB-B01-5TH-1030"
The Big -P.01-UP-20-April-26,E-SUB-B01-5TH-1010,Submittal for Stairs Conc. Dim.  & RFT DWGs (B01) (5th),"E-DR-1000, E-SUB-B01-5TH-1000","E-DR-1000: FS 79, E-SUB-B01-5TH-1000: SS 3","E-APP-B01-5TH-1010, E-APP-B01-5TH-1010, E-SUB-B01-5TH-1020"
The Big -P.01-UP-20-April-26,E-APP-B01-5TH-1000,Approval for Col. & Walls Conc. Dim.  & RFT DWGs (B01) (5th),"E-SUB-B01-5TH-1000, E-SUB-B01-5TH-1000","E-SUB-B01-5TH-1000: SS 12, E-SUB-B01-5TH-1000: FF 10","CON-B01-5TH-1010, CON-B01-5TH-1020"
The Big -P.01-UP-20-April-26,E-APP-B01-5TH-1030,Approval for Slabs Conc. Dim.  & RFT DWGs (B01) (5th),"E-SUB-B01-5TH-1030, E-SUB-B01-5TH-1030","E-SUB-B01-5TH-1030: SS 12, E-SUB-B01-5TH-1030: FF 10","CON-B01-5TH-1040, CON-B01-5TH-1050"
The Big -P.01-UP-20-April-26,E-APP-B01-5TH-1020,Approval for Beams Conc. Dim.  & RFT DWGs (B01) (5th),"E-SUB-B01-5TH-1020, E-SUB-B01-5TH-1020","E-SUB-B01-5TH-1020: SS 12, E-SUB-B01-5TH-1020: FF 10","CON-B01-5TH-1040, CON-B01-5TH-1050"
The Big -P.01-UP-20-April-26,E-APP-B01-5TH-1010,Approval for Stairs Conc. Dim.  & RFT DWGs (B01) (5th),"E-SUB-B01-5TH-1010, E-SUB-B01-5TH-1010","E-SUB-B01-5TH-1010: SS 12, E-SUB-B01-5TH-1010: FF 10","CON-B01-5TH-1040, CON-B01-5TH-1050"
The Big -P.01-UP-20-April-26,E-APP-B04-5TH-1000,Approval for Col. & Walls Conc. Dim.  & RFT DWGs (B04) (5th),"E-SUB-B04-5TH-1000, E-SUB-B04-5TH-1000","E-SUB-B04-5TH-1000: SS 12, E-SUB-B04-5TH-1000: FF 10","CON-B04-5TH-1010, CON-B04-5TH-1020"
The Big -P.01-UP-20-April-26,E-APP-B04-5TH-1030,Approval for Slabs Conc. Dim.  & RFT DWGs (B04) (5th),"E-SUB-B04-5TH-1030, E-SUB-B04-5TH-1030","E-SUB-B04-5TH-1030: SS 12, E-SUB-B04-5TH-1030: FF 10","CON-B04-5TH-1040, CON-B04-5TH-1050"
The Big -P.01-UP-20-April-26,E-APP-B04-5TH-1020,Approval for Beams Conc. Dim.  & RFT DWGs (B04) (5th),"E-SUB-B04-5TH-1020, E-SUB-B04-5TH-1020","E-SUB-B04-5TH-1020: SS 12, E-SUB-B04-5TH-1020: FF 10","CON-B04-5TH-1040, CON-B04-5TH-1050"
The Big -P.01-UP-20-April-26,E-APP-B04-5TH-1010,Approval for Stairs Conc. Dim.  & RFT DWGs (B04) (5th),"E-SUB-B04-5TH-1010, E-SUB-B04-5TH-1010","E-SUB-B04-5TH-1010: SS 12, E-SUB-B04-5TH-1010: FF 10","CON-B04-5TH-1040, CON-B04-5TH-1050"
The Big -P.01-UP-20-April-26,AB-SUB-B04-5TH-1000,Submittal for Col. & Walls Conc. Dim.  & RFT DWGs As-Built Drawing (B04) (5th),CON-B04-5TH-1030,CON-B04-5TH-1030: FS,"AB-APP-B04-5TH-1000, AB-APP-B04-5TH-1000"
The Big -P.01-UP-20-April-26,AB-SUB-B04-5TH-1010,Submittal for Slabs Conc. Dim.  & RFT DWGs As-Built Drawing (B04) (5th),CON-B04-5TH-1060,CON-B04-5TH-1060: FS,"AB-APP-B04-5TH-1010, AB-APP-B04-5TH-1010"
The Big -P.01-UP-20-April-26,AB-SUB-B04-5TH-1020,Submittal for Beams Conc. Dim.  & RFT DWGs As-Built Drawing (B04) (5th),CON-B04-5TH-1060,CON-B04-5TH-1060: FS,"AB-APP-B04-5TH-1020, AB-APP-B04-5TH-1020"
The Big -P.01-UP-20-April-26,AB-SUB-B04-5TH-1030,Submittal for Stairs Conc. Dim.  & RFT DWGs As-Built Drawing (B04) (5th),CON-B04-5TH-1060,CON-B04-5TH-1060: FS,"AB-APP-B04-5TH-1030, AB-APP-B04-5TH-1030"
The Big -P.01-UP-20-April-26,AB-SUB-B01-5TH-1000,Submittal for Col. & Walls Conc. Dim.  & RFT DWGs As-Built Drawing (B01) (5th),CON-B01-5TH-1030,CON-B01-5TH-1030: FS,"AB-APP-B01-5TH-1000, AB-APP-B01-5TH-1000"
The Big -P.01-UP-20-April-26,AB-SUB-B01-5TH-1010,Submittal for Slabs Conc. Dim.  & RFT DWGs As-Built Drawing (B01) (5th),CON-B01-5TH-1060,CON-B01-5TH-1060: FS,"AB-APP-B01-5TH-1010, AB-APP-B01-5TH-1010"
The Big -P.01-UP-20-April-26,AB-SUB-B01-5TH-1020,Submittal for Beams Conc. Dim.  & RFT DWGs As-Built Drawing (B01) (5th),CON-B01-5TH-1060,CON-B01-5TH-1060: FS,"AB-APP-B01-5TH-1020, AB-APP-B01-5TH-1020"
The Big -P.01-UP-20-April-26,AB-SUB-B01-5TH-1030,Submittal for Stairs Conc. Dim.  & RFT DWGs As-Built Drawing (B01) (5th),CON-B01-5TH-1060,CON-B01-5TH-1060: FS,"AB-APP-B01-5TH-1030, AB-APP-B01-5TH-1030"
The Big -P.01-UP-20-April-26,AB-APP-B01-5TH-1000,Approval for Col. & Walls Conc. Dim.  & RFT DWGs As-Built Drawing (B01) (5th),"AB-SUB-B01-5TH-1000, AB-SUB-B01-5TH-1000","AB-SUB-B01-5TH-1000: SS 12, AB-SUB-B01-5TH-1000: FF 6",HO-1050
The Big -P.01-UP-20-April-26,AB-APP-B01-5TH-1010,Approval for Slabs Conc. Dim.  & RFT DWGs As-Built Drawing (B01) (5th),"AB-SUB-B01-5TH-1010, AB-SUB-B01-5TH-1010","AB-SUB-B01-5TH-1010: SS 12, AB-SUB-B01-5TH-1010: FF 6",HO-1050
The Big -P.01-UP-20-April-26,AB-APP-B01-5TH-1020,Approval for Beams Conc. Dim.  & RFT DWGs As-Built Drawing (B01) (5th),"AB-SUB-B01-5TH-1020, AB-SUB-B01-5TH-1020","AB-SUB-B01-5TH-1020: SS 12, AB-SUB-B01-5TH-1020: FF 6",HO-1050
The Big -P.01-UP-20-April-26,AB-APP-B01-5TH-1030,Approval for Stairs Conc. Dim.  & RFT DWGs As-Built Drawing (B01) (5th),"AB-SUB-B01-5TH-1030, AB-SUB-B01-5TH-1030","AB-SUB-B01-5TH-1030: SS 12, AB-SUB-B01-5TH-1030: FF 6",HO-1050
The Big -P.01-UP-20-April-26,AB-APP-B04-5TH-1000,Approval for Col. & Walls Conc. Dim.  & RFT DWGs As-Built Drawing (B04) (5th),"AB-SUB-B04-5TH-1000, AB-SUB-B04-5TH-1000","AB-SUB-B04-5TH-1000: SS 12, AB-SUB-B04-5TH-1000: FF 6",HO-1050
The Big -P.01-UP-20-April-26,AB-APP-B04-5TH-1010,Approval for Slabs Conc. Dim.  & RFT DWGs As-Built Drawing (B04) (5th),"AB-SUB-B04-5TH-1010, AB-SUB-B04-5TH-1010","AB-SUB-B04-5TH-1010: SS 12, AB-SUB-B04-5TH-1010: FF 6",HO-1050
The Big -P.01-UP-20-April-26,AB-APP-B04-5TH-1020,Approval for Beams Conc. Dim.  & RFT DWGs As-Built Drawing (B04) (5th),"AB-SUB-B04-5TH-1020, AB-SUB-B04-5TH-1020","AB-SUB-B04-5TH-1020: SS 12, AB-SUB-B04-5TH-1020: FF 6",HO-1050
The Big -P.01-UP-20-April-26,AB-APP-B04-5TH-1030,Approval for Stairs Conc. Dim.  & RFT DWGs As-Built Drawing (B04) (5th),"AB-SUB-B04-5TH-1030, AB-SUB-B04-5TH-1030","AB-SUB-B04-5TH-1030: SS 12, AB-SUB-B04-5TH-1030: FF 6",HO-1050
The Big -P.01-UP-20-April-26,E-SUB-B04-6TH-1000,Submittal for Col. & Walls Conc. Dim.  & RFT DWGs (B04) (6th),E-DR-1000,E-DR-1000: FS 125,"E-APP-B04-6TH-1000, E-APP-B04-6TH-1000, E-SUB-B04-6TH-1010"
The Big -P.01-UP-20-April-26,E-SUB-B04-6TH-1030,Submittal for Slabs Conc. Dim.  & RFT DWGs (B04) (6th),"E-DR-1000, E-SUB-B04-6TH-1020","E-DR-1000: FS 140, E-SUB-B04-6TH-1020: SS 3","E-APP-B04-6TH-1030, E-APP-B04-6TH-1030"
The Big -P.01-UP-20-April-26,E-SUB-B04-6TH-1020,Submittal for Beams Conc. Dim.  & RFT DWGs (B04) (6th),"E-DR-1000, E-SUB-B04-6TH-1010","E-DR-1000: FS 136, E-SUB-B04-6TH-1010: SS 3","E-APP-B04-6TH-1020, E-APP-B04-6TH-1020, E-SUB-B04-6TH-1030"
The Big -P.01-UP-20-April-26,E-SUB-B04-6TH-1010,Submittal for Stairs Conc. Dim.  & RFT DWGs (B04) (6th),"E-DR-1000, E-SUB-B04-6TH-1000","E-DR-1000: FS 133, E-SUB-B04-6TH-1000: SS 3","E-APP-B04-6TH-1010, E-APP-B04-6TH-1010, E-SUB-B04-6TH-1020"
The Big -P.01-UP-20-April-26,E-SUB-B01-6TH-1000,Submittal for Col. & Walls Conc. Dim.  & RFT DWGs (B01) (6th),E-DR-1000,E-DR-1000: FS 85,"E-APP-B01-6TH-1000, E-APP-B01-6TH-1000, E-SUB-B01-6TH-1010"
The Big -P.01-UP-20-April-26,E-SUB-B01-6TH-1030,Submittal for Slabs Conc. Dim.  & RFT DWGs (B01) (6th),"E-DR-1000, E-SUB-B01-6TH-1020","E-DR-1000: FS 96, E-SUB-B01-6TH-1020: SS 3","E-APP-B01-6TH-1030, E-APP-B01-6TH-1030"
The Big -P.01-UP-20-April-26,E-SUB-B01-6TH-1020,Submittal for Beams Conc. Dim.  & RFT DWGs (B01) (6th),"E-DR-1000, E-SUB-B01-6TH-1010","E-DR-1000: FS 92, E-SUB-B01-6TH-1010: SS 3","E-APP-B01-6TH-1020, E-APP-B01-6TH-1020, E-SUB-B01-6TH-1030"
The Big -P.01-UP-20-April-26,E-SUB-B01-6TH-1010,Submittal for Stairs Conc. Dim.  & RFT DWGs (B01) (6th),"E-DR-1000, E-SUB-B01-6TH-1000","E-DR-1000: FS 89, E-SUB-B01-6TH-1000: SS 3","E-APP-B01-6TH-1010, E-APP-B01-6TH-1010, E-SUB-B01-6TH-1020"
The Big -P.01-UP-20-April-26,E-APP-B01-6TH-1000,Approval for Col. & Walls Conc. Dim.  & RFT DWGs (B01) (6th),"E-SUB-B01-6TH-1000, E-SUB-B01-6TH-1000","E-SUB-B01-6TH-1000: SS 12, E-SUB-B01-6TH-1000: FF 10","CON-B01-6TH-1010, CON-B01-6TH-1020"
The Big -P.01-UP-20-April-26,E-APP-B01-6TH-1030,Approval for Slabs Conc. Dim.  & RFT DWGs (B01) (6th),"E-SUB-B01-6TH-1030, E-SUB-B01-6TH-1030","E-SUB-B01-6TH-1030: SS 12, E-SUB-B01-6TH-1030: FF 10","CON-B01-6TH-1040, CON-B01-6TH-1050"
The Big -P.01-UP-20-April-26,E-APP-B01-6TH-1020,Approval for Beams Conc. Dim.  & RFT DWGs (B01) (6th),"E-SUB-B01-6TH-1020, E-SUB-B01-6TH-1020","E-SUB-B01-6TH-1020: SS 12, E-SUB-B01-6TH-1020: FF 10","CON-B01-6TH-1040, CON-B01-6TH-1050"
The Big -P.01-UP-20-April-26,E-APP-B01-6TH-1010,Approval for Stairs Conc. Dim.  & RFT DWGs (B01) (6th),"E-SUB-B01-6TH-1010, E-SUB-B01-6TH-1010","E-SUB-B01-6TH-1010: SS 12, E-SUB-B01-6TH-1010: FF 10","CON-B01-6TH-1040, CON-B01-6TH-1050"
The Big -P.01-UP-20-April-26,E-APP-B04-6TH-1000,Approval for Col. & Walls Conc. Dim.  & RFT DWGs (B04) (6th),"E-SUB-B04-6TH-1000, E-SUB-B04-6TH-1000","E-SUB-B04-6TH-1000: SS 12, E-SUB-B04-6TH-1000: FF 10","CON-B04-6TH-1020, CON-B04-6TH-1010"
The Big -P.01-UP-20-April-26,E-APP-B04-6TH-1030,Approval for Slabs Conc. Dim.  & RFT DWGs (B04) (6th),"E-SUB-B04-6TH-1030, E-SUB-B04-6TH-1030","E-SUB-B04-6TH-1030: SS 12, E-SUB-B04-6TH-1030: FF 10","CON-B04-6TH-1040, CON-B04-6TH-1050"
The Big -P.01-UP-20-April-26,E-APP-B04-6TH-1020,Approval for Beams Conc. Dim.  & RFT DWGs (B04) (6th),"E-SUB-B04-6TH-1020, E-SUB-B04-6TH-1020","E-SUB-B04-6TH-1020: SS 12, E-SUB-B04-6TH-1020: FF 10","CON-B04-6TH-1040, CON-B04-6TH-1050"
The Big -P.01-UP-20-April-26,E-APP-B04-6TH-1010,Approval for Stairs Conc. Dim.  & RFT DWGs (B04) (6th),"E-SUB-B04-6TH-1010, E-SUB-B04-6TH-1010","E-SUB-B04-6TH-1010: SS 12, E-SUB-B04-6TH-1010: FF 10","CON-B04-6TH-1040, CON-B04-6TH-1050"
The Big -P.01-UP-20-April-26,AB-SUB-B04-6TH-1000,Submittal for Col. & Walls Conc. Dim.  & RFT DWGs As-Built Drawing (B04) (6th),CON-B04-6TH-1030,CON-B04-6TH-1030: FS,"AB-APP-B04-6TH-1000, AB-APP-B04-6TH-1000"
The Big -P.01-UP-20-April-26,AB-SUB-B04-6TH-1010,Submittal for Slabs Conc. Dim.  & RFT DWGs As-Built Drawing (B04) (6th),CON-B04-6TH-1060,CON-B04-6TH-1060: FS,"AB-APP-B04-6TH-1010, AB-APP-B04-6TH-1010"
The Big -P.01-UP-20-April-26,AB-SUB-B04-6TH-1020,Submittal for Beams Conc. Dim.  & RFT DWGs As-Built Drawing (B04) (6th),CON-B04-6TH-1060,CON-B04-6TH-1060: FS,"AB-APP-B04-6TH-1020, AB-APP-B04-6TH-1020"
The Big -P.01-UP-20-April-26,AB-SUB-B04-6TH-1030,Submittal for Stairs Conc. Dim.  & RFT DWGs As-Built Drawing (B04) (6th),CON-B04-6TH-1060,CON-B04-6TH-1060: FS,"AB-APP-B04-6TH-1030, AB-APP-B04-6TH-1030"
The Big -P.01-UP-20-April-26,AB-SUB-B01-6TH-1000,Submittal for Col. & Walls Conc. Dim.  & RFT DWGs As-Built Drawing (B01) (6th),CON-B01-6TH-1030,CON-B01-6TH-1030: FS,"AB-APP-B01-6TH-1000, AB-APP-B01-6TH-1000"
The Big -P.01-UP-20-April-26,AB-SUB-B01-6TH-1010,Submittal for Slabs Conc. Dim.  & RFT DWGs As-Built Drawing (B01) (6th),CON-B01-6TH-1060,CON-B01-6TH-1060: FS,"AB-APP-B01-6TH-1010, AB-APP-B01-6TH-1010"
The Big -P.01-UP-20-April-26,AB-SUB-B01-6TH-1020,Submittal for Beams Conc. Dim.  & RFT DWGs As-Built Drawing (B01) (6th),CON-B01-6TH-1060,CON-B01-6TH-1060: FS,"AB-APP-B01-6TH-1020, AB-APP-B01-6TH-1020"
The Big -P.01-UP-20-April-26,AB-SUB-B01-6TH-1030,Submittal for Stairs Conc. Dim.  & RFT DWGs As-Built Drawing (B01) (6th),CON-B01-6TH-1060,CON-B01-6TH-1060: FS,"AB-APP-B01-6TH-1030, AB-APP-B01-6TH-1030"
The Big -P.01-UP-20-April-26,AB-APP-B01-6TH-1000,Approval for Col. & Walls Conc. Dim.  & RFT DWGs As-Built Drawing (B01) (6th),"AB-SUB-B01-6TH-1000, AB-SUB-B01-6TH-1000","AB-SUB-B01-6TH-1000: SS 12, AB-SUB-B01-6TH-1000: FF 6",HO-1050
The Big -P.01-UP-20-April-26,AB-APP-B01-6TH-1010,Approval for Slabs Conc. Dim.  & RFT DWGs As-Built Drawing (B01) (6th),"AB-SUB-B01-6TH-1010, AB-SUB-B01-6TH-1010","AB-SUB-B01-6TH-1010: SS 12, AB-SUB-B01-6TH-1010: FF 6",HO-1050
The Big -P.01-UP-20-April-26,AB-APP-B01-6TH-1020,Approval for Beams Conc. Dim.  & RFT DWGs As-Built Drawing (B01) (6th),"AB-SUB-B01-6TH-1020, AB-SUB-B01-6TH-1020","AB-SUB-B01-6TH-1020: SS 12, AB-SUB-B01-6TH-1020: FF 6",HO-1050
The Big -P.01-UP-20-April-26,AB-APP-B01-6TH-1030,Approval for Stairs Conc. Dim.  & RFT DWGs As-Built Drawing (B01) (6th),"AB-SUB-B01-6TH-1030, AB-SUB-B01-6TH-1030","AB-SUB-B01-6TH-1030: SS 12, AB-SUB-B01-6TH-1030: FF 6",HO-1050
The Big -P.01-UP-20-April-26,AB-APP-B04-6TH-1000,Approval for Col. & Walls Conc. Dim.  & RFT DWGs As-Built Drawing (B04) (6th),"AB-SUB-B04-6TH-1000, AB-SUB-B04-6TH-1000","AB-SUB-B04-6TH-1000: SS 12, AB-SUB-B04-6TH-1000: FF 6",HO-1050
The Big -P.01-UP-20-April-26,AB-APP-B04-6TH-1010,Approval for Slabs Conc. Dim.  & RFT DWGs As-Built Drawing (B04) (6th),"AB-SUB-B04-6TH-1010, AB-SUB-B04-6TH-1010","AB-SUB-B04-6TH-1010: SS 12, AB-SUB-B04-6TH-1010: FF 6",HO-1050
The Big -P.01-UP-20-April-26,AB-APP-B04-6TH-1020,Approval for Beams Conc. Dim.  & RFT DWGs As-Built Drawing (B04) (6th),"AB-SUB-B04-6TH-1020, AB-SUB-B04-6TH-1020","AB-SUB-B04-6TH-1020: SS 12, AB-SUB-B04-6TH-1020: FF 6",HO-1050
The Big -P.01-UP-20-April-26,AB-APP-B04-6TH-1030,Approval for Stairs Conc. Dim.  & RFT DWGs As-Built Drawing (B04) (6th),"AB-SUB-B04-6TH-1030, AB-SUB-B04-6TH-1030","AB-SUB-B04-6TH-1030: SS 6, AB-SUB-B04-6TH-1030: FF 2",HO-1050
The Big -P.01-UP-20-April-26,CON-B01-7TH-1010,"RFT for Walls, Col. & Cores (B01) (7th)","CON-B01-7TH-1000, CON-B01-7TH-1000, E-APP-B01-7TH-1000, P-MDEL-1190","CON-B01-7TH-1000: SS 2, CON-B01-7TH-1000: FF, E-APP-B01-7TH-1000: FS, P-MDEL-1190: FS","CON-B01-7TH-1020, CON-B01-7TH-1020"
The Big -P.01-UP-20-April-26,CON-B01-7TH-1050,"RFT for Slabs, Beams & Stairs (B01) (7th)","CON-B01-7TH-1040, CON-B01-7TH-1040, E-APP-B01-7TH-1010, E-APP-B01-7TH-1020, E-APP-B01-7TH-1030, P-MDEL-1190","CON-B01-7TH-1040: SS 3, CON-B01-7TH-1040: FF, E-APP-B01-7TH-1010: FS, E-APP-B01-7TH-1020: FS, E-APP-B01-7TH-1030: FS, P-MDEL-1190: FS",CON-B01-7TH-1060
The Big -P.01-UP-20-April-26,CON-B04-7TH-1010,"RFT for Walls, Col. & Cores (B04) (7th)","CON-B04-7TH-1000, CON-B04-7TH-1000, E-APP-B04-7TH-1000, P-MDEL-1190","CON-B04-7TH-1000: SS 3, CON-B04-7TH-1000: FF, E-APP-B04-7TH-1000: FS, P-MDEL-1190: FS","CON-B04-7TH-1020, CON-B04-7TH-1020"
The Big -P.01-UP-20-April-26,CON-B04-7TH-1050,"RFT for Slabs, Beams & Stairs (B04) (7th)","CON-B04-7TH-1040, CON-B04-7TH-1040, E-APP-B04-7TH-1010, E-APP-B04-7TH-1020, E-APP-B04-7TH-1030, P-MDEL-1190","CON-B04-7TH-1040: SS 2, CON-B04-7TH-1040: FF, E-APP-B04-7TH-1010: FS, E-APP-B04-7TH-1020: FS, E-APP-B04-7TH-1030: FS, P-MDEL-1190: FS",CON-B04-7TH-1060
The Big -P.01-UP-20-April-26,CON-B01-8TH-1010,"RFT for Walls, Col. & Cores (B01) (8th)","CON-B01-8TH-1000, CON-B01-8TH-1000, E-APP-B01-8TH-1000, P-MDEL-1180","CON-B01-8TH-1000: SS 2, CON-B01-8TH-1000: FF, E-APP-B01-8TH-1000: FS, P-MDEL-1180: FS","CON-B01-8TH-1020, CON-B01-8TH-1020"
The Big -P.01-UP-20-April-26,CON-B01-8TH-1050,"RFT for Slabs, Beams & Stairs (B01) (8th)","CON-B01-8TH-1040, CON-B01-8TH-1040, E-APP-B01-8TH-1010, E-APP-B01-8TH-1020, E-APP-B01-8TH-1030, P-MDEL-1180","CON-B01-8TH-1040: SS 2, CON-B01-8TH-1040: FF, E-APP-B01-8TH-1010: FS, E-APP-B01-8TH-1020: FS, E-APP-B01-8TH-1030: FS, P-MDEL-1180: FS",CON-B01-8TH-1060
The Big -P.01-UP-20-April-26,CON-B04-8TH-1010,"RFT for Walls, Col. & Cores (B04) (8th)","CON-B04-8TH-1000, CON-B04-8TH-1000, E-APP-B04-8TH-1000, P-MDEL-1180","CON-B04-8TH-1000: SS 2, CON-B04-8TH-1000: FF, E-APP-B04-8TH-1000: FS, P-MDEL-1180: FS","CON-B04-8TH-1020, CON-B04-8TH-1020"
The Big -P.01-UP-20-April-26,CON-B04-8TH-1050,"RFT for Slabs, Beams & Stairs (B04) (8th)","CON-B04-8TH-1040, CON-B04-8TH-1040, E-APP-B04-8TH-1010, E-APP-B04-8TH-1020, E-APP-B04-8TH-1030, P-MDEL-1180","CON-B04-8TH-1040: SS 2, CON-B04-8TH-1040: FF, E-APP-B04-8TH-1010: FS, E-APP-B04-8TH-1020: FS, E-APP-B04-8TH-1030: FS, P-MDEL-1180: FS",CON-B04-8TH-1060
The Big -P.01-UP-20-April-26,E-SUB-B04-7TH-1000,Submittal for Col. & Walls Conc. Dim.  & RFT DWGs (B04) (7th),E-DR-1000,E-DR-1000: FS 145,"E-APP-B04-7TH-1000, E-APP-B04-7TH-1000, E-SUB-B04-7TH-1010"
The Big -P.01-UP-20-April-26,E-SUB-B04-7TH-1030,Submittal for Slabs Conc. Dim.  & RFT DWGs  (B04) (7th),"E-DR-1000, E-SUB-B04-7TH-1020","E-DR-1000: FS 156, E-SUB-B04-7TH-1020: SS 3","E-APP-B04-7TH-1030, E-APP-B04-7TH-1030"
The Big -P.01-UP-20-April-26,E-SUB-B04-7TH-1020,Submittal for Beams Conc. Dim.  & RFT DWGs (B04) (7th),"E-DR-1000, E-SUB-B04-7TH-1010","E-DR-1000: FS 151, E-SUB-B04-7TH-1010: SS 3","E-APP-B04-7TH-1020, E-APP-B04-7TH-1020, E-SUB-B04-7TH-1030"
The Big -P.01-UP-20-April-26,E-SUB-B04-7TH-1010,Submittal for Stairs Conc. Dim.  & RFT DWGs (B04) (7th),"E-DR-1000, E-SUB-B04-7TH-1000","E-DR-1000: FS 148, E-SUB-B04-7TH-1000: SS 3","E-APP-B04-7TH-1010, E-APP-B04-7TH-1010, E-SUB-B04-7TH-1020"
The Big -P.01-UP-20-April-26,E-SUB-B01-7TH-1000,Submittal for Col. & Walls Conc. Dim.  & RFT DWGs (B01) (7th),E-DR-1000,E-DR-1000: FS 95,"E-APP-B01-7TH-1000, E-APP-B01-7TH-1000, E-SUB-B01-7TH-1010"
The Big -P.01-UP-20-April-26,E-SUB-B01-7TH-1030,Submittal for Slabs Conc. Dim.  & RFT DWGs (B01) (7th),"E-DR-1000, E-SUB-B01-7TH-1020","E-DR-1000: FS 106, E-SUB-B01-7TH-1020: SS 3","E-APP-B01-7TH-1030, E-APP-B01-7TH-1030"
The Big -P.01-UP-20-April-26,E-SUB-B01-7TH-1020,Submittal for Beams Conc. Dim.  & RFT DWGs (B01) (7th),"E-DR-1000, E-SUB-B01-7TH-1010","E-DR-1000: FS 102, E-SUB-B01-7TH-1010: SS 3","E-APP-B01-7TH-1020, E-APP-B01-7TH-1020, E-SUB-B01-7TH-1030"
The Big -P.01-UP-20-April-26,E-SUB-B01-7TH-1010,Submittal for Stairs Conc. Dim.  & RFT DWGs (B01) (7th),"E-DR-1000, E-SUB-B01-7TH-1000","E-DR-1000: FS 99, E-SUB-B01-7TH-1000: SS 3","E-APP-B01-7TH-1010, E-APP-B01-7TH-1010, E-SUB-B01-7TH-1020"
The Big -P.01-UP-20-April-26,E-APP-B01-7TH-1000,Approval for Col. & Walls Conc. Dim.  & RFT DWGs (B01) (7th),"E-SUB-B01-7TH-1000, E-SUB-B01-7TH-1000","E-SUB-B01-7TH-1000: SS 12, E-SUB-B01-7TH-1000: FF 10","CON-B01-7TH-1010, CON-B01-7TH-1020"
The Big -P.01-UP-20-April-26,E-APP-B01-7TH-1030,Approval for Slabs Conc. Dim.  & RFT DWGs (B01) (7th),"E-SUB-B01-7TH-1030, E-SUB-B01-7TH-1030","E-SUB-B01-7TH-1030: SS 12, E-SUB-B01-7TH-1030: FF 10","CON-B01-7TH-1040, CON-B01-7TH-1050"
The Big -P.01-UP-20-April-26,E-APP-B01-7TH-1020,Approval for Beams Conc. Dim.  & RFT DWGs (B01) (7th),"E-SUB-B01-7TH-1020, E-SUB-B01-7TH-1020","E-SUB-B01-7TH-1020: SS 12, E-SUB-B01-7TH-1020: FF 10","CON-B01-7TH-1040, CON-B01-7TH-1050"
The Big -P.01-UP-20-April-26,E-APP-B01-7TH-1010,Approval for Stairs Conc. Dim.  & RFT DWGs (B01) (7th),"E-SUB-B01-7TH-1010, E-SUB-B01-7TH-1010","E-SUB-B01-7TH-1010: SS 12, E-SUB-B01-7TH-1010: FF 10","CON-B01-7TH-1040, CON-B01-7TH-1050"
The Big -P.01-UP-20-April-26,E-APP-B04-7TH-1000,Approval for Col. & Walls Conc. Dim.  & RFT DWGs (B04) (7th),"E-SUB-B04-7TH-1000, E-SUB-B04-7TH-1000","E-SUB-B04-7TH-1000: SS 12, E-SUB-B04-7TH-1000: FF 10","CON-B04-7TH-1010, CON-B04-7TH-1020"
The Big -P.01-UP-20-April-26,E-APP-B04-7TH-1030,Approval for Slabs Conc. Dim.  & RFT DWGs (B04) (7th),"E-SUB-B04-7TH-1030, E-SUB-B04-7TH-1030","E-SUB-B04-7TH-1030: SS 12, E-SUB-B04-7TH-1030: FF 10","CON-B04-7TH-1040, CON-B04-7TH-1050"
The Big -P.01-UP-20-April-26,E-APP-B04-7TH-1020,Approval for Beams Conc. Dim.  & RFT DWGs (B04) (7th),"E-SUB-B04-7TH-1020, E-SUB-B04-7TH-1020","E-SUB-B04-7TH-1020: SS 12, E-SUB-B04-7TH-1020: FF 10","CON-B04-7TH-1040, CON-B04-7TH-1050"
The Big -P.01-UP-20-April-26,E-APP-B04-7TH-1010,Approval for Stairs Conc. Dim.  & RFT DWGs (B04) (7th),"E-SUB-B04-7TH-1010, E-SUB-B04-7TH-1010","E-SUB-B04-7TH-1010: SS 12, E-SUB-B04-7TH-1010: FF 10","CON-B04-7TH-1040, CON-B04-7TH-1050"
The Big -P.01-UP-20-April-26,AB-SUB-B04-7TH-1000,Submittal for Col. & Walls Conc. Dim.  & RFT DWGs As-Built Drawing (B04) (7th),CON-B04-7TH-1030,CON-B04-7TH-1030: FS,"AB-APP-B04-7TH-1000, AB-APP-B04-7TH-1000"
The Big -P.01-UP-20-April-26,AB-SUB-B04-7TH-1010,Submittal for Slabs Conc. Dim.  & RFT DWGs As-Built Drawing  (B04) (7th),CON-B04-7TH-1060,CON-B04-7TH-1060: FS,"AB-APP-B04-7TH-1010, AB-APP-B04-7TH-1010"
The Big -P.01-UP-20-April-26,AB-SUB-B04-7TH-1020,Submittal for Beams Conc. Dim.  & RFT DWGs As-Built Drawing (B04) (7th),CON-B04-7TH-1060,CON-B04-7TH-1060: FS,"AB-APP-B04-7TH-1020, AB-APP-B04-7TH-1020"
The Big -P.01-UP-20-April-26,AB-SUB-B04-7TH-1030,Submittal for Stairs Conc. Dim.  & RFT DWGs As-Built Drawing (B04) (7th),CON-B04-7TH-1060,CON-B04-7TH-1060: FS,"AB-APP-B04-7TH-1030, AB-APP-B04-7TH-1030"
The Big -P.01-UP-20-April-26,AB-SUB-B01-7TH-1000,Submittal for Col. & Walls Conc. Dim.  & RFT DWGs As-Built Drawing (B01) (7th),CON-B01-7TH-1030,CON-B01-7TH-1030: FS,"AB-APP-B01-7TH-1000, AB-APP-B01-7TH-1000"
The Big -P.01-UP-20-April-26,AB-SUB-B01-7TH-1010,Submittal for Slabs Conc. Dim.  & RFT DWGs As-Built Drawing (B01) (7th),CON-B01-7TH-1060,CON-B01-7TH-1060: FS,"AB-APP-B01-7TH-1010, AB-APP-B01-7TH-1010"
The Big -P.01-UP-20-April-26,AB-SUB-B01-7TH-1020,Submittal for Beams Conc. Dim.  & RFT DWGs As-Built Drawing (B01) (7th),CON-B01-7TH-1060,CON-B01-7TH-1060: FS,"AB-APP-B01-7TH-1020, AB-APP-B01-7TH-1020"
The Big -P.01-UP-20-April-26,AB-SUB-B01-7TH-1030,Submittal for Stairs Conc. Dim.  & RFT DWGs As-Built Drawing (B01) (7th),CON-B01-7TH-1060,CON-B01-7TH-1060: FS,"AB-APP-B01-7TH-1030, AB-APP-B01-7TH-1030"
The Big -P.01-UP-20-April-26,AB-APP-B01-7TH-1000,Approval for Col. & Walls Conc. Dim.  & RFT DWGs As-Built Drawing (B01) (7th),"AB-SUB-B01-7TH-1000, AB-SUB-B01-7TH-1000","AB-SUB-B01-7TH-1000: SS 12, AB-SUB-B01-7TH-1000: FF 6",HO-1050
The Big -P.01-UP-20-April-26,AB-APP-B01-7TH-1010,Approval for Slabs Conc. Dim.  & RFT DWGs As-Built Drawing (B01) (7th),"AB-SUB-B01-7TH-1010, AB-SUB-B01-7TH-1010","AB-SUB-B01-7TH-1010: SS 12, AB-SUB-B01-7TH-1010: FF 6",HO-1050
The Big -P.01-UP-20-April-26,AB-APP-B01-7TH-1020,Approval for Beams Conc. Dim.  & RFT DWGs As-Built Drawing (B01) (7th),"AB-SUB-B01-7TH-1020, AB-SUB-B01-7TH-1020","AB-SUB-B01-7TH-1020: SS 12, AB-SUB-B01-7TH-1020: FF 6",HO-1050
The Big -P.01-UP-20-April-26,AB-APP-B01-7TH-1030,Approval for Stairs Conc. Dim.  & RFT DWGs As-Built Drawing (B01) (7th),"AB-SUB-B01-7TH-1030, AB-SUB-B01-7TH-1030","AB-SUB-B01-7TH-1030: SS 12, AB-SUB-B01-7TH-1030: FF 6",HO-1050
The Big -P.01-UP-20-April-26,AB-APP-B04-7TH-1000,Approval for Col. & Walls Conc. Dim.  & RFT DWGs As-Built Drawing (B04) (7th),"AB-SUB-B04-7TH-1000, AB-SUB-B04-7TH-1000","AB-SUB-B04-7TH-1000: SS 12, AB-SUB-B04-7TH-1000: FF 6",HO-1050
The Big -P.01-UP-20-April-26,AB-APP-B04-7TH-1010,Approval for Slabs Conc. Dim.  & RFT DWGs As-Built Drawing (B04) (7th),"AB-SUB-B04-7TH-1010, AB-SUB-B04-7TH-1010","AB-SUB-B04-7TH-1010: SS 12, AB-SUB-B04-7TH-1010: FF 6",HO-1050
The Big -P.01-UP-20-April-26,AB-APP-B04-7TH-1020,Approval for Beams Conc. Dim.  & RFT DWGs As-Built Drawing (B04) (7th),"AB-SUB-B04-7TH-1020, AB-SUB-B04-7TH-1020","AB-SUB-B04-7TH-1020: SS 12, AB-SUB-B04-7TH-1020: FF 6",HO-1050
The Big -P.01-UP-20-April-26,AB-APP-B04-7TH-1030,Approval for Stairs Conc. Dim.  & RFT DWGs As-Built Drawing (B04) (7th),"AB-SUB-B04-7TH-1030, AB-SUB-B04-7TH-1030","AB-SUB-B04-7TH-1030: SS 12, AB-SUB-B04-7TH-1030: FF 6",HO-1050
The Big -P.01-UP-20-April-26,E-SUB-B04-8TH-1000,Submittal for Col. & Walls Conc. Dim.  & RFT DWGs (B04) (8th),E-DR-1000,E-DR-1000: FS 160,"E-APP-B04-8TH-1000, E-APP-B04-8TH-1000, E-SUB-B04-8TH-1010"
The Big -P.01-UP-20-April-26,E-SUB-B04-8TH-1030,Submittal for Slabs Conc. Dim.  & RFT DWGs (B04) (8th),"E-DR-1000, E-SUB-B04-8TH-1020","E-DR-1000: FS 170, E-SUB-B04-8TH-1020: SS 3","E-APP-B04-8TH-1030, E-APP-B04-8TH-1030"
The Big -P.01-UP-20-April-26,E-SUB-B04-8TH-1020,Submittal for Beams Conc. Dim.  & RFT DWGs (B04) (8th),"E-DR-1000, E-SUB-B04-8TH-1010","E-DR-1000: FS 167, E-SUB-B04-8TH-1010: SS 3","E-APP-B04-8TH-1020, E-APP-B04-8TH-1020, E-SUB-B04-8TH-1030"
The Big -P.01-UP-20-April-26,E-SUB-B04-8TH-1010,Submittal for Stairs Conc. Dim.  & RFT DWGs (B04) (8th),"E-DR-1000, E-SUB-B04-8TH-1000","E-DR-1000: FS 163, E-SUB-B04-8TH-1000: SS 3","E-APP-B04-8TH-1010, E-APP-B04-8TH-1010, E-SUB-B04-8TH-1020"
The Big -P.01-UP-20-April-26,E-SUB-B01-8TH-1000,Submittal for Col. & Walls Conc. Dim.  & RFT DWGs (B01) (8th),E-DR-1000,E-DR-1000: FS 110,"E-APP-B01-8TH-1000, E-APP-B01-8TH-1000, E-SUB-B01-8TH-1010"
The Big -P.01-UP-20-April-26,E-SUB-B01-8TH-1030,Submittal for Slabs Conc. Dim.  & RFT DWGs (B01) (8th),"E-DR-1000, E-SUB-B01-8TH-1020","E-DR-1000: FS 120, E-SUB-B01-8TH-1020: SS 3","E-APP-B01-8TH-1030, E-APP-B01-8TH-1030"
The Big -P.01-UP-20-April-26,E-SUB-B01-8TH-1020,Submittal for Beams Conc. Dim.  & RFT DWGs (B01) (8th),"E-DR-1000, E-SUB-B01-8TH-1010","E-DR-1000: FS 117, E-SUB-B01-8TH-1010: SS 3","E-APP-B01-8TH-1020, E-APP-B01-8TH-1020, E-SUB-B01-8TH-1030"
The Big -P.01-UP-20-April-26,E-SUB-B01-8TH-1010,Submittal for Stairs Conc. Dim.  & RFT DWGs (B01) (8th),"E-DR-1000, E-SUB-B01-8TH-1000","E-DR-1000: FS 113, E-SUB-B01-8TH-1000: SS 3","E-APP-B01-8TH-1010, E-APP-B01-8TH-1010, E-SUB-B01-8TH-1020"
The Big -P.01-UP-20-April-26,E-APP-B01-8TH-1000,Approval for Col. & Walls Conc. Dim.  & RFT DWGs (B01) (8th),"E-SUB-B01-8TH-1000, E-SUB-B01-8TH-1000","E-SUB-B01-8TH-1000: SS 12, E-SUB-B01-8TH-1000: FF 10","CON-B01-8TH-1010, CON-B01-8TH-1020"
The Big -P.01-UP-20-April-26,E-APP-B01-8TH-1030,Approval for Slabs Conc. Dim.  & RFT DWGs (B01) (8th),"E-SUB-B01-8TH-1030, E-SUB-B01-8TH-1030","E-SUB-B01-8TH-1030: SS 12, E-SUB-B01-8TH-1030: FF 10","CON-B01-8TH-1040, CON-B01-8TH-1050"
The Big -P.01-UP-20-April-26,E-APP-B01-8TH-1020,Approval for Beams Conc. Dim.  & RFT DWGs (B01) (8th),"E-SUB-B01-8TH-1020, E-SUB-B01-8TH-1020","E-SUB-B01-8TH-1020: SS 12, E-SUB-B01-8TH-1020: FF 10","CON-B01-8TH-1040, CON-B01-8TH-1050"
The Big -P.01-UP-20-April-26,E-APP-B01-8TH-1010,Approval for Stairs Conc. Dim.  & RFT DWGs (B01) (8th),"E-SUB-B01-8TH-1010, E-SUB-B01-8TH-1010","E-SUB-B01-8TH-1010: SS 12, E-SUB-B01-8TH-1010: FF 10","CON-B01-8TH-1040, CON-B01-8TH-1050"
The Big -P.01-UP-20-April-26,E-APP-B04-8TH-1000,Approval for Col. & Walls Conc. Dim.  & RFT DWGs (B04) (8th),"E-SUB-B04-8TH-1000, E-SUB-B04-8TH-1000","E-SUB-B04-8TH-1000: SS 12, E-SUB-B04-8TH-1000: FF 10","CON-B04-8TH-1010, CON-B04-8TH-1020"
The Big -P.01-UP-20-April-26,E-APP-B04-8TH-1030,Approval for Slabs Conc. Dim.  & RFT DWGs (B04) (8th),"E-SUB-B04-8TH-1030, E-SUB-B04-8TH-1030","E-SUB-B04-8TH-1030: SS 12, E-SUB-B04-8TH-1030: FF 10","CON-B04-8TH-1040, CON-B04-8TH-1050"
The Big -P.01-UP-20-April-26,E-APP-B04-8TH-1020,Approval for Beams Conc. Dim.  & RFT DWGs (B04) (8th),"E-SUB-B04-8TH-1020, E-SUB-B04-8TH-1020","E-SUB-B04-8TH-1020: SS 12, E-SUB-B04-8TH-1020: FF 10","CON-B04-8TH-1040, CON-B04-8TH-1050"
The Big -P.01-UP-20-April-26,E-APP-B04-8TH-1010,Approval for Stairs Conc. Dim.  & RFT DWGs (B04) (8th),"E-SUB-B04-8TH-1010, E-SUB-B04-8TH-1010","E-SUB-B04-8TH-1010: SS 12, E-SUB-B04-8TH-1010: FF 10","CON-B04-8TH-1040, CON-B04-8TH-1050"
The Big -P.01-UP-20-April-26,AB-SUB-B04-8TH-1000,Submittal for Col. & Walls Conc. Dim.  & RFT DWGs As-Built Drawing (B04) (8th),CON-B04-8TH-1030,CON-B04-8TH-1030: FS,"AB-APP-B04-8TH-1000, AB-APP-B04-8TH-1000"
The Big -P.01-UP-20-April-26,AB-SUB-B04-8TH-1010,Submittal for Slabs Conc. Dim.  & RFT DWGs As-Built Drawing (B04) (8th),CON-B04-8TH-1060,CON-B04-8TH-1060: FS,"AB-APP-B04-8TH-1010, AB-APP-B04-8TH-1010"
The Big -P.01-UP-20-April-26,AB-SUB-B04-8TH-1020,Submittal for Beams Conc. Dim.  & RFT DWGs As-Built Drawing (B04) (8th),CON-B04-8TH-1060,CON-B04-8TH-1060: FS,"AB-APP-B04-8TH-1020, AB-APP-B04-8TH-1020"
The Big -P.01-UP-20-April-26,AB-SUB-B04-8TH-1030,Submittal for Stairs Conc. Dim.  & RFT DWGs As-Built Drawing (B04) (8th),CON-B04-8TH-1060,CON-B04-8TH-1060: FS,"AB-APP-B04-8TH-1030, AB-APP-B04-8TH-1030"
The Big -P.01-UP-20-April-26,AB-SUB-B01-8TH-1000,Submittal for Col. & Walls Conc. Dim.  & RFT DWGs As-Built Drawing (B01) (8th),CON-B01-8TH-1030,CON-B01-8TH-1030: FS,"AB-APP-B01-8TH-1000, AB-APP-B01-8TH-1000"
The Big -P.01-UP-20-April-26,AB-SUB-B01-8TH-1010,Submittal for Slabs Conc. Dim.  & RFT DWGs As-Built Drawing (B01) (8th),CON-B01-8TH-1060,CON-B01-8TH-1060: FS,"AB-APP-B01-8TH-1010, AB-APP-B01-8TH-1010"
The Big -P.01-UP-20-April-26,AB-SUB-B01-8TH-1020,Submittal for Beams Conc. Dim.  & RFT DWGs As-Built Drawing (B01) (8th),CON-B01-8TH-1060,CON-B01-8TH-1060: FS,"AB-APP-B01-8TH-1020, AB-APP-B01-8TH-1020"
The Big -P.01-UP-20-April-26,AB-SUB-B01-8TH-1030,Submittal for Stairs Conc. Dim.  & RFT DWGs As-Built Drawing (B01) (8th),CON-B01-8TH-1060,CON-B01-8TH-1060: FS,"AB-APP-B01-8TH-1030, AB-APP-B01-8TH-1030"
The Big -P.01-UP-20-April-26,AB-APP-B01-8TH-1000,Approval for Col. & Walls Conc. Dim.  & RFT DWGs As-Built Drawing (B01) (8th),"AB-SUB-B01-8TH-1000, AB-SUB-B01-8TH-1000","AB-SUB-B01-8TH-1000: SS 12, AB-SUB-B01-8TH-1000: FF 6",HO-1050
The Big -P.01-UP-20-April-26,AB-APP-B01-8TH-1010,Approval for Slabs Conc. Dim.  & RFT DWGs As-Built Drawing (B01) (8th),"AB-SUB-B01-8TH-1010, AB-SUB-B01-8TH-1010","AB-SUB-B01-8TH-1010: SS 12, AB-SUB-B01-8TH-1010: FF 6",HO-1050
The Big -P.01-UP-20-April-26,AB-APP-B01-8TH-1020,Approval for Beams Conc. Dim.  & RFT DWGs As-Built Drawing (B01) (8th),"AB-SUB-B01-8TH-1020, AB-SUB-B01-8TH-1020","AB-SUB-B01-8TH-1020: SS 12, AB-SUB-B01-8TH-1020: FF 6",HO-1050
The Big -P.01-UP-20-April-26,AB-APP-B01-8TH-1030,Approval for Stairs Conc. Dim.  & RFT DWGs As-Built Drawing (B01) (8th),"AB-SUB-B01-8TH-1030, AB-SUB-B01-8TH-1030","AB-SUB-B01-8TH-1030: SS 12, AB-SUB-B01-8TH-1030: FF 6",HO-1050
The Big -P.01-UP-20-April-26,AB-APP-B04-8TH-1000,Approval for Col. & Walls Conc. Dim.  & RFT DWGs As-Built Drawing (B04) (8th),"AB-SUB-B04-8TH-1000, AB-SUB-B04-8TH-1000","AB-SUB-B04-8TH-1000: SS 12, AB-SUB-B04-8TH-1000: FF 6",HO-1050
The Big -P.01-UP-20-April-26,AB-APP-B04-8TH-1010,Approval for Slabs Conc. Dim.  & RFT DWGs As-Built Drawing (B04) (8th),"AB-SUB-B04-8TH-1010, AB-SUB-B04-8TH-1010","AB-SUB-B04-8TH-1010: SS 12, AB-SUB-B04-8TH-1010: FF 6",HO-1050
The Big -P.01-UP-20-April-26,AB-APP-B04-8TH-1020,Approval for Beams Conc. Dim.  & RFT DWGs As-Built Drawing (B04) (8th),"AB-SUB-B04-8TH-1020, AB-SUB-B04-8TH-1020","AB-SUB-B04-8TH-1020: SS 12, AB-SUB-B04-8TH-1020: FF 6",HO-1050
The Big -P.01-UP-20-April-26,AB-APP-B04-8TH-1030,Approval for Stairs Conc. Dim.  & RFT DWGs As-Built Drawing (B04) (8th),"AB-SUB-B04-8TH-1030, AB-SUB-B04-8TH-1030","AB-SUB-B04-8TH-1030: SS 12, AB-SUB-B04-8TH-1030: FF 6",HO-1050
The Big -P.01-UP-20-April-26,CON-B01-9TH-1010,"RFT for Walls, Col. & Cores (B01) (RF)","CON-B01-9TH-1000, E-APP-B01-RF-1000, P-MDEL-1200","CON-B01-9TH-1000: FS, E-APP-B01-RF-1000: FS, P-MDEL-1200: FS",CON-B01-9TH-1020
The Big -P.01-UP-20-April-26,CON-B01-9TH-1050,"RFT for Slabs, Beams  (B01) (RF)","CON-B01-9TH-1040, CON-B01-9TH-1040, E-APP-B01-RF-1010, E-APP-B01-RF-1020, P-MDEL-1200","CON-B01-9TH-1040: SS 1, CON-B01-9TH-1040: FF, E-APP-B01-RF-1010: FS, E-APP-B01-RF-1020: FS, P-MDEL-1200: FS",CON-B01-9TH-1060
The Big -P.01-UP-20-April-26,CON-B02-RF-1010,"RFT for Walls, Col. & Cores (B02) (RF)","CON-B02-RF-1000, E-APP-B02-RF-1000, P-MDEL-1200","CON-B02-RF-1000: FS, E-APP-B02-RF-1000: FS, P-MDEL-1200: FS",CON-B02-RF-1020
The Big -P.01-UP-20-April-26,CON-B02-RF-1050,"RFT for Slabs, Beams  (B02) (RF)","CON-B02-RF-1040, E-APP-B02-RF-1010, E-APP-B02-RF-1020, P-MDEL-1200","CON-B02-RF-1040: FS, E-APP-B02-RF-1010: FS, E-APP-B02-RF-1020: FS, P-MDEL-1200: FS",CON-B02-RF-1060
The Big -P.01-UP-20-April-26,CON-B04-RF-1010,"RFT for Walls, Col. & Cores (B04) (RF)","CON-B04-RF-1000, E-APP-B04-RF-1000, P-MDEL-1200","CON-B04-RF-1000: FS, E-APP-B04-RF-1000: FS, P-MDEL-1200: FS",CON-B04-RF-1020
The Big -P.01-UP-20-April-26,CON-B04-RF-1050,"RFT for Slabs, Beams  (B04) (RF)","CON-B04-RF-1040, E-APP-B04-RF-1010, E-APP-B04-RF-1020, P-MDEL-1200","CON-B04-RF-1040: FS, E-APP-B04-RF-1010: FS, E-APP-B04-RF-1020: FS, P-MDEL-1200: FS",CON-B04-RF-1060
The Big -P.01-UP-20-April-26,CON-B03-RF-1010,"RFT for Walls, Col. & Cores (B03) (RF)","CON-B03-RF-1000, E-APP-B03-RF-1000, P-MDEL-1200","CON-B03-RF-1000: FS, E-APP-B03-RF-1000: FS, P-MDEL-1200: FS",CON-B03-RF-1020
The Big -P.01-UP-20-April-26,CON-B03-RF-1050,"RFT for Slabs, Beams  (B03) (RF)","CON-B03-RF-1040, E-APP-B03-RF-1010, E-APP-B03-RF-1020, P-MDEL-1200","CON-B03-RF-1040: FS, E-APP-B03-RF-1010: FS, E-APP-B03-RF-1020: FS, P-MDEL-1200: FS",CON-B03-RF-1060
The Big -P.01-UP-20-April-26,E-SUB-B04-RF-1000,Submittal for Col. & Walls Conc. Dim.  & RFT DWGs (B04) (RF),E-DR-1000,E-DR-1000: FS 165,"E-APP-B04-RF-1000, E-APP-B04-RF-1000, E-SUB-B04-RF-1010"
The Big -P.01-UP-20-April-26,E-SUB-B04-RF-1020,Submittal for Slabs Conc. Dim.  & RFT DWGs (B04) (RF),"E-DR-1000, E-SUB-B04-RF-1010","E-DR-1000: FS 173, E-SUB-B04-RF-1010: SS 3","E-APP-B04-RF-1020, E-APP-B04-RF-1020"
The Big -P.01-UP-20-April-26,E-SUB-B04-RF-1010,Submittal for Beams Conc. Dim.  & RFT DWGs (B04) (RF),"E-DR-1000, E-SUB-B04-RF-1000","E-DR-1000: FS 169, E-SUB-B04-RF-1000: SS 3","E-APP-B04-RF-1010, E-APP-B04-RF-1010, E-SUB-B04-RF-1020"
The Big -P.01-UP-20-April-26,E-SUB-B03-RF-1000,Submittal for Col. & Walls Conc. Dim.  & RFT DWGs (B03) (RF),E-DR-1000,E-DR-1000: FS 85,"E-APP-B03-RF-1000, E-APP-B03-RF-1000, E-SUB-B03-RF-1010"
The Big -P.01-UP-20-April-26,E-SUB-B03-RF-1020,Submittal for Slabs Conc. Dim.  & RFT DWGs (B03) (RF),"E-DR-1000, E-SUB-B03-RF-1010","E-DR-1000: FS 92, E-SUB-B03-RF-1010: SS 3","E-APP-B03-RF-1020, E-APP-B03-RF-1020"
The Big -P.01-UP-20-April-26,E-SUB-B03-RF-1010,Submittal for Beams Conc. Dim.  & RFT DWGs (B03) (RF),"E-DR-1000, E-SUB-B03-RF-1000","E-DR-1000: FS 89, E-SUB-B03-RF-1000: SS 3","E-APP-B03-RF-1010, E-APP-B03-RF-1010, E-SUB-B03-RF-1020"
The Big -P.01-UP-20-April-26,E-SUB-B02-RF-1000,Submittal for Col. & Walls Conc. Dim.  & RFT DWGs (B02) (RF),E-DR-1000,E-DR-1000: FS 100,"E-APP-B02-RF-1000, E-APP-B02-RF-1000, E-SUB-B02-RF-1010"
The Big -P.01-UP-20-April-26,E-SUB-B02-RF-1020,Submittal for Slabs Conc. Dim.  & RFT DWGs (B02) (RF),"E-DR-1000, E-SUB-B02-RF-1010","E-DR-1000: FS 107, E-SUB-B02-RF-1010: SS 3","E-APP-B02-RF-1020, E-APP-B02-RF-1020"
The Big -P.01-UP-20-April-26,E-SUB-B02-RF-1010,Submittal for Beams Conc. Dim.  & RFT DWGs (B02) (RF),"E-DR-1000, E-SUB-B02-RF-1000","E-DR-1000: FS 104, E-SUB-B02-RF-1000: SS 3","E-APP-B02-RF-1010, E-APP-B02-RF-1010, E-SUB-B02-RF-1020"
The Big -P.01-UP-20-April-26,E-SUB-B01-RF-1000,Submittal for Col. & Walls Conc. Dim.  & RFT DWGs (B01) (RF),E-DR-1000,E-DR-1000: FS 125,"E-APP-B01-RF-1000, E-APP-B01-RF-1000, E-SUB-B01-RF-1010"
The Big -P.01-UP-20-April-26,E-SUB-B01-RF-1010,Submittal for Slabs Conc. Dim.  & RFT DWGs (B01) (RF),"E-DR-1000, E-SUB-B01-RF-1000","E-DR-1000: FS 133, E-SUB-B01-RF-1000: SS 3","E-APP-B01-RF-1010, E-APP-B01-RF-1010"
The Big -P.01-UP-20-April-26,E-SUB-B01-RF-1020,Submittal for Beams Conc. Dim.  & RFT DWGs (B01) (RF),E-DR-1000,E-DR-1000: FS 136,"E-APP-B01-RF-1020, E-APP-B01-RF-1020"
The Big -P.01-UP-20-April-26,E-APP-B02-RF-1000,Approval for Col. & Walls Conc. Dim.  & RFT DWGs (B02) (RF),"E-SUB-B02-RF-1000, E-SUB-B02-RF-1000","E-SUB-B02-RF-1000: SS 12, E-SUB-B02-RF-1000: FF 10","CON-B02-RF-1020, CON-B02-RF-1010"
The Big -P.01-UP-20-April-26,E-APP-B02-RF-1020,Approval for Slabs Conc. Dim.  & RFT DWGs (B02) (RF),"E-SUB-B02-RF-1020, E-SUB-B02-RF-1020","E-SUB-B02-RF-1020: SS 12, E-SUB-B02-RF-1020: FF 10","CON-B02-RF-1040, CON-B02-RF-1050"
The Big -P.01-UP-20-April-26,E-APP-B02-RF-1010,Approval for Beams Conc. Dim.  & RFT DWGs (B02) (RF),"E-SUB-B02-RF-1010, E-SUB-B02-RF-1010","E-SUB-B02-RF-1010: SS 12, E-SUB-B02-RF-1010: FF 10","CON-B02-RF-1040, CON-B02-RF-1050"
The Big -P.01-UP-20-April-26,E-APP-B01-RF-1000,Approval for Col. & Walls Conc. Dim.  & RFT DWGs (B01) (RF),"E-SUB-B01-RF-1000, E-SUB-B01-RF-1000","E-SUB-B01-RF-1000: SS 12, E-SUB-B01-RF-1000: FF 10","CON-B01-9TH-1010, CON-B01-9TH-1020"
The Big -P.01-UP-20-April-26,E-APP-B01-RF-1010,Approval for Slabs Conc. Dim.  & RFT DWGs (B01) (RF),"E-SUB-B01-RF-1010, E-SUB-B01-RF-1010","E-SUB-B01-RF-1010: SS 12, E-SUB-B01-RF-1010: FF 10","CON-B01-9TH-1040, CON-B01-9TH-1050"
The Big -P.01-UP-20-April-26,E-APP-B01-RF-1020,Approval for Beams Conc. Dim.  & RFT DWGs (B01) (RF),"E-SUB-B01-RF-1020, E-SUB-B01-RF-1020","E-SUB-B01-RF-1020: SS 12, E-SUB-B01-RF-1020: FF 10","CON-B01-9TH-1040, CON-B01-9TH-1050"
The Big -P.01-UP-20-April-26,E-APP-B04-RF-1000,Approval for Col. & Walls Conc. Dim.  & RFT DWGs (B04) (RF),"E-SUB-B04-RF-1000, E-SUB-B04-RF-1000","E-SUB-B04-RF-1000: SS 12, E-SUB-B04-RF-1000: FF 10","CON-B04-RF-1010, CON-B04-RF-1020"
The Big -P.01-UP-20-April-26,E-APP-B04-RF-1020,Approval for Slabs Conc. Dim.  & RFT DWGs (B04) (RF),"E-SUB-B04-RF-1020, E-SUB-B04-RF-1020","E-SUB-B04-RF-1020: SS 12, E-SUB-B04-RF-1020: FF 10","CON-B04-RF-1040, CON-B04-RF-1050"
The Big -P.01-UP-20-April-26,E-APP-B04-RF-1010,Approval for  Beams Conc. Dim.  & RFT DWGs (B04) (RF),"E-SUB-B04-RF-1010, E-SUB-B04-RF-1010","E-SUB-B04-RF-1010: SS 12, E-SUB-B04-RF-1010: FF 10","CON-B04-RF-1040, CON-B04-RF-1050"
The Big -P.01-UP-20-April-26,E-APP-B03-RF-1000,Approval for Col. & Walls Conc. Dim.  & RFT DWGs  (B03) (RF),"E-SUB-B03-RF-1000, E-SUB-B03-RF-1000","E-SUB-B03-RF-1000: SS 12, E-SUB-B03-RF-1000: FF 10","CON-B03-RF-1020, CON-B03-RF-1010"
The Big -P.01-UP-20-April-26,E-APP-B03-RF-1020,Approval for Slabs Conc. Dim.  & RFT DWGs  (B03) (RF),"E-SUB-B03-RF-1020, E-SUB-B03-RF-1020","E-SUB-B03-RF-1020: SS 12, E-SUB-B03-RF-1020: FF 10","CON-B03-RF-1040, CON-B03-RF-1050"
The Big -P.01-UP-20-April-26,E-APP-B03-RF-1010,Approval for Beams Conc. Dim.  & RFT DWGs  (B03) (RF),"E-SUB-B03-RF-1010, E-SUB-B03-RF-1010","E-SUB-B03-RF-1010: SS 12, E-SUB-B03-RF-1010: FF 10","CON-B03-RF-1040, CON-B03-RF-1050"
The Big -P.01-UP-20-April-26,AB-SUB-B04-RF-1000,Submittal for Col. & Walls Conc. Dim.  & RFT DWGs As-Built Drawing (B04) (RF),CON-B04-RF-1030,CON-B04-RF-1030: FS,"AB-APP-B04-RF-1000, AB-APP-B04-RF-1000"
The Big -P.01-UP-20-April-26,AB-SUB-B04-RF-1010,Submittal for Slabs Conc. Dim.  & RFT DWGs As-Built Drawing (B04) (RF),CON-B04-RF-1060,CON-B04-RF-1060: FS,"AB-APP-B04-RF-1010, AB-APP-B04-RF-1010"
The Big -P.01-UP-20-April-26,AB-SUB-B04-RF-1020,Submittal for Beams Conc. Dim.  & RFT DWGs As-Built Drawing (B04) (RF),CON-B04-RF-1060,CON-B04-RF-1060: FS,"AB-APP-B04-RF-1020, AB-APP-B04-RF-1020"
The Big -P.01-UP-20-April-26,AB-SUB-B03-RF-1000,Submittal for Col. & Walls Conc. Dim.  & RFT DWGs As-Built Drawing (B03) (RF),CON-B03-RF-1030,CON-B03-RF-1030: FS,"AB-APP-B03-RF-1000, AB-APP-B03-RF-1000"
The Big -P.01-UP-20-April-26,AB-SUB-B03-RF-1010,Submittal for Slabs Conc. Dim.  & RFT DWGs As-Built Drawing (B03) (RF),CON-B03-RF-1060,CON-B03-RF-1060: FS,"AB-APP-B03-RF-1010, AB-APP-B03-RF-1010"
The Big -P.01-UP-20-April-26,AB-SUB-B03-RF-1020,Submittal for Beams Conc. Dim.  & RFT DWGs As-Built Drawing (B03) (RF),CON-B03-RF-1060,CON-B03-RF-1060: FS,"AB-APP-B03-RF-1020, AB-APP-B03-RF-1020"
The Big -P.01-UP-20-April-26,AB-SUB-B02-RF-1000,Submittal for Col. & Walls Conc. Dim.  & RFT DWGs As-Built Drawing (B02) (RF),CON-B02-RF-1030,CON-B02-RF-1030: FS,"AB-APP-B02-RF-1000, AB-APP-B02-RF-1000"
The Big -P.01-UP-20-April-26,AB-SUB-B02-RF-1010,Submittal for Slabs Conc. Dim.  & RFT DWGs As-Built Drawing (B02) (RF),CON-B02-RF-1060,CON-B02-RF-1060: FS,"AB-APP-B02-RF-1010, AB-APP-B02-RF-1010"
The Big -P.01-UP-20-April-26,AB-SUB-B02-RF-1020,Submittal for Beams Conc. Dim.  & RFT DWGs As-Built Drawing (B02) (RF),CON-B02-RF-1060,CON-B02-RF-1060: FS,"AB-APP-B02-RF-1020, AB-APP-B02-RF-1020"
The Big -P.01-UP-20-April-26,AB-SUB-B01-RF-1000,Submittal for Col. & Walls Conc. Dim.  & RFT DWGs As-Built Drawing (B01) (RF),CON-B01-9TH-1030,CON-B01-9TH-1030: FS,"AB-APP-B01-RF-1000, AB-APP-B01-RF-1000"
The Big -P.01-UP-20-April-26,AB-SUB-B01-RF-1010,Submittal for Slabs Conc. Dim.  & RFT DWGs As-Built Drawing (B01) (RF),CON-B01-9TH-1060,CON-B01-9TH-1060: FS,"AB-APP-B01-RF-1010, AB-APP-B01-RF-1010"
The Big -P.01-UP-20-April-26,AB-SUB-B01-RF-1020,Submittal for Beams Conc. Dim.  & RFT DWGs As-Built Drawing (B01) (RF),CON-B01-9TH-1060,CON-B01-9TH-1060: FS,"AB-APP-B01-RF-1020, AB-APP-B01-RF-1020"
The Big -P.01-UP-20-April-26,AB-APP-B02-RF-1000,Approval for Col. & Walls Conc. Dim.  & RFT DWGs As-Built Drawing (B02) (RF),"AB-SUB-B02-RF-1000, AB-SUB-B02-RF-1000","AB-SUB-B02-RF-1000: SS 12, AB-SUB-B02-RF-1000: FF 6",HO-1050
The Big -P.01-UP-20-April-26,AB-APP-B02-RF-1010,Approval for Slabs Conc. Dim.  & RFT DWGs As-Built Drawing (B02) (RF),"AB-SUB-B02-RF-1010, AB-SUB-B02-RF-1010","AB-SUB-B02-RF-1010: SS 12, AB-SUB-B02-RF-1010: FF 6",HO-1050
The Big -P.01-UP-20-April-26,AB-APP-B02-RF-1020,Approval for Beams Conc. Dim.  & RFT DWGs As-Built Drawing (B02) (RF),"AB-SUB-B02-RF-1020, AB-SUB-B02-RF-1020","AB-SUB-B02-RF-1020: SS 12, AB-SUB-B02-RF-1020: FF 6",HO-1050
The Big -P.01-UP-20-April-26,AB-APP-B01-RF-1000,Approval for Col. & Walls Conc. Dim.  & RFT DWGs As-Built Drawing (B01) (RF),"AB-SUB-B01-RF-1000, AB-SUB-B01-RF-1000","AB-SUB-B01-RF-1000: SS 12, AB-SUB-B01-RF-1000: FF 6",HO-1050
The Big -P.01-UP-20-April-26,AB-APP-B01-RF-1010,Approval for Slabs Conc. Dim.  & RFT DWGs As-Built Drawing (B01) (RF),"AB-SUB-B01-RF-1010, AB-SUB-B01-RF-1010","AB-SUB-B01-RF-1010: SS 12, AB-SUB-B01-RF-1010: FF 6",HO-1050
The Big -P.01-UP-20-April-26,AB-APP-B01-RF-1020,Approval for Beams Conc. Dim.  & RFT DWGs As-Built Drawing (B01) (RF),"AB-SUB-B01-RF-1020, AB-SUB-B01-RF-1020","AB-SUB-B01-RF-1020: SS 12, AB-SUB-B01-RF-1020: FF 6",HO-1050
The Big -P.01-UP-20-April-26,AB-APP-B04-RF-1000,Approval for Col. & Walls Conc. Dim.  & RFT DWGs As-Built Drawing (B04) (RF),"AB-SUB-B04-RF-1000, AB-SUB-B04-RF-1000","AB-SUB-B04-RF-1000: SS 12, AB-SUB-B04-RF-1000: FF 6",HO-1050
The Big -P.01-UP-20-April-26,AB-APP-B04-RF-1010,Approval for Slabs Conc. Dim.  & RFT DWGs As-Built Drawing (B04) (RF),"AB-SUB-B04-RF-1010, AB-SUB-B04-RF-1010","AB-SUB-B04-RF-1010: SS 12, AB-SUB-B04-RF-1010: FF 6",HO-1050
The Big -P.01-UP-20-April-26,AB-APP-B04-RF-1020,Approval for  Beams Conc. Dim.  & RFT DWGs As-Built Drawing (B04) (RF),"AB-SUB-B04-RF-1020, AB-SUB-B04-RF-1020","AB-SUB-B04-RF-1020: SS 12, AB-SUB-B04-RF-1020: FF 6",HO-1050
The Big -P.01-UP-20-April-26,AB-APP-B03-RF-1000,Approval for Col. & Walls Conc. Dim.  & RFT DWGs As-Built Drawing  (B03) (RF),"AB-SUB-B03-RF-1000, AB-SUB-B03-RF-1000","AB-SUB-B03-RF-1000: SS 12, AB-SUB-B03-RF-1000: FF 6",HO-1050
The Big -P.01-UP-20-April-26,AB-APP-B03-RF-1010,Approval for Slabs Conc. Dim.  & RFT DWGs As-Built Drawing  (B03) (RF),"AB-SUB-B03-RF-1010, AB-SUB-B03-RF-1010","AB-SUB-B03-RF-1010: SS 12, AB-SUB-B03-RF-1010: FF 6",HO-1050
The Big -P.01-UP-20-April-26,AB-APP-B03-RF-1020,Approval for Beams Conc. Dim.  & RFT DWGs As-Built Drawing  (B03) (RF),"AB-SUB-B03-RF-1020, AB-SUB-B03-RF-1020","AB-SUB-B03-RF-1020: SS 12, AB-SUB-B03-RF-1020: FF 6",HO-1050
