project_id,Primary Event ID,Activity ID,Activity Name,BL Start,BL Finish,Start,Finish,Delayed duration,Overlap Start,Overlap Finish,BL Critical Path,Current Critical Path,Delayed duration after overlap,Concurrent delay,WBS,Building / Zone,Total Float,Longest Path,First Affected Flag,Predecessor Activity ID,Predecessor Relationship Type,Predecessor Lag,Successor Activity ID,Successor Relationship Type,Successor Lag,Fragment Start,Fragment Finish,Fragment Duration
Nasr city-Tunnel,EV-01 Employer steel shortage,NCT-ST-CLB-RFT-1100,Raft reinforcement for Chlorination Building,10-Feb-26,22-Feb-26,18-Feb-26,20-Mar-26,31,8-Mar-26,20-Mar-26,Yes,Yes,18,13,Nasr city-Tunnel.CON.Chlorination Building,Chlorination Building,-22,Yes,Yes,NCT-ST-CLB--1100FRM-1090,FS,0,NCT-ST-CLB--1100CONC-1110,FS,0,8-Mar-26,20-Mar-26,18
Nasr city-Tunnel,EV-02 Revised pump hall IFC,NCT-ST-PMP-RFT-1200,Raft reinforcement for Main Pump Hall,24-Feb-26,10-Mar-26,21-Mar-26,25-Apr-26,46,21-Mar-26,10-Apr-26,Yes,Yes,25,21,Nasr city-Tunnel.CON.Main Pump Hall,Main Pump Hall,-29,Yes,Yes,NCT-ST-PMP--1200FRM-1190,FS,0,NCT-ST-PMP--1200CONC-1210,FS,0,21-Mar-26,10-Apr-26,25
Nasr city-Tunnel,EV-03 Clarifier IFC conflict,NCT-ST-CLR-RFT-1300,Base slab reinforcement for Clarifier No. 1,12-Mar-26,27-Mar-26,28-Apr-26,30-May-26,49,28-Apr-26,12-May-26,No,Yes,34,15,Nasr city-Tunnel.CON.Clarifier Area,Clarifier Area,-36,No,No,NCT-ST-CLR--1300FRM-1290,FS,0,NCT-ST-CLR--1300CONC-1310,FS,0,28-Apr-26,12-May-26,34
Nasr city-Tunnel,EV-04 Delayed filter gallery RFI,NCT-ST-FLT-RFT-1400,Wall reinforcement for Filter Gallery,29-Mar-26,16-Apr-26,2-Jun-26,5-Jul-26,50,2-Jun-26,16-Jun-26,No,No,35,15,Nasr city-Tunnel.CON.Filter Gallery,Filter Gallery,-43,No,No,NCT-ST-FLT--1400FRM-1390,FS,0,NCT-ST-FLT--1400CONC-1410,FS,0,2-Jun-26,16-Jun-26,35
Nasr city-Tunnel,EV-05 Steel shortage and payment overlap,NCT-ST-RES-RFT-1500,Wall reinforcement for Treated Water Reservoir,18-Apr-26,8-May-26,8-Jul-26,18-Aug-26,81,8-Jul-26,24-Jul-26,Yes,Yes,64,17,Nasr city-Tunnel.CON.Treated Water Reservoir,Treated Water Reservoir,-50,Yes,Yes,NCT-ST-RES--1500FRM-1490,FS,0,NCT-ST-RES--1500CONC-1510,FS,0,8-Jul-26,24-Jul-26,64
