source_table,source_path,row_order,project_id,wbs_code,wbs_name,total_activities,bl_project_duration,remaining_duration,total_float,bl_project_start,bl_project_finish,actual_start,actual_finish,schedule_%_complete,performance_%_complete,budget_at_completion,earned_value_cost,planned_value_cost,xer_pair_id,event_variant,baseline_source_id,impacted_source_id,data_date,baseline_schedule_name,impacted_update_name,baseline_project_finish,impacted_project_finish,parity_status,p6_operator,run_reference,notes,Activity ID,Activity Name,Predecessors,Predecessor Details,Successors,schedule_version,successor_activity_id,predecessor_activity_id,relationship_type,lag_days,source_id
wbs,01-data/import_templates/wbs.csv,1,Suez-Tunnel-P.01-UP-20-April-26,No Priority,,1218,614,492,0,15-Sep-25,22-May-27,17-Sep-25,,0.545,0.287,495750000,142280250,270183750
wbs,01-data/import_templates/wbs.csv,2,Suez-Tunnel-P.01-UP-20-April-26,Suez-Tunnel - P.01 - UP-20-April-26,SUEZ TUNNEL INFRASTRUCTURE PROJECT,1218,614,492,-86,15-Sep-25,22-May-27,17-Sep-25,,0.545,0.287,495750000,142280250,270183750
wbs,01-data/import_templates/wbs.csv,3,Suez-Tunnel-P.01-UP-20-April-26,Suez-Tunnel - P.01 - UP-20-April-26.KD,Key Dates,9,614,492,-86,15-Sep-25,22-May-27,17-Sep-25,,0,0,0,0,0
wbs,01-data/import_templates/wbs.csv,4,Suez-Tunnel-P.01-UP-20-April-26,Suez-Tunnel - P.01 - UP-20-April-26.KD.MI,Milestone,6,614,492,-86,15-Sep-25,22-May-27,17-Sep-25,,0,0,0,0,0
wbs,01-data/import_templates/wbs.csv,5,Suez-Tunnel-P.01-UP-20-April-26,Suez-Tunnel - P.01 - UP-20-April-26.KD.MO,Mobilization,12,18,0,,15-Sep-25,3-Oct-25,18-Sep-25,7-Oct-25,0,0,0,0,0
wbs,01-data/import_templates/wbs.csv,6,Suez-Tunnel-P.01-UP-20-April-26,Suez-Tunnel - P.01 - UP-20-April-26.EN,Engineering,286,292,66,112,15-Sep-25,4-Jul-26,17-Sep-25,,0,0,0,0,0
wbs,01-data/import_templates/wbs.csv,7,Suez-Tunnel-P.01-UP-20-April-26,Suez-Tunnel - P.01 - UP-20-April-26.P,Procurement,119,520,286,76,15-Sep-25,17-Feb-27,17-Sep-25,,0,0,0,0,0
wbs,01-data/import_templates/wbs.csv,8,Suez-Tunnel-P.01-UP-20-April-26,Suez-Tunnel - P.01 - UP-20-April-26.CON,Construction,623,548,452,-52,20-Oct-25,13-Mar-27,17-Sep-25,,0.545,0.287,495750000,142280250,270183750
wbs,01-data/import_templates/wbs.csv,9,Suez-Tunnel-P.01-UP-20-April-26,Suez-Tunnel - P.01 - UP-20-April-26.CON.EW,Earth Works,46,102,8,-14,15-Oct-25,25-Jan-26,13-Oct-25,4-Jan-26,0.92,0.84,38450000,32298000,35374000
wbs,01-data/import_templates/wbs.csv,10,Suez-Tunnel-P.01-UP-20-April-26,Suez-Tunnel - P.01 - UP-20-April-26.CON.PA,Portal A,132,418,330,-75,24-Nov-25,16-Jan-27,17-Sep-25,,0.57,0.31,86300000,26753000,49191000
wbs,01-data/import_templates/wbs.csv,11,Suez-Tunnel-P.01-UP-20-April-26,Suez-Tunnel - P.01 - UP-20-April-26.CON.PB,Portal B,128,424,342,-64,2-Dec-25,30-Jan-27,17-Sep-25,,0.53,0.28,82900000,23212000,43937000
wbs,01-data/import_templates/wbs.csv,12,Suez-Tunnel-P.01-UP-20-April-26,Suez-Tunnel - P.01 - UP-20-April-26.CON.TE,Tunnel Excavation,164,488,418,-92,13-Jan-26,16-May-27,17-Sep-25,,0.49,0.22,148600000,32692000,72814000
wbs,01-data/import_templates/wbs.csv,13,Suez-Tunnel-P.01-UP-20-April-26,Suez-Tunnel - P.01 - UP-20-April-26.CON.LI,Lining & Waterproofing,96,442,388,-70,4-Mar-26,20-May-27,17-Sep-25,,0.38,0.19,95850000,18211500,36423000
wbs,01-data/import_templates/wbs.csv,14,Suez-Tunnel-P.01-UP-20-April-26,Suez-Tunnel - P.01 - UP-20-April-26.CON.MEP,MEP & Ventilation Systems,57,365,338,34,3-May-26,3-May-27,17-Sep-25,,0.21,0.09,43650000,3928500,9166500
wbs,01-data/import_templates/wbs.csv,15,Suez-Tunnel-P.01-UP-20-April-26,Suez-Tunnel - P.01 - UP-20-April-26.CON.RD,Approach Roads,41,230,190,18,2-Jun-26,18-Jan-27,17-Sep-25,,0.32,0.16,28950000,4632000,9264000
wbs,01-data/import_templates/wbs.csv,16,Suez-Tunnel-P.01-UP-20-April-26,Suez-Tunnel - P.01 - UP-20-April-26.HO,"Testing, Commissioning & Handover",124,578,492,-86,24-Nov-25,22-May-27,,,0,0,0,0,0
05-relationship_file,02-delay_analysis/unified_tia_csv/05-relationship_file.csv,1,Suez-Tunnel-P.01-UP-26-Jun-26,,,,,,,,,,,,,,,,,,,,,,,,,,,,,CON-ST-PE-FORM-1040,Formwork readiness before Portal raft reinforcement (Portal-East),E-APP-ST-PE-1020,E-APP-ST-PE-1020: FS 0,CON-ST-PE-RFT-1050
05-relationship_file,02-delay_analysis/unified_tia_csv/05-relationship_file.csv,2,Suez-Tunnel-P.01-UP-26-Jun-26,,,,,,,,,,,,,,,,,,,,,,,,,,,,,CON-ST-PE-RFT-1050,RFT for Portal raft reinforcement (Portal-East),CON-ST-PE-FORM-1040,CON-ST-PE-FORM-1040: FS 0,CON-ST-PE-CONC-1070
05-relationship_file,02-delay_analysis/unified_tia_csv/05-relationship_file.csv,3,Suez-Tunnel-P.01-UP-26-Jun-26,,,,,,,,,,,,,,,,,,,,,,,,,,,,,CON-ST-PE-CONC-1070,Concrete casting after Portal raft reinforcement (Portal-East),CON-ST-PE-RFT-1050,CON-ST-PE-RFT-1050: FS 0,ST-MS-1040
05-relationship_file,02-delay_analysis/unified_tia_csv/05-relationship_file.csv,4,Suez-Tunnel-P.01-UP-26-Jun-26,,,,,,,,,,,,,,,,,,,,,,,,,,,,,CON-ST-PW-FORM-1050,Formwork readiness before Cut-cover base slab RFT (Portal-West),E-APP-ST-PW-1030,E-APP-ST-PW-1030: FS 0,CON-ST-PW-RFT-1060
05-relationship_file,02-delay_analysis/unified_tia_csv/05-relationship_file.csv,5,Suez-Tunnel-P.01-UP-26-Jun-26,,,,,,,,,,,,,,,,,,,,,,,,,,,,,CON-ST-PW-RFT-1060,RFT for Cut-cover base slab RFT (Portal-West),CON-ST-PW-FORM-1050,CON-ST-PW-FORM-1050: FS 0,CON-ST-PW-CONC-1080
05-relationship_file,02-delay_analysis/unified_tia_csv/05-relationship_file.csv,6,Suez-Tunnel-P.01-UP-26-Jun-26,,,,,,,,,,,,,,,,,,,,,,,,,,,,,CON-ST-PW-CONC-1080,Concrete casting after Cut-cover base slab RFT (Portal-West),CON-ST-PW-RFT-1060,CON-ST-PW-RFT-1060: FS 0,ST-MS-1040
05-relationship_file,02-delay_analysis/unified_tia_csv/05-relationship_file.csv,7,Suez-Tunnel-P.01-UP-26-Jun-26,,,,,,,,,,,,,,,,,,,,,,,,,,,,,CON-ST-CC-FORM-1060,Formwork readiness before Vent shaft wall RFT (Cut-Cover),E-APP-ST-CC-1040,E-APP-ST-CC-1040: FS 0,CON-ST-CC-RFT-1070
05-relationship_file,02-delay_analysis/unified_tia_csv/05-relationship_file.csv,8,Suez-Tunnel-P.01-UP-26-Jun-26,,,,,,,,,,,,,,,,,,,,,,,,,,,,,CON-ST-CC-RFT-1070,RFT for Vent shaft wall RFT (Cut-Cover),CON-ST-CC-FORM-1060,CON-ST-CC-FORM-1060: FS 0,CON-ST-CC-CONC-1090
05-relationship_file,02-delay_analysis/unified_tia_csv/05-relationship_file.csv,9,Suez-Tunnel-P.01-UP-26-Jun-26,,,,,,,,,,,,,,,,,,,,,,,,,,,,,CON-ST-CC-CONC-1090,Concrete casting after Vent shaft wall RFT (Cut-Cover),CON-ST-CC-RFT-1070,CON-ST-CC-RFT-1070: FS 0,ST-MS-1040
05-relationship_file,02-delay_analysis/unified_tia_csv/05-relationship_file.csv,10,Suez-Tunnel-P.01-UP-26-Jun-26,,,,,,,,,,,,,,,,,,,,,,,,,,,,,CON-ST-VS-FORM-1070,Formwork readiness before Pump room slab RFT (Vent-Shaft),E-APP-ST-VS-1050,E-APP-ST-VS-1050: FS 0,CON-ST-VS-RFT-1080
05-relationship_file,02-delay_analysis/unified_tia_csv/05-relationship_file.csv,11,Suez-Tunnel-P.01-UP-26-Jun-26,,,,,,,,,,,,,,,,,,,,,,,,,,,,,CON-ST-VS-RFT-1080,RFT for Pump room slab RFT (Vent-Shaft),CON-ST-VS-FORM-1070,CON-ST-VS-FORM-1070: FS 0,CON-ST-VS-CONC-1100
05-relationship_file,02-delay_analysis/unified_tia_csv/05-relationship_file.csv,12,Suez-Tunnel-P.01-UP-26-Jun-26,,,,,,,,,,,,,,,,,,,,,,,,,,,,,CON-ST-VS-CONC-1100,Concrete casting after Pump room slab RFT (Vent-Shaft),CON-ST-VS-RFT-1080,CON-ST-VS-RFT-1080: FS 0,ST-MS-1040
05-relationship_file,02-delay_analysis/unified_tia_csv/05-relationship_file.csv,13,Suez-Tunnel-P.01-UP-26-Jun-26,,,,,,,,,,,,,,,,,,,,,,,,,,,,,CON-ST-PR-FORM-1080,Formwork readiness before Tunnel approach retaining wall RFT (Pump-Room),E-APP-ST-PR-1060,E-APP-ST-PR-1060: FS 0,CON-ST-PR-RFT-1090
05-relationship_file,02-delay_analysis/unified_tia_csv/05-relationship_file.csv,14,Suez-Tunnel-P.01-UP-26-Jun-26,,,,,,,,,,,,,,,,,,,,,,,,,,,,,CON-ST-PR-RFT-1090,RFT for Tunnel approach retaining wall RFT (Pump-Room),CON-ST-PR-FORM-1080,CON-ST-PR-FORM-1080: FS 0,CON-ST-PR-CONC-1110
05-relationship_file,02-delay_analysis/unified_tia_csv/05-relationship_file.csv,15,Suez-Tunnel-P.01-UP-26-Jun-26,,,,,,,,,,,,,,,,,,,,,,,,,,,,,CON-ST-PR-CONC-1110,Concrete casting after Tunnel approach retaining wall RFT (Pump-Room),CON-ST-PR-RFT-1090,CON-ST-PR-RFT-1090: FS 0,ST-MS-1040
